# AMETEK SAP S4 Release - 26Jan2026

Schedule from MS Project, 2025-03-13 to 2026-05-01, A marks actual dates.

## Calendars

- Standard: Mon-Fri 08:00-12:00, 13:00-17:00; Sat-Sun off.

## Resources

| Resource |
| --- |
| Renee |
| Basis |
| Security |
| Functional Leads |
| PMO |
| Training |
| Data |
| Controlling Team |
| DCT-DMC |
| Kasey Hughes |
| Femi Oguntala |
| Brian |
| Jared |
| Ade |
| Brian Wagner |
| Ade John |
| Jared Allen |
| Kim |
| Kim Kolesar |
| Ric Haraida |
| Denis |
| Denis Dubrovin |
| Sam |
| San |
| Nevin |
| Samuel Houff |
| Nevin Varkkey |
| Kim Kolesar; Dave Duda |
| Matt Palastro |
| Kim Kolesar; Dave Duda; Matt Palastro |
| Nevin Varkey |
| Dev Team |

## Schedule

| ID | WBS | Task | Type | Duration | Start | Finish | Predecessors | Complete | Remaining | Total slack | Free slack | Constraint | Resources | Work | Actual work |
| --- | --- | --- | --- | --- | --- | --- | --- | --- | --- | --- | --- | --- | --- | --- | --- |
| 1 | 1 | **AMETEK Release-1, 3-Deployment Plan** |  | 297d? | 2025-03-13 08:00 A | 2026-05-01 17:00 |  | 3% | 286.7d? | 0d |  |  |  | 9421h | 348.5h |
| 2 | 1.1 | **System Readiness** |  | 258.5d? | 2025-03-13 08:00 A | 2026-03-10 12:00 |  | 2% | 252.74d? | 38.5d |  |  |  | 855h | 123h |
| 3 | 1.1.1 | **Environment Schedule** |  | 219.25d | 2025-05-07 10:00 A | 2026-03-10 12:00 |  | 15% | 186.97d | 38.5d |  |  |  | 847h | 123h |
| 4 | 1.1.1.1 | **DS4-100 Config / Development Client** |  | 0.75d | 2025-05-07 10:00 A | 2025-05-07 17:00 A |  | 100% |  |  |  |  |  |  |  |
| 5 | 1.1.1.1.1 | Copy DS4-100 to DS4-110 Dev |  | 6h | 2025-05-07 10:00 A | 2025-05-07 17:00 A |  | 100% |  |  |  | finish no earlier than 2025-05-07 17:00 |  |  |  |
| 6 | 1.1.1.2 | **DS4-110 Unit Test Client** |  | 0.5d | 2025-05-08 08:00 A | 2025-05-08 12:00 A |  | 100% |  |  |  |  |  |  |  |
| 7 | 1.1.1.2.1 | List of functional users |  | 2h | 2025-05-08 08:00 A | 2025-05-08 10:00 A | 5 | 100% |  |  |  |  |  |  |  |
| 8 | 1.1.1.2.2 | Security Role for Functional Team |  | 2h | 2025-05-08 10:00 A | 2025-05-08 12:00 A | 7 | 100% |  |  |  |  |  |  |  |
| 9 | 1.1.1.3 | **DS4-120 Data Dev Client** |  | 0.5d | 2025-05-08 08:00 A | 2025-05-08 12:00 A |  | 100% |  |  |  |  |  |  |  |
| 10 | 1.1.1.3.1 | List of functional users |  | 2h | 2025-05-08 08:00 A | 2025-05-08 10:00 A | 5 | 100% |  |  |  |  |  |  |  |
| 11 | 1.1.1.3.2 | Security Role for Data Team |  | 2h | 2025-05-08 10:00 A | 2025-05-08 12:00 A | 10 | 100% |  |  |  |  |  |  |  |
| 12 | 1.1.1.4 | **Commercial Cloud** |  | 218.5d | 2025-05-08 08:00 A | 2026-03-10 12:00 |  | 1% | 215.62d | 38.5d |  |  |  | 146h | 1h |
| 13 | 1.1.1.4.1 | Dev Environment Release from SAP | milestone | 0d | 2026-01-08 08:00 A | 2026-01-08 08:00 A |  | 100% |  |  |  | start no earlier than 2026-01-08 08:00 |  |  |  |
| 14 | 1.1.1.4.2 | **Validate Technical Setup** |  | 34d | 2026-01-08 08:00 A | 2026-02-24 17:00 |  | 2% | 33.4d | 38.5d | 0d |  |  | 57h | 1h |
| 15 | 1.1.1.4.2.1 | Release Setup ID's and Access |  | 1h | 2026-01-08 08:00 A | 2026-01-08 09:00 A | 13 | 100% |  |  |  |  | Security | 1h | 1h |
| 16 | 1.1.1.4.2.2 | Client Config / Validation |  | 1d | 2026-02-16 08:00 | 2026-02-16 17:00 |  |  |  | 38.5d | 0d | start no earlier than 2026-02-16 08:00 | Basis | 8h |  |
| 17 | 1.1.1.4.2.3 | Best Practice / Country Validation |  | 6d | 2026-02-17 08:00 | 2026-02-24 17:00 | 16 |  |  | 38.5d |  |  | Basis | 48h |  |
| 18 | 1.1.1.4.3 | Technical Transports / BP Setup |  | 1d | 2026-02-25 08:00 | 2026-02-25 17:00 | 14 |  |  | 38.5d | 0d |  | Basis | 8h |  |
| 19 | 1.1.1.4.4 | Connect Systems and Validate |  | 1d | 2026-02-26 08:00 | 2026-02-26 17:00 | 18 |  |  | 46d |  |  | Basis | 8h |  |
| 20 | 1.1.1.4.5 | Validate Syniti Connections to QS5 |  | 1d | 2026-02-26 08:00 | 2026-02-26 17:00 | 18 |  |  | 46d |  |  | Data | 8h |  |
| 21 | 1.1.1.4.6 | Security Transports |  | 4h | 2026-02-26 08:00 | 2026-02-26 12:00 | 18 |  |  | 38.5d | 0d |  | Security | 4h |  |
| 22 | 1.1.1.4.7 | Security Manual Tasks |  | 1d | 2026-02-26 13:00 | 2026-02-27 12:00 | 21 |  |  | 45.5d |  |  | Security | 8h |  |
| 23 | 1.1.1.4.8 | Manual Technical Tasks |  | 1d | 2026-02-26 13:00 | 2026-02-27 12:00 | 21 |  |  | 38.5d | 0d |  | Basis | 8h |  |
| 24 | 1.1.1.4.9 | Validate Fiori |  | 4h | 2026-02-27 13:00 | 2026-02-27 17:00 | 23 |  |  | 38.5d | 0d |  | Basis | 4h |  |
| 25 | 1.1.1.4.10 | Fiori App Activation |  | 6h | 2026-03-02 08:00 | 2026-03-02 15:00 | 24 |  |  | 44.25d |  |  | Dev Team | 6h |  |
| 26 | 1.1.1.4.11 | Download Transport List |  | 1h | 2026-03-02 08:00 | 2026-03-02 09:00 | 24 |  |  | 38.5d | 0d |  | Basis | 1h |  |
| 27 | 1.1.1.4.12 | Business Functions Validation |  | 1d | 2026-03-02 08:00 | 2026-03-02 17:00 | 24 |  |  | 44d |  | start no earlier than 2026-01-05 08:00 | Basis | 8h |  |
| 28 | 1.1.1.4.13 | Functional Leads Validation of Transport List |  | 1h | 2026-03-02 09:00 | 2026-03-02 10:00 | 26 |  |  | 38.5d | 0d |  | Functional Leads | 1h |  |
| 29 | 1.1.1.4.14 | Release Security roles to Functional Team |  | 1h | 2026-03-02 10:00 | 2026-03-02 11:00 | 28 |  |  | 44.62d |  |  | Security | 1h |  |

| ID | WBS | Task | Type | Duration | Start | Finish | Predecessors | Complete | Remaining | Total slack | Free slack | Constraint | Resources | Work | Actual work |
| --- | --- | --- | --- | --- | --- | --- | --- | --- | --- | --- | --- | --- | --- | --- | --- |
| 30 | 1.1.1.4.15 | **Release Transports to Client** |  | 2d | 2026-03-02 10:00 | 2026-03-04 10:00 | 28 |  |  | 38.5d |  |  |  | 18h |  |
| 31 | 1.1.1.4.15.1 | Import Group 1 - Ent Structure |  | 2h | 2026-03-02 10:00 | 2026-03-02 12:00 | 28 |  |  | 38.5d | 0d |  | Functional Leads | 2h |  |
| 32 | 1.1.1.4.15.2 | Manual activities group 1 |  | 6h | 2026-03-02 13:00 | 2026-03-03 10:00 | 31 |  |  | 42.75d | 0d |  | Functional Leads | 6h |  |
| 33 | 1.1.1.4.15.3 | Import Group 2 - Core Transports |  | 2h | 2026-03-03 10:00 | 2026-03-03 12:00 | 32 |  |  | 42.75d | 0d |  | Functional Leads | 2h |  |
| 34 | 1.1.1.4.15.4 | Manual activities group 2 |  | 6h | 2026-03-03 13:00 | 2026-03-04 10:00 | 33 |  |  | 42.75d |  |  | Functional Leads | 6h |  |
| 35 | 1.1.1.4.15.5 | Import Group 3 - prior to transactions |  | 2h | 2026-03-02 13:00 | 2026-03-02 15:00 | 31 |  |  | 38.5d | 0d |  | Functional Leads | 2h |  |
| 36 | 1.1.1.4.16 | Import Group 4 - workbench / dev work |  | 2h | 2026-03-02 15:00 | 2026-03-02 17:00 | 35 |  |  | 38.5d | 0d |  | Dev Team | 2h |  |
| 37 | 1.1.1.4.17 | Import Group 5 - Config to support dev workbench |  | 2h | 2026-03-03 08:00 | 2026-03-03 10:00 | 36 |  |  | 38.5d | 0d |  | Dev Team | 2h |  |
| 38 | 1.1.1.4.18 | Setup Business Users |  | 2h | 2026-03-03 10:00 | 2026-03-03 12:00 | 37 |  |  | 38.5d | 0d |  | Security | 2h |  |
| 39 | 1.1.1.4.19 | Environment Ready for Build | milestone | 0d | 2026-03-03 12:00 | 2026-03-03 12:00 | 38 |  |  | 38.5d | 0d |  | PMO |  |  |
| 40 | 1.1.1.4.20 | Manual Activities group 3 |  | 5d | 2026-03-03 13:00 | 2026-03-10 12:00 | 39 |  |  | 38.5d |  |  |  |  |  |
| 41 | 1.1.1.4.21 | Service Enterprise Setup |  | 5d | 2026-03-03 13:00 | 2026-03-10 12:00 | 39 |  |  | 38.5d |  |  |  |  |  |
| 42 | 1.1.1.4.22 | List of functional users |  | 2h | 2025-05-08 08:00 A | 2025-05-08 10:00 A | 5 | 100% |  |  |  |  |  |  |  |
| 43 | 1.1.1.5 | **QS4 - 100 ITC-1 Setup** |  | 15d | 2025-07-23 08:00 A | 2025-08-12 17:00 |  | 94% | 0.92d | 188d |  |  |  | 130h | 122h |
| 44 | 1.1.1.5.1 | Validate Technical Setup |  | 1d | 2025-07-23 08:00 A | 2025-07-23 17:00 A |  | 100% |  |  |  | start no earlier than 2025-07-23 08:00 | Basis | 8h | 8h |
| 45 | 1.1.1.5.2 | Technical Transports / BP Setup |  | 2d | 2025-07-25 08:00 A | 2025-07-28 17:00 A |  | 100% |  |  |  | start no earlier than 2025-07-25 08:00 | Basis | 16h | 16h |
| 46 | 1.1.1.5.3 | Connect Systems and Validate |  | 1d | 2025-07-29 08:00 A | 2025-07-29 17:00 A | 45 | 100% |  |  |  |  | Basis | 8h | 8h |
| 47 | 1.1.1.5.4 | Security Transports |  | 4h | 2025-07-30 08:00 A | 2025-07-30 12:00 A | 46 | 100% |  |  |  |  | Security | 4h | 4h |
| 48 | 1.1.1.5.5 | Manual Technical Tasks |  | 1.75d | 2025-07-30 13:00 A | 2025-08-01 10:00 A | 47 | 100% |  |  |  |  | Basis | 14h | 14h |
| 49 | 1.1.1.5.6 | Handover/Setup DB access - Setup Syniti_S4 account and replicate schema in QS4 DB |  | 3h | 2025-08-01 13:00 A | 2025-08-01 16:00 A | 48 | 100% |  |  |  |  | Basis | 3h | 3h |
| 50 | 1.1.1.5.7 | Schema Validation |  | 4h | 2025-08-01 08:00 A | 2025-08-04 16:00 A | 49 | 100% |  |  |  |  | Data | 4h | 4h |
| 51 | 1.1.1.5.8 | Validate Fiori |  | 1d | 2025-08-04 08:00 A | 2025-08-04 17:00 A | 50 | 100% |  |  |  |  | Basis | 8h | 8h |
| 52 | 1.1.1.5.9 | Download Transport List |  | 1h | 2025-08-01 08:00 A | 2025-08-01 09:00 A | 51 | 100% |  |  |  |  | Basis | 1h | 1h |
| 53 | 1.1.1.5.10 | Functional Leads Validation of Transport Port List |  | 1d | 2025-08-04 08:00 A | 2025-08-04 17:00 A | 52 | 100% |  |  |  |  | Functional Leads | 8h | 8h |
| 54 | 1.1.1.5.11 | Functional Transports Set to Release |  | 1h | 2025-08-05 08:00 A | 2025-08-05 09:00 A | 53 | 100% |  |  |  |  | Functional Leads | 1h | 1h |
| 55 | 1.1.1.5.12 | Release Transports to Client |  | 7h | 2025-08-05 09:00 A | 2025-08-05 17:00 A | 54 | 100% |  |  |  |  | Basis | 7h | 7h |
| 56 | 1.1.1.5.13 | Release Security roles to Leads |  | 1h | 2025-08-06 08:00 A | 2025-08-06 09:00 A | 55 | 100% |  |  |  |  | Security | 1h | 1h |
| 57 | 1.1.1.5.14 | Validate Transports in QAS-100 |  | 0.88d | 2025-08-06 09:00 A | 2025-08-06 17:00 A | 56 | 100% |  |  |  |  | Functional Leads | 7h | 7h |
| 58 | 1.1.1.5.15 | Manual Configuration |  | 2d | 2025-08-07 08:00 A | 2025-08-08 17:00 A | 57 | 100% |  |  |  |  | Functional Leads | 16h | 16h |
| 59 | 1.1.1.5.16 | Delta Functional TR movement |  | 2d | 2025-08-07 08:00 A | 2025-08-11 17:00 A | 58SS | 100% |  |  |  | finish no earlier than 2025-08-11 17:00 | Basis | 16h | 16h |
| 60 | 1.1.1.5.17 | Setup Business Users |  | 1d | 2025-08-12 08:00 | 2025-08-12 17:00 | 59 |  |  | 188d | 0d |  | Security | 8h |  |
| 61 | 1.1.1.5.18 | Environment Ready for ITC | milestone | 0d | 2025-08-12 17:00 | 2025-08-12 17:00 | 60 |  |  | 188d |  |  | PMO |  |  |

| ID | WBS | Task | Type | Duration | Start | Finish | Predecessors | Total slack | Free slack | Constraint | Resources | Work |
| --- | --- | --- | --- | --- | --- | --- | --- | --- | --- | --- | --- | --- |
| 62 | 1.1.1.6 | **QS5 - 100 ITC-2** |  | 18.38d | 2025-08-25 08:00 | 2025-09-18 11:00 |  | 161.62d |  |  |  | 146h |
| 63 | 1.1.1.6.1 | Validate Technical Setup |  | 5d | 2025-08-25 08:00 | 2025-08-29 17:00 |  | 161.62d | 0d | start no earlier than 2025-08-25 08:00 | Basis | 40h |
| 64 | 1.1.1.6.2 | Technical Transports / BP Setup |  | 2d | 2025-09-01 08:00 | 2025-09-02 17:00 | 63 | 161.62d | 0d |  | Basis | 16h |
| 65 | 1.1.1.6.3 | Connect Systems and Validate |  | 2d | 2025-09-03 08:00 | 2025-09-04 17:00 | 64 | 161.62d | 0d |  | Basis | 16h |
| 66 | 1.1.1.6.4 | Security Transports |  | 4h | 2025-09-05 08:00 | 2025-09-05 12:00 | 65 | 161.62d | 0d |  | Security | 4h |
| 67 | 1.1.1.6.5 | Manual Technical Tasts |  | 1d | 2025-09-05 13:00 | 2025-09-08 12:00 | 66 | 161.62d | 0d |  | Basis | 8h |
| 68 | 1.1.1.6.6 | Validate Fiori |  | 2d | 2025-09-08 13:00 | 2025-09-10 12:00 | 67 | 161.62d | 0d |  | Basis | 16h |
| 69 | 1.1.1.6.7 | Download Transport List |  | 2h | 2025-09-10 13:00 | 2025-09-10 15:00 | 68 | 161.62d | 0d |  | Basis | 2h |
| 70 | 1.1.1.6.8 | Functional Leads Validation of Transport Port List |  | 4h | 2025-09-10 15:00 | 2025-09-11 10:00 | 69 | 161.62d | 0d |  | Functional Leads | 4h |
| 71 | 1.1.1.6.9 | Release Transports to Client |  | 8h | 2025-09-11 10:00 | 2025-09-12 10:00 | 70 | 161.62d | 0d |  | Basis | 8h |
| 72 | 1.1.1.6.10 | Release Security roles to Leads |  | 1h | 2025-09-12 10:00 | 2025-09-12 11:00 | 71 | 161.62d | 0d |  |  |  |
| 73 | 1.1.1.6.11 | Validate Transports in QAS-100 |  | 2d | 2025-09-12 11:00 | 2025-09-16 11:00 | 72 | 161.62d | 0d |  | Functional Leads | 16h |
| 74 | 1.1.1.6.12 | Manual Configuration |  | 1d | 2025-09-16 11:00 | 2025-09-17 11:00 | 73 | 161.62d | 0d |  | Functional Leads | 8h |
| 75 | 1.1.1.6.13 | Setup Business Users |  | 1d | 2025-09-17 11:00 | 2025-09-18 11:00 | 74 | 161.62d | 0d |  | Security | 8h |
| 76 | 1.1.1.6.14 | Environment Ready for ITC | milestone | 0d | 2025-09-18 11:00 | 2025-09-18 11:00 | 75 | 161.62d |  |  | PMO |  |
| 77 | 1.1.1.7 | **QS4 - 100 Refresh ITC-3** |  | 18.38d | 2025-10-27 08:00 | 2025-11-20 11:00 |  | 116.62d |  |  |  | 147h |
| 78 | 1.1.1.7.1 | Validate Technical Setup |  | 5d | 2025-10-27 08:00 | 2025-10-31 17:00 |  | 116.62d | 0d | start no earlier than 2025-10-27 08:00 | Basis | 40h |
| 79 | 1.1.1.7.2 | Technical Transports / BP Setup |  | 2d | 2025-11-03 08:00 | 2025-11-04 17:00 | 78 | 116.62d | 0d |  | Basis | 16h |
| 80 | 1.1.1.7.3 | Connect Systems and Validate |  | 2d | 2025-11-05 08:00 | 2025-11-06 17:00 | 79 | 116.62d | 0d |  | Basis | 16h |
| 81 | 1.1.1.7.4 | Security Transports |  | 4h | 2025-11-07 08:00 | 2025-11-07 12:00 | 80 | 116.62d | 0d |  | Security | 4h |
| 82 | 1.1.1.7.5 | Manual Technical Tasts |  | 1d | 2025-11-07 13:00 | 2025-11-10 12:00 | 81 | 116.62d | 0d |  | Basis | 8h |
| 83 | 1.1.1.7.6 | Validate Fiori |  | 2d | 2025-11-10 13:00 | 2025-11-12 12:00 | 82 | 116.62d | 0d |  | Basis | 16h |
| 84 | 1.1.1.7.7 | Download Transport List |  | 2h | 2025-11-12 13:00 | 2025-11-12 15:00 | 83 | 116.62d | 0d |  | Basis | 2h |
| 85 | 1.1.1.7.8 | Functional Leads Validation of Transport Port List |  | 4h | 2025-11-12 15:00 | 2025-11-13 10:00 | 84 | 116.62d | 0d |  | Functional Leads | 4h |
| 86 | 1.1.1.7.9 | Release Transports to Client |  | 8h | 2025-11-13 10:00 | 2025-11-14 10:00 | 85 | 116.62d | 0d |  | Basis | 8h |
| 87 | 1.1.1.7.10 | Release Security roles to Leads |  | 1h | 2025-11-14 10:00 | 2025-11-14 11:00 | 86 | 116.62d | 0d |  | Security | 1h |
| 88 | 1.1.1.7.11 | Validate Transports in QAS-100 |  | 2d | 2025-11-14 11:00 | 2025-11-18 11:00 | 87 | 116.62d | 0d |  | Functional Leads | 16h |
| 89 | 1.1.1.7.12 | Manual Configuration |  | 1d | 2025-11-18 11:00 | 2025-11-19 11:00 | 88 | 116.62d | 0d |  | Functional Leads | 8h |
| 90 | 1.1.1.7.13 | Setup Business Users |  | 1d | 2025-11-19 11:00 | 2025-11-20 11:00 | 89 | 116.62d | 0d |  | Security | 8h |
| 91 | 1.1.1.7.14 | Environment Ready for ITC | milestone | 0d | 2025-11-20 11:00 | 2025-11-20 11:00 | 90 | 116.62d |  |  | PMO |  |

| ID | WBS | Task | Type | Duration | Start | Finish | Predecessors | Total slack | Free slack | Constraint | Resources | Work |
| --- | --- | --- | --- | --- | --- | --- | --- | --- | --- | --- | --- | --- |
| 92 | 1.1.1.8 | **QS5 - 100 Refresh UAT (Training Client)** |  | 17.38d | 2025-12-01 08:00 | 2025-12-24 11:00 |  | 92.62d |  |  |  | 139h |
| 93 | 1.1.1.8.1 | Validate Technical Setup |  | 5d | 2025-12-01 08:00 | 2025-12-05 17:00 |  | 92.62d | 0d | start no earlier than 2025-12-01 08:00 | Basis | 40h |
| 94 | 1.1.1.8.2 | Technical Transports / BP Setup |  | 2d | 2025-12-08 08:00 | 2025-12-09 17:00 | 93 | 92.62d | 0d |  | Basis | 16h |
| 95 | 1.1.1.8.3 | Connect Systems and Validate |  | 2d | 2025-12-10 08:00 | 2025-12-11 17:00 | 94 | 92.62d | 0d |  | Basis | 16h |
| 96 | 1.1.1.8.4 | Security Transports |  | 4h | 2025-12-12 08:00 | 2025-12-12 12:00 | 95 | 92.62d | 0d |  | Security | 4h |
| 97 | 1.1.1.8.5 | Manual Technical Tasts |  | 1d | 2025-12-12 13:00 | 2025-12-15 12:00 | 96 | 92.62d | 0d |  | Basis | 8h |
| 98 | 1.1.1.8.6 | Validate Fiori |  | 2d | 2025-12-15 13:00 | 2025-12-17 12:00 | 97 | 92.62d | 0d |  | Basis | 16h |
| 99 | 1.1.1.8.7 | Download Transport List |  | 2h | 2025-12-17 13:00 | 2025-12-17 15:00 | 98 | 92.62d | 0d |  | Basis | 2h |
| 100 | 1.1.1.8.8 | Functional Leads Validation of Transport Port List |  | 4h | 2025-12-17 15:00 | 2025-12-18 10:00 | 99 | 92.62d | 0d |  | Functional Leads | 4h |
| 101 | 1.1.1.8.9 | Release Transports to Client |  | 8h | 2025-12-18 10:00 | 2025-12-19 10:00 | 100 | 92.62d | 0d |  | Basis | 8h |
| 102 | 1.1.1.8.10 | Release Security roles to Leads |  | 1h | 2025-12-19 10:00 | 2025-12-19 11:00 | 101 | 92.62d | 0d |  | Security | 1h |
| 103 | 1.1.1.8.11 | Validate Transports in QAS-100 |  | 2d | 2025-12-19 11:00 | 2025-12-23 11:00 | 102 | 92.62d | 0d |  | Functional Leads | 16h |
| 104 | 1.1.1.8.12 | Manual Configuration |  | 1d | 2025-12-23 11:00 | 2025-12-24 11:00 | 103 | 92.62d | 0d |  | Functional Leads | 8h |
| 105 | 1.1.1.8.13 | Environment Ready for ITC | milestone | 0d | 2025-12-24 11:00 | 2025-12-24 11:00 | 104 | 92.62d |  |  | PMO |  |
| 106 | 1.1.1.9 | **Prod (PS4) Setup** |  | 17.38d | 2026-01-26 08:00 | 2026-02-18 11:00 |  | 52.62d |  |  |  | 139h |
| 107 | 1.1.1.9.1 | Validate Technical Setup |  | 5d | 2026-01-26 08:00 | 2026-01-30 17:00 |  | 52.62d | 0d | start no earlier than 2026-01-26 08:00 | Basis | 40h |
| 108 | 1.1.1.9.2 | Technical Transports / BP Setup |  | 2d | 2026-02-02 08:00 | 2026-02-03 17:00 | 107 | 52.62d | 0d |  | Basis | 16h |
| 109 | 1.1.1.9.3 | Connect Systems and Validate |  | 2d | 2026-02-04 08:00 | 2026-02-05 17:00 | 108 | 52.62d | 0d |  | Basis | 16h |
| 110 | 1.1.1.9.4 | Security Transports |  | 4h | 2026-02-06 08:00 | 2026-02-06 12:00 | 109 | 52.62d | 0d |  | Security | 4h |
| 111 | 1.1.1.9.5 | Manual Technical Tasts |  | 1d | 2026-02-06 13:00 | 2026-02-09 12:00 | 110 | 52.62d | 0d |  | Basis | 8h |
| 112 | 1.1.1.9.6 | Validate Fiori |  | 2d | 2026-02-09 13:00 | 2026-02-11 12:00 | 111 | 52.62d | 0d |  | Basis | 16h |
| 113 | 1.1.1.9.7 | Download Transport List |  | 2h | 2026-02-11 13:00 | 2026-02-11 15:00 | 112 | 52.62d | 0d |  | Basis | 2h |
| 114 | 1.1.1.9.8 | Functional Leads Validation of Transport Port List |  | 4h | 2026-02-11 15:00 | 2026-02-12 10:00 | 113 | 52.62d | 0d |  | Functional Leads | 4h |
| 115 | 1.1.1.9.9 | Release Transports to Client |  | 8h | 2026-02-12 10:00 | 2026-02-13 10:00 | 114 | 52.62d | 0d |  | Basis | 8h |
| 116 | 1.1.1.9.10 | Release Security roles to Leads |  | 1h | 2026-02-13 10:00 | 2026-02-13 11:00 | 115 | 52.62d | 0d |  | Security | 1h |
| 117 | 1.1.1.9.11 | Validate Transports in QAS-100 |  | 2d | 2026-02-13 11:00 | 2026-02-17 11:00 | 116 | 52.62d | 0d |  | Functional Leads | 16h |
| 118 | 1.1.1.9.12 | Manual Configuration |  | 1d | 2026-02-17 11:00 | 2026-02-18 11:00 | 117 | 52.62d | 0d |  | Functional Leads | 8h |
| 119 | 1.1.1.9.13 | Environment Ready for ITC | milestone | 0d | 2026-02-18 11:00 | 2026-02-18 11:00 | 118 | 52.62d |  |  | PMO |  |

| ID | WBS | Task | Duration | Start | Finish | Predecessors | Complete | Remaining | Total slack | Free slack | Constraint | Resources | Work |
| --- | --- | --- | --- | --- | --- | --- | --- | --- | --- | --- | --- | --- | --- |
| 120 | 1.1.2 | **GRC Security Utility** | 241d? | 2025-03-13 08:00 A | 2026-02-12 17:00 |  | 1% | 239.11d? | 56d |  |  |  | 8h |
| 121 | 1.1.2.1 | **Initiation & Planning** | 114d | 2025-03-13 08:00 A | 2025-08-19 17:00 |  | 30% | 79.8d | 183d |  |  |  |  |
| 122 | 1.1.2.1.1 | Project kickoff | 1d | 2025-07-16 08:00 A | 2025-07-16 17:00 A |  | 100% |  |  |  | start no earlier than 2025-07-16 08:00 |  |  |
| 123 | 1.1.2.1.2 | Requirement gathering | 5d | 2025-08-11 08:00 | 2025-08-15 17:00 | 122 |  |  | 185d |  | finish no earlier than 2025-08-15 17:00 |  |  |
| 124 | 1.1.2.1.3 | Landscape design | 2d | 2025-08-18 08:00 A | 2025-08-19 17:00 A | 123 | 100% |  |  |  | finish no earlier than 2025-08-19 17:00 |  |  |
| 125 | 1.1.2.1.4 | Project plan finalization | 2d | 2025-03-13 08:00 | 2025-03-14 17:00 |  |  |  | 295d |  |  |  |  |
| 126 | 1.1.2.2 | **System Setup & Connectivity** | 29d | 2025-07-28 08:00 A | 2025-09-04 17:00 |  | 17% | 24d | 161d |  |  |  |  |
| 127 | 1.1.2.2.1 | Install GRC AC components | 5d | 2025-07-28 08:00 A | 2025-08-01 17:00 A |  | 100% |  |  |  | start no earlier than 2025-07-28 08:00 |  |  |
| 128 | 1.1.2.2.2 | Install plug-ins on target systems | 5d | 2025-08-04 08:00 | 2025-08-08 17:00 | 127 |  |  | 161d | 0d |  |  |  |
| 129 | 1.1.2.2.3 | Post installation Steps | 5d | 2025-08-11 08:00 | 2025-08-15 17:00 | 128 |  |  | 161d | 0d |  |  |  |
| 130 | 1.1.2.2.4 | Activate BC Sets | 2d | 2025-08-18 08:00 | 2025-08-19 17:00 | 129 |  |  | 161d | 0d |  |  |  |
| 131 | 1.1.2.2.5 | Connector configuration (S4 / LDAP Connector) | 5d | 2025-08-20 08:00 | 2025-08-26 17:00 | 130 |  |  | 161d | 0d |  |  |  |
| 132 | 1.1.2.2.6 | Initial configuration [GRC Parameter/Business Process/Sub Process and system Configuration] | 6d | 2025-08-27 08:00 | 2025-09-03 17:00 | 131 |  |  | 161d | 0d |  |  |  |
| 133 | 1.1.2.2.7 | Transport setup | 1d | 2025-09-04 08:00 | 2025-09-04 17:00 | 132 |  |  | 161d | 0d |  |  |  |
| 134 | 1.1.2.3 | **Workflow setup** | 10d | 2025-09-05 08:00 | 2025-09-18 17:00 |  |  |  | 161d |  |  |  |  |
| 135 | 1.1.2.3.1 | MSMP workflow configuration | 5d | 2025-09-05 08:00 | 2025-09-11 17:00 | 133 |  |  | 161d | 0d |  |  |  |
| 136 | 1.1.2.3.2 | BRF+ decision tables | 5d | 2025-09-12 08:00 | 2025-09-18 17:00 | 135 |  |  | 161d |  |  |  |  |
| 137 | 1.1.2.4 | **Rule Set & Role Design** | 195d? | 2025-03-13 08:00 | 2025-12-10 17:00 |  |  |  | 102d |  |  |  | 8h |
| 138 | 1.1.2.4.1 | Extract the default Global Ruleset from SAP | 4d | 2025-09-02 08:00 | 2025-09-05 17:00 |  |  |  | 102d | 0d | start no earlier than 2025-09-02 08:00 |  |  |
| 139 | 1.1.2.4.2 | Extract SU24 Details of transactions from global ruleset and Custom Tansactions | 7d | 2025-09-08 08:00 | 2025-09-16 17:00 | 138 |  |  | 102d | 0d |  |  |  |
| 140 | 1.1.2.4.3 | Prepare/Share the Ruleset Draft with all the functional leads for inputs | 6d | 2025-09-17 08:00 | 2025-09-24 17:00 | 139 |  |  | 102d | 0d |  |  |  |
| 141 | 1.1.2.4.4 | Schedule workshops to collect complete details of ruleset module wise and close the gaps | 26d | 2025-09-25 08:00 | 2025-10-30 17:00 | 140 |  |  | 102d | 0d |  |  |  |
| 142 | 1.1.2.4.5 | Final Review Rule Set and update the recommendations | 4d | 2025-10-31 08:00 | 2025-11-05 17:00 | 141 |  |  | 102d | 0d |  |  |  |
| 143 | 1.1.2.4.6 | Import rulesets into system | 4d | 2025-11-06 08:00 | 2025-11-11 17:00 | 142 |  |  | 102d | 0d |  |  |  |
| 144 | 1.1.2.4.7 | RCM Development | 1d? | 2025-03-13 08:00 | 2025-03-13 17:00 |  |  |  | 296d |  |  | Controlling Team | 8h |
| 145 | 1.1.2.4.8 | Setup Mitigation controls | 6d | 2025-11-12 08:00 | 2025-11-19 17:00 | 143 |  |  | 102d | 0d |  |  |  |
| 146 | 1.1.2.4.9 | Risk analysis on existing roles | 5d | 2025-11-20 08:00 | 2025-11-26 17:00 | 145 |  |  | 102d | 0d |  |  |  |
| 147 | 1.1.2.4.10 | Role remediation planning - Can impact role design & Possible of retesting. | 10d | 2025-11-27 08:00 | 2025-12-10 17:00 | 146 |  |  | 102d |  |  |  |  |

| ID | WBS | Task | Duration | Start | Finish | Predecessors | Total slack | Free slack | Constraint |
| --- | --- | --- | --- | --- | --- | --- | --- | --- | --- |
| 148 | 1.1.2.5 | **Business Role Management** | 10d | 2025-11-27 08:00 | 2025-12-10 17:00 |  | 102d |  |  |
| 149 | 1.1.2.5.1 | Role Mapping with Business Process and Sub-Process /Functional Area | 5d | 2025-11-27 08:00 | 2025-12-03 17:00 | 146 | 102d | 0d | start no earlier than 2025-11-17 08:00 |
| 150 | 1.1.2.5.2 | Role Upload to SAP GRC | 5d | 2025-12-04 08:00 | 2025-12-10 17:00 | 149 | 102d |  |  |
| 151 | 1.1.2.6 | **Firefighter Configuration** | 15d | 2025-10-20 08:00 | 2025-11-07 17:00 |  | 125d |  |  |
| 152 | 1.1.2.6.1 | Firefighter ID setup | 5d | 2025-10-20 08:00 | 2025-10-24 17:00 |  | 125d | 0d | start no earlier than 2025-10-20 08:00 |
| 153 | 1.1.2.6.2 | Firefighter log settings | 5d | 2025-10-27 08:00 | 2025-10-31 17:00 | 152 | 125d | 0d |  |
| 154 | 1.1.2.6.3 | Functional validation | 5d | 2025-11-03 08:00 | 2025-11-07 17:00 | 153 | 125d |  |  |
| 155 | 1.1.2.7 | **Testing & Training** | 69d | 2025-11-10 08:00 | 2026-02-12 17:00 |  | 56d |  |  |
| 156 | 1.1.2.7.1 | Unit testing | 9d | 2025-11-10 08:00 | 2025-11-20 17:00 |  | 56d | 0d | start no earlier than 2025-11-10 08:00 |
| 157 | 1.1.2.7.2 | Changes moved to Test System | 3d | 2025-11-21 08:00 | 2025-11-25 17:00 | 156 | 56d | 0d |  |
| 158 | 1.1.2.7.3 | Connector configuration (S4 / LDAP Connector) | 3d | 2025-11-26 08:00 | 2025-11-28 17:00 | 157 | 56d | 0d |  |
| 159 | 1.1.2.7.4 | Workflow Activation / Data load in Test System | 5d | 2025-12-01 08:00 | 2025-12-05 17:00 | 158 | 56d | 0d |  |
| 160 | 1.1.2.7.5 | Integration testing - Smoke Test | 9d | 2025-12-08 08:00 | 2025-12-18 17:00 | 159 | 56d | 0d |  |
| 161 | 1.1.2.7.6 | UAT (User Acceptance Testing) - ITC-3 - with roles | 16d | 2025-12-19 08:00 | 2026-01-09 17:00 | 160 | 56d | 0d |  |
| 162 | 1.1.2.7.7 | Issue resolution | 10d | 2026-01-12 08:00 | 2026-01-23 17:00 | 161 | 56d | 0d |  |
| 163 | 1.1.2.7.8 | End-user training | 6d | 2026-01-26 08:00 | 2026-02-02 17:00 | 162 | 56d | 0d |  |
| 164 | 1.1.2.7.9 | Initiate Preparation of Cutover Plans | 8d | 2026-02-03 08:00 | 2026-02-12 17:00 | 163 | 56d |  |  |
| 165 | 1.1.2.8 | **Go-Live** | 16d | 2026-01-01 08:00 | 2026-01-22 17:00 |  | 71d |  |  |
| 166 | 1.1.2.8.1 | Production deployment | 7d | 2026-01-01 08:00 | 2026-01-09 17:00 |  | 71d | 0d | start no earlier than 2026-01-01 08:00 |
| 167 | 1.1.2.8.2 | Execution of Cutover Plan | 7d | 2026-01-01 08:00 | 2026-01-09 17:00 | 166SS | 71d | 0d |  |
| 168 | 1.1.2.8.3 | Final risk analysis | 7d | 2026-01-12 08:00 | 2026-01-20 17:00 | 167 | 71d | 0d |  |
| 169 | 1.1.2.8.4 | Go-live (Technical) | 2d | 2026-01-21 08:00 | 2026-01-22 17:00 | 168 | 71d |  |  |
| 170 | 1.1.2.9 | **Functional Build Tasks** | 119d? | 2025-04-07 08:00 | 2025-09-18 17:00 |  | 161d |  |  |
| 171 | 1.1.2.9.1 | **BPD Development / Configuration Specs** | 119d? | 2025-04-07 08:00 | 2025-09-18 17:00 |  | 161d |  |  |
| 172 | 1.1.2.9.1.1 | **Master Data** | 59d? | 2025-06-16 08:00 | 2025-09-04 17:00 |  | 171d |  |  |
| 173 | 1.1.2.9.1.1.1 | In Draft | 22d? | 2025-06-16 08:00 | 2025-07-15 17:00 |  | 208d |  | finish no earlier than 2025-07-15 17:00 |
| 174 | 1.1.2.9.1.1.2 | Complete - Ready for Security Review | 30d? | 2025-07-07 08:00 | 2025-08-15 17:00 |  | 171d | 0d | finish no earlier than 2025-08-15 17:00 |
| 175 | 1.1.2.9.1.1.3 | Complete - Audit and Controls Review | 14d | 2025-08-18 08:00 | 2025-09-04 17:00 | 174 | 171d |  |  |

| ID | WBS | Task | Duration | Start | Finish | Predecessors | Total slack | Free slack | Constraint |
| --- | --- | --- | --- | --- | --- | --- | --- | --- | --- |
| 176 | 1.1.2.9.1.2 | **Finance** | 104d? | 2025-04-07 08:00 | 2025-08-28 17:00 |  | 176d |  |  |
| 177 | 1.1.2.9.1.2.1 | In Draft | 60d? | 2025-04-07 08:00 | 2025-06-27 17:00 |  | 220d |  | finish no earlier than 2025-06-27 17:00 |
| 178 | 1.1.2.9.1.2.2 | Complete - Ready for Security Review | 80d? | 2025-04-21 08:00 | 2025-08-08 17:00 |  | 176d | 0d | start no earlier than 2025-04-21 08:00 |
| 179 | 1.1.2.9.1.2.3 | Complete - Ready for Audit and Controls Review | 14d | 2025-08-11 08:00 | 2025-08-28 17:00 | 178 | 176d |  |  |
| 180 | 1.1.2.9.1.3 | **Plan to Make** | 109d? | 2025-04-07 08:00 | 2025-09-04 17:00 |  | 171d |  |  |
| 181 | 1.1.2.9.1.3.1 | In Draft | 76d? | 2025-04-07 08:00 | 2025-07-21 17:00 |  | 204d |  | finish no earlier than 2025-07-21 17:00 |
| 182 | 1.1.2.9.1.3.2 | Complete - Ready for Security Review | 85d? | 2025-04-21 08:00 | 2025-08-15 17:00 |  | 171d | 0d | start no earlier than 2025-04-21 08:00 |
| 183 | 1.1.2.9.1.3.3 | Complete - Ready for Audit and Controls Review | 14d | 2025-08-18 08:00 | 2025-09-04 17:00 | 182 | 171d |  |  |
| 184 | 1.1.2.9.1.4 | **Procure to Pay** | 119d? | 2025-04-07 08:00 | 2025-09-18 17:00 |  | 161d |  |  |
| 185 | 1.1.2.9.1.4.1 | In Draft | 96d? | 2025-04-07 08:00 | 2025-08-18 17:00 |  | 184d |  | finish no earlier than 2025-08-18 17:00 |
| 186 | 1.1.2.9.1.4.2 | Complete - Ready for Security Review | 95d? | 2025-04-21 08:00 | 2025-08-29 17:00 |  | 161d | 0d | start no earlier than 2025-04-21 08:00 |
| 187 | 1.1.2.9.1.4.3 | Complete - Ready for Audit and Controls Review | 14d | 2025-09-01 08:00 | 2025-09-18 17:00 | 186 | 161d |  |  |
| 188 | 1.1.2.9.1.5 | **Order to Cash** | 99d? | 2025-04-07 08:00 | 2025-08-21 17:00 |  | 181d |  |  |
| 189 | 1.1.2.9.1.5.1 | In Draft | 76d? | 2025-04-07 08:00 | 2025-07-21 17:00 |  | 204d |  | finish no earlier than 2025-07-21 17:00 |
| 190 | 1.1.2.9.1.5.2 | Complete - Ready for Security Review | 75d? | 2025-04-21 08:00 | 2025-08-01 17:00 |  | 181d | 0d | start no earlier than 2025-04-21 08:00 |
| 191 | 1.1.2.9.1.5.3 | Complete - Ready for Audit and Controls Review | 14d | 2025-08-04 08:00 | 2025-08-21 17:00 | 190 | 181d |  |  |
| 192 | 1.1.2.10 | **RICEFW Development Tasks (RICEFW Tracker)** | 1d? | 2025-03-13 08:00 | 2025-03-13 17:00 |  | 296d |  |  |
| 193 | 1.1.2.10.1 | **Record to Report** | 1d? | 2025-03-13 08:00 | 2025-03-13 17:00 |  | 296d |  |  |
| 194 | 1.1.2.10.1.1 | Specs Completed | 1d? | 2025-03-13 08:00 | 2025-03-13 17:00 |  | 296d |  |  |
| 195 | 1.1.2.10.1.2 | Specs Assigned to Developer | 1d? | 2025-03-13 08:00 | 2025-03-13 17:00 |  | 296d |  |  |
| 196 | 1.1.2.10.1.3 | Testing Complete | 1d? | 2025-03-13 08:00 | 2025-03-13 17:00 |  | 296d |  |  |
| 197 | 1.1.2.10.1.4 | Asigned to Testing Cycle | 1d? | 2025-03-13 08:00 | 2025-03-13 17:00 |  | 296d |  |  |
| 198 | 1.1.2.10.2 | **Plan to Make** | 1d? | 2025-03-13 08:00 | 2025-03-13 17:00 |  | 296d |  |  |
| 199 | 1.1.2.10.2.1 | Specs Completed | 1d? | 2025-03-13 08:00 | 2025-03-13 17:00 |  | 296d |  |  |
| 200 | 1.1.2.10.2.2 | Specs Assigned to Developer | 1d? | 2025-03-13 08:00 | 2025-03-13 17:00 |  | 296d |  |  |
| 201 | 1.1.2.10.2.3 | Testing Complete | 1d? | 2025-03-13 08:00 | 2025-03-13 17:00 |  | 296d |  |  |
| 202 | 1.1.2.10.2.4 | Asigned to Testing Cycle | 1d? | 2025-03-13 08:00 | 2025-03-13 17:00 |  | 296d |  |  |

| ID | WBS | Task | Duration | Start | Finish | Predecessors | Complete | Remaining | Total slack | Constraint | Resources | Work | Actual work | Resource Email (Text1) (Text1) |
| --- | --- | --- | --- | --- | --- | --- | --- | --- | --- | --- | --- | --- | --- | --- |
| 203 | 1.1.2.10.3 | **Procure to Pay** | 1d? | 2025-03-13 08:00 | 2025-03-13 17:00 |  |  |  | 296d |  |  |  |  |  |
| 204 | 1.1.2.10.3.1 | Specs Completed | 1d? | 2025-03-13 08:00 | 2025-03-13 17:00 |  |  |  | 296d |  |  |  |  |  |
| 205 | 1.1.2.10.3.2 | Specs Assigned to Developer | 1d? | 2025-03-13 08:00 | 2025-03-13 17:00 |  |  |  | 296d |  |  |  |  |  |
| 206 | 1.1.2.10.3.3 | Testing Complete | 1d? | 2025-03-13 08:00 | 2025-03-13 17:00 |  |  |  | 296d |  |  |  |  |  |
| 207 | 1.1.2.10.3.4 | Asigned to Testing Cycle | 1d? | 2025-03-13 08:00 | 2025-03-13 17:00 |  |  |  | 296d |  |  |  |  |  |
| 208 | 1.1.2.10.4 | **Order to Cash** | 1d? | 2025-03-13 08:00 | 2025-03-13 17:00 |  |  |  | 296d |  |  |  |  |  |
| 209 | 1.1.2.10.4.1 | Specs Completed | 1d? | 2025-03-13 08:00 | 2025-03-13 17:00 |  |  |  | 296d |  |  |  |  |  |
| 210 | 1.1.2.10.4.2 | Specs Assigned to Developer | 1d? | 2025-03-13 08:00 | 2025-03-13 17:00 |  |  |  | 296d |  |  |  |  |  |
| 211 | 1.1.2.10.4.3 | Testing Complete | 1d? | 2025-03-13 08:00 | 2025-03-13 17:00 |  |  |  | 296d |  |  |  |  |  |
| 212 | 1.1.2.10.4.4 | Asigned to Testing Cycle | 1d? | 2025-03-13 08:00 | 2025-03-13 17:00 |  |  |  | 296d |  |  |  |  |  |
| 213 | 1.2 | **Data Readiness** | 112d? | 2025-03-13 08:00 | 2025-08-15 17:00 |  |  |  | 185d |  |  |  |  |  |
| 214 | 1.2.1 | Legacy Systems Connections to Syniti Tasks | 70d? | 2025-03-17 08:00 | 2025-06-20 17:00 |  |  |  | 225d | start no earlier than 2025-03-17 08:00 |  |  |  |  |
| 215 | 1.2.2 | **Data Profiling** | 80d? | 2025-03-13 08:00 | 2025-07-02 17:00 |  |  |  | 217d |  |  |  |  |  |
| 216 | 1.2.2.1 | Business Partner Customer Master | 80d? | 2025-03-13 08:00 | 2025-07-02 17:00 |  |  |  | 217d |  |  |  |  |  |
| 217 | 1.2.2.2 | Business Business Supplier Master | 80d? | 2025-03-13 08:00 | 2025-07-02 17:00 |  |  |  | 217d |  |  |  |  |  |
| 218 | 1.2.2.3 | Product Master | 80d? | 2025-03-13 08:00 | 2025-07-02 17:00 |  |  |  | 217d |  |  |  |  |  |
| 219 | 1.2.3 | **Data Cleansing** | 95d? | 2025-03-13 08:00 | 2025-07-23 17:00 |  |  |  | 202d |  |  |  |  |  |
| 220 | 1.2.3.1 | Business Partner Customer Master | 95d | 2025-03-13 08:00 | 2025-07-23 17:00 |  |  |  | 202d |  |  |  |  |  |
| 221 | 1.2.3.2 | Business Business Supplier Master | 95d? | 2025-03-13 08:00 | 2025-07-23 17:00 |  |  |  | 202d |  |  |  |  |  |
| 222 | 1.2.3.3 | Product Master | 95d? | 2025-03-13 08:00 | 2025-07-23 17:00 |  |  |  | 202d |  |  |  |  |  |
| 223 | 1.2.4 | ETL (Build Readiness) | 75d? | 2025-05-05 08:00 | 2025-08-15 17:00 |  |  |  | 185d | finish no earlier than 2025-08-15 17:00 |  |  |  |  |
| 224 | 1.3 | **Data Mock Loads** | 122.69d? | 2025-03-13 08:00 A | 2025-09-01 14:30 |  | 59% | 50.78d? | 174.31d |  |  | 350h | 185.5h |  |
| 225 | 1.3.1 | **ITC1 Data Load Tasks QS4100** | 122.69d? | 2025-03-13 08:00 A | 2025-09-01 14:30 |  | 59% | 50.78d? | 174.31d |  |  | 350h | 185.5h |  |
| 226 | 1.3.1.1 | **RTR_CM01_GL_Account_Master** | 1.5d | 2025-08-18 08:00 A | 2025-08-19 12:00 A |  | 100% |  |  |  |  | 12h | 12h |  |
| 227 | 1.3.1.1.1 | Preparing the Load File | 2h | 2025-08-18 08:00 A | 2025-08-18 10:00 A | 59 | 100% |  |  | start no earlier than 2025-08-18 08:00 | Kasey Hughes | 2h | 2h | Kasey.Hughes@ametek.com |
| 228 | 1.3.1.1.2 | Pre-load validation | 3h | 2025-08-18 10:00 A | 2025-08-18 14:00 A | 227 | 100% |  |  | start no earlier than 2025-08-18 08:00 | Brian Wagner | 3h | 3h | brian.wagner@ametek.com |
| 229 | 1.3.1.1.3 | Load Simulation | 1h | 2025-08-18 14:00 A | 2025-08-18 15:00 A | 228 | 100% |  |  |  | DCT-DMC | 1h | 1h | SAPDataMigration@ametek.com |
| 230 | 1.3.1.1.4 | Defect | 2h | 2025-08-18 15:00 A | 2025-08-18 17:00 A | 229 | 100% |  |  |  | Kasey Hughes | 2h | 2h | Kasey.Hughes@ametek.com |
| 231 | 1.3.1.1.5 | Load | 1h | 2025-08-19 08:00 A | 2025-08-19 09:00 A | 230 | 100% |  |  |  | DCT-DMC | 1h | 1h | SAPDataMigration@ametek.com |
| 232 | 1.3.1.1.6 | Post-Load Validation | 3h | 2025-08-19 09:00 A | 2025-08-19 12:00 A | 231 | 100% |  |  |  | Brian Wagner | 3h | 3h | brian.wagner@ametek.com |

| ID | WBS | Task | Duration | Start | Finish | Predecessors | Complete | Constraint | Resources | Work | Actual work | Resource Email (Text1) (Text1) |
| --- | --- | --- | --- | --- | --- | --- | --- | --- | --- | --- | --- | --- |
| 233 | 1.3.1.2 | **RTR_CM02_Profit Center Hierarchy** | 0.75d | 2025-08-18 08:00 A | 2025-08-18 15:00 A |  | 100% |  |  | 6h | 6h |  |
| 234 | 1.3.1.2.1 | Prepare Load File | 1h | 2025-08-18 08:00 A | 2025-08-18 09:00 A |  | 100% |  | Kasey Hughes | 1h | 1h | Kasey.Hughes@ametek.com |
| 235 | 1.3.1.2.2 | Pre-load validation | 2h | 2025-08-18 09:00 A | 2025-08-18 11:00 A | 234 | 100% | start no earlier than 2025-08-18 08:00 | Brian Wagner | 2h | 2h | brian.wagner@ametek.com |
| 236 | 1.3.1.2.3 | Load | 1h | 2025-08-18 11:00 A | 2025-08-18 12:00 A | 235 | 100% |  | Kasey Hughes | 1h | 1h | Kasey.Hughes@ametek.com |
| 237 | 1.3.1.2.4 | Post-Load Validation | 2h | 2025-08-18 13:00 A | 2025-08-18 15:00 A | 236 | 100% |  | Brian Wagner | 2h | 2h | brian.wagner@ametek.com |
| 238 | 1.3.1.3 | **RTR_CM03_Cost Center Hierarchy** | 0.75d | 2025-08-18 08:00 A | 2025-08-18 15:00 A |  | 100% |  |  | 6h | 6h |  |
| 239 | 1.3.1.3.1 | Prepare Load File | 1h | 2025-08-18 08:00 A | 2025-08-18 09:00 A |  | 100% |  | Kasey Hughes | 1h | 1h | Kasey.Hughes@ametek.com |
| 240 | 1.3.1.3.2 | Pre-load validation | 2h | 2025-08-18 09:00 A | 2025-08-18 11:00 A | 239 | 100% | start no earlier than 2025-08-18 08:00 | Brian Wagner | 2h | 2h | brian.wagner@ametek.com |
| 241 | 1.3.1.3.3 | Load | 1h | 2025-08-18 11:00 A | 2025-08-18 12:00 A | 240 | 100% |  | Kasey Hughes | 1h | 1h | Kasey.Hughes@ametek.com |
| 242 | 1.3.1.3.4 | Post-Load Validation | 2h | 2025-08-18 13:00 A | 2025-08-18 15:00 A | 241 | 100% |  | Brian Wagner | 2h | 2h | brian.wagner@ametek.com |
| 243 | 1.3.1.4 | **RTR_CM04_Cost_Center** | 1.62d | 2025-08-18 08:00 A | 2025-08-19 14:00 A |  | 100% |  |  | 12h | 12h |  |
| 244 | 1.3.1.4.1 | Preparing the Load File | 2h | 2025-08-18 08:00 A | 2025-08-18 10:00 A |  | 100% | start no earlier than 2025-08-18 08:00 | Kasey Hughes | 2h | 2h | Kasey.Hughes@ametek.com |
| 245 | 1.3.1.4.2 | Pre-load validation | 3h | 2025-08-18 15:00 A | 2025-08-19 09:00 A | 242 | 100% | start no earlier than 2025-08-18 08:00 | Brian Wagner | 3h | 3h |  |
| 246 | 1.3.1.4.3 | Load Simulation | 1h | 2025-08-18 14:00 A | 2025-08-18 15:00 A | 228 | 100% |  | DCT-DMC | 1h | 1h | SAPDataMigration@ametek.com |
| 247 | 1.3.1.4.4 | Defect | 2h | 2025-08-18 15:00 A | 2025-08-18 17:00 A | 246 | 100% |  | Kasey Hughes | 2h | 2h | Kasey.Hughes@ametek.com |
| 248 | 1.3.1.4.5 | Load | 1h | 2025-08-19 09:00 A | 2025-08-19 10:00 A | 245 | 100% |  | DCT-DMC | 1h | 1h | SAPDataMigration@ametek.com |
| 249 | 1.3.1.4.6 | Post-Load Validation | 3h | 2025-08-19 10:00 A | 2025-08-19 14:00 A | 248 | 100% |  | Brian Wagner | 3h | 3h | brian.wagner@ametek.com |
| 250 | 1.3.1.5 | **RTR_CM05_Profit_Center** | 2.12d | 2025-08-18 08:00 A | 2025-08-20 09:00 A |  | 100% |  |  | 12h | 12h |  |
| 251 | 1.3.1.5.1 | Preparing the Load File | 2h | 2025-08-18 08:00 A | 2025-08-18 10:00 A |  | 100% | start no earlier than 2025-08-18 08:00 | Kasey Hughes | 2h | 2h |  |
| 252 | 1.3.1.5.2 | Pre-load validation | 3h | 2025-08-19 10:00 A | 2025-08-19 14:00 A | 248 | 100% | start no earlier than 2025-08-18 08:00 | Brian Wagner | 3h | 3h |  |
| 253 | 1.3.1.5.3 | Load Simulation | 1h | 2025-08-18 14:00 A | 2025-08-18 15:00 A | 228 | 100% |  | DCT-DMC | 1h | 1h | SAPDataMigration@ametek.com |
| 254 | 1.3.1.5.4 | Defect | 2h | 2025-08-18 15:00 A | 2025-08-18 17:00 A | 253 | 100% |  | Kasey Hughes | 2h | 2h | Kasey.Hughes@ametek.com |
| 255 | 1.3.1.5.5 | Load | 1h | 2025-08-19 14:00 A | 2025-08-19 15:00 A | 252 | 100% |  | DCT-DMC | 1h | 1h | SAPDataMigration@ametek.com |
| 256 | 1.3.1.5.6 | Post-Load Validation | 3h | 2025-08-19 15:00 A | 2025-08-20 09:00 A | 255 | 100% |  | Brian Wagner | 3h | 3h | brian.wagner@ametek.com |

| ID | WBS | Task | Duration | Start | Finish | Predecessors | Complete | Constraint | Resources | Work | Actual work | Resource Email (Text1) (Text1) |
| --- | --- | --- | --- | --- | --- | --- | --- | --- | --- | --- | --- | --- |
| 257 | 1.3.1.6 | **RTR_CM06_Bank_master** | 2.38d | 2025-08-18 08:00 A | 2025-08-20 11:00 A |  | 100% |  |  | 15h | 15h |  |
| 258 | 1.3.1.6.1 | Preparing the Load File | 1d | 2025-08-18 08:00 A | 2025-08-18 17:00 A |  | 100% | start no earlier than 2025-08-18 08:00 | Ade John | 8h | 8h | ade.john@ametek.com |
| 259 | 1.3.1.6.2 | Pre-load validation | 2h | 2025-08-19 15:00 A | 2025-08-19 17:00 A | 255 | 100% | start no earlier than 2025-08-18 08:00 | Jared Allen | 2h | 2h | Jared.Allen@ametek.com |
| 260 | 1.3.1.6.3 | Defect | 2h | 2025-08-20 08:00 A | 2025-08-20 10:00 A | 259 | 100% |  | Ade John | 2h | 2h | ade.john@ametek.com |
| 261 | 1.3.1.6.4 | Load | 1h | 2025-08-20 08:00 A | 2025-08-20 09:00 A | 259 | 100% |  | DCT-DMC | 1h | 1h | SAPDataMigration@ametek.com |
| 262 | 1.3.1.6.5 | Post-Load Validation | 2h | 2025-08-20 09:00 A | 2025-08-20 11:00 A | 261 | 100% |  | Brian Wagner | 2h | 2h | brian.wagner@ametek.com |
| 263 | 1.3.1.7 | **RTR_CM07_House Bank** | 1.12d | 2025-08-18 08:00 A | 2025-08-19 09:00 A |  | 100% |  |  | 9h | 9h |  |
| 264 | 1.3.1.7.1 | Prepare Load File | 4h | 2025-08-18 08:00 A | 2025-08-18 12:00 A |  | 100% | start no earlier than 2025-08-18 08:00 | Femi Oguntala | 4h | 4h | femi.Oguntala@ametek.com |
| 265 | 1.3.1.7.2 | Pre-load validation | 2h | 2025-08-18 13:00 A | 2025-08-18 15:00 A | 264 | 100% | start no earlier than 2025-08-18 08:00 | Brian Wagner | 2h | 2h | brian.wagner@ametek.com |
| 266 | 1.3.1.7.3 | Load | 1h | 2025-08-18 15:00 A | 2025-08-18 16:00 A | 265 | 100% |  | Femi Oguntala | 1h | 1h | femi.Oguntala@ametek.com |
| 267 | 1.3.1.7.4 | Post-Load Validation | 2h | 2025-08-18 16:00 A | 2025-08-19 09:00 A | 266 | 100% |  | Brian Wagner | 2h | 2h | brian.wagner@ametek.com |
| 268 | 1.3.1.8 | **RTR_CM08_Exchange_Rates** | 4.44d | 2025-08-20 08:00 A | 2025-08-26 11:30 A |  | 100% |  |  | 10h | 10h |  |
| 269 | 1.3.1.8.1 | Prepare Load File | 2h | 2025-08-20 08:00 A | 2025-08-20 10:00 A |  | 100% | start no earlier than 2025-08-20 08:00 | Femi Oguntala | 2h | 2h | femi.Oguntala@ametek.com |
| 270 | 1.3.1.8.2 | Pre-load validation | 2h | 2025-08-20 10:00 A | 2025-08-20 12:00 A | 269 | 100% | start no earlier than 2025-08-18 08:00 | Brian Wagner | 2h | 2h | brian.wagner@ametek.com |
| 271 | 1.3.1.8.3 | Defect | 2h | 2025-08-25 10:00 A | 2025-08-26 11:30 A | 286 | 100% |  | DCT-DMC | 2h | 2h | SAPDataMigration@ametek.com |
| 272 | 1.3.1.8.4 | Load | 2h | 2025-08-22 08:00 A | 2025-08-22 10:00 A | 266 | 100% |  | DCT-DMC | 2h | 2h | SAPDataMigration@ametek.com |
| 273 | 1.3.1.8.5 | Post-Load Validation | 2h | 2025-08-22 10:00 A | 2025-08-22 12:00 A | 272 | 100% |  | Brian Wagner | 2h | 2h | brian.wagner@ametek.com |
| 274 | 1.3.1.9 | **RTR_CM09_Activity_Type** | 2.5d | 2025-08-18 08:00 A | 2025-08-20 12:00 A |  | 100% |  |  | 13h | 13h |  |
| 275 | 1.3.1.9.1 | Prepare Load File | 8h | 2025-08-18 08:00 A | 2025-08-18 17:00 A |  | 100% | finish no earlier than 2025-08-18 17:00 | Kasey Hughes | 8h | 8h | Kasey.Hughes@ametek.com |
| 276 | 1.3.1.9.2 | Pre-load validation | 1h | 2025-08-19 16:00 A | 2025-08-19 17:00 A | 272 | 100% |  | Brian Wagner | 1h | 1h | brian.wagner@ametek.com |
| 277 | 1.3.1.9.3 | Load | 2h | 2025-08-20 08:00 A | 2025-08-20 10:00 A | 276 | 100% |  | DCT-DMC | 2h | 2h | SAPDataMigration@ametek.com |
| 278 | 1.3.1.9.4 | Post-Load Validation | 2h | 2025-08-20 10:00 A | 2025-08-20 12:00 A | 277 | 100% |  | Brian Wagner | 2h | 2h | brian.wagner@ametek.com |
| 279 | 1.3.1.10 | **RTR_CM10_Credit_Management_Role** | 1.75d | 2025-08-21 08:00 A | 2025-08-22 15:00 A |  | 100% |  |  | 14h | 14h |  |
| 280 | 1.3.1.10.1 | Prepare Load File | 1d | 2025-08-21 08:00 A | 2025-08-21 17:00 A | 348 | 100% |  | Femi Oguntala | 8h | 8h | femi.Oguntala@ametek.com |
| 281 | 1.3.1.10.2 | Pre-load validation | 2h | 2025-08-22 08:00 A | 2025-08-22 10:00 A | 280 | 100% | start no earlier than 2025-08-18 08:00 | Brian Wagner | 2h | 2h |  |
| 282 | 1.3.1.10.3 | Load | 2h | 2025-08-22 10:00 A | 2025-08-22 12:00 A | 281 | 100% |  | DCT-DMC | 2h | 2h | SAPDataMigration@ametek.com |
| 283 | 1.3.1.10.4 | Post-Load Validation | 2h | 2025-08-22 13:00 A | 2025-08-22 15:00 A | 282 | 100% |  | Brian Wagner | 2h | 2h | brian.wagner@ametek.com |

Notes:
- 263: Remove from future Data Objects

| ID | WBS | Task | Duration | Start | Finish | Predecessors | Complete | Remaining | Total slack | Free slack | Constraint | Resources | Work | Actual work | Resource Email (Text1) (Text1) |
| --- | --- | --- | --- | --- | --- | --- | --- | --- | --- | --- | --- | --- | --- | --- | --- |
| 284 | 1.3.1.11 | **RTR_CM11_Asset_Master** | 1.88d | 2025-08-25 08:00 A | 2025-08-26 16:00 |  | 53% | 0.88d | 178.12d |  |  |  | 15h | 8h |  |
| 285 | 1.3.1.11.1 | Preparing the Load File | 1d | 2025-08-25 08:00 A | 2025-08-25 17:00 A |  | 100% |  |  |  | start no earlier than 2025-08-22 08:00 | DCT-DMC | 8h | 8h | SAPDataMigration@ametek.com |
| 286 | 1.3.1.11.2 | Pre-load validation | 2h | 2025-08-26 08:00 | 2025-08-26 10:00 | 285 |  |  | 178.12d | 0d | start no earlier than 2025-08-18 08:00 | Brian Wagner | 2h |  | brian.wagner@ametek.com |
| 287 | 1.3.1.11.3 | Defect | 2h | 2025-08-26 10:00 | 2025-08-26 12:00 | 286 |  |  | 178.12d | 0d |  | Femi Oguntala | 2h |  | femi.Oguntala@ametek.com |
| 288 | 1.3.1.11.4 | Load | 1h | 2025-08-26 13:00 | 2025-08-26 14:00 | 287, 271 |  |  | 178.12d | 0d |  | DCT-DMC | 1h |  | SAPDataMigration@ametek.com |
| 289 | 1.3.1.11.5 | Post-Load Validation | 2h | 2025-08-26 14:00 | 2025-08-26 16:00 | 288 |  |  | 178.12d |  |  | Brian Wagner | 2h |  | brian.wagner@ametek.com |
| 290 | 1.3.1.12 | **RTR_CM12_Activity Rates** | 3.38d | 2025-08-19 08:00 A | 2025-08-22 11:00 A |  | 100% |  |  |  |  |  | 6h | 6h |  |
| 291 | 1.3.1.12.1 | Prepare Load File | 1h | 2025-08-19 08:00 A | 2025-08-19 09:00 A |  | 100% |  |  |  |  | Kasey Hughes | 1h | 1h | Kasey.Hughes@ametek.com |
| 292 | 1.3.1.12.2 | Pre-load validation | 2h | 2025-08-20 08:00 A | 2025-08-20 10:00 A | 291 | 100% |  |  |  | start no earlier than 2025-08-18 08:00 | Brian Wagner | 2h | 2h | brian.wagner@ametek.com |
| 293 | 1.3.1.12.3 | Load | 1h | 2025-08-22 08:00 A | 2025-08-22 09:00 A | 292 | 100% |  |  |  |  | Kasey Hughes | 1h | 1h | Kasey.Hughes@ametek.com |
| 294 | 1.3.1.12.4 | Post-Load Validation | 2h | 2025-08-22 09:00 A | 2025-08-22 11:00 A | 293 | 100% |  |  |  |  | Brian Wagner | 2h | 2h | brian.wagner@ametek.com |
| 295 | 1.3.1.13 | **RTR_CM13_Secondary Cost Element** | 0.75d | 2025-08-20 08:00 A | 2025-08-20 15:00 A |  | 100% |  |  |  |  |  | 6h | 6h |  |
| 296 | 1.3.1.13.1 | Prepare Load File | 1h | 2025-08-20 08:00 A | 2025-08-20 09:00 A |  | 100% |  |  |  | start no earlier than 2025-08-20 08:00 | Kasey Hughes | 1h | 1h | Kasey.Hughes@ametek.com |
| 297 | 1.3.1.13.2 | Pre-load validation | 2h | 2025-08-20 09:00 A | 2025-08-20 11:00 A | 296 | 100% |  |  |  | start no earlier than 2025-08-18 08:00 | Brian Wagner | 2h | 2h | brian.wagner@ametek.com |
| 298 | 1.3.1.13.3 | Load | 1h | 2025-08-20 11:00 A | 2025-08-20 12:00 A | 297 | 100% |  |  |  |  | Kasey Hughes | 1h | 1h | Kasey.Hughes@ametek.com |
| 299 | 1.3.1.13.4 | Post-Load Validation | 2h | 2025-08-20 13:00 A | 2025-08-20 15:00 A | 298 | 100% |  |  |  |  | Brian Wagner | 2h | 2h | brian.wagner@ametek.com |
| 300 | 1.3.1.14 | **RTR_CM14_Cost Element_Group** | 2.25d | 2025-08-20 08:00 A | 2025-08-22 10:00 A |  | 100% |  |  |  |  |  | 6h | 6h |  |
| 301 | 1.3.1.14.1 | Prepare Load File | 1h | 2025-08-20 08:00 A | 2025-08-20 09:00 A |  | 100% |  |  |  | start no earlier than 2025-08-20 08:00 | Kasey Hughes | 1h | 1h | Kasey.Hughes@ametek.com |
| 302 | 1.3.1.14.2 | Pre-load validation | 2h | 2025-08-20 09:00 A | 2025-08-20 11:00 A | 301 | 100% |  |  |  | start no earlier than 2025-08-18 08:00 | Brian Wagner | 2h | 2h | brian.wagner@ametek.com |
| 303 | 1.3.1.14.3 | Load | 1h | 2025-08-21 08:00 A | 2025-08-21 09:00 A | 302 | 100% |  |  |  |  | Kasey Hughes | 1h | 1h | Kasey.Hughes@ametek.com |
| 304 | 1.3.1.14.4 | Post-Load Validation | 2h | 2025-08-22 08:00 A | 2025-08-22 10:00 A | 303 | 100% |  |  |  |  | Brian Wagner | 2h | 2h | brian.wagner@ametek.com |
| 305 | 1.3.1.15 | **RTR_CM15_Credit_Master** | 1.88d | 2025-08-20 08:15 A | 2025-08-21 16:15 A |  | 100% |  |  |  |  |  | 11h | 11h |  |
| 306 | 1.3.1.15.1 | Preparing the Load File | 1d | 2025-08-20 08:15 A | 2025-08-21 08:15 A | 348 | 100% |  |  |  | start no earlier than 2025-08-18 08:00 | Femi Oguntala | 8h | 8h | femi.Oguntala@ametek.com |
| 307 | 1.3.1.15.2 | Pre-load validation | 2h | 2025-08-21 08:15 A | 2025-08-21 10:15 A | 306 | 100% |  |  |  | start no earlier than 2025-08-18 08:00 |  |  |  |  |
| 308 | 1.3.1.15.3 | Defect | 2h | 2025-08-21 10:15 A | 2025-08-21 13:15 A | 307 | 100% |  |  |  |  | Femi Oguntala | 2h | 2h | femi.Oguntala@ametek.com |
| 309 | 1.3.1.15.4 | Load | 1h | 2025-08-21 13:15 A | 2025-08-21 14:15 A | 308 | 100% |  |  |  |  | DCT-DMC | 1h | 1h | SAPDataMigration@ametek.com |
| 310 | 1.3.1.15.5 | Post-Load Validation | 2h | 2025-08-21 14:15 A | 2025-08-21 16:15 A | 309 | 100% |  |  |  |  |  |  |  |  |

Notes:
- 285: Defect
- 305: Remove from future Data Objects

| ID | WBS | Task | Duration | Start | Finish | Predecessors | Complete | Remaining | Total slack | Free slack | Constraint | Resources | Work | Actual work | Resource Email (Text1) (Text1) |
| --- | --- | --- | --- | --- | --- | --- | --- | --- | --- | --- | --- | --- | --- | --- | --- |
| 311 | 1.3.1.16 | **RTR_CM16_Activity type group** | 0.75d | 2025-08-20 08:00 A | 2025-08-20 15:00 A |  | 100% |  |  |  |  |  | 6h | 6h |  |
| 312 | 1.3.1.16.1 | Prepare Load File | 1h | 2025-08-20 08:00 A | 2025-08-20 09:00 A |  | 100% |  |  |  | start no earlier than 2025-08-20 08:00 | Kasey Hughes | 1h | 1h | Kasey.Hughes@ametek.com |
| 313 | 1.3.1.16.2 | Pre-load validation | 2h | 2025-08-20 09:00 A | 2025-08-20 11:00 A | 312 | 100% |  |  |  | start no earlier than 2025-08-18 08:00 | Brian Wagner | 2h | 2h | brian.wagner@ametek.com |
| 314 | 1.3.1.16.3 | Load | 1h | 2025-08-20 11:00 A | 2025-08-20 12:00 A | 313 | 100% |  |  |  |  | Kasey Hughes | 1h | 1h | Kasey.Hughes@ametek.com |
| 315 | 1.3.1.16.4 | Post-Load Validation | 2h | 2025-08-20 13:00 A | 2025-08-20 15:00 A | 314 | 100% |  |  |  |  | Brian Wagner | 2h | 2h | brian.wagner@ametek.com |
| 316 | 1.3.1.17 | **RTR_CM17_Project Definition / Builder** | 4.62d | 2025-08-22 08:00 A | 2025-08-28 14:00 |  | 45% | 2.56d | 176.38d |  |  |  | 19h | 16h |  |
| 317 | 1.3.1.17.1 | Preparing the Load File | 2d | 2025-08-22 08:00 A | 2025-08-25 17:00 A |  | 100% |  |  |  | start no earlier than 2025-08-20 08:00 | Denis Dubrovin | 16h | 16h | Denis.Dubrovin@ametek.com |
| 318 | 1.3.1.17.2 | Pre-load validation | 16h | 2025-08-26 08:00 A | 2025-08-27 17:00 | 317 | 3% | 15.5h | 176.38d | 0d | finish no earlier than 2025-08-27 17:00 |  |  |  |  |
| 319 | 1.3.1.17.3 | Defect | 2h | 2025-08-28 08:00 | 2025-08-28 10:00 | 318 |  |  | 176.38d | 0d |  | Kasey Hughes | 2h |  | Kasey.Hughes@ametek.com |
| 320 | 1.3.1.17.4 | Load | 1h | 2025-08-28 10:00 | 2025-08-28 11:00 | 319 |  |  | 176.38d | 0d |  | DCT-DMC | 1h |  | SAPDataMigration@ametek.com |
| 321 | 1.3.1.17.5 | Post-Load Validation | 2h | 2025-08-28 11:00 | 2025-08-28 14:00 | 320 |  |  | 176.38d |  |  |  |  |  |  |
| 322 | 1.3.1.18 | **RTR_CM18_WBS Element** | 1.88d | 2025-08-21 08:00 | 2025-08-22 16:00 |  |  |  | 180.12d |  |  |  | 11h |  |  |
| 323 | 1.3.1.18.1 | Preparing the Load File | 1d | 2025-08-21 08:00 | 2025-08-21 17:00 |  |  |  | 180.12d | 0d | start no earlier than 2025-08-21 08:00 | Kasey Hughes | 8h |  | Kasey.Hughes@ametek.com |
| 324 | 1.3.1.18.2 | Pre-load validation | 2h | 2025-08-22 08:00 | 2025-08-22 10:00 | 323 |  |  | 180.12d | 0d | start no earlier than 2025-08-18 08:00 |  |  |  |  |
| 325 | 1.3.1.18.3 | Defect | 2h | 2025-08-22 10:00 | 2025-08-22 12:00 | 324 |  |  | 180.12d | 0d |  | Kasey Hughes | 2h |  | Kasey.Hughes@ametek.com |
| 326 | 1.3.1.18.4 | Load | 1h | 2025-08-22 13:00 | 2025-08-22 14:00 | 325 |  |  | 180.12d | 0d |  | DCT-DMC | 1h |  | SAPDataMigration@ametek.com |
| 327 | 1.3.1.18.5 | Post-Load Validation | 2h | 2025-08-22 14:00 | 2025-08-22 16:00 | 326 |  |  | 180.12d |  |  |  |  |  |  |
| 328 | 1.3.1.19 | **RTR_CM19_Trading Partner** | 0.75d | 2025-08-25 08:00 A | 2025-08-25 15:00 A |  | 100% |  |  |  |  |  | 2h | 2h |  |
| 329 | 1.3.1.19.1 | Prepare Load File | 1h | 2025-08-25 08:00 A | 2025-08-25 09:00 A |  | 100% |  |  |  | start no earlier than 2025-08-25 08:00 | Femi Oguntala | 1h | 1h | femi.Oguntala@ametek.com |
| 330 | 1.3.1.19.2 | Pre-load validation | 2h | 2025-08-25 09:00 A | 2025-08-25 11:00 A | 329 | 100% |  |  |  | start no earlier than 2025-08-18 08:00 |  |  |  |  |
| 331 | 1.3.1.19.3 | Load | 1h | 2025-08-25 11:00 A | 2025-08-25 12:00 A | 330 | 100% |  |  |  |  | Femi Oguntala | 1h | 1h | femi.Oguntala@ametek.com |
| 332 | 1.3.1.19.4 | Post-Load Validation | 2h | 2025-08-25 13:00 A | 2025-08-25 15:00 A | 331 | 100% |  |  |  |  |  |  |  |  |
| 333 | 1.3.1.20 | **NA for ITC1** | 1d? | 2025-03-13 08:00 A | 2025-03-13 17:00 A |  | 100% |  |  |  |  |  |  |  |  |
| 334 | 1.3.1.20.1 | RTR_CT01_Statistical_Key_Figure | 1d? | 2025-03-13 08:00 A | 2025-03-13 17:00 A |  | 100% |  |  |  |  |  |  |  |  |
| 335 | 1.3.1.20.2 | RTR_CT02_Internal_Orders | 1d? | 2025-03-13 08:00 A | 2025-03-13 17:00 A |  | 100% |  |  |  |  |  |  |  |  |
| 336 | 1.3.1.20.3 | RTR_CT03_GL_Balances | 1d? | 2025-03-13 08:00 A | 2025-03-13 17:00 A |  | 100% |  |  |  |  |  |  |  |  |
| 337 | 1.3.1.20.4 | RTR_CT04_GL Open Items | 1d? | 2025-03-13 08:00 A | 2025-03-13 17:00 A |  | 100% |  |  |  |  |  |  |  |  |
| 338 | 1.3.1.20.5 | RTR_CT05_Open AR Invoices | 1d? | 2025-03-13 08:00 A | 2025-03-13 17:00 A |  | 100% |  |  |  |  |  |  |  |  |
| 339 | 1.3.1.20.6 | RTR_CT06_Open AP Invoices | 1d? | 2025-03-13 08:00 A | 2025-03-13 17:00 A |  | 100% |  |  |  |  |  |  |  |  |
| 340 | 1.3.1.20.7 | RTR_CT07_Asset Balances Conversion | 1d? | 2025-03-13 08:00 A | 2025-03-13 17:00 A |  | 100% |  |  |  |  |  |  |  |  |
| 341 | 1.3.1.20.8 | RTR_CT08_Trial Balance - P&L Account | 1d? | 2025-03-13 08:00 A | 2025-03-13 17:00 A |  | 100% |  |  |  |  |  |  |  |  |
| 342 | 1.3.1.20.9 | RTR_CT09_Deferred Balance - RAR | 1d? | 2025-03-13 08:00 A | 2025-03-13 17:00 A |  | 100% |  |  |  |  |  |  |  |  |

Notes:
- 317: Defects in work
- 323: Defects in work
- 328: Remove from future Data Objects
- 334: NA for ITC1
- 335: NA for ITC1
- 336: NA for ITC1
- 337: NA for ITC1
- 338: NA for ITC1
- 339: NA for ITC1
- 340: NA for ITC1
- 341: NA for ITC1
- 342: NA for ITC1

| ID | WBS | Task | Duration | Start | Finish | Predecessors | Complete | Total slack | Free slack | Constraint | Resources | Work | Actual work | Resource Email (Text1) (Text1) |
| --- | --- | --- | --- | --- | --- | --- | --- | --- | --- | --- | --- | --- | --- | --- |
| 343 | 1.3.1.21 | **OTC_CM19_Customer_Master - Sold-To** | 114.62d | 2025-03-13 08:00 A | 2025-08-20 14:00 A |  | 100% |  |  |  |  | 11h | 11h |  |
| 344 | 1.3.1.21.1 | Preparing the Load File | 1h | 2025-08-19 08:00 A | 2025-08-19 09:00 A |  | 100% |  |  | start no earlier than 2025-08-19 08:00 | Kim Kolesar | 1h | 1h | Kim.Kolesar@ametek.com |
| 345 | 1.3.1.21.2 | Pre-load validation | 2h | 2025-08-19 09:00 A | 2025-08-19 11:00 A | 344 | 100% |  |  | start no earlier than 2025-08-18 08:00 | Kim Kolesar | 2h | 2h | Kim.Kolesar@ametek.com |
| 346 | 1.3.1.21.3 | Simulation | 3h | 2025-03-13 08:00 A | 2025-08-19 14:15 A | 345 | 100% |  |  |  | DCT-DMC | 3h | 3h | SAPDataMigration@ametek.com |
| 347 | 1.3.1.21.4 | Defect | 2h | 2025-08-20 08:00 A | 2025-08-20 10:00 A | 346 | 100% |  |  |  | Ric Haraida | 2h | 2h | ric.haraida@ametek.com |
| 348 | 1.3.1.21.5 | Load | 1h | 2025-08-20 10:00 A | 2025-08-20 11:00 A | 347 | 100% |  |  |  | DCT-DMC | 1h | 1h | SAPDataMigration@ametek.com |
| 349 | 1.3.1.21.6 | Post-Load Validation | 2h | 2025-08-20 11:00 A | 2025-08-20 14:00 A | 348 | 100% |  |  |  | Kim Kolesar | 2h | 2h | Kim.Kolesar@ametek.com |
| 350 | 1.3.1.22 | **NA for ITC1** | 1d? | 2025-03-13 08:00 A | 2025-03-13 17:00 A |  | 100% |  |  |  |  |  |  |  |
| 351 | 1.3.1.22.1 | OTC_CM19_Customer_Master - Ship-To | 1d? | 2025-03-13 08:00 A | 2025-03-13 17:00 A |  | 100% |  |  |  |  |  |  |  |
| 352 | 1.3.1.22.2 | OTC_CM19_Customer_Master - Bill-To | 1d? | 2025-03-13 08:00 A | 2025-03-13 17:00 A |  | 100% |  |  |  |  |  |  |  |
| 353 | 1.3.1.22.3 | OTC_CM19_Customer_Master - Payer | 1d? | 2025-03-13 08:00 A | 2025-03-13 17:00 A |  | 100% |  |  |  |  |  |  |  |
| 354 | 1.3.1.22.4 | OTC_CM19_Customer_Master - End User | 1d? | 2025-03-13 08:00 A | 2025-03-13 17:00 A |  | 100% |  |  |  |  |  |  |  |
| 355 | 1.3.1.22.5 | OTC_CM19_Customer_Master - Contact Person | 1d? | 2025-03-13 08:00 A | 2025-03-13 17:00 A |  | 100% |  |  |  |  |  |  |  |
| 356 | 1.3.1.22.6 | OTC_CM19_Customer_Master - One-Time | 1d? | 2025-03-13 08:00 A | 2025-03-13 17:00 A |  | 100% |  |  |  |  |  |  |  |
| 357 | 1.3.1.22.7 | OTC_CM20_Contact and Contact Relationships | 1d? | 2025-03-13 08:00 A | 2025-03-13 17:00 A |  | 100% |  |  |  |  |  |  |  |
| 358 | 1.3.1.23 | **OTC_CM21_CMIR** | 4.06d | 2025-08-26 14:00 | 2025-09-01 14:30 |  |  | 174.31d |  |  |  | 7h |  |  |
| 359 | 1.3.1.23.1 | Preparing the Load File | 1d | 2025-08-26 14:00 | 2025-08-27 14:00 | 405 |  | 176.88d | 0d | start no earlier than 2025-08-22 08:00 |  |  |  |  |
| 360 | 1.3.1.23.2 | Pre-load validation | 2h | 2025-08-27 14:00 | 2025-08-27 16:00 | 359 |  | 176.88d | 0d | start no earlier than 2025-08-18 08:00 | Kim Kolesar | 2h |  |  |
| 361 | 1.3.1.23.3 | Defect | 2h | 2025-08-27 16:00 | 2025-08-28 09:00 | 360 |  | 176.88d |  |  | DCT-DMC | 2h |  | SAPDataMigration@ametek.com |
| 362 | 1.3.1.23.4 | Load | 1h | 2025-09-01 10:30 | 2025-09-01 11:30 | 405, 430, 436, 442, 450, 456, 462, 468, 474, 480, 486, 492 |  | 174.31d | 0d |  | DCT-DMC | 1h |  | SAPDataMigration@ametek.com |
| 363 | 1.3.1.23.5 | Post-Load Validation | 2h | 2025-09-01 11:30 | 2025-09-01 14:30 | 362 |  | 174.31d |  |  | Kim Kolesar | 2h |  |  |
| 364 | 1.3.1.24 | **Pricing Conditions - Sales** | 119.62d | 2025-03-13 08:00 | 2025-08-27 14:00 |  |  | 177.38d |  |  |  |  |  |  |
| 365 | 1.3.1.24.1 | Preparing the Load File | 1d | 2025-08-26 14:00 | 2025-08-27 14:00 | 405 |  | 177.38d |  | start no earlier than 2025-08-21 08:00 |  |  |  |  |
| 366 | 1.3.1.24.2 | Pre-load validation | 2h | 2025-08-18 08:00 | 2025-08-18 10:00 |  |  | 184.75d |  | start no earlier than 2025-08-18 08:00 |  |  |  |  |
| 367 | 1.3.1.24.3 | Load | 1h | 2025-03-13 08:00 | 2025-03-13 09:00 |  |  | 296.88d |  |  |  |  |  |  |
| 368 | 1.3.1.24.4 | Post-Load Validation | 2h | 2025-03-13 08:00 | 2025-03-13 10:00 |  |  | 296.75d |  |  |  |  |  |  |

Notes:
- 358: Material

| ID | WBS | Task | Duration | Start | Finish | Predecessors | Complete | Total slack | Constraint |
| --- | --- | --- | --- | --- | --- | --- | --- | --- | --- |
| 369 | 1.3.1.25 | **Pricing Conditions - Discounts** | 119.62d | 2025-03-13 08:00 | 2025-08-27 14:00 |  |  | 177.38d |  |
| 370 | 1.3.1.25.1 | Preparing the Load File | 1d | 2025-08-26 14:00 | 2025-08-27 14:00 | 405 |  | 177.38d | start no earlier than 2025-08-21 08:00 |
| 371 | 1.3.1.25.2 | Pre-load validation | 2h | 2025-08-18 08:00 | 2025-08-18 10:00 |  |  | 184.75d | start no earlier than 2025-08-18 08:00 |
| 372 | 1.3.1.25.3 | Load | 1h | 2025-03-13 08:00 | 2025-03-13 09:00 |  |  | 296.88d |  |
| 373 | 1.3.1.25.4 | Post-Load Validation | 2h | 2025-03-13 08:00 | 2025-03-13 10:00 |  |  | 296.75d |  |
| 374 | 1.3.1.26 | **NA for ITC1** | 1d? | 2025-03-13 08:00 A | 2025-03-13 17:00 A |  | 100% |  |  |
| 375 | 1.3.1.26.1 | OTC_CM22_Pricing_Condition_ZD01 | 1d? | 2025-03-13 08:00 A | 2025-03-13 17:00 A |  | 100% |  |  |
| 376 | 1.3.1.26.2 | OTC_CM22_Pricing_Condition_ZD02 | 1d? | 2025-03-13 08:00 A | 2025-03-13 17:00 A |  | 100% |  |  |
| 377 | 1.3.1.26.3 | OTC_CM22_Pricing_Condition_ZD03 | 1d? | 2025-03-13 08:00 A | 2025-03-13 17:00 A |  | 100% |  |  |
| 378 | 1.3.1.26.4 | OTC_CM22_Pricing_Condition_ZD04 | 1d? | 2025-03-13 08:00 A | 2025-03-13 17:00 A |  | 100% |  |  |
| 379 | 1.3.1.26.5 | OTC_CM22_Pricing_Condition_ZD05 | 1d? | 2025-03-13 08:00 A | 2025-03-13 17:00 A |  | 100% |  |  |
| 380 | 1.3.1.26.6 | OTC_CM22_Pricing_Condition_ZD06 | 1d? | 2025-03-13 08:00 A | 2025-03-13 17:00 A |  | 100% |  |  |
| 381 | 1.3.1.26.7 | OTC_CM22_Pricing_Condition_ZD07 | 1d? | 2025-03-13 08:00 A | 2025-03-13 17:00 A |  | 100% |  |  |
| 382 | 1.3.1.26.8 | OTC_CM22_Pricing_Condition_ZD08 | 1d? | 2025-03-13 08:00 A | 2025-03-13 17:00 A |  | 100% |  |  |
| 383 | 1.3.1.26.9 | OTC_CM22_Pricing_Condition_ZD09 | 1d? | 2025-03-13 08:00 A | 2025-03-13 17:00 A |  | 100% |  |  |
| 384 | 1.3.1.26.10 | OTC_CM22_Pricing_Condition_ZDOV | 1d? | 2025-03-13 08:00 A | 2025-03-13 17:00 A |  | 100% |  |  |
| 385 | 1.3.1.26.11 | OTC_CM22_Pricing_Condition_ZP01 | 1d? | 2025-03-13 08:00 A | 2025-03-13 17:00 A |  | 100% |  |  |
| 386 | 1.3.1.26.12 | OTC_CM22_Pricing_Condition_ZP02 | 1d? | 2025-03-13 08:00 A | 2025-03-13 17:00 A |  | 100% |  |  |
| 387 | 1.3.1.26.13 | OTC_CM22_Pricing_Condition_ZP03 | 1d? | 2025-03-13 08:00 A | 2025-03-13 17:00 A |  | 100% |  |  |
| 388 | 1.3.1.26.14 | OTC_CM22_Pricing_Condition_ZP04 | 1d? | 2025-03-13 08:00 A | 2025-03-13 17:00 A |  | 100% |  |  |
| 389 | 1.3.1.26.15 | OTC_CM22_Pricing_Condition_ZP05 | 1d? | 2025-03-13 08:00 A | 2025-03-13 17:00 A |  | 100% |  |  |
| 390 | 1.3.1.26.16 | OTC_CM22_Pricing_Condition_ZPOV | 1d? | 2025-03-13 08:00 A | 2025-03-13 17:00 A |  | 100% |  |  |
| 391 | 1.3.1.26.17 | OTC_CM22_Pricing_Condition_ZPV1 | 1d? | 2025-03-13 08:00 A | 2025-03-13 17:00 A |  | 100% |  |  |
| 392 | 1.3.1.27 | **OTC_CM23_Customer_Hierarchy** | 116d | 2025-03-13 08:00 A | 2025-08-21 17:00 A |  | 100% |  |  |
| 393 | 1.3.1.27.1 | Preparing the Load File | 1d | 2025-08-21 08:00 A | 2025-08-21 17:00 A |  | 100% |  | start no earlier than 2025-08-21 08:00 |
| 394 | 1.3.1.27.2 | Pre-load validation | 2h | 2025-08-18 08:00 A | 2025-08-18 10:00 A |  | 100% |  | start no earlier than 2025-08-18 08:00 |
| 395 | 1.3.1.27.3 | Load | 1h | 2025-03-13 08:00 A | 2025-03-13 09:00 A |  | 100% |  |  |
| 396 | 1.3.1.27.4 | Post-Load Validation | 2h | 2025-03-13 08:00 A | 2025-03-13 10:00 A |  | 100% |  |  |

Notes:
- 375: NA for ITC1
- 376: NA for ITC1
- 377: NA for ITC1
- 378: NA for ITC1
- 379: NA for ITC1
- 380: NA for ITC1
- 381: NA for ITC1
- 382: NA for ITC1
- 383: NA for ITC1
- 384: NA for ITC1
- 385: NA for ITC1
- 386: NA for ITC1
- 387: NA for ITC1
- 388: NA for ITC1
- 389: NA for ITC1
- 390: NA for ITC1
- 391: NA for ITC1

| ID | WBS | Task | Duration | Start | Finish | Predecessors | Complete | Remaining | Total slack | Free slack | Constraint | Resources | Work | Actual work | Resource Email (Text1) (Text1) |
| --- | --- | --- | --- | --- | --- | --- | --- | --- | --- | --- | --- | --- | --- | --- | --- |
| 397 | 1.3.1.28 | **Not needed in ITC1** | 1d? | 2025-03-13 08:00 A | 2025-03-13 17:00 A |  | 100% |  |  |  |  |  |  |  |  |
| 398 | 1.3.1.28.1 | OTC_CT10_Open Sales Order | 1d? | 2025-03-13 08:00 A | 2025-03-13 17:00 A |  | 100% |  |  |  |  |  |  |  |  |
| 399 | 1.3.1.28.2 | OTC_CT11_Open Sales Contract | 1d? | 2025-03-13 08:00 A | 2025-03-13 17:00 A |  | 100% |  |  |  |  |  |  |  |  |
| 400 | 1.3.1.28.3 | OTC_CT13_Open Quotations | 1d? | 2025-03-13 08:00 A | 2025-03-13 17:00 A |  | 100% |  |  |  |  |  |  |  |  |
| 401 | 1.3.1.29 | **Material Master** | 1.88d | 2025-08-25 08:00 A | 2025-08-26 16:00 |  | 13% | 1.62d | 178.12d |  |  |  | 23h | 2h |  |
| 402 | 1.3.1.29.1 | Preparing the Load File | 1d | 2025-08-25 08:00 A | 2025-08-25 17:00 |  | 25% | 0.75d | 176.88d | 0d | start no earlier than 2025-08-25 08:00 | DCT-DMC | 8h | 2h | SAPDataMigration@ametek.com |
| 403 | 1.3.1.29.2 | Pre-load validation | 2h | 2025-08-26 08:00 | 2025-08-26 10:00 | 402 |  |  | 176.88d | 0d | start no earlier than 2025-08-18 08:00 | Samuel Houff; Brian Wagner; Kim Kolesar; Dave Duda; Matt Palastro | 6h |  |  |
| 404 | 1.3.1.29.3 | Defect | 2h | 2025-08-26 10:00 | 2025-08-26 12:00 | 403 |  |  | 176.88d | 0d |  | Nevin Varkkey | 2h |  | Nevin.Varkey@ametek.com |
| 405 | 1.3.1.29.4 | Load | 1h | 2025-08-26 13:00 | 2025-08-26 14:00 | 404 |  |  | 176.88d | 0d |  | DCT-DMC | 1h |  | SAPDataMigration@ametek.com |
| 406 | 1.3.1.29.5 | Post-Load Validation | 2h | 2025-08-26 14:00 | 2025-08-26 16:00 | 405 |  |  | 178.12d |  |  | Samuel Houff; Brian Wagner; Kim Kolesar; Dave Duda; Matt Palastro | 6h |  |  |
| 407 | 1.3.1.30 | **NA for ITC1** | 115.12d? | 2025-03-13 08:00 A | 2025-08-21 09:00 A |  | 100% |  |  |  |  |  |  |  |  |
| 408 | 1.3.1.30.1 | PTP_CM26_Material_Master - FERT - Finished Product | 1h | 2025-08-21 08:00 A | 2025-08-21 09:00 A |  | 100% |  |  |  | start no earlier than 2025-08-21 08:00 |  |  |  |  |
| 409 | 1.3.1.30.2 | PTP_CM26_Material_Master - HALB - Semi-Finished | 1d? | 2025-03-13 08:00 A | 2025-03-13 17:00 A |  | 100% |  |  |  |  |  |  |  |  |
| 410 | 1.3.1.30.3 | PTP_CM26_Material_Master - ROH - Raw Materials | 1d? | 2025-03-13 08:00 A | 2025-03-13 17:00 A |  | 100% |  |  |  |  |  |  |  |  |
| 411 | 1.3.1.30.4 | PTP_CM26_Material_Master - VERP - Packaging Materials | 1d? | 2025-03-13 08:00 A | 2025-03-13 17:00 A |  | 100% |  |  |  |  |  |  |  |  |
| 412 | 1.3.1.30.5 | PTP_CM26_Material_Master - HAWA - Trading Goods | 1d? | 2025-03-13 08:00 A | 2025-03-13 17:00 A |  | 100% |  |  |  |  |  |  |  |  |
| 413 | 1.3.1.30.6 | PTP_CM26_Material_Master - UNBW - Non-Valuated Materials | 1d? | 2025-03-13 08:00 A | 2025-03-13 17:00 A |  | 100% |  |  |  |  |  |  |  |  |
| 414 | 1.3.1.30.7 | PTP_CM26_Material_Master - SERV - Service Materials | 1d? | 2025-03-13 08:00 A | 2025-03-13 17:00 A |  | 100% |  |  |  |  |  |  |  |  |
| 415 | 1.3.1.30.8 | PTP_CM26_Material_Master - KMAT - Configurable Materials | 1d? | 2025-03-13 08:00 A | 2025-03-13 17:00 A |  | 100% |  |  |  |  |  |  |  |  |
| 416 | 1.3.1.31 | **PTP_CM27_Vendor Master - BP02 - Direct / Indirect** | 1.81d | 2025-08-25 08:00 A | 2025-08-26 15:30 | 349 | 17% | 1.51d | 174.31d |  |  |  | 15h | 2.5h |  |
| 417 | 1.3.1.31.1 | Preparing the Load File | 1d | 2025-08-25 08:00 A | 2025-08-25 17:00 |  | 25% | 0.75d | 0d |  | start no earlier than 2025-08-21 08:00 | DCT-DMC | 8h | 2h | SAPDataMigration@ametek.com |
| 418 | 1.3.1.31.2 | Pre-load validation | 2h | 2025-08-25 08:00 A | 2025-08-26 09:30 | 417 | 25% | 1.5h | 174.31d | 0d | start no earlier than 2025-08-18 08:00 | Samuel Houff | 2h | 0.5h | Samuel.Houff@ametek.com |
| 419 | 1.3.1.31.3 | Defect | 2h | 2025-08-26 09:30 | 2025-08-26 11:30 | 418 |  |  | 174.31d | 0d |  | Nevin Varkey | 2h |  | Nevin.Varkey@ametek.com |
| 420 | 1.3.1.31.4 | Load | 1h | 2025-08-26 11:30 | 2025-08-26 13:30 | 419 |  |  | 174.31d | 0d |  | DCT-DMC | 1h |  | SAPDataMigration@ametek.com |
| 421 | 1.3.1.31.5 | Post-Load Validation | 2h | 2025-08-26 13:30 | 2025-08-26 15:30 | 420 |  |  | 174.31d | 0d |  | Samuel Houff | 2h |  | Samuel.Houff@ametek.com |

Notes:
- 402: Kasey / Ric
- 408: NA for ITC1
- 409: NA for ITC1
- 410: NA for ITC1
- 411: NA for ITC1
- 412: NA for ITC1
- 413: NA for ITC1
- 414: NA for ITC1
- 415: NA for ITC1

| ID | WBS | Task | Duration | Start | Finish | Predecessors | Complete | Total slack | Free slack | Constraint | Resources | Work | Resource Email (Text1) (Text1) |
| --- | --- | --- | --- | --- | --- | --- | --- | --- | --- | --- | --- | --- | --- |
| 422 | 1.3.1.32 | **Not needed for ITC1** | 1d? | 2025-03-13 08:00 A | 2025-03-13 17:00 A |  | 100% |  |  |  |  |  |  |
| 423 | 1.3.1.32.1 | PTP_CM27_Vendor Master - Z001 - External Sales Rep | 1d? | 2025-03-13 08:00 A | 2025-03-13 17:00 A |  | 100% |  |  |  |  |  |  |
| 424 | 1.3.1.32.2 | PTP_CM27_Vendor Master - ZP03 - Carrier | 1d? | 2025-03-13 08:00 A | 2025-03-13 17:00 A |  | 100% |  |  |  |  |  |  |
| 425 | 1.3.1.32.3 | PTP_CM27_Vendor Master - ZP03 - Freight Forwarder | 1d? | 2025-03-13 08:00 A | 2025-03-13 17:00 A |  | 100% |  |  |  |  |  |  |
| 426 | 1.3.1.33 | **PTP_CM28_Purchase_Info_Records** | 1.88d | 2025-08-26 15:30 | 2025-08-28 14:30 |  |  | 174.31d |  |  |  |  |  |
| 427 | 1.3.1.33.1 | Preparing the Load File | 1d | 2025-08-26 15:30 | 2025-08-27 15:30 | 421 |  | 174.31d | 0d | start no earlier than 2025-08-25 08:00 |  |  |  |
| 428 | 1.3.1.33.2 | Pre-load validation | 2h | 2025-08-27 15:30 | 2025-08-28 08:30 | 427 |  | 174.31d | 0d | start no earlier than 2025-08-18 08:00 |  |  |  |
| 429 | 1.3.1.33.3 | Defect | 2h | 2025-08-28 08:30 | 2025-08-28 10:30 | 428 |  | 174.31d | 0d |  |  |  |  |
| 430 | 1.3.1.33.4 | Load | 1h | 2025-08-28 10:30 | 2025-08-28 11:30 | 429 |  | 174.31d | 0d |  |  |  |  |
| 431 | 1.3.1.33.5 | Post-Load Validation | 2h | 2025-08-28 11:30 | 2025-08-28 14:30 | 430 |  | 174.31d | 0d |  |  |  |  |
| 432 | 1.3.1.34 | **PTP_CM29_Source_List** | 1.88d | 2025-08-28 14:30 | 2025-09-01 13:30 |  |  | 174.31d |  |  |  |  |  |
| 433 | 1.3.1.34.1 | Preparing the Load File | 1d | 2025-08-28 14:30 | 2025-08-29 14:30 | 431, 443, 451, 457, 463, 469, 475, 481, 487, 493 |  | 174.31d | 0d | start no earlier than 2025-08-25 08:00 |  |  |  |
| 434 | 1.3.1.34.2 | Pre-load validation | 2h | 2025-08-29 14:30 | 2025-08-29 16:30 | 433 |  | 174.31d | 0d | start no earlier than 2025-08-18 08:00 |  |  |  |
| 435 | 1.3.1.34.3 | Defect | 2h | 2025-08-29 16:30 | 2025-09-01 09:30 | 434 |  | 174.31d | 0d |  |  |  |  |
| 436 | 1.3.1.34.4 | Load | 1h | 2025-09-01 09:30 | 2025-09-01 10:30 | 435 |  | 174.31d | 0d |  |  |  |  |
| 437 | 1.3.1.34.5 | Post-Load Validation | 2h | 2025-09-01 10:30 | 2025-09-01 13:30 | 436 |  | 174.44d |  |  |  |  |  |
| 438 | 1.3.1.35 | **PTP_CM30_Pricing Conditions Purchasing** | 118d | 2025-03-13 08:00 | 2025-08-25 17:00 |  |  | 179d |  |  |  | 15h |  |
| 439 | 1.3.1.35.1 | Preparing the Load File | 1d | 2025-08-25 08:00 | 2025-08-25 17:00 |  |  | 179d |  | start no earlier than 2025-08-25 08:00 | DCT-DMC | 8h | SAPDataMigration@ametek.com |
| 440 | 1.3.1.35.2 | Pre-load validation | 2h | 2025-08-18 08:00 | 2025-08-18 10:00 |  |  | 184.75d |  | start no earlier than 2025-08-18 08:00 | Samuel Houff | 2h | Samuel.Houff@ametek.com |
| 441 | 1.3.1.35.3 | Defect | 2h | 2025-03-13 08:00 | 2025-03-13 10:00 |  |  | 296.75d |  |  | DCT-DMC | 2h | SAPDataMigration@ametek.com |
| 442 | 1.3.1.35.4 | Load | 1h | 2025-03-13 08:00 | 2025-03-13 09:00 |  |  | 296.5d | 122.19d |  | DCT-DMC | 1h | SAPDataMigration@ametek.com |
| 443 | 1.3.1.35.5 | Post-Load Validation | 2h | 2025-03-13 08:00 | 2025-03-13 10:00 |  |  | 294.75d | 120.44d |  | Samuel Houff | 2h | Samuel.Houff@ametek.com |
| 444 | 1.3.1.36 | PTP_CT15_Open_PO | 1d? | 2025-03-13 08:00 A | 2025-03-13 17:00 A |  | 100% |  |  |  |  |  |  |
| 445 | 1.3.1.37 | PTP_CT21_Service Entry Sheet | 1d? | 2025-03-13 08:00 A | 2025-03-13 17:00 A |  | 100% |  |  |  |  |  |  |

| ID | WBS | Task | Duration | Start | Finish | Total slack | Free slack | Constraint | Resources | Work | Resource Email (Text1) (Text1) |
| --- | --- | --- | --- | --- | --- | --- | --- | --- | --- | --- | --- |
| 446 | 1.3.1.38 | **PTM _CM31_BOM Conversion** | 118d | 2025-03-13 08:00 | 2025-08-25 17:00 | 179d |  |  |  | 11h |  |
| 447 | 1.3.1.38.1 | Preparing the Load File | 1d | 2025-08-25 08:00 | 2025-08-25 17:00 | 179d |  | start no earlier than 2025-08-25 08:00 | DCT-DMC | 8h | SAPDataMigration@ametek.com |
| 448 | 1.3.1.38.2 | Pre-load validation | 2h | 2025-08-18 08:00 | 2025-08-18 10:00 | 184.75d |  | start no earlier than 2025-08-18 08:00 |  |  |  |
| 449 | 1.3.1.38.3 | Defect | 2h | 2025-03-13 08:00 | 2025-03-13 10:00 | 296.75d |  |  | DCT-DMC | 2h | SAPDataMigration@ametek.com |
| 450 | 1.3.1.38.4 | Load | 1h | 2025-03-13 08:00 | 2025-03-13 09:00 | 296.5d | 122.19d |  | DCT-DMC | 1h | SAPDataMigration@ametek.com |
| 451 | 1.3.1.38.5 | Post-Load Validation | 2h | 2025-03-13 08:00 | 2025-03-13 10:00 | 294.75d | 120.44d |  |  |  |  |
| 452 | 1.3.1.39 | **PTM _CM33_Inspection Characteristics Conversion** | 118d | 2025-03-13 08:00 | 2025-08-25 17:00 | 179d |  |  |  | 11h |  |
| 453 | 1.3.1.39.1 | Preparing the Load File | 1d | 2025-08-25 08:00 | 2025-08-25 17:00 | 179d |  | start no earlier than 2025-08-25 08:00 | DCT-DMC | 8h | SAPDataMigration@ametek.com |
| 454 | 1.3.1.39.2 | Pre-load validation | 2h | 2025-08-18 08:00 | 2025-08-18 10:00 | 184.75d |  | start no earlier than 2025-08-18 08:00 |  |  |  |
| 455 | 1.3.1.39.3 | Defect | 2h | 2025-03-13 08:00 | 2025-03-13 10:00 | 296.75d |  |  | DCT-DMC | 2h | SAPDataMigration@ametek.com |
| 456 | 1.3.1.39.4 | Load | 1h | 2025-03-13 08:00 | 2025-03-13 09:00 | 296.5d | 122.19d |  | DCT-DMC | 1h | SAPDataMigration@ametek.com |
| 457 | 1.3.1.39.5 | Post-Load Validation | 2h | 2025-03-13 08:00 | 2025-03-13 10:00 | 294.75d | 120.44d |  |  |  |  |
| 458 | 1.3.1.40 | **PTM _CM35_Inspection Plans Conversion** | 118d | 2025-03-13 08:00 | 2025-08-25 17:00 | 179d |  |  |  | 11h |  |
| 459 | 1.3.1.40.1 | Preparing the Load File | 1d | 2025-08-25 08:00 | 2025-08-25 17:00 | 179d |  | start no earlier than 2025-08-25 08:00 | DCT-DMC | 8h | SAPDataMigration@ametek.com |
| 460 | 1.3.1.40.2 | Pre-load validation | 2h | 2025-08-18 08:00 | 2025-08-18 10:00 | 184.75d |  | start no earlier than 2025-08-18 08:00 |  |  |  |
| 461 | 1.3.1.40.3 | Defect | 2h | 2025-03-13 08:00 | 2025-03-13 10:00 | 296.75d |  |  | DCT-DMC | 2h | SAPDataMigration@ametek.com |
| 462 | 1.3.1.40.4 | Load | 1h | 2025-03-13 08:00 | 2025-03-13 09:00 | 296.5d | 122.19d |  | DCT-DMC | 1h | SAPDataMigration@ametek.com |
| 463 | 1.3.1.40.5 | Post-Load Validation | 2h | 2025-03-13 08:00 | 2025-03-13 10:00 | 294.75d | 120.44d |  |  |  |  |
| 464 | 1.3.1.41 | **PTM _CM36_Production Version Conversion** | 118d | 2025-03-13 08:00 | 2025-08-25 17:00 | 179d |  |  |  | 11h |  |
| 465 | 1.3.1.41.1 | Preparing the Load File | 1d | 2025-08-25 08:00 | 2025-08-25 17:00 | 179d |  | start no earlier than 2025-08-25 08:00 | DCT-DMC | 8h | SAPDataMigration@ametek.com |
| 466 | 1.3.1.41.2 | Pre-load validation | 2h | 2025-08-18 08:00 | 2025-08-18 10:00 | 184.75d |  | start no earlier than 2025-08-18 08:00 |  |  |  |
| 467 | 1.3.1.41.3 | Defect | 2h | 2025-03-13 08:00 | 2025-03-13 10:00 | 296.75d |  |  | DCT-DMC | 2h | SAPDataMigration@ametek.com |
| 468 | 1.3.1.41.4 | Load | 1h | 2025-03-13 08:00 | 2025-03-13 09:00 | 296.5d | 122.19d |  | DCT-DMC | 1h | SAPDataMigration@ametek.com |
| 469 | 1.3.1.41.5 | Post-Load Validation | 2h | 2025-03-13 08:00 | 2025-03-13 10:00 | 294.75d | 120.44d |  |  |  |  |

| ID | WBS | Task | Duration | Start | Finish | Total slack | Free slack | Constraint | Resources | Work | Resource Email (Text1) (Text1) |
| --- | --- | --- | --- | --- | --- | --- | --- | --- | --- | --- | --- |
| 470 | 1.3.1.42 | **PTM _CM37_Quality Info Records Conversion** | 118d | 2025-03-13 08:00 | 2025-08-25 17:00 | 179d |  |  |  | 11h |  |
| 471 | 1.3.1.42.1 | Preparing the Load File | 1d | 2025-08-25 08:00 | 2025-08-25 17:00 | 179d |  | start no earlier than 2025-08-25 08:00 | DCT-DMC | 8h | SAPDataMigration@ametek.com |
| 472 | 1.3.1.42.2 | Pre-load validation | 2h | 2025-08-18 08:00 | 2025-08-18 10:00 | 184.75d |  | start no earlier than 2025-08-18 08:00 |  |  |  |
| 473 | 1.3.1.42.3 | Defect | 2h | 2025-03-13 08:00 | 2025-03-13 10:00 | 296.75d |  |  | DCT-DMC | 2h | SAPDataMigration@ametek.com |
| 474 | 1.3.1.42.4 | Load | 1h | 2025-03-13 08:00 | 2025-03-13 09:00 | 296.5d | 122.19d |  | DCT-DMC | 1h | SAPDataMigration@ametek.com |
| 475 | 1.3.1.42.5 | Post-Load Validation | 2h | 2025-03-13 08:00 | 2025-03-13 10:00 | 294.75d | 120.44d |  |  |  |  |
| 476 | 1.3.1.43 | **PTM _CM38_Routing Conversion** | 118d | 2025-03-13 08:00 | 2025-08-25 17:00 | 179d |  |  |  | 11h |  |
| 477 | 1.3.1.43.1 | Preparing the Load File | 1d | 2025-08-25 08:00 | 2025-08-25 17:00 | 179d |  | start no earlier than 2025-08-25 08:00 | DCT-DMC | 8h | SAPDataMigration@ametek.com |
| 478 | 1.3.1.43.2 | Pre-load validation | 2h | 2025-08-18 08:00 | 2025-08-18 10:00 | 184.75d |  | start no earlier than 2025-08-18 08:00 |  |  |  |
| 479 | 1.3.1.43.3 | Defect | 2h | 2025-03-13 08:00 | 2025-03-13 10:00 | 296.75d |  |  | DCT-DMC | 2h | SAPDataMigration@ametek.com |
| 480 | 1.3.1.43.4 | Load | 1h | 2025-03-13 08:00 | 2025-03-13 09:00 | 296.5d | 122.19d |  | DCT-DMC | 1h | SAPDataMigration@ametek.com |
| 481 | 1.3.1.43.5 | Post-Load Validation | 2h | 2025-03-13 08:00 | 2025-03-13 10:00 | 294.75d | 120.44d |  |  |  |  |
| 482 | 1.3.1.44 | **PTM _CM39_Warehouse Bin** | 118d | 2025-03-13 08:00 | 2025-08-25 17:00 | 179d |  |  |  | 11h |  |
| 483 | 1.3.1.44.1 | Preparing the Load File | 1d | 2025-08-25 08:00 | 2025-08-25 17:00 | 179d |  | start no earlier than 2025-08-25 08:00 | DCT-DMC | 8h | SAPDataMigration@ametek.com |
| 484 | 1.3.1.44.2 | Pre-load validation | 2h | 2025-08-18 08:00 | 2025-08-18 10:00 | 184.75d |  | start no earlier than 2025-08-18 08:00 |  |  |  |
| 485 | 1.3.1.44.3 | Defect | 2h | 2025-03-13 08:00 | 2025-03-13 10:00 | 296.75d |  |  | DCT-DMC | 2h | SAPDataMigration@ametek.com |
| 486 | 1.3.1.44.4 | Load | 1h | 2025-03-13 08:00 | 2025-03-13 09:00 | 296.5d | 122.19d |  | DCT-DMC | 1h | SAPDataMigration@ametek.com |
| 487 | 1.3.1.44.5 | Post-Load Validation | 2h | 2025-03-13 08:00 | 2025-03-13 10:00 | 294.75d | 120.44d |  |  |  |  |
| 488 | 1.3.1.45 | **PTM _CM40_Work Center Conversion** | 118d | 2025-03-13 08:00 | 2025-08-25 17:00 | 179d |  |  |  | 11h |  |
| 489 | 1.3.1.45.1 | Preparing the Load File | 1d | 2025-08-25 08:00 | 2025-08-25 17:00 | 179d |  | start no earlier than 2025-08-25 08:00 | DCT-DMC | 8h | SAPDataMigration@ametek.com |
| 490 | 1.3.1.45.2 | Pre-load validation | 2h | 2025-08-18 08:00 | 2025-08-18 10:00 | 184.75d |  | start no earlier than 2025-08-18 08:00 |  |  |  |
| 491 | 1.3.1.45.3 | Defect | 2h | 2025-03-13 08:00 | 2025-03-13 10:00 | 296.75d |  |  | DCT-DMC | 2h | SAPDataMigration@ametek.com |
| 492 | 1.3.1.45.4 | Load | 1h | 2025-03-13 08:00 | 2025-03-13 09:00 | 296.5d | 122.19d |  | DCT-DMC | 1h | SAPDataMigration@ametek.com |
| 493 | 1.3.1.45.5 | Post-Load Validation | 2h | 2025-03-13 08:00 | 2025-03-13 10:00 | 294.75d | 120.44d |  |  |  |  |
| 494 | 1.3.1.46 | PTM _CM41_Work Center Hierarchy | 1d? | 2025-03-13 08:00 | 2025-03-13 17:00 | 296d |  |  |  |  |  |
| 495 | 1.3.1.47 | PTM _CM42_Catalog Code Group | 1d? | 2025-03-13 08:00 | 2025-03-13 17:00 | 296d |  |  |  |  |  |
| 496 | 1.3.1.48 | PTM _CM43_Storage_Bin | 1d? | 2025-03-13 08:00 | 2025-03-13 17:00 | 296d |  |  |  |  |  |
| 497 | 1.3.1.49 | PTM _CM46_Work Breakdown Structure BOM | 1d? | 2025-03-13 08:00 | 2025-03-13 17:00 | 296d |  |  |  |  |  |
| 498 | 1.3.1.50 | PTM _CM47_Work Instructions | 1d? | 2025-03-13 08:00 | 2025-03-13 17:00 | 296d |  |  |  |  |  |
| 499 | 1.3.1.51 | PTM _CM48_Equipment_Master_Serial Numbers | 1d? | 2025-03-13 08:00 | 2025-03-13 17:00 | 296d |  |  |  |  |  |
| 500 | 1.3.1.52 | PTM _CM49_Batch_Master | 1d? | 2025-03-13 08:00 | 2025-03-13 17:00 | 296d |  |  |  |  |  |
| 501 | 1.3.1.53 | PTM _CM50_Material Class | 1d? | 2025-03-13 08:00 | 2025-03-13 17:00 | 296d |  |  |  |  |  |
| 502 | 1.3.1.54 | PTM _CM51_EWM Product Master | 1d? | 2025-03-13 08:00 | 2025-03-13 17:00 | 296d |  |  |  |  |  |
| 503 | 1.3.1.55 | PTM _CM52_Super_BOM | 1d? | 2025-03-13 08:00 | 2025-03-13 17:00 | 296d |  |  |  |  |  |
| 504 | 1.3.1.56 | PTM _CM53_Super_Routing | 1d? | 2025-03-13 08:00 | 2025-03-13 17:00 | 296d |  |  |  |  |  |
| 505 | 1.3.1.57 | PTM _CM54_Batch_characteristics | 1d? | 2025-03-13 08:00 | 2025-03-13 17:00 | 296d |  |  |  |  |  |
| 506 | 1.3.1.58 | PTM _CM55_Class assignment to materials | 1d? | 2025-03-13 08:00 | 2025-03-13 17:00 | 296d |  |  |  |  |  |
| 507 | 1.3.1.59 | PTM _CT22_Open Prod Ord Conversion | 1d? | 2025-03-13 08:00 | 2025-03-13 17:00 | 296d |  |  |  |  |  |
| 508 | 1.3.1.60 | PTM _CT23_Open Inspection Lots Conversion | 1d? | 2025-03-13 08:00 | 2025-03-13 17:00 | 296d |  |  |  |  |  |
| 509 | 1.3.1.61 | PTM _CT24_Open Planned Independent Requirements Conversion | 1d? | 2025-03-13 08:00 | 2025-03-13 17:00 | 296d |  |  |  |  |  |
| 510 | 1.3.1.62 | PTM _CT25_Open Planned Ord Conversion | 1d? | 2025-03-13 08:00 | 2025-03-13 17:00 | 296d |  |  |  |  |  |
| 511 | 1.3.1.63 | PTM _CT26_Ewm_Initial_Stock_Inventory | 1d? | 2025-03-13 08:00 | 2025-03-13 17:00 | 296d |  |  |  |  |  |

| ID | WBS | Task | Duration | Start | Finish | Predecessors | Complete | Remaining | Total slack | Free slack | Constraint | Resources | Work | Actual work |
| --- | --- | --- | --- | --- | --- | --- | --- | --- | --- | --- | --- | --- | --- | --- |
| 512 | 1.4 | **Testing Cycles** | 177d? | 2025-06-27 08:00 | 2026-03-02 17:00 |  |  |  | 44d |  |  |  | 8h |  |
| 513 | 1.4.1 | Training Q-Test for Defects | 1d | 2025-06-27 08:00 | 2025-06-27 17:00 |  |  |  | 219d | 0d | start no earlier than 2025-06-27 08:00 | Renee | 8h |  |
| 514 | 1.4.2 | Added Testers / Users to Q-Test | 1d | 2025-06-30 08:00 | 2025-06-30 17:00 | 513 |  |  | 219d |  |  |  |  |  |
| 515 | 1.4.3 | ITC-1 | 15d? | 2025-09-08 08:00 | 2025-09-26 17:00 |  |  |  | 155d |  | finish no earlier than 2025-09-26 17:00 |  |  |  |
| 516 | 1.4.4 | ITC-2 | 11d? | 2025-10-27 08:00 | 2025-11-10 17:00 |  |  |  | 124d |  | finish no earlier than 2025-11-10 17:00 |  |  |  |
| 517 | 1.4.5 | ITC-3 | 11d? | 2026-01-05 08:00 | 2026-01-19 17:00 |  |  |  | 74d |  | finish no earlier than 2026-01-19 17:00 |  |  |  |
| 518 | 1.4.6 | UAT (DR) | 11d? | 2026-02-16 08:00 | 2026-03-02 17:00 |  |  |  | 44d |  | finish no earlier than 2026-03-02 17:00 |  |  |  |
| 519 | 1.5 | **Training Readiness** | 240d? | 2025-06-02 08:00 A | 2026-05-01 17:00 |  |  | 238.83d? | 0d |  |  |  | 8208h | 40h |
| 520 | 1.5.1 | **Content Development** | 200d? | 2025-06-02 08:00 A | 2026-03-06 17:00 |  | 1% | 198.41d? | 40d |  |  |  | 5040h | 40h |
| 521 | 1.5.1.1 | Develop Curriculum | 70d? | 2025-06-02 08:00 | 2025-09-05 17:00 |  |  |  | 170d |  | finish no earlier than 2025-09-05 17:00 | Training | 560h |  |
| 522 | 1.5.1.2 | On-board QA | 5d? | 2025-06-02 08:00 A | 2025-06-06 17:00 A |  | 100% |  |  |  | finish no earlier than 2025-06-06 17:00 | Training | 40h | 40h |
| 523 | 1.5.1.3 | Finalize Training Processes | 30d? | 2025-06-09 08:00 | 2025-07-18 17:00 |  |  |  | 205d |  | finish no earlier than 2025-07-18 17:00 | Training | 240h |  |
| 524 | 1.5.1.4 | Finalize Templates | 20d? | 2025-06-23 08:00 | 2025-07-18 17:00 |  |  |  | 205d |  | finish no earlier than 2025-07-18 17:00 | Training | 160h |  |
| 525 | 1.5.1.5 | On-board ID's | 30d? | 2025-07-07 08:00 | 2025-08-15 17:00 |  |  |  | 185d |  | finish no earlier than 2025-08-15 17:00 | Training | 240h |  |
| 526 | 1.5.1.6 | Develop Course Outlines | 30d? | 2025-07-07 08:00 | 2025-08-15 17:00 |  |  |  | 185d |  | finish no earlier than 2025-08-15 17:00 | Training | 240h |  |
| 527 | 1.5.1.7 | Develop Course ppts | 130d? | 2025-08-04 08:00 | 2026-01-30 17:00 |  |  |  | 65d |  | finish no earlier than 2026-01-30 17:00 | Training | 1040h |  |
| 528 | 1.5.1.8 | Develop Work Instructions | 100d? | 2025-09-29 08:00 | 2026-02-13 17:00 |  |  |  | 55d |  | finish no earlier than 2026-02-13 17:00 | Training | 800h |  |
| 529 | 1.5.1.9 | Develop Instructor Guides | 30d? | 2026-01-05 08:00 | 2026-02-13 17:00 |  |  |  | 55d |  | finish no earlier than 2026-02-13 17:00 | Training | 240h |  |
| 530 | 1.5.1.10 | Develop Training Data Sheets | 100d? | 2025-09-29 08:00 | 2026-02-13 17:00 |  |  |  | 55d |  | finish no earlier than 2026-02-13 17:00 | Training | 800h |  |
| 531 | 1.5.1.11 | Develop Train the Trainer | 15d? | 2025-12-08 08:00 | 2025-12-26 17:00 |  |  |  | 90d |  | finish no earlier than 2025-12-26 17:00 | Training | 120h |  |
| 532 | 1.5.1.12 | Translate Training Materials | 20d? | 2026-01-19 08:00 | 2026-02-13 17:00 |  |  |  | 55d |  | finish no earlier than 2026-02-13 17:00 | Training | 160h |  |
| 533 | 1.5.1.13 | Publish Training Materials to SP/LMS | 50d? | 2025-12-29 08:00 | 2026-03-06 17:00 |  |  |  | 40d |  | finish no earlier than 2026-03-06 17:00 | Training | 400h |  |
| 534 | 1.5.2 | **Talent LMS Application Setup** | 195d? | 2025-08-04 08:00 | 2026-05-01 17:00 |  |  |  | 0d |  |  |  | 2680h |  |
| 535 | 1.5.2.1 | Configure LMS for SAP Project Needs | 20d? | 2025-08-04 08:00 | 2025-08-29 17:00 |  |  |  | 175d |  | finish no earlier than 2025-08-29 17:00 | Training | 160h |  |
| 536 | 1.5.2.2 | Create Groups (curriculum) in LMS | 40d? | 2025-09-01 08:00 | 2025-10-24 17:00 |  |  |  | 135d |  | finish no earlier than 2025-10-24 17:00 | Training | 320h |  |
| 537 | 1.5.2.3 | Create Courses in LMS | 75d? | 2025-10-20 08:00 | 2026-01-30 17:00 |  |  |  | 65d |  | finish no earlier than 2026-01-30 17:00 | Training | 600h |  |
| 538 | 1.5.2.4 | Test content in LMS | 75d? | 2025-10-20 08:00 | 2026-01-30 17:00 |  |  |  | 65d |  | finish no earlier than 2026-01-30 17:00 | Training | 600h |  |
| 539 | 1.5.2.5 | Create End User Training Schedule | 20d? | 2026-01-05 08:00 | 2026-01-30 17:00 |  |  |  | 65d |  | finish no earlier than 2026-01-30 17:00 | Training | 160h |  |
| 540 | 1.5.2.6 | Load class schedule to the LMS | 10d? | 2026-01-26 08:00 | 2026-02-06 17:00 |  |  |  | 60d |  | finish no earlier than 2026-02-06 17:00 | Training | 80h |  |
| 541 | 1.5.2.7 | Assign Learners to Groups (Excel) | 5d? | 2026-02-02 08:00 | 2026-02-06 17:00 |  |  |  | 60d |  | finish no earlier than 2026-02-06 17:00 | Training | 40h |  |
| 542 | 1.5.2.8 | Upload Learners to LMS and assign them to training classes | 5d? | 2026-02-09 08:00 | 2026-02-13 17:00 |  |  |  | 55d |  | finish no earlier than 2026-02-13 17:00 | Training | 40h |  |
| 543 | 1.5.2.9 | Communicate to learners about upcoming training | 85d? | 2026-01-05 08:00 | 2026-05-01 17:00 |  |  |  | 0d |  | finish no earlier than 2026-05-01 17:00 | Training | 680h |  |

| ID | WBS | Task | Duration | Start | Finish | Total slack | Constraint | Resources | Work |
| --- | --- | --- | --- | --- | --- | --- | --- | --- | --- |
| 544 | 1.5.3 | **Train the Trainer** | 26d | 2026-01-26 08:00 | 2026-03-02 17:00 | 44d |  |  | 208h |
| 545 | 1.5.3.1 | Deliver Train the Trainer | 26d | 2026-01-26 08:00 | 2026-03-02 17:00 | 44d | start no earlier than 2026-01-26 08:00 | Training | 208h |
| 546 | 1.5.4 | **End User Training Exeuction** | 35d | 2026-03-09 08:00 | 2026-04-24 17:00 | 5d |  |  | 280h |
| 547 | 1.5.4.1 | Deliver End User Training | 35d | 2026-03-09 08:00 | 2026-04-24 17:00 | 5d | start no earlier than 2026-03-09 08:00 | Training | 280h |
