ID,Unique_ID,Active,Task Mode,Task_Name,Duration,Type,Outline_Level,Baseline_Duration,Predecessors,Start_Date,Finish_Date,Early_Start,Early_Finish,Late_Start,Late_Finish,Free_Slack,Total_Slack,Leveling_Delay,Percent_Complete,Actual_Start,Actual_Finish,Baseline_Start,Baseline_Finish,Constraint_Type,Constraint_Date,Stop,Resume,Created,Scheduled_Work,Baseline_Work,Actual_Work,Cost,Fixed_Cost,Baseline_Cost,Actual_Cost,Remaining_Cost,WBS,Priority,Milestone,Summary,Rollup,Text1,Text2,Text3,Text4,Text5,Text6,Text7,Text8,Text9,Text10,Cost1,Cost2,Cost3,Duration1,Duration2,Duration3,Flag1,Flag2,Flag3,Flag4,Flag5,Flag6,Flag7,Flag8,Flag9,Flag10,Marked,Number1,Number2,Number3,Number4,Number5,Subproject_File
1,1,Yes,Auto Scheduled,"AMETEK Release-1, 3-Deployment Plan",451d?,Fixed Duration,1,435d,,"February 17, 2025 8:00","November 9, 2026 5:00",2/17/25 8:00,11/9/26 5:00,2/17/25 8:00,11/9/26 5:00,0d?,0d?,0ed,0.5,2/17/25 8:00,NA,"February 17, 2025 8:00","October 16, 2026 5:00",As Soon As Possible,NA,3/13/25 9:00,3/13/25 9:00,3/13/25 11:03,"9,032.28h","5,387.75h","2,726h",0,0,0,0,0,1,500,No,Yes,Yes,,,GreenCircle,,,,,,,,0,0,0,0d,0d,0d,No,No,No,No,No,No,No,No,No,No,No,0,0,0,0,0,
2,2,Yes,Auto Scheduled,System Readiness,439d?,Fixed Duration,2,368.31d,,"February 17, 2025 8:00","October 22, 2026 5:00",2/17/25 8:00,10/22/26 5:00,2/17/25 8:00,11/9/26 5:00,12d?,12d?,0ed,0.81999999999999995,2/17/25 8:00,NA,"February 17, 2025 8:00","July 16, 2026 10:30",As Soon As Possible,NA,3/13/25 9:00,3/13/25 9:00,3/13/25 11:04,828h,506.5h,227.25h,0,0,0,0,0,1.1,500,No,Yes,Yes,,,GreenCircle,,,,,,,,0,0,0,0d,0d,0d,No,No,No,No,No,No,No,No,No,No,No,0,0,0,0,0,
3,5,Yes,Auto Scheduled,Environment Schedule,404d?,Fixed Duration,3,350.31d,,"March 13, 2025 8:00","September 29, 2026 5:00",3/13/25 8:00,9/29/26 5:00,3/13/25 8:00,11/9/26 5:00,29d?,29d?,0ed,0.23999999999999999,3/13/25 8:00,NA,"March 13, 2025 8:00","July 16, 2026 10:30",As Soon As Possible,NA,3/13/25 9:00,3/13/25 9:00,3/13/25 11:04,820h,498.5h,219.25h,0,0,0,0,0,1.1.1,500,No,Yes,Yes,,,GreenCircle,,,,,,,,0,0,0,0d,0d,0d,No,No,No,No,No,No,No,No,No,No,No,0,0,0,0,0,
4,85,Yes,Auto Scheduled,DS4-100 Config / Development Client,0.75d,Fixed Duration,4,0.75d,,"May 7, 2025 10:00","May 7, 2025 5:00",5/7/25 10:00,5/7/25 5:00,5/7/25 10:00,5/7/25 5:00,0d,0d,0ed,1,5/7/25 10:00,5/7/25 5:00,"May 7, 2025 10:00","May 7, 2025 5:00",As Soon As Possible,NA,5/7/25 5:00,5/7/25 5:00,5/7/25 1:21,0h,0h,0h,0,0,0,0,0,1.1.1.1,500,No,Yes,Yes,,,GreenSquare,,,,,,,,0,0,0,0d,0d,0d,No,No,No,No,No,No,No,No,No,No,No,0,0,0,0,0,
5,100,Yes,Auto Scheduled,Copy DS4-100 to DS4-110 Dev,6h,Fixed Units,5,0.75d,,"May 7, 2025 10:00","May 7, 2025 5:00",5/7/25 10:00,5/7/25 5:00,5/7/25 10:00,5/7/25 5:00,0h,0h,0ed,1,5/7/25 10:00,5/7/25 5:00,"May 7, 2025 10:00","May 7, 2025 5:00",Finish No Earlier Than,5/7/25 5:00,5/7/25 5:00,5/7/25 5:00,5/7/25 1:23,0h,0h,0h,0,0,0,0,0,1.1.1.1.1,500,No,No,No,,,GreenSquare,,,,,,,,0,0,0,0d,0d,0d,No,No,No,No,No,No,No,No,No,No,No,0,0,0,0,0,
6,86,Yes,Auto Scheduled,DS4-110 Unit Test Client,0.5d,Fixed Duration,4,0.5d,,"May 8, 2025 8:00","May 8, 2025 12:00",5/8/25 8:00,5/8/25 12:00,5/8/25 8:00,5/8/25 12:00,0d,0d,0ed,1,5/8/25 8:00,5/8/25 12:00,"May 8, 2025 8:00","May 8, 2025 12:00",As Soon As Possible,NA,5/8/25 10:00,5/8/25 10:00,5/7/25 1:21,0h,0h,0h,0,0,0,0,0,1.1.1.2,500,No,Yes,Yes,,,GreenSquare,,,,,,,,0,0,0,0d,0d,0d,No,No,No,No,No,No,No,No,No,No,No,0,0,0,0,0,
7,106,Yes,Auto Scheduled,List of functional users,2h,Fixed Units,5,0.25d,5,"May 8, 2025 8:00","May 8, 2025 10:00",5/8/25 8:00,5/8/25 10:00,5/8/25 8:00,5/8/25 10:00,0h,0h,0ed,1,5/8/25 8:00,5/8/25 10:00,"May 8, 2025 8:00","May 8, 2025 10:00",As Soon As Possible,NA,5/8/25 10:00,5/8/25 10:00,5/7/25 1:27,0h,0h,0h,0,0,0,0,0,1.1.1.2.1,500,No,No,No,,,GreenSquare,,,,,,,,0,0,0,0d,0d,0d,No,No,No,No,No,No,No,No,No,No,No,0,0,0,0,0,
8,101,Yes,Auto Scheduled,Security Role for Functional Team,2h,Fixed Units,5,0.25d,7,"May 8, 2025 10:00","May 8, 2025 12:00",5/8/25 10:00,5/8/25 12:00,5/8/25 10:00,5/8/25 12:00,0h,0h,0ed,1,5/8/25 10:00,5/8/25 12:00,"May 8, 2025 10:00","May 8, 2025 12:00",As Soon As Possible,NA,5/8/25 12:00,5/8/25 12:00,5/7/25 1:24,0h,0h,0h,0,0,0,0,0,1.1.1.2.2,500,No,No,No,,,GreenSquare,,,,,,,,0,0,0,0d,0d,0d,No,No,No,No,No,No,No,No,No,No,No,0,0,0,0,0,
9,87,Yes,Auto Scheduled,DS4-120 Data Dev Client,0.5d,Fixed Duration,4,0.5d,,"May 8, 2025 8:00","May 8, 2025 12:00",5/8/25 8:00,5/8/25 12:00,5/8/25 8:00,5/8/25 12:00,0d,0d,0ed,1,5/8/25 8:00,5/8/25 12:00,"May 8, 2025 8:00","May 8, 2025 12:00",As Soon As Possible,NA,5/8/25 10:00,5/8/25 10:00,5/7/25 1:21,0h,0h,0h,0,0,0,0,0,1.1.1.3,500,No,Yes,Yes,,,GreenSquare,,,,,,,,0,0,0,0d,0d,0d,No,No,No,No,No,No,No,No,No,No,No,0,0,0,0,0,
10,107,Yes,Auto Scheduled,List of functional users,2h,Fixed Units,5,0.25d,5,"May 8, 2025 8:00","May 8, 2025 10:00",5/8/25 8:00,5/8/25 10:00,5/8/25 8:00,5/8/25 10:00,0h,0h,0ed,1,5/8/25 8:00,5/8/25 10:00,"May 8, 2025 8:00","May 8, 2025 10:00",As Soon As Possible,NA,5/8/25 10:00,5/8/25 10:00,5/7/25 1:28,0h,0h,0h,0,0,0,0,0,1.1.1.3.1,500,No,No,No,,,GreenSquare,,,,,,,,0,0,0,0d,0d,0d,No,No,No,No,No,No,No,No,No,No,No,0,0,0,0,0,
11,104,Yes,Auto Scheduled,Security Role for Data Team,2h,Fixed Units,5,0.25d,10,"May 8, 2025 10:00","May 8, 2025 12:00",5/8/25 10:00,5/8/25 12:00,5/8/25 10:00,5/8/25 12:00,0h,0h,0ed,1,5/8/25 10:00,5/8/25 12:00,"May 8, 2025 10:00","May 8, 2025 12:00",As Soon As Possible,NA,5/8/25 12:00,5/8/25 12:00,5/7/25 1:24,0h,0h,0h,0,0,0,0,0,1.1.1.3.2,500,No,No,No,,,GreenSquare,,,,,,,,0,0,0,0d,0d,0d,No,No,No,No,No,No,No,No,No,No,No,0,0,0,0,0,
12,88,Yes,Auto Scheduled,QS5 ITC-1 Refresh,277.5d?,Fixed Duration,4,277.5d,,"March 13, 2025 8:00","April 6, 2026 12:00",3/13/25 8:00,4/6/26 12:00,3/13/25 8:00,4/6/26 12:00,0d?,0d?,0ed,1,3/13/25 8:00,4/6/26 12:00,"March 13, 2025 8:00","April 6, 2026 12:00",As Soon As Possible,NA,3/13/25 9:00,3/13/25 9:00,5/7/25 1:21,137h,137h,137h,0,0,0,0,0,1.1.1.4,500,No,Yes,Yes,,,GreenSquare,,,,,,,,0,0,0,0d,0d,0d,No,No,No,No,No,No,No,No,No,No,No,0,0,0,0,0,
13,830,Yes,Auto Scheduled,Change Request to NS2,1h,Fixed Units,5,0.13d,,"March 13, 2025 8:00","March 13, 2025 9:00",3/13/25 8:00,3/13/25 9:00,3/13/25 8:00,3/13/25 9:00,0h,0h,0ed,1,3/13/25 8:00,3/13/25 9:00,"March 13, 2025 8:00","March 13, 2025 9:00",As Soon As Possible,NA,3/13/25 9:00,3/13/25 9:00,3/30/26 2:11,1h,1h,1h,0,0,0,0,0,1.1.1.4.1,500,No,No,No,,,GreenSquare,,,,,,,,0,0,0,0d,0d,0d,No,No,No,No,No,No,No,No,No,No,No,0,0,0,0,0,
14,669,Yes,Auto Scheduled,Dev Environment Release from SAP,0d,Fixed Units,5,0d,,"January 8, 2026 8:00","January 8, 2026 8:00",1/8/26 8:00,1/8/26 8:00,1/8/26 8:00,1/8/26 8:00,0d,0d,0ed,1,1/8/26 8:00,1/8/26 8:00,"January 8, 2026 8:00","January 8, 2026 8:00",Start No Earlier Than,1/8/26 8:00,1/8/26 8:00,1/8/26 8:00,12/18/25 5:34,0h,0h,0h,0,0,0,0,0,1.1.1.4.2,500,Yes,No,No,,,GreenSquare,,,,,,,,0,0,0,0d,0d,0d,No,No,No,No,No,No,No,No,No,No,No,0,0,0,0,0,
15,670,Yes,Auto Scheduled,Release Setup ID's and Access,1h,Fixed Units,5,0.13d,14,"January 8, 2026 8:00","January 8, 2026 9:00",1/8/26 8:00,1/8/26 9:00,1/8/26 8:00,1/8/26 9:00,0h,0h,0ed,1,1/8/26 8:00,1/8/26 9:00,"January 8, 2026 8:00","January 8, 2026 9:00",As Soon As Possible,NA,1/8/26 9:00,1/8/26 9:00,1/8/26 11:38,1h,1h,1h,0,0,0,0,0,1.1.1.4.3,500,No,No,No,,,GreenSquare,,,,,,,,0,0,0,0d,0d,0d,No,No,No,No,No,No,No,No,No,No,No,0,0,0,0,0,
16,654,Yes,Auto Scheduled,Client Config / Validation,1d,Fixed Units,5,1d,15,"February 2, 2026 8:00","February 2, 2026 5:00",2/2/26 8:00,2/2/26 5:00,2/2/26 8:00,2/2/26 5:00,0d,0d,0ed,1,2/2/26 8:00,2/2/26 5:00,"February 2, 2026 8:00","February 2, 2026 5:00",As Soon As Possible,NA,2/2/26 5:00,2/2/26 5:00,12/16/25 8:19,8h,8h,8h,0,0,0,0,0,1.1.1.4.4,500,No,No,No,,,GreenSquare,,,,,,,,0,0,0,0d,0d,0d,No,No,No,No,No,No,No,No,No,No,No,0,0,0,0,0,
17,640,Yes,Auto Scheduled,Technical Transports / BP Setup,1d,Fixed Units,5,1d,,"February 4, 2026 8:00","February 4, 2026 5:00",2/4/26 8:00,2/4/26 5:00,2/4/26 8:00,2/4/26 5:00,0d,0d,0ed,1,2/4/26 8:00,2/4/26 5:00,"February 4, 2026 8:00","February 4, 2026 5:00",As Soon As Possible,NA,2/4/26 5:00,2/4/26 5:00,12/16/25 8:14,8h,8h,8h,0,0,0,0,0,1.1.1.4.5,500,No,No,No,,,GreenSquare,,,,,,,,0,0,0,0d,0d,0d,No,No,No,No,No,No,No,No,No,No,No,0,0,0,0,0,
18,655,Yes,Auto Scheduled,Best Practice / Country Validation,1d?,Fixed Units,5,1d,16,"February 3, 2026 8:00","February 3, 2026 5:00",2/3/26 8:00,2/3/26 5:00,2/3/26 8:00,2/3/26 5:00,0d?,0d?,0ed,1,2/3/26 8:00,2/3/26 5:00,"February 3, 2026 8:00","February 3, 2026 5:00",As Soon As Possible,NA,2/3/26 5:00,2/3/26 5:00,12/16/25 8:19,8h,8h,8h,0,0,0,0,0,1.1.1.4.6,500,No,No,No,,,GreenSquare,,,,,,,,0,0,0,0d,0d,0d,No,No,No,No,No,No,No,No,No,No,No,0,0,0,0,0,
19,641,Yes,Auto Scheduled,Connect Systems and Validate,1d,Fixed Units,5,1d,17,"February 5, 2026 8:00","February 5, 2026 5:00",2/5/26 8:00,2/5/26 5:00,2/5/26 8:00,2/5/26 5:00,0d,0d,0ed,1,2/5/26 8:00,2/5/26 5:00,"February 5, 2026 8:00","February 5, 2026 5:00",As Soon As Possible,NA,2/5/26 5:00,2/5/26 5:00,12/16/25 8:14,8h,8h,8h,0,0,0,0,0,1.1.1.4.7,500,No,No,No,,,GreenSquare,,,,,,,,0,0,0,0d,0d,0d,No,No,No,No,No,No,No,No,No,No,No,0,0,0,0,0,
20,674,Yes,Auto Scheduled,Validate Syniti Connections to QS5,1d,Fixed Units,5,1d,17,"February 5, 2026 8:00","February 5, 2026 5:00",2/5/26 8:00,2/5/26 5:00,2/5/26 8:00,2/5/26 5:00,0d,0d,0ed,1,2/5/26 8:00,2/5/26 5:00,"February 5, 2026 8:00","February 5, 2026 5:00",As Soon As Possible,NA,2/5/26 5:00,2/5/26 5:00,1/8/26 11:52,8h,8h,8h,0,0,0,0,0,1.1.1.4.8,500,No,No,No,,,GreenSquare,,,,,,,,0,0,0,0d,0d,0d,No,No,No,No,No,No,No,No,No,No,No,0,0,0,0,0,
21,642,Yes,Auto Scheduled,Security Transports,4h,Fixed Units,5,0.5d,17,"February 5, 2026 8:00","February 5, 2026 12:00",2/5/26 8:00,2/5/26 12:00,2/5/26 8:00,2/5/26 12:00,0h,0h,0ed,1,2/5/26 8:00,2/5/26 12:00,"February 5, 2026 8:00","February 5, 2026 12:00",As Soon As Possible,NA,2/5/26 12:00,2/5/26 12:00,12/16/25 8:14,4h,4h,4h,0,0,0,0,0,1.1.1.4.9,500,No,No,No,,,GreenSquare,,,,,,,,0,0,0,0d,0d,0d,No,No,No,No,No,No,No,No,No,No,No,0,0,0,0,0,
22,671,Yes,Auto Scheduled,Security Manual Tasks,1d,Fixed Units,5,1d,21,"February 5, 2026 1:00","February 6, 2026 12:00",2/5/26 1:00,2/6/26 12:00,2/5/26 1:00,2/6/26 12:00,0d,0d,0ed,1,2/5/26 1:00,2/6/26 12:00,"February 5, 2026 1:00","February 6, 2026 12:00",As Soon As Possible,NA,2/6/26 12:00,2/6/26 12:00,1/8/26 11:43,8h,8h,8h,0,0,0,0,0,1.1.1.4.10,500,No,No,No,,,GreenSquare,,,,,,,,0,0,0,0d,0d,0d,No,No,No,No,No,No,No,No,No,No,No,0,0,0,0,0,
23,643,Yes,Auto Scheduled,Manual Technical Tasks,1d,Fixed Units,5,1d,21,"February 5, 2026 1:00","February 6, 2026 12:00",2/5/26 1:00,2/6/26 12:00,2/5/26 1:00,2/6/26 12:00,0d,0d,0ed,1,2/5/26 1:00,2/6/26 12:00,"February 5, 2026 1:00","February 6, 2026 12:00",As Soon As Possible,NA,2/6/26 12:00,2/6/26 12:00,12/16/25 8:14,8h,8h,8h,0,0,0,0,0,1.1.1.4.11,500,No,No,No,,,GreenSquare,,,,,,,,0,0,0,0d,0d,0d,No,No,No,No,No,No,No,No,No,No,No,0,0,0,0,0,
24,644,Yes,Auto Scheduled,Validate Fiori,4h,Fixed Units,5,0.5d,23,"February 6, 2026 1:00","February 6, 2026 5:00",2/6/26 1:00,2/6/26 5:00,2/6/26 1:00,2/6/26 5:00,0h,0h,0ed,1,2/6/26 1:00,2/6/26 5:00,"February 6, 2026 1:00","February 6, 2026 5:00",As Soon As Possible,NA,2/6/26 5:00,2/6/26 5:00,12/16/25 8:14,4h,4h,4h,0,0,0,0,0,1.1.1.4.12,500,No,No,No,,,GreenSquare,,,,,,,,0,0,0,0d,0d,0d,No,No,No,No,No,No,No,No,No,No,No,0,0,0,0,0,
25,672,Yes,Auto Scheduled,Fiori App Activation,6h,Fixed Units,5,0.75d,24,"February 9, 2026 8:00","February 9, 2026 3:00",2/9/26 8:00,2/9/26 3:00,2/9/26 8:00,2/9/26 3:00,0h,0h,0ed,1,2/9/26 8:00,2/9/26 3:00,"February 9, 2026 8:00","February 9, 2026 3:00",As Soon As Possible,NA,2/9/26 3:00,2/9/26 3:00,1/8/26 11:45,6h,6h,6h,0,0,0,0,0,1.1.1.4.13,500,No,No,No,,,GreenSquare,,,,,,,,0,0,0,0d,0d,0d,No,No,No,No,No,No,No,No,No,No,No,0,0,0,0,0,
26,645,Yes,Auto Scheduled,Download Transport List,1h,Fixed Units,5,0.13d,24,"February 9, 2026 8:00","February 9, 2026 9:00",2/9/26 8:00,2/9/26 9:00,2/9/26 8:00,2/9/26 9:00,0h,0h,0ed,1,2/9/26 8:00,2/9/26 9:00,"February 9, 2026 8:00","February 9, 2026 9:00",As Soon As Possible,NA,2/9/26 9:00,2/9/26 9:00,12/16/25 8:14,1h,1h,1h,0,0,0,0,0,1.1.1.4.14,500,No,No,No,,,GreenSquare,,,,,,,,0,0,0,0d,0d,0d,No,No,No,No,No,No,No,No,No,No,No,0,0,0,0,0,
27,653,Yes,Auto Scheduled,Business Functions Validation,1d,Fixed Units,5,1d,24,"February 9, 2026 8:00","February 9, 2026 5:00",2/9/26 8:00,2/9/26 5:00,2/9/26 8:00,2/9/26 5:00,0d,0d,0ed,1,2/9/26 8:00,2/9/26 5:00,"February 9, 2026 8:00","February 9, 2026 5:00",Start No Earlier Than,1/5/26 8:00,2/9/26 5:00,2/9/26 5:00,12/16/25 8:18,8h,8h,8h,0,0,0,0,0,1.1.1.4.15,500,No,No,No,,,GreenSquare,,,,,,,,0,0,0,0d,0d,0d,No,No,No,No,No,No,No,No,No,No,No,0,0,0,0,0,
28,646,Yes,Auto Scheduled,Functional Leads Validation of Transport List,1h,Fixed Units,5,0.13d,26,"February 9, 2026 9:00","February 9, 2026 10:00",2/9/26 9:00,2/9/26 10:00,2/9/26 9:00,2/9/26 10:00,0h,0h,0ed,1,2/9/26 9:00,2/9/26 10:00,"February 9, 2026 9:00","February 9, 2026 10:00",As Soon As Possible,NA,2/9/26 10:00,2/9/26 10:00,12/16/25 8:14,1h,1h,1h,0,0,0,0,0,1.1.1.4.16,500,No,No,No,,,GreenSquare,,,,,,,,0,0,0,0d,0d,0d,No,No,No,No,No,No,No,No,No,No,No,0,0,0,0,0,
29,673,Yes,Auto Scheduled,Release Security roles to Functional Team,1h,Fixed Units,5,0.13d,28,"February 9, 2026 10:00","February 9, 2026 11:00",2/9/26 10:00,2/9/26 11:00,2/9/26 10:00,2/9/26 11:00,0h,0h,0ed,1,2/9/26 10:00,2/9/26 11:00,"February 9, 2026 10:00","February 9, 2026 11:00",As Soon As Possible,NA,2/9/26 11:00,2/9/26 11:00,1/8/26 11:48,1h,1h,1h,0,0,0,0,0,1.1.1.4.17,500,No,No,No,,,GreenSquare,,,,,,,,0,0,0,0d,0d,0d,No,No,No,No,No,No,No,No,No,No,No,0,0,0,0,0,
30,647,Yes,Auto Scheduled,Release Transports to Client,32.75d,Fixed Duration,5,32.75d,,"February 9, 2026 10:00","March 25, 2026 5:00",2/9/26 10:00,3/25/26 5:00,2/9/26 10:00,3/25/26 5:00,0d,0d,0ed,1,2/9/26 10:00,3/25/26 5:00,"February 9, 2026 10:00","March 25, 2026 5:00",As Soon As Possible,NA,2/9/26 12:00,2/9/26 12:00,12/16/25 8:14,42h,42h,42h,0,0,0,0,0,1.1.1.4.18,500,No,Yes,Yes,,,GreenSquare,,,,,,,,0,0,0,0d,0d,0d,No,No,No,No,No,No,No,No,No,No,No,0,0,0,0,0,
31,657,Yes,Auto Scheduled,Import Group 1 - Ent Structure,2h,Fixed Units,6,0.25d,28,"February 9, 2026 10:00","February 9, 2026 12:00",2/9/26 10:00,2/9/26 12:00,2/9/26 10:00,2/9/26 12:00,0h,0h,0ed,1,2/9/26 10:00,2/9/26 12:00,"February 9, 2026 10:00","February 9, 2026 12:00",As Soon As Possible,NA,2/9/26 12:00,2/9/26 12:00,12/16/25 8:26,2h,2h,2h,0,0,0,0,0,1.1.1.4.18.1,500,No,No,No,,,GreenSquare,,,,,,,,0,0,0,0d,0d,0d,No,No,No,No,No,No,No,No,No,No,No,0,0,0,0,0,
32,658,Yes,Auto Scheduled,Manual activities group 1,20h,Fixed Units,6,2.5d,31,"March 19, 2026 8:00","March 23, 2026 12:00",3/19/26 8:00,3/23/26 12:00,3/19/26 8:00,3/23/26 12:00,0h,0h,0ed,1,3/19/26 8:00,3/23/26 12:00,"March 19, 2026 8:00","March 23, 2026 12:00",Finish No Earlier Than,2/11/26 5:00,3/23/26 12:00,3/23/26 12:00,12/16/25 8:26,20h,20h,20h,0,0,0,0,0,1.1.1.4.18.2,500,No,No,No,,,GreenSquare,,,,,,,,0,0,0,0d,0d,0d,No,No,No,No,No,No,No,No,No,No,No,0,0,0,0,0,
33,659,Yes,Auto Scheduled,Import Group 2 - Core Transports,2h,Fixed Units,6,0.25d,32,"March 23, 2026 1:00","March 23, 2026 3:00",3/23/26 1:00,3/23/26 3:00,3/23/26 1:00,3/23/26 3:00,0h,0h,0ed,1,3/23/26 1:00,3/23/26 3:00,"March 23, 2026 1:00","March 23, 2026 3:00",As Soon As Possible,NA,3/23/26 3:00,3/23/26 3:00,12/16/25 8:26,2h,2h,2h,0,0,0,0,0,1.1.1.4.18.3,500,No,No,No,,,GreenSquare,,,,,,,,0,0,0,0d,0d,0d,No,No,No,No,No,No,No,No,No,No,No,0,0,0,0,0,
34,660,Yes,Auto Scheduled,Manual activities group 2,1d,Fixed Units,6,1d,33,"March 23, 2026 3:00","March 24, 2026 3:00",3/23/26 3:00,3/24/26 3:00,3/23/26 3:00,3/24/26 3:00,0d,0d,0ed,1,3/23/26 3:00,3/24/26 3:00,"March 23, 2026 3:00","March 24, 2026 3:00",As Soon As Possible,NA,3/24/26 3:00,3/24/26 3:00,12/16/25 8:26,8h,8h,8h,0,0,0,0,0,1.1.1.4.18.4,500,No,No,No,,,GreenSquare,,,,,,,,0,0,0,0d,0d,0d,No,No,No,No,No,No,No,No,No,No,No,0,0,0,0,0,
35,661,Yes,Auto Scheduled,Import Group 3 - prior to transactions,2h,Fixed Units,6,0.25d,34,"March 24, 2026 3:00","March 24, 2026 5:00",3/24/26 3:00,3/24/26 5:00,3/24/26 3:00,3/24/26 5:00,0h,0h,0ed,1,3/24/26 3:00,3/24/26 5:00,"March 24, 2026 3:00","March 24, 2026 5:00",As Soon As Possible,NA,3/24/26 5:00,3/24/26 5:00,12/16/25 8:26,2h,2h,2h,0,0,0,0,0,1.1.1.4.18.5,500,No,No,No,,,GreenSquare,,,,,,,,0,0,0,0d,0d,0d,No,No,No,No,No,No,No,No,No,No,No,0,0,0,0,0,
36,831,Yes,Auto Scheduled,Manual Activities Group 3,1d,Fixed Units,6,1d,35,"March 25, 2026 8:00","March 25, 2026 5:00",3/25/26 8:00,3/25/26 5:00,3/25/26 8:00,3/25/26 5:00,0d,0d,0ed,1,3/25/26 8:00,3/25/26 5:00,"March 25, 2026 8:00","March 25, 2026 5:00",As Soon As Possible,NA,3/25/26 5:00,3/25/26 5:00,3/30/26 2:21,8h,8h,8h,0,0,0,0,0,1.1.1.4.18.6,500,No,No,No,,,GreenSquare,,,,,,,,0,0,0,0d,0d,0d,No,No,No,No,No,No,No,No,No,No,No,0,0,0,0,0,
37,662,Yes,Auto Scheduled,Import Group 4 - workbench / dev work,2h,Fixed Units,5,0.25d,,"April 3, 2026 8:00","April 3, 2026 10:00",4/3/26 8:00,4/3/26 10:00,4/3/26 8:00,4/3/26 10:00,0h,0h,0ed,1,4/3/26 8:00,4/3/26 10:00,"April 3, 2026 8:00","April 3, 2026 10:00",Start No Earlier Than,4/3/26 8:00,4/3/26 10:00,4/3/26 10:00,12/16/25 8:26,2h,2h,2h,0,0,0,0,0,1.1.1.4.19,500,No,No,No,,,GreenSquare,,,,,,,,0,0,0,0d,0d,0d,No,No,No,No,No,No,No,No,No,No,No,0,0,0,0,0,
38,663,Yes,Auto Scheduled,Import Group 5 - Config to support dev workbench,2h,Fixed Units,5,0.25d,37,"April 3, 2026 10:00","April 3, 2026 12:00",4/3/26 10:00,4/3/26 12:00,4/3/26 10:00,4/3/26 12:00,0h,0h,0ed,1,4/3/26 10:00,4/3/26 12:00,"April 3, 2026 10:00","April 3, 2026 12:00",As Soon As Possible,NA,4/3/26 12:00,4/3/26 12:00,12/16/25 8:26,2h,2h,2h,0,0,0,0,0,1.1.1.4.20,500,No,No,No,,,GreenSquare,,,,,,,,0,0,0,0d,0d,0d,No,No,No,No,No,No,No,No,No,No,No,0,0,0,0,0,
39,833,Yes,Auto Scheduled,Create Migration Data Project in DMC,1d,Fixed Units,5,1d,38,"April 3, 2026 1:00","April 6, 2026 12:00",4/3/26 1:00,4/6/26 12:00,4/3/26 1:00,4/6/26 12:00,0d,0d,0ed,1,4/3/26 1:00,4/6/26 12:00,"April 3, 2026 1:00","April 6, 2026 12:00",As Soon As Possible,NA,4/6/26 12:00,4/6/26 12:00,3/30/26 2:26,8h,8h,8h,0,0,0,0,0,1.1.1.4.21,500,No,No,No,,,GreenSquare,,,,,,,,0,0,0,0d,0d,0d,No,No,No,No,No,No,No,No,No,No,No,0,0,0,0,0,
40,652,Yes,Auto Scheduled,Environment Ready for Build,0d,Fixed Units,5,0d,39,"April 6, 2026 12:00","April 6, 2026 12:00",4/6/26 12:00,4/6/26 12:00,4/6/26 12:00,4/6/26 12:00,0d,0d,0ed,1,4/6/26 12:00,4/6/26 12:00,"April 6, 2026 12:00","April 6, 2026 12:00",As Soon As Possible,NA,4/6/26 12:00,4/6/26 12:00,12/16/25 8:14,0h,0h,0h,0,0,0,0,0,1.1.1.4.22,500,Yes,No,No,,,GreenSquare,,,,,,,,0,0,0,0d,0d,0d,No,No,No,No,No,No,No,No,No,No,No,0,0,0,0,0,
41,849,Yes,Auto Scheduled,QS4 ITC-2 Refresh,13.13d,Fixed Duration,4,54.28d,,"April 27, 2026 8:00","May 14, 2026 9:00",4/27/26 8:00,5/14/26 9:00,4/1/26 4:59,5/4/26 5:00,0d,-7.13d,0ed,0.51000000000000001,4/27/26 8:00,NA,"May 1, 2026 8:00","July 16, 2026 10:15",Start No Earlier Than,4/27/26 8:00,4/27/26 5:00,4/27/26 5:00,3/31/26 7:06,160h,184h,82.25h,0,0,0,0,0,1.1.1.5,500,No,Yes,Yes,,,GreenCircle,,,,,,,,0,0,0,0d,0d,0d,No,No,No,No,No,No,No,No,No,No,No,0,0,0,0,0,
42,3340,Yes,Auto Scheduled,System Setup,6d,Fixed Duration,5,0d,40,"April 27, 2026 8:00","May 4, 2026 5:00",4/27/26 8:00,5/4/26 5:00,4/1/26 4:59,5/4/26 5:00,0d,0d,0ed,0.80000000000000004,4/27/26 8:00,NA,NA,NA,As Soon As Possible,NA,4/27/26 5:00,4/27/26 5:00,4/29/26 3:04,103h,0h,82.25h,0,0,0,0,0,1.1.1.5.1,500,No,Yes,Yes,,,Red,,,,,,,,0,0,0,0d,0d,0d,No,No,No,No,No,No,No,No,No,No,No,0,0,0,0,0,
43,850,Yes,Auto Scheduled,Dev Refresh Basis(Workinig with NS2),2d,Fixed Units,6,0.13d,,"April 27, 2026 8:00","April 28, 2026 5:00",4/27/26 8:00,4/28/26 5:00,4/27/26 8:00,4/28/26 5:00,0d,0d,0ed,1,4/27/26 8:00,4/28/26 5:00,"May 1, 2026 8:00","May 1, 2026 9:00",Start No Earlier Than,4/27/26 8:00,4/28/26 5:00,4/28/26 5:00,3/31/26 7:06,16h,1h,16h,0,0,0,0,0,1.1.1.5.1.1,500,No,No,No,,,GreenSquare,CRITICAL,,,,,,,0,0,0,0d,0d,0d,No,No,No,No,No,No,No,No,No,No,Yes,0,0,0,0,0,
44,853,Yes,Auto Scheduled,Client Config / Validation,1d,Fixed Units,6,1d,40,"April 27, 2026 8:00","April 27, 2026 5:00",4/27/26 8:00,4/27/26 5:00,4/27/26 8:00,4/27/26 5:00,0d,0d,0ed,1,4/27/26 8:00,4/27/26 5:00,"May 8, 2026 10:00","May 11, 2026 10:00",As Soon As Possible,NA,4/27/26 5:00,4/27/26 5:00,3/31/26 7:06,8h,8h,8h,0,0,0,0,0,1.1.1.5.1.2,500,No,No,No,,,GreenSquare,,,,,,,,0,0,0,0d,0d,0d,No,No,No,No,No,No,No,No,No,No,No,0,0,0,0,0,
45,854,Yes,Auto Scheduled,Technical Transports / BP Setup,1d,Fixed Units,6,1d,44,"April 28, 2026 8:00","April 28, 2026 5:00",4/28/26 8:00,4/28/26 5:00,4/28/26 8:00,4/28/26 5:00,0d,0d,0ed,1,4/28/26 8:00,4/28/26 5:00,"May 11, 2026 10:00","May 12, 2026 10:00",As Soon As Possible,NA,4/28/26 5:00,4/28/26 5:00,3/31/26 7:06,8h,8h,8h,0,0,0,0,0,1.1.1.5.1.3,500,No,No,No,,,GreenSquare,,,,,,,,0,0,0,0d,0d,0d,No,No,No,No,No,No,No,No,No,No,No,0,0,0,0,0,
46,855,Yes,Auto Scheduled,Best Practice / Country Validation,1d,Fixed Units,6,1d,45,"April 29, 2026 8:00","April 29, 2026 5:00",4/29/26 8:00,4/29/26 5:00,4/29/26 8:00,4/29/26 5:00,0d,0d,0ed,1,4/29/26 8:00,4/29/26 5:00,"May 12, 2026 10:00","May 13, 2026 10:00",As Soon As Possible,NA,4/29/26 5:00,4/29/26 5:00,3/31/26 7:06,8h,8h,8h,0,0,0,0,0,1.1.1.5.1.4,500,No,No,No,,,GreenSquare,,,,,,,,0,0,0,0d,0d,0d,No,No,No,No,No,No,No,No,No,No,No,0,0,0,0,0,
47,856,Yes,Auto Scheduled,Connect Systems and Validate,1d,Fixed Units,6,1d,46,"April 30, 2026 8:00","April 30, 2026 5:00",4/30/26 8:00,4/30/26 5:00,4/30/26 8:00,4/30/26 5:00,0d,0d,0ed,1,4/30/26 8:00,4/30/26 5:00,"May 13, 2026 10:00","May 14, 2026 10:00",As Soon As Possible,NA,4/30/26 5:00,4/30/26 5:00,3/31/26 7:06,8h,8h,8h,0,0,0,0,0,1.1.1.5.1.5,500,No,No,No,,,GreenSquare,,,,,,,,0,0,0,0d,0d,0d,No,No,No,No,No,No,No,No,No,No,No,0,0,0,0,0,
48,857,Yes,Auto Scheduled,Validate Syniti Connections to QS5,1d,Fixed Units,6,1d,47,"May 1, 2026 8:00","May 1, 2026 5:00",5/1/26 8:00,5/1/26 5:00,5/1/26 8:00,5/1/26 5:00,0d,0d,0ed,1,5/1/26 8:00,5/1/26 5:00,"May 14, 2026 10:00","May 15, 2026 10:00",As Soon As Possible,NA,5/1/26 5:00,5/1/26 5:00,3/31/26 7:06,8h,8h,8h,0,0,0,0,0,1.1.1.5.1.6,500,No,No,No,,,GreenSquare,,,,,,,,0,0,0,0d,0d,0d,No,No,No,No,No,No,No,No,No,No,No,0,0,0,0,0,
49,858,Yes,Auto Scheduled,Security Transports,4h,Fixed Units,6,0.5d,48,"May 4, 2026 8:00","May 4, 2026 12:00",5/4/26 8:00,5/4/26 12:00,5/4/26 8:00,5/4/26 12:00,0h,0h,0ed,1,5/4/26 8:00,5/4/26 12:00,"May 15, 2026 10:00","May 15, 2026 3:00",As Soon As Possible,NA,5/4/26 12:00,5/4/26 12:00,3/31/26 7:06,4h,4h,4h,0,0,0,0,0,1.1.1.5.1.7,500,No,No,No,,,GreenSquare,,,,,,,,0,0,0,0d,0d,0d,No,No,No,No,No,No,No,No,No,No,No,0,0,0,0,0,
50,859,Yes,Auto Scheduled,Security Manual Tasks,1d,Fixed Units,6,1d,49SS,"May 4, 2026 8:00","May 4, 2026 5:00",5/4/26 8:00,5/4/26 5:00,5/4/26 8:00,5/4/26 5:00,0d,0d,0ed,1,5/4/26 8:00,5/4/26 5:00,"May 15, 2026 3:00","May 18, 2026 3:00",As Soon As Possible,NA,5/4/26 5:00,5/4/26 5:00,3/31/26 7:06,8h,8h,8h,0,0,0,0,0,1.1.1.5.1.8,500,No,No,No,,,GreenSquare,SS_OPT,,,,,,,0,0,0,0d,0d,0d,Yes,Yes,No,No,No,No,No,No,No,No,No,0,0,0,0,0,
51,860,Yes,Auto Scheduled,Manual Technical Tasks,1d,Fixed Units,6,1d,50SS,"May 4, 2026 8:00","May 4, 2026 5:00",5/4/26 8:00,5/4/26 5:00,5/4/26 8:00,5/4/26 5:00,0d,0d,0ed,1,5/4/26 8:00,5/4/26 5:00,"May 15, 2026 3:00","May 18, 2026 3:00",As Soon As Possible,NA,5/4/26 5:00,5/4/26 5:00,3/31/26 7:06,8h,8h,8h,0,0,0,0,0,1.1.1.5.1.9,500,No,No,No,,,GreenSquare,SS_OPT,,,,,,,0,0,0,0d,0d,0d,Yes,Yes,No,No,No,No,No,No,No,No,No,0,0,0,0,0,
52,861,Yes,Auto Scheduled,Validate Fiori,8h,Fixed Units,6,0.5d,50SS,"May 4, 2026 8:00","May 4, 2026 5:00",5/4/26 8:00,5/4/26 5:00,5/4/26 8:00,5/4/26 5:00,0h,-182.02h,0ed,0.25,5/4/26 8:00,NA,"May 18, 2026 3:00","May 19, 2026 10:00",As Soon As Possible,NA,5/4/26 10:00,5/4/26 10:00,3/31/26 7:06,8h,4h,2h,0,0,0,0,0,1.1.1.5.1.10,500,No,No,No,,,Red,SS_OPT,,,,,,,0,0,0,0d,0d,0d,No,No,No,No,No,No,No,No,No,No,No,0,0,0,0,0,
53,862,Yes,Auto Scheduled,Fiori App Activation,8h,Fixed Units,6,0.75d,52SS,"May 4, 2026 8:00","May 4, 2026 5:00",5/4/26 8:00,5/4/26 5:00,5/4/26 8:00,5/4/26 5:00,0h,-182.02h,0ed,0.25,5/4/26 8:00,NA,"May 19, 2026 10:00","May 19, 2026 5:00",As Soon As Possible,NA,5/4/26 10:00,5/4/26 10:00,3/31/26 7:06,8h,6h,2h,0,0,0,0,0,1.1.1.5.1.11,500,No,No,No,,,Red,SS_OPT,,,,,,,0,0,0,0d,0d,0d,Yes,Yes,No,No,No,No,No,No,No,No,No,0,0,0,0,0,
54,863,Yes,Auto Scheduled,Download Transport List,1h,Fixed Units,6,0.13d,53SS,"May 4, 2026 8:00","May 4, 2026 9:00",5/4/26 8:00,5/4/26 9:00,5/4/26 8:00,5/4/26 9:00,0h,-175.02h,0ed,0.25,5/4/26 8:00,NA,"May 19, 2026 10:00","May 19, 2026 11:00",As Soon As Possible,NA,5/4/26 8:15,5/4/26 8:15,3/31/26 7:06,1h,1h,0.25h,0,0,0,0,0,1.1.1.5.1.12,500,No,No,No,,,Red,SS_OPT,,,,,,,0,0,0,0d,0d,0d,No,No,No,No,No,No,No,No,No,No,No,0,0,0,0,0,
55,864,Yes,Auto Scheduled,Business Functions Validation,8h,Fixed Units,6,1d,52SS,"May 4, 2026 8:00","May 4, 2026 5:00",5/4/26 8:00,5/4/26 5:00,5/4/26 8:00,5/4/26 5:00,0h,-182.02h,0ed,0.25,5/4/26 8:00,NA,"May 19, 2026 10:00","May 20, 2026 10:00",As Soon As Possible,NA,5/4/26 10:00,5/4/26 10:00,3/31/26 7:06,8h,8h,2h,0,0,0,0,0,1.1.1.5.1.13,500,No,No,No,,,Red,SS_OPT,,,,,,,0,0,0,0d,0d,0d,Yes,Yes,No,No,No,No,No,No,No,No,No,0,0,0,0,0,
56,865,Yes,Auto Scheduled,Functional Leads Validation of Transport List,1h,Fixed Units,6,0.13d,53SS,"May 4, 2026 8:00","May 4, 2026 9:00",5/4/26 8:00,5/4/26 9:00,4/1/26 4:59,4/2/26 8:59,0h,-176.02h,0ed,0,NA,NA,"May 19, 2026 11:00","May 19, 2026 12:00",As Soon As Possible,NA,NA,NA,3/31/26 7:06,1h,1h,0h,0,0,0,0,0,1.1.1.5.1.14,500,No,No,No,,,Red,SS_OPT,,,,,,,0,0,0,0d,0d,0d,No,No,No,No,No,No,No,No,No,No,No,0,0,0,0,0,
57,866,Yes,Auto Scheduled,Release Security roles to Functional Team,1h,Fixed Units,6,0.13d,56,"May 4, 2026 9:00","May 4, 2026 10:00",5/4/26 9:00,5/4/26 10:00,4/2/26 8:59,4/2/26 9:59,0h,-176.02h,0ed,0,NA,NA,"May 19, 2026 1:00","May 19, 2026 2:00",As Soon As Possible,NA,NA,NA,3/31/26 7:06,1h,1h,0h,0,0,0,0,0,1.1.1.5.1.15,500,No,No,No,,,Red,,,,,,,,0,0,0,0d,0d,0d,No,No,No,No,No,No,No,No,No,No,No,0,0,0,0,0,
58,867,Yes,Auto Scheduled,Release Transports to Client,6.56d,Fixed Duration,5,5.25d,42,"May 5, 2026 8:00","May 13, 2026 1:30",5/5/26 8:00,5/13/26 1:30,4/2/26 9:59,4/10/26 3:29,0d,-22.75d,0ed,0,NA,NA,"May 19, 2026 1:00","May 26, 2026 3:00",As Soon As Possible,NA,NA,NA,3/31/26 7:06,52.5h,42h,0h,0,0,0,0,0,1.1.1.5.2,500,No,Yes,Yes,,,,,,,,,,,0,0,0,0d,0d,0d,No,No,No,No,No,No,No,No,No,No,No,0,0,0,0,0,
59,868,Yes,Auto Scheduled,Import Group 1 - Ent Structure,2h,Fixed Units,6,0.25d,56,"May 5, 2026 8:00","May 5, 2026 10:00",5/5/26 8:00,5/5/26 10:00,4/2/26 9:59,4/2/26 11:59,0h,-182.02h,0ed,0,NA,NA,"May 19, 2026 1:00","May 19, 2026 3:00",As Soon As Possible,NA,NA,NA,3/31/26 7:06,2h,2h,0h,0,0,0,0,0,1.1.1.5.2.1,500,No,No,No,,,Red,,,,,,,,0,0,0,0d,0d,0d,No,No,No,No,No,No,No,No,No,No,No,0,0,0,0,0,
60,869,Yes,Auto Scheduled,Manual activities group 1,20h,Fixed Units,6,2.5d,59,"May 5, 2026 10:00","May 7, 2026 3:00",5/5/26 10:00,5/7/26 3:00,4/2/26 11:59,4/6/26 4:59,0h,-182.02h,0ed,0,NA,NA,"May 19, 2026 3:00","May 22, 2026 10:00",As Soon As Possible,NA,NA,NA,3/31/26 7:06,20h,20h,0h,0,0,0,0,0,1.1.1.5.2.2,500,No,No,No,,,,,,,,,,,0,0,0,0d,0d,0d,No,No,No,No,No,No,No,No,No,No,No,0,0,0,0,0,
61,870,Yes,Auto Scheduled,Import Group 2 - Core Transports,2h,Fixed Units,6,0.25d,60,"May 7, 2026 3:00","May 7, 2026 5:00",5/7/26 3:00,5/7/26 5:00,4/6/26 4:59,4/7/26 9:59,0h,-182.02h,0ed,0,NA,NA,"May 22, 2026 10:00","May 22, 2026 12:00",As Soon As Possible,NA,NA,NA,3/31/26 7:06,2h,2h,0h,0,0,0,0,0,1.1.1.5.2.3,500,No,No,No,,,Black,,,,,,,,0,0,0,0d,0d,0d,No,No,No,No,No,No,No,No,No,No,No,0,0,0,0,0,
62,871,Yes,Auto Scheduled,Manual activities group 2,1d,Fixed Units,6,1d,61,"May 8, 2026 8:00","May 8, 2026 5:00",5/8/26 8:00,5/8/26 5:00,4/7/26 9:59,4/8/26 9:59,0d,-22.75d,0ed,0,NA,NA,"May 22, 2026 1:00","May 25, 2026 12:00",As Soon As Possible,NA,NA,NA,3/31/26 7:06,8h,8h,0h,0,0,0,0,0,1.1.1.5.2.4,500,No,No,No,,,Black,,,,,,,,0,0,0,0d,0d,0d,No,No,No,No,No,No,No,No,No,No,No,0,0,0,0,0,
63,872,Yes,Auto Scheduled,Import Group 3 - prior to transactions,2h,Fixed Units,6,0.25d,62,"May 11, 2026 8:00","May 11, 2026 10:00",5/11/26 8:00,5/11/26 10:00,4/8/26 9:59,4/8/26 11:59,0h,-182.02h,0ed,0,NA,NA,"May 25, 2026 1:00","May 25, 2026 3:00",As Soon As Possible,NA,NA,NA,3/31/26 7:06,2h,2h,0h,0,0,0,0,0,1.1.1.5.2.5,500,No,No,No,,,Black,,,,,,,,0,0,0,0d,0d,0d,No,No,No,No,No,No,No,No,No,No,No,0,0,0,0,0,
64,873,Yes,Auto Scheduled,Manual Activities Group 3,1d,Fixed Units,6,1d,63,"May 11, 2026 10:00","May 12, 2026 10:00",5/11/26 10:00,5/12/26 10:00,4/8/26 11:59,4/9/26 11:59,0d,-22.75d,0ed,0,NA,NA,"May 25, 2026 3:00","May 26, 2026 3:00",As Soon As Possible,NA,NA,NA,3/31/26 7:06,8h,8h,0h,0,0,0,0,0,1.1.1.5.2.6,500,No,No,No,,,Black,,,,,,,,0,0,0,0d,0d,0d,No,No,No,No,No,No,No,No,No,No,No,0,0,0,0,0,
65,874,Yes,Auto Scheduled,Import Group 4 - workbench / dev work,2h,Fixed Units,6,0.25d,64,"May 12, 2026 10:00","May 12, 2026 12:00",5/12/26 10:00,5/12/26 12:00,4/9/26 11:59,4/9/26 2:59,0h,-182.02h,0ed,0,NA,NA,"May 26, 2026 3:00","May 26, 2026 5:00",As Soon As Possible,NA,NA,NA,3/31/26 7:06,2h,2h,0h,0,0,0,0,0,1.1.1.5.2.7,500,No,No,No,,,Black,CRITICAL,,,,,,,0,0,0,0d,0d,0d,No,No,No,No,No,No,No,No,No,No,No,0,0,0,0,0,
66,875,Yes,Auto Scheduled,Import Group 5 - Config to support dev workbench,8.5h,Fixed Units,6,1.06d,65,"May 12, 2026 1:00","May 13, 2026 1:30",5/12/26 1:00,5/13/26 1:30,4/9/26 2:59,4/10/26 3:29,0h,-182.02h,0ed,0,NA,NA,"May 27, 2026 8:00","May 28, 2026 8:30",As Soon As Possible,NA,NA,NA,3/31/26 7:06,8.5h,8.5h,0h,0,0,0,0,0,1.1.1.5.2.8,500,No,No,No,,,Black,CRITICAL,,,,,,,0,0,0,0d,0d,0d,Yes,Yes,No,No,No,No,No,No,No,No,No,0,0,0,0,0,
67,1226,Yes,Auto Scheduled,Data Project Create,0.56d,Fixed Duration,5,1.06d,66SS,"May 13, 2026 1:30","May 14, 2026 9:00",5/13/26 1:30,5/14/26 9:00,5/4/26 8:59,5/4/26 2:29,0d,-7.44d,0ed,0,NA,NA,"May 27, 2026 8:00","May 28, 2026 8:30",As Soon As Possible,NA,NA,NA,4/8/26 9:03,4.5h,8.5h,0h,0,0,0,0,0,1.1.1.5.3,500,No,Yes,Yes,,,Black,SS_OPT,,,,,,,0,0,0,0d,0d,0d,Yes,No,No,No,No,No,No,No,No,No,Yes,0,0,0,0,0,
68,1221,Yes,Auto Scheduled,Open Client,15m,Fixed Units,6,0.03d,66,"May 13, 2026 1:30","May 13, 2026 1:45",5/13/26 1:30,5/13/26 1:45,5/4/26 8:59,5/4/26 9:14,0m,-3571m,0ed,0,NA,NA,"May 27, 2026 8:00","May 27, 2026 8:15",As Soon As Possible,NA,NA,NA,4/8/26 9:01,0.25h,0.25h,0h,0,0,0,0,0,1.1.1.5.3.1,500,No,No,No,,,Black,CRITICAL,,,,,,,0,0,0,0d,0d,0d,No,No,No,No,No,No,No,No,No,No,No,0,0,0,0,0,
69,876,Yes,Auto Scheduled,Create Migration Data Project in DMC,4h,Fixed Units,6,1d,68,"May 13, 2026 1:45","May 14, 2026 8:45",5/13/26 1:45,5/14/26 8:45,5/4/26 9:14,5/4/26 2:14,0h,-59.52h,0ed,0,NA,NA,"May 27, 2026 8:15","May 28, 2026 8:15",As Soon As Possible,NA,NA,NA,3/31/26 7:06,4h,8h,0h,0,0,0,0,0,1.1.1.5.3.2,500,No,No,No,,,Black,,,,,,,,0,0,0,0d,0d,0d,No,No,No,No,No,No,No,No,No,No,No,0,0,0,0,0,
70,1222,Yes,Auto Scheduled,Close Client,15m,Fixed Units,6,0.03d,69,"May 14, 2026 8:45","May 14, 2026 9:00",5/14/26 8:45,5/14/26 9:00,5/4/26 2:14,5/4/26 2:29,0m,-3571m,0ed,0,NA,NA,"May 28, 2026 8:15","May 28, 2026 8:30",As Soon As Possible,NA,NA,NA,4/8/26 9:01,0.25h,0.25h,0h,0,0,0,0,0,1.1.1.5.3.3,500,No,No,No,,,Black,,,,,,,,0,0,0,0d,0d,0d,No,No,No,No,No,No,No,No,No,No,No,0,0,0,0,0,
71,877,Yes,Auto Scheduled,Environment Ready for Test,0m,Fixed Units,5,0d,70,"May 14, 2026 9:00","May 14, 2026 9:00",5/14/26 9:00,5/14/26 9:00,5/4/26 2:29,5/4/26 2:29,0m,-3571m,0ed,0,NA,NA,"July 16, 2026 10:15","July 16, 2026 10:15",As Soon As Possible,NA,NA,NA,3/31/26 7:06,0h,0h,0h,0,0,0,0,0,1.1.1.5.4,500,Yes,No,No,,,Black,,,,,,,,0,0,0,0d,0d,0d,No,No,No,No,No,No,No,No,No,No,No,0,0,0,0,0,
72,1284,Yes,Auto Scheduled,QS5 ITC-3 Refresh,9.44d,Fixed Duration,4,54.28d,,"May 18, 2026 8:00","May 29, 2026 11:30",5/18/26 8:00,5/29/26 11:30,4/10/26 3:29,6/5/26 5:00,0d,-25.19d,0ed,0,NA,NA,"May 1, 2026 8:00","July 16, 2026 10:15",As Soon As Possible,NA,NA,NA,4/23/26 10:38,162h,184h,0h,0,0,0,0,0,1.1.1.6,500,No,Yes,Yes,,,Black,,,,,,,,0,0,0,0d,0d,0d,No,No,No,No,No,No,No,No,No,No,No,0,0,0,0,0,
73,3339,Yes,Auto Scheduled,System Setup,8d,Fixed Duration,5,0d,58,"May 18, 2026 8:00","May 27, 2026 5:00",5/18/26 8:00,5/27/26 5:00,4/10/26 3:29,6/5/26 5:00,0d,-25.19d,0ed,0,NA,NA,NA,NA,As Soon As Possible,NA,NA,NA,4/29/26 3:04,105h,0h,0h,0,0,0,0,0,1.1.1.6.1,500,No,Yes,Yes,,,Black,,,,,,,,0,0,0,0d,0d,0d,No,No,No,No,No,No,No,No,No,No,No,0,0,0,0,0,
74,1285,Yes,Auto Scheduled,System Refresh Basis(Workinig with NS2),3d,Fixed Units,6,0.13d,,"May 18, 2026 8:00","May 20, 2026 5:00",5/18/26 8:00,5/20/26 5:00,5/18/26 8:00,5/20/26 5:00,0d,0d,0ed,0,NA,NA,"May 1, 2026 8:00","May 1, 2026 9:00",Must Start On,5/18/26 8:00,NA,NA,4/23/26 10:38,24h,1h,0h,0,0,0,0,0,1.1.1.6.1.1,500,No,No,No,,,Black,,,,,,,,0,0,0,0d,0d,0d,No,No,No,No,No,No,No,No,No,No,Yes,0,0,0,0,0,
75,1288,Yes,Auto Scheduled,Client Config / Validation,1d,Fixed Units,6,1d,74,"May 21, 2026 8:00","May 21, 2026 5:00",5/21/26 8:00,5/21/26 5:00,4/10/26 3:29,4/13/26 3:29,0d,-28.19d,0ed,0,NA,NA,"May 8, 2026 10:00","May 11, 2026 10:00",As Soon As Possible,NA,NA,NA,4/23/26 10:38,8h,8h,0h,0,0,0,0,0,1.1.1.6.1.2,500,No,No,No,,,Black,,,,,,,,0,0,0,0d,0d,0d,No,No,No,No,No,No,No,No,No,No,No,0,0,0,0,0,
76,1289,Yes,Auto Scheduled,Technical Transports / BP Setup,1d,Fixed Units,6,1d,75,"May 22, 2026 8:00","May 22, 2026 5:00",5/22/26 8:00,5/22/26 5:00,6/2/26 8:00,6/2/26 5:00,0d,7d,0ed,0,NA,NA,"May 11, 2026 10:00","May 12, 2026 10:00",As Soon As Possible,NA,NA,NA,4/23/26 10:38,8h,8h,0h,0,0,0,0,0,1.1.1.6.1.3,500,No,No,No,,,Black,,,,,,,,0,0,0,0d,0d,0d,No,No,No,No,No,No,No,No,No,No,No,0,0,0,0,0,
77,1290,Yes,Auto Scheduled,Best Practice / Country Validation,1d,Fixed Units,6,1d,76,"May 25, 2026 8:00","May 25, 2026 5:00",5/25/26 8:00,5/25/26 5:00,6/3/26 8:00,6/3/26 5:00,0d,7d,0ed,0,NA,NA,"May 12, 2026 10:00","May 13, 2026 10:00",As Soon As Possible,NA,NA,NA,4/23/26 10:38,8h,8h,0h,0,0,0,0,0,1.1.1.6.1.4,500,No,No,No,,,Black,,,,,,,,0,0,0,0d,0d,0d,No,No,No,No,No,No,No,No,No,No,No,0,0,0,0,0,
78,1291,Yes,Auto Scheduled,Connect Systems and Validate,1d,Fixed Units,6,1d,77,"May 26, 2026 8:00","May 26, 2026 5:00",5/26/26 8:00,5/26/26 5:00,6/4/26 8:00,6/4/26 5:00,0d,7d,0ed,0,NA,NA,"May 13, 2026 10:00","May 14, 2026 10:00",As Soon As Possible,NA,NA,NA,4/23/26 10:38,8h,8h,0h,0,0,0,0,0,1.1.1.6.1.5,500,No,No,No,,,Black,,,,,,,,0,0,0,0d,0d,0d,No,No,No,No,No,No,No,No,No,No,No,0,0,0,0,0,
79,1292,Yes,Auto Scheduled,Validate Syniti Connections to QS5,1d,Fixed Units,6,1d,78,"May 27, 2026 8:00","May 27, 2026 5:00",5/27/26 8:00,5/27/26 5:00,6/5/26 8:00,6/5/26 5:00,7d,7d,0ed,0,NA,NA,"May 14, 2026 10:00","May 15, 2026 10:00",As Soon As Possible,NA,NA,NA,4/23/26 10:38,8h,8h,0h,0,0,0,0,0,1.1.1.6.1.6,500,No,No,No,,,Black,,,,,,,,0,0,0,0d,0d,0d,No,No,No,No,No,No,No,No,No,No,No,0,0,0,0,0,
80,1293,Yes,Auto Scheduled,Security Transports,4h,Fixed Units,6,0.5d,75SS,"May 21, 2026 8:00","May 21, 2026 12:00",5/21/26 8:00,5/21/26 12:00,4/10/26 3:29,4/13/26 10:29,0h,-225.52h,0ed,0,NA,NA,"May 15, 2026 10:00","May 15, 2026 3:00",As Soon As Possible,NA,NA,NA,4/23/26 10:38,4h,4h,0h,0,0,0,0,0,1.1.1.6.1.7,500,No,No,No,,,Black,,,,,,,,0,0,0,0d,0d,0d,No,No,No,No,No,No,No,No,No,No,No,0,0,0,0,0,
81,1294,Yes,Auto Scheduled,Security Manual Tasks,1d,Fixed Units,6,1d,80,"May 21, 2026 1:00","May 22, 2026 12:00",5/21/26 1:00,5/22/26 12:00,6/5/26 8:00,6/5/26 5:00,10.5d,10.5d,0ed,0,NA,NA,"May 15, 2026 3:00","May 18, 2026 3:00",As Soon As Possible,NA,NA,NA,4/23/26 10:38,8h,8h,0h,0,0,0,0,0,1.1.1.6.1.8,500,No,No,No,,,Black,SS_OPT,,,,,,,0,0,0,0d,0d,0d,Yes,Yes,No,No,No,No,No,No,No,No,No,0,0,0,0,0,
82,1295,Yes,Auto Scheduled,Manual Technical Tasks,1d,Fixed Units,6,1d,80SS,"May 21, 2026 8:00","May 21, 2026 5:00",5/21/26 8:00,5/21/26 5:00,4/10/26 3:29,4/13/26 3:29,0d,-28.19d,0ed,0,NA,NA,"May 15, 2026 3:00","May 18, 2026 3:00",As Soon As Possible,NA,NA,NA,4/23/26 10:38,8h,8h,0h,0,0,0,0,0,1.1.1.6.1.9,500,No,No,No,,,Black,CRITICAL,,,,,,,0,0,0,0d,0d,0d,Yes,No,No,No,No,No,No,No,No,No,Yes,0,0,0,0,0,
83,1296,Yes,Auto Scheduled,Validate Fiori,4h,Fixed Units,6,0.5d,82SS,"May 21, 2026 8:00","May 21, 2026 12:00",5/21/26 8:00,5/21/26 12:00,6/5/26 1:00,6/5/26 5:00,92h,92h,0ed,0,NA,NA,"May 18, 2026 3:00","May 19, 2026 10:00",As Soon As Possible,NA,NA,NA,4/23/26 10:38,4h,4h,0h,0,0,0,0,0,1.1.1.6.1.10,500,No,No,No,,,Black,SS_OPT,,,,,,,0,0,0,0d,0d,0d,No,No,No,No,No,No,No,No,No,No,No,0,0,0,0,0,
84,1297,Yes,Auto Scheduled,Fiori App Activation,6h,Fixed Units,6,0.75d,82SS,"May 21, 2026 8:00","May 21, 2026 3:00",5/21/26 8:00,5/21/26 3:00,4/10/26 3:29,4/13/26 1:29,0h,-225.52h,0ed,0,NA,NA,"May 19, 2026 10:00","May 19, 2026 5:00",As Soon As Possible,NA,NA,NA,4/23/26 10:38,6h,6h,0h,0,0,0,0,0,1.1.1.6.1.11,500,No,No,No,,,Black,CRITICAL,,,,,,,0,0,0,0d,0d,0d,Yes,Yes,No,No,No,No,No,No,No,No,No,0,0,0,0,0,
85,1298,Yes,Auto Scheduled,Download Transport List,1h,Fixed Units,6,0.13d,84SS,"May 21, 2026 8:00","May 21, 2026 9:00",5/21/26 8:00,5/21/26 9:00,4/10/26 3:29,4/10/26 4:29,0h,-225.52h,0ed,0,NA,NA,"May 19, 2026 10:00","May 19, 2026 11:00",As Soon As Possible,NA,NA,NA,4/23/26 10:38,1h,1h,0h,0,0,0,0,0,1.1.1.6.1.12,500,No,No,No,,,Black,,,,,,,,0,0,0,0d,0d,0d,No,No,No,No,No,No,No,No,No,No,No,0,0,0,0,0,
86,1299,Yes,Auto Scheduled,Business Functions Validation,8h,Fixed Units,6,1d,85SS,"May 21, 2026 8:00","May 21, 2026 5:00",5/21/26 8:00,5/21/26 5:00,6/5/26 8:00,6/5/26 5:00,88h,88h,0ed,0,NA,NA,"May 19, 2026 10:00","May 20, 2026 10:00",Start No Earlier Than,1/5/26 8:00,NA,NA,4/23/26 10:38,8h,8h,0h,0,0,0,0,0,1.1.1.6.1.13,500,No,No,No,,,Black,SS_OPT,,,,,,,0,0,0,0d,0d,0d,Yes,Yes,No,No,No,No,No,No,No,No,No,0,0,0,0,0,
87,1300,Yes,Auto Scheduled,Functional Leads Validation of Transport,1h,Fixed Units,6,0.13d,85SS,"May 21, 2026 8:00","May 21, 2026 9:00",5/21/26 8:00,5/21/26 9:00,4/10/26 3:29,4/10/26 4:29,0h,-225.52h,0ed,0,NA,NA,"May 19, 2026 11:00","May 19, 2026 12:00",As Soon As Possible,NA,NA,NA,4/23/26 10:38,1h,1h,0h,0,0,0,0,0,1.1.1.6.1.14,500,No,No,No,,,Black,,,,,,,,0,0,0,0d,0d,0d,No,No,No,No,No,No,No,No,No,No,No,0,0,0,0,0,
88,1301,Yes,Auto Scheduled,Release Security roles to Functional Team,1h,Fixed Units,6,0.13d,87SS,"May 21, 2026 8:00","May 21, 2026 9:00",5/21/26 8:00,5/21/26 9:00,6/5/26 4:00,6/5/26 5:00,95h,95h,0ed,0,NA,NA,"May 19, 2026 1:00","May 19, 2026 2:00",As Soon As Possible,NA,NA,NA,4/23/26 10:38,1h,1h,0h,0,0,0,0,0,1.1.1.6.1.15,500,No,No,No,,,Black,SS_OPT,,,,,,,0,0,0,0d,0d,0d,No,No,No,No,No,No,No,No,No,No,No,0,0,0,0,0,
89,1302,Yes,Auto Scheduled,Release Transports to Client,6.31d,Fixed Duration,5,5.25d,87,"May 21, 2026 9:00","May 29, 2026 11:30",5/21/26 9:00,5/29/26 11:30,4/10/26 4:29,6/5/26 5:00,0d,-28.19d,0ed,0,NA,NA,"May 19, 2026 1:00","May 26, 2026 3:00",As Soon As Possible,NA,NA,NA,4/23/26 10:38,52.5h,42h,0h,0,0,0,0,0,1.1.1.6.2,500,No,Yes,Yes,,,Black,CRITICAL,,,,,,,0,0,0,0d,0d,0d,Yes,No,No,No,No,No,No,No,No,No,Yes,0,0,0,0,0,
90,1303,Yes,Auto Scheduled,Import Group 1 - Ent Structure,2h,Fixed Units,6,0.25d,87,"May 21, 2026 9:00","May 21, 2026 11:00",5/21/26 9:00,5/21/26 11:00,4/10/26 4:29,4/13/26 9:29,0h,-225.52h,0ed,0,NA,NA,"May 19, 2026 1:00","May 19, 2026 3:00",As Soon As Possible,NA,NA,NA,4/23/26 10:38,2h,2h,0h,0,0,0,0,0,1.1.1.6.2.1,500,No,No,No,,,Black,,,,,,,,0,0,0,0d,0d,0d,No,No,No,No,No,No,No,No,No,No,No,0,0,0,0,0,
91,1304,Yes,Auto Scheduled,Manual activities group 1,20h,Fixed Units,6,2.5d,90,"May 21, 2026 11:00","May 25, 2026 4:00",5/21/26 11:00,5/25/26 4:00,4/13/26 9:29,4/15/26 2:29,0h,-225.52h,0ed,0,NA,NA,"May 19, 2026 3:00","May 22, 2026 10:00",Finish No Earlier Than,2/11/26 5:00,NA,NA,4/23/26 10:38,20h,20h,0h,0,0,0,0,0,1.1.1.6.2.2,500,No,No,No,,,Black,CRITICAL,,,,,,,0,0,0,0d,0d,0d,No,No,No,No,No,No,No,No,No,No,No,0,0,0,0,0,
92,1305,Yes,Auto Scheduled,Import Group 2 - Core Transports,2h,Fixed Units,6,0.25d,91,"May 25, 2026 4:00","May 26, 2026 9:00",5/25/26 4:00,5/26/26 9:00,4/15/26 2:29,4/15/26 4:29,0h,-225.52h,0ed,0,NA,NA,"May 22, 2026 10:00","May 22, 2026 12:00",As Soon As Possible,NA,NA,NA,4/23/26 10:38,2h,2h,0h,0,0,0,0,0,1.1.1.6.2.3,500,No,No,No,,,Black,,,,,,,,0,0,0,0d,0d,0d,No,No,No,No,No,No,No,No,No,No,No,0,0,0,0,0,
93,1306,Yes,Auto Scheduled,Manual activities group 2,1d,Fixed Units,6,1d,92,"May 26, 2026 9:00","May 27, 2026 9:00",5/26/26 9:00,5/27/26 9:00,4/15/26 4:29,4/16/26 4:29,0d,-28.19d,0ed,0,NA,NA,"May 22, 2026 1:00","May 25, 2026 12:00",As Soon As Possible,NA,NA,NA,4/23/26 10:38,8h,8h,0h,0,0,0,0,0,1.1.1.6.2.4,500,No,No,No,,,Black,,,,,,,,0,0,0,0d,0d,0d,No,No,No,No,No,No,No,No,No,No,No,0,0,0,0,0,
94,1307,Yes,Auto Scheduled,Import Group 3 - prior to transactions,2h,Fixed Units,6,0.25d,93,"May 27, 2026 9:00","May 27, 2026 11:00",5/27/26 9:00,5/27/26 11:00,4/16/26 4:29,4/17/26 9:29,0h,-225.52h,0ed,0,NA,NA,"May 25, 2026 1:00","May 25, 2026 3:00",As Soon As Possible,NA,NA,NA,4/23/26 10:38,2h,2h,0h,0,0,0,0,0,1.1.1.6.2.5,500,No,No,No,,,Black,,,,,,,,0,0,0,0d,0d,0d,No,No,No,No,No,No,No,No,No,No,No,0,0,0,0,0,
95,1308,Yes,Auto Scheduled,Manual Activities Group 3,1d,Fixed Units,6,1d,94,"May 27, 2026 11:00","May 28, 2026 11:00",5/27/26 11:00,5/28/26 11:00,4/17/26 9:29,4/20/26 9:29,0d,-28.19d,0ed,0,NA,NA,"May 25, 2026 3:00","May 26, 2026 3:00",As Soon As Possible,NA,NA,NA,4/23/26 10:38,8h,8h,0h,0,0,0,0,0,1.1.1.6.2.6,500,No,No,No,,,Black,,,,,,,,0,0,0,0d,0d,0d,No,No,No,No,No,No,No,No,No,No,No,0,0,0,0,0,
96,1309,Yes,Auto Scheduled,Import Group 4 - workbench / dev work,2h,Fixed Units,6,0.25d,95,"May 28, 2026 11:00","May 28, 2026 2:00",5/28/26 11:00,5/28/26 2:00,6/4/26 4:30,6/5/26 9:30,0h,44.5h,0ed,0,NA,NA,"May 26, 2026 3:00","May 26, 2026 5:00",As Soon As Possible,NA,NA,NA,4/23/26 10:38,2h,2h,0h,0,0,0,0,0,1.1.1.6.2.7,500,No,No,No,,,Black,,,,,,,,0,0,0,0d,0d,0d,No,No,No,No,No,No,No,No,No,No,No,0,0,0,0,0,
97,1310,Yes,Auto Scheduled,Import Group 5 - Config to support dev workbench,8.5h,Fixed Units,6,1.06d,96SS,"May 28, 2026 11:00","May 29, 2026 11:30",5/28/26 11:00,5/29/26 11:30,6/4/26 4:30,6/5/26 5:00,44.5h,44.5h,0ed,0,NA,NA,"May 27, 2026 8:00","May 28, 2026 8:30",As Soon As Possible,NA,NA,NA,4/23/26 10:38,8.5h,8.5h,0h,0,0,0,0,0,1.1.1.6.2.8,500,No,No,No,,,Black,SS_OPT,,,,,,,0,0,0,0d,0d,0d,Yes,Yes,No,No,No,No,No,No,No,No,No,0,0,0,0,0,
98,1311,Yes,Auto Scheduled,Data Project Create,0.56d,Fixed Duration,5,1.06d,95,"May 28, 2026 11:00","May 28, 2026 4:30",5/28/26 11:00,5/28/26 4:30,4/20/26 9:29,4/20/26 2:59,0d,-28.19d,0ed,0,NA,NA,"May 27, 2026 8:00","May 28, 2026 8:30",As Soon As Possible,NA,NA,NA,4/23/26 10:38,4.5h,8.5h,0h,0,0,0,0,0,1.1.1.6.3,500,No,Yes,Yes,,,Black,CRITICAL,,,,,,,0,0,0,0d,0d,0d,Yes,No,No,No,No,No,No,No,No,No,Yes,0,0,0,0,0,
99,1312,Yes,Auto Scheduled,Open Client,15m,Fixed Units,6,0.03d,95,"May 28, 2026 11:00","May 28, 2026 11:15",5/28/26 11:00,5/28/26 11:15,4/20/26 9:29,4/20/26 9:44,0m,-13531m,0ed,0,NA,NA,"May 27, 2026 8:00","May 27, 2026 8:15",As Soon As Possible,NA,NA,NA,4/23/26 10:38,0.25h,0.25h,0h,0,0,0,0,0,1.1.1.6.3.1,500,No,No,No,,,Black,SS_OPT,,,,,,,0,0,0,0d,0d,0d,No,No,No,No,No,No,No,No,No,No,No,0,0,0,0,0,
100,1313,Yes,Auto Scheduled,Create Migration Data Project in DMC,4h,Fixed Units,6,1d,99,"May 28, 2026 11:15","May 28, 2026 4:15",5/28/26 11:15,5/28/26 4:15,4/20/26 9:44,4/20/26 2:44,0h,-225.52h,0ed,0,NA,NA,"May 27, 2026 8:15","May 28, 2026 8:15",As Soon As Possible,NA,NA,NA,4/23/26 10:38,4h,8h,0h,0,0,0,0,0,1.1.1.6.3.2,500,No,No,No,,,Black,CRITICAL,,,,,,,0,0,0,0d,0d,0d,No,No,No,No,No,No,No,No,No,No,No,0,0,0,0,0,
101,1314,Yes,Auto Scheduled,Close Client,15m,Fixed Units,6,0.03d,100,"May 28, 2026 4:15","May 28, 2026 4:30",5/28/26 4:15,5/28/26 4:30,4/20/26 2:44,4/20/26 2:59,0m,-13531m,0ed,0,NA,NA,"May 28, 2026 8:15","May 28, 2026 8:30",As Soon As Possible,NA,NA,NA,4/23/26 10:38,0.25h,0.25h,0h,0,0,0,0,0,1.1.1.6.3.3,500,No,No,No,,,Black,,,,,,,,0,0,0,0d,0d,0d,No,No,No,No,No,No,No,No,No,No,No,0,0,0,0,0,
102,1315,Yes,Auto Scheduled,Environment Ready for Test,0m,Fixed Units,5,0d,101,"May 28, 2026 4:30","May 28, 2026 4:30",5/28/26 4:30,5/28/26 4:30,4/20/26 2:59,4/20/26 2:59,0m,-13531m,0ed,0,NA,NA,"July 16, 2026 10:15","July 16, 2026 10:15",As Soon As Possible,NA,NA,NA,4/23/26 10:38,0h,0h,0h,0,0,0,0,0,1.1.1.6.4,500,Yes,No,No,,,Black,,,,,,,,0,0,0,0d,0d,0d,No,No,No,No,No,No,No,No,No,No,No,0,0,0,0,0,
103,884,Yes,Auto Scheduled,QS4 UAT Refresh,13d,Fixed Duration,4,350.31d,,"June 8, 2026 8:00","June 24, 2026 5:00",6/8/26 8:00,6/24/26 5:00,4/20/26 2:59,6/9/26 5:00,0d,-34.25d,0ed,0,NA,NA,"March 13, 2025 8:00","July 16, 2026 10:30",As Soon As Possible,NA,NA,NA,3/31/26 7:17,180.5h,177.5h,0h,0,0,0,0,0,1.1.1.7,500,No,Yes,Yes,,,Black,,,,,,,,0,0,0,0d,0d,0d,No,No,No,No,No,No,No,No,No,No,No,0,0,0,0,0,
104,3338,Yes,Auto Scheduled,System Setup,8d,Fixed Duration,5,0d,102,"June 8, 2026 8:00","June 17, 2026 5:00",6/8/26 8:00,6/17/26 5:00,4/20/26 2:59,6/9/26 5:00,0d,-34.25d,0ed,0,NA,NA,NA,NA,As Soon As Possible,NA,NA,NA,4/29/26 3:03,130h,0h,0h,0,0,0,0,0,1.1.1.7.1,500,No,Yes,Yes,,,Black,,,,,,,,0,0,0,0d,0d,0d,No,No,No,No,No,No,No,No,No,No,No,0,0,0,0,0,
105,885,Yes,Auto Scheduled,System Refresh Basis(Workinig with NS2),2d,Fixed Units,6,0.13d,,"June 8, 2026 8:00","June 9, 2026 5:00",6/8/26 8:00,6/9/26 5:00,6/8/26 8:00,6/9/26 5:00,0d,0d,0ed,0,NA,NA,"June 19, 2026 8:00","June 19, 2026 9:00",Must Start On,6/8/26 8:00,NA,NA,3/31/26 7:17,16h,1h,0h,0,0,0,0,0,1.1.1.7.1.1,500,No,No,No,,,Black,,,,,,,,0,0,0,0d,0d,0d,No,No,No,No,No,No,No,No,No,No,Yes,0,0,0,0,0,
106,888,Yes,Auto Scheduled,Client Config / Validation,2d,Fixed Units,6,1d,105,"June 10, 2026 8:00","June 11, 2026 5:00",6/10/26 8:00,6/11/26 5:00,4/20/26 2:59,4/22/26 2:59,0d,-36.25d,0ed,0,NA,NA,"June 26, 2026 10:00","June 29, 2026 10:00",As Soon As Possible,NA,NA,NA,3/31/26 7:17,16h,8h,0h,0,0,0,0,0,1.1.1.7.1.2,500,No,No,No,,,Black,,,,,,,,0,0,0,0d,0d,0d,No,No,No,No,No,No,No,No,No,No,No,0,0,0,0,0,
107,889,Yes,Auto Scheduled,Technical Transports / BP Setup,1d,Fixed Units,6,1d,106,"June 12, 2026 8:00","June 12, 2026 5:00",6/12/26 8:00,6/12/26 5:00,4/22/26 2:59,4/23/26 2:59,0d,-36.25d,0ed,0,NA,NA,"June 29, 2026 10:00","June 30, 2026 10:00",As Soon As Possible,NA,NA,NA,3/31/26 7:17,8h,8h,0h,0,0,0,0,0,1.1.1.7.1.3,500,No,No,No,,,Black,,,,,,,,0,0,0,0d,0d,0d,No,No,No,No,No,No,No,No,No,No,No,0,0,0,0,0,
108,890,Yes,Auto Scheduled,Best Practice / Country Validation,1d,Fixed Units,6,1d,106,"June 12, 2026 8:00","June 12, 2026 5:00",6/12/26 8:00,6/12/26 5:00,4/22/26 2:59,4/23/26 2:59,0d,-36.25d,0ed,0,NA,NA,"June 30, 2026 10:00","July 1, 2026 10:00",As Soon As Possible,NA,NA,NA,3/31/26 7:17,8h,8h,0h,0,0,0,0,0,1.1.1.7.1.4,500,No,No,No,,,Black,,,,,,,,0,0,0,0d,0d,0d,No,No,No,No,No,No,No,No,No,No,No,0,0,0,0,0,
109,891,Yes,Auto Scheduled,Connect Systems and Validate,2d,Fixed Units,6,1d,108,"June 15, 2026 8:00","June 16, 2026 5:00",6/15/26 8:00,6/16/26 5:00,5/15/26 10:29,5/19/26 10:29,0d,-20.69d,0ed,0,NA,NA,"July 1, 2026 10:00","July 2, 2026 10:00",As Soon As Possible,NA,NA,NA,3/31/26 7:17,16h,8h,0h,0,0,0,0,0,1.1.1.7.1.5,500,No,No,No,,,Black,,,,,,,,0,0,0,0d,0d,0d,No,No,No,No,No,No,No,No,No,No,No,0,0,0,0,0,
110,892,Yes,Auto Scheduled,Validate Syniti Connections to QS5,1d,Fixed Units,6,1d,109,"June 17, 2026 8:00","June 17, 2026 5:00",6/17/26 8:00,6/17/26 5:00,5/19/26 10:29,5/20/26 10:29,0d,-20.69d,0ed,0,NA,NA,"July 2, 2026 10:00","July 3, 2026 10:00",As Soon As Possible,NA,NA,NA,3/31/26 7:17,8h,8h,0h,0,0,0,0,0,1.1.1.7.1.6,500,No,No,No,,,Black,,,,,,,,0,0,0,0d,0d,0d,No,No,No,No,No,No,No,No,No,No,No,0,0,0,0,0,
111,893,Yes,Auto Scheduled,Security Transports,1d,Fixed Units,6,0.5d,"108,107","June 15, 2026 8:00","June 15, 2026 5:00",6/15/26 8:00,6/15/26 5:00,4/23/26 2:59,4/24/26 2:59,0d,-36.25d,0ed,0,NA,NA,"July 3, 2026 10:00","July 3, 2026 3:00",As Soon As Possible,NA,NA,NA,3/31/26 7:17,8h,4h,0h,0,0,0,0,0,1.1.1.7.1.7,500,No,No,No,,,Black,,,,,,,,0,0,0,0d,0d,0d,No,No,No,No,No,No,No,No,No,No,No,0,0,0,0,0,
112,894,Yes,Auto Scheduled,Security Manual Tasks,1d,Fixed Units,6,1d,111,"June 16, 2026 8:00","June 16, 2026 5:00",6/16/26 8:00,6/16/26 5:00,5/19/26 10:29,5/20/26 10:29,0d,-19.69d,0ed,0,NA,NA,"July 3, 2026 3:00","July 6, 2026 3:00",As Soon As Possible,NA,NA,NA,3/31/26 7:17,8h,8h,0h,0,0,0,0,0,1.1.1.7.1.8,500,No,No,No,,,Black,SS_OPT,,,,,,,0,0,0,0d,0d,0d,Yes,Yes,No,No,No,No,No,No,No,No,No,0,0,0,0,0,
113,895,Yes,Auto Scheduled,Manual Technical Tasks,1d,Fixed Units,6,1d,111SS,"June 15, 2026 8:00","June 15, 2026 5:00",6/15/26 8:00,6/15/26 5:00,4/23/26 2:59,4/24/26 2:59,0d,-36.25d,0ed,0,NA,NA,"July 3, 2026 3:00","July 6, 2026 3:00",As Soon As Possible,NA,NA,NA,3/31/26 7:17,8h,8h,0h,0,0,0,0,0,1.1.1.7.1.9,500,No,No,No,,,Black,SS_OPT,,,,,,,0,0,0,0d,0d,0d,No,Yes,No,No,No,No,No,No,No,No,No,0,0,0,0,0,
114,896,Yes,Auto Scheduled,Validate Fiori,1d,Fixed Units,6,0.5d,113,"June 16, 2026 8:00","June 16, 2026 5:00",6/16/26 8:00,6/16/26 5:00,4/24/26 2:59,4/27/26 2:59,0d,-36.25d,0ed,0,NA,NA,"July 6, 2026 3:00","July 7, 2026 10:00",As Soon As Possible,NA,NA,NA,3/31/26 7:17,8h,4h,0h,0,0,0,0,0,1.1.1.7.1.10,500,No,No,No,,,Black,,,,,,,,0,0,0,0d,0d,0d,No,No,No,No,No,No,No,No,No,No,No,0,0,0,0,0,
115,897,Yes,Auto Scheduled,Fiori App Activation,1d,Fixed Units,6,0.75d,114SS,"June 16, 2026 8:00","June 16, 2026 5:00",6/16/26 8:00,6/16/26 5:00,5/19/26 10:29,5/20/26 10:29,0d,-19.69d,0ed,0,NA,NA,"July 7, 2026 10:00","July 7, 2026 5:00",As Soon As Possible,NA,NA,NA,3/31/26 7:17,8h,6h,0h,0,0,0,0,0,1.1.1.7.1.11,500,No,No,No,,,Black,SS_OPT,,,,,,,0,0,0,0d,0d,0d,Yes,Yes,No,No,No,No,No,No,No,No,No,0,0,0,0,0,
116,898,Yes,Auto Scheduled,Download Transport List,1h,Fixed Units,6,0.13d,114SS,"June 16, 2026 8:00","June 16, 2026 9:00",6/16/26 8:00,6/16/26 9:00,5/20/26 9:29,5/20/26 10:29,0h,-150.52h,0ed,0,NA,NA,"July 7, 2026 10:00","July 7, 2026 11:00",As Soon As Possible,NA,NA,NA,3/31/26 7:17,1h,1h,0h,0,0,0,0,0,1.1.1.7.1.12,500,No,No,No,,,Black,SS_OPT,,,,,,,0,0,0,0d,0d,0d,No,No,No,No,No,No,No,No,No,No,No,0,0,0,0,0,
117,899,Yes,Auto Scheduled,Business Functions Validation,1d,Fixed Units,6,1d,114SS,"June 16, 2026 8:00","June 16, 2026 5:00",6/16/26 8:00,6/16/26 5:00,4/24/26 2:59,4/27/26 2:59,0d,-36.25d,0ed,0,NA,NA,"July 7, 2026 10:00","July 8, 2026 10:00",Start No Earlier Than,1/5/26 8:00,NA,NA,3/31/26 7:17,8h,8h,0h,0,0,0,0,0,1.1.1.7.1.13,500,No,No,No,,,Black,SS_OPT,,,,,,,0,0,0,0d,0d,0d,Yes,Yes,No,No,No,No,No,No,No,No,No,0,0,0,0,0,
118,900,Yes,Auto Scheduled,Functional Leads Validation of Transport List,1d,Fixed Units,6,0.13d,117SS,"June 16, 2026 8:00","June 16, 2026 5:00",6/16/26 8:00,6/16/26 5:00,4/24/26 2:59,4/27/26 2:59,0d,-36.25d,0ed,0,NA,NA,"July 7, 2026 11:00","July 7, 2026 12:00",As Soon As Possible,NA,NA,NA,3/31/26 7:17,8h,1h,0h,0,0,0,0,0,1.1.1.7.1.14,500,No,No,No,,,Black,SS_OPT,,,,,,,0,0,0,0d,0d,0d,Yes,Yes,No,No,No,No,No,No,No,No,No,0,0,0,0,0,
119,901,Yes,Auto Scheduled,Release Security roles to Functional Team,1h,Fixed Units,6,0.13d,118,"June 17, 2026 8:00","June 17, 2026 9:00",6/17/26 8:00,6/17/26 9:00,4/27/26 2:59,4/27/26 3:59,0h,-290.02h,0ed,0,NA,NA,"July 7, 2026 1:00","July 7, 2026 2:00",As Soon As Possible,NA,NA,NA,3/31/26 7:17,1h,1h,0h,0,0,0,0,0,1.1.1.7.1.15,500,No,No,No,,,Black,,,,,,,,0,0,0,0d,0d,0d,No,No,No,No,No,No,No,No,No,No,No,0,0,0,0,0,
120,902,Yes,Auto Scheduled,Release Transports to Client,5.5d,Fixed Duration,5,5.25d,117SS,"June 17, 2026 8:00","June 24, 2026 12:00",6/17/26 8:00,6/24/26 12:00,4/27/26 2:59,5/5/26 9:59,0d,-36.25d,0ed,0,NA,NA,"July 7, 2026 1:00","July 14, 2026 3:00",As Soon As Possible,NA,NA,NA,3/31/26 7:17,46h,42h,0h,0,0,0,0,0,1.1.1.7.2,500,No,Yes,Yes,,,Black,SS_OPT,,,,,,,0,0,0,0d,0d,0d,No,No,No,No,No,No,No,No,No,No,No,0,0,0,0,0,
121,903,Yes,Auto Scheduled,Import Group 1 - Ent Structure,2h,Fixed Units,6,0.25d,119SS,"June 17, 2026 8:00","June 17, 2026 10:00",6/17/26 8:00,6/17/26 10:00,4/27/26 2:59,4/27/26 4:59,0h,-290.02h,0ed,0,NA,NA,"July 7, 2026 1:00","July 7, 2026 3:00",As Soon As Possible,NA,NA,NA,3/31/26 7:17,2h,2h,0h,0,0,0,0,0,1.1.1.7.2.1,500,No,No,No,,,Black,SS_OPT,,,,,,,0,0,0,0d,0d,0d,No,No,No,No,No,No,No,No,No,No,No,0,0,0,0,0,
122,904,Yes,Auto Scheduled,Manual activities group 1,20h,Fixed Units,6,2.5d,121,"June 17, 2026 10:00","June 19, 2026 3:00",6/17/26 10:00,6/19/26 3:00,4/27/26 4:59,4/30/26 11:59,0h,-290.02h,0ed,0,NA,NA,"July 7, 2026 3:00","July 10, 2026 10:00",As Soon As Possible,NA,NA,NA,3/31/26 7:17,20h,20h,0h,0,0,0,0,0,1.1.1.7.2.2,500,No,No,No,,,Black,,,,,,,,0,0,0,0d,0d,0d,No,No,No,No,No,No,No,No,No,No,No,0,0,0,0,0,
123,905,Yes,Auto Scheduled,Import Group 2 - Core Transports,2h,Fixed Units,6,0.25d,122,"June 19, 2026 3:00","June 19, 2026 5:00",6/19/26 3:00,6/19/26 5:00,4/30/26 11:59,4/30/26 2:59,0h,-290.02h,0ed,0,NA,NA,"July 10, 2026 10:00","July 10, 2026 12:00",As Soon As Possible,NA,NA,NA,3/31/26 7:17,2h,2h,0h,0,0,0,0,0,1.1.1.7.2.3,500,No,No,No,,,Black,,,,,,,,0,0,0,0d,0d,0d,No,No,No,No,No,No,No,No,No,No,No,0,0,0,0,0,
124,906,Yes,Auto Scheduled,Manual activities group 2,1d,Fixed Units,6,1d,123,"June 22, 2026 8:00","June 22, 2026 5:00",6/22/26 8:00,6/22/26 5:00,4/30/26 2:59,5/1/26 2:59,0d,-36.25d,0ed,0,NA,NA,"July 10, 2026 1:00","July 13, 2026 12:00",As Soon As Possible,NA,NA,NA,3/31/26 7:17,8h,8h,0h,0,0,0,0,0,1.1.1.7.2.4,500,No,No,No,,,Black,,,,,,,,0,0,0,0d,0d,0d,No,No,No,No,No,No,No,No,No,No,No,0,0,0,0,0,
125,907,Yes,Auto Scheduled,Import Group 3 - prior to transactions,2h,Fixed Units,6,0.25d,124,"June 23, 2026 8:00","June 23, 2026 10:00",6/23/26 8:00,6/23/26 10:00,5/1/26 2:59,5/1/26 4:59,0h,-290.02h,0ed,0,NA,NA,"July 13, 2026 1:00","July 13, 2026 3:00",As Soon As Possible,NA,NA,NA,3/31/26 7:17,2h,2h,0h,0,0,0,0,0,1.1.1.7.2.5,500,No,No,No,,,Black,,,,,,,,0,0,0,0d,0d,0d,No,No,No,No,No,No,No,No,No,No,No,0,0,0,0,0,
126,908,Yes,Auto Scheduled,Manual Activities Group 3,1d,Fixed Units,6,1d,125,"June 23, 2026 10:00","June 24, 2026 10:00",6/23/26 10:00,6/24/26 10:00,5/1/26 4:59,5/4/26 4:59,0d,-36.25d,0ed,0,NA,NA,"July 13, 2026 3:00","July 14, 2026 3:00",As Soon As Possible,NA,NA,NA,3/31/26 7:17,8h,8h,0h,0,0,0,0,0,1.1.1.7.2.6,500,No,No,No,,,Black,,,,,,,,0,0,0,0d,0d,0d,No,No,No,No,No,No,No,No,No,No,No,0,0,0,0,0,
127,909,Yes,Auto Scheduled,Import Group 4 - workbench / dev work,2h,Fixed Units,6,0.25d,126,"June 24, 2026 10:00","June 24, 2026 12:00",6/24/26 10:00,6/24/26 12:00,5/4/26 4:59,5/5/26 9:59,0h,-290.02h,0ed,0,NA,NA,"July 14, 2026 3:00","July 14, 2026 5:00",As Soon As Possible,NA,NA,NA,3/31/26 7:17,2h,2h,0h,0,0,0,0,0,1.1.1.7.2.7,500,No,No,No,,,Black,CRITICAL,,,,,,,0,0,0,0d,0d,0d,No,No,No,No,No,No,No,No,No,No,No,0,0,0,0,0,
128,910,Yes,Auto Scheduled,Import Group 5 - Config to support dev workbench,2h,Fixed Units,6,0.25d,127SS,"June 24, 2026 10:00","June 24, 2026 12:00",6/24/26 10:00,6/24/26 12:00,5/4/26 4:59,5/5/26 9:59,0h,-290.02h,0ed,0,NA,NA,"July 15, 2026 8:00","July 15, 2026 10:00",As Soon As Possible,NA,NA,NA,3/31/26 7:17,2h,2h,0h,0,0,0,0,0,1.1.1.7.2.8,500,No,No,No,,,Black,SS_OPT,,,,,,,0,0,0,0d,0d,0d,No,Yes,No,No,No,No,No,No,No,No,No,0,0,0,0,0,
129,1227,Yes,Auto Scheduled,Data Project Create,0.5d,Fixed Duration,5,1.06d,,"June 24, 2026 1:00","June 24, 2026 5:00",6/24/26 1:00,6/24/26 5:00,5/19/26 3:29,5/20/26 10:29,0d,-25.69d,0ed,0,NA,NA,"July 15, 2026 10:00","July 16, 2026 10:30",As Soon As Possible,NA,NA,NA,4/8/26 9:03,4.5h,8.5h,0h,0,0,0,0,0,1.1.1.7.3,500,No,Yes,Yes,,,Black,CRITICAL,,,,,,,0,0,0,0d,0d,0d,Yes,No,No,No,No,No,No,No,No,No,Yes,0,0,0,0,0,
130,1228,Yes,Auto Scheduled,Open Client,15m,Fixed Units,6,0.03d,128,"June 24, 2026 1:00","June 24, 2026 1:15",6/24/26 1:00,6/24/26 1:15,5/19/26 3:29,5/19/26 3:44,0m,-12331m,0ed,0,NA,NA,"July 15, 2026 10:00","July 15, 2026 10:15",As Soon As Possible,NA,NA,NA,4/8/26 9:03,0.25h,0.25h,0h,0,0,0,0,0,1.1.1.7.3.1,500,No,No,No,,,Black,CRITICAL,,,,,,,0,0,0,0d,0d,0d,No,No,No,No,No,No,No,No,No,No,No,0,0,0,0,0,
131,1229,Yes,Auto Scheduled,Create Migration Data Project in DMC,4h,Fixed Units,6,1d,130SS,"June 24, 2026 1:00","June 24, 2026 5:00",6/24/26 1:00,6/24/26 5:00,5/19/26 3:29,5/20/26 10:29,0h,-205.52h,0ed,0,NA,NA,"July 15, 2026 10:15","July 16, 2026 10:15",As Soon As Possible,NA,NA,NA,4/8/26 9:03,4h,8h,0h,0,0,0,0,0,1.1.1.7.3.2,500,No,No,No,,,Black,SS_OPT,,,,,,,0,0,0,0d,0d,0d,No,No,No,No,No,No,No,No,No,No,No,0,0,0,0,0,
132,1230,Yes,Auto Scheduled,Close Client,15m,Fixed Units,6,0.03d,130,"June 24, 2026 1:15","June 24, 2026 1:30",6/24/26 1:15,6/24/26 1:30,5/20/26 10:14,5/20/26 10:29,0m,-12121m,0ed,0,NA,NA,"July 16, 2026 10:15","July 16, 2026 10:30",As Soon As Possible,NA,NA,NA,4/8/26 9:03,0.25h,0.25h,0h,0,0,0,0,0,1.1.1.7.3.3,500,No,No,No,,,Black,CRITICAL,,,,,,,0,0,0,0d,0d,0d,No,No,No,No,No,No,No,No,No,No,No,0,0,0,0,0,
133,912,Yes,Auto Scheduled,Environment Ready for Build,0m,Fixed Units,5,0d,132,"June 24, 2026 1:30","June 24, 2026 1:30",6/24/26 1:30,6/24/26 1:30,5/20/26 10:29,5/20/26 10:29,0m,-12121m,0ed,0,NA,NA,"March 13, 2025 8:00","March 13, 2025 8:00",As Soon As Possible,NA,NA,NA,3/31/26 7:17,0h,0h,0h,0,0,0,0,0,1.1.1.7.4,500,Yes,No,No,,,Black,CRITICAL,,,,,,,0,0,0,0d,0d,0d,Yes,No,No,No,No,No,No,No,No,No,Yes,0,0,0,0,0,
134,3367,Yes,Auto Scheduled,P? Production System,13.06d,Fixed Duration,4,350.31d,,"September 7, 2026 8:00","September 24, 2026 8:30",9/7/26 8:00,9/24/26 8:30,5/5/26 9:59,9/8/26 5:00,0d,-88.75d,0ed,0,NA,NA,"March 13, 2025 8:00","July 16, 2026 10:30",As Soon As Possible,NA,NA,NA,4/30/26 1:10,180.5h,177.5h,0h,0,0,0,0,0,1.1.1.8,500,No,Yes,Yes,,,Black,,,,,,,,0,0,0,0d,0d,0d,No,No,No,No,No,No,No,No,No,No,No,0,0,0,0,0,
135,3368,Yes,Auto Scheduled,System Setup,8d,Fixed Duration,5,0d,120,"September 7, 2026 8:00","September 16, 2026 5:00",9/7/26 8:00,9/16/26 5:00,5/5/26 9:59,9/8/26 5:00,0d,-88.75d,0ed,0,NA,NA,NA,NA,As Soon As Possible,NA,NA,NA,4/30/26 1:10,130h,0h,0h,0,0,0,0,0,1.1.1.8.1,500,No,Yes,Yes,,,Black,,,,,,,,0,0,0,0d,0d,0d,No,No,No,No,No,No,No,No,No,No,No,0,0,0,0,0,
136,3369,Yes,Auto Scheduled,System Refresh Basis(Workinig with NS2),2d,Fixed Units,6,0.13d,,"September 7, 2026 8:00","September 8, 2026 5:00",9/7/26 8:00,9/8/26 5:00,9/7/26 8:00,9/8/26 5:00,0d,0d,0ed,0,NA,NA,"June 19, 2026 8:00","June 19, 2026 9:00",Must Start On,9/7/26 8:00,NA,NA,4/30/26 1:10,16h,1h,0h,0,0,0,0,0,1.1.1.8.1.1,500,No,No,No,,,Black,CRITICAL,,,,,,,0,0,0,0d,0d,0d,No,No,No,No,No,No,No,No,No,No,Yes,0,0,0,0,0,
137,3370,Yes,Auto Scheduled,Client Config / Validation,2d,Fixed Units,6,1d,136,"September 9, 2026 8:00","September 10, 2026 5:00",9/9/26 8:00,9/10/26 5:00,5/5/26 9:59,5/7/26 9:59,0d,-90.75d,0ed,0,NA,NA,"June 26, 2026 10:00","June 29, 2026 10:00",As Soon As Possible,NA,NA,NA,4/30/26 1:10,16h,8h,0h,0,0,0,0,0,1.1.1.8.1.2,500,No,No,No,,,Black,,,,,,,,0,0,0,0d,0d,0d,No,No,No,No,No,No,No,No,No,No,No,0,0,0,0,0,
138,3371,Yes,Auto Scheduled,Technical Transports / BP Setup,1d,Fixed Units,6,1d,137,"September 11, 2026 8:00","September 11, 2026 5:00",9/11/26 8:00,9/11/26 5:00,5/7/26 9:59,5/8/26 9:59,0d,-90.75d,0ed,0,NA,NA,"June 29, 2026 10:00","June 30, 2026 10:00",As Soon As Possible,NA,NA,NA,4/30/26 1:10,8h,8h,0h,0,0,0,0,0,1.1.1.8.1.3,500,No,No,No,,,Black,,,,,,,,0,0,0,0d,0d,0d,No,No,No,No,No,No,No,No,No,No,No,0,0,0,0,0,
139,3372,Yes,Auto Scheduled,Best Practice / Country Validation,1d,Fixed Units,6,1d,137,"September 11, 2026 8:00","September 11, 2026 5:00",9/11/26 8:00,9/11/26 5:00,5/7/26 9:59,5/8/26 9:59,0d,-90.75d,0ed,0,NA,NA,"June 30, 2026 10:00","July 1, 2026 10:00",As Soon As Possible,NA,NA,NA,4/30/26 1:10,8h,8h,0h,0,0,0,0,0,1.1.1.8.1.4,500,No,No,No,,,Black,,,,,,,,0,0,0,0d,0d,0d,No,No,No,No,No,No,No,No,No,No,No,0,0,0,0,0,
140,3373,Yes,Auto Scheduled,Connect Systems and Validate,2d,Fixed Units,6,1d,139,"September 14, 2026 8:00","September 15, 2026 5:00",9/14/26 8:00,9/15/26 5:00,5/15/26 10:29,5/19/26 10:29,0d,-85.69d,0ed,0,NA,NA,"July 1, 2026 10:00","July 2, 2026 10:00",As Soon As Possible,NA,NA,NA,4/30/26 1:10,16h,8h,0h,0,0,0,0,0,1.1.1.8.1.5,500,No,No,No,,,Black,,,,,,,,0,0,0,0d,0d,0d,No,No,No,No,No,No,No,No,No,No,No,0,0,0,0,0,
141,3374,Yes,Auto Scheduled,Validate Syniti Connections to QS5,1d,Fixed Units,6,1d,140,"September 16, 2026 8:00","September 16, 2026 5:00",9/16/26 8:00,9/16/26 5:00,5/19/26 10:29,5/20/26 10:29,0d,-85.69d,0ed,0,NA,NA,"July 2, 2026 10:00","July 3, 2026 10:00",As Soon As Possible,NA,NA,NA,4/30/26 1:10,8h,8h,0h,0,0,0,0,0,1.1.1.8.1.6,500,No,No,No,,,Black,,,,,,,,0,0,0,0d,0d,0d,No,No,No,No,No,No,No,No,No,No,No,0,0,0,0,0,
142,3375,Yes,Auto Scheduled,Security Transports,1d,Fixed Units,6,0.5d,"138,139","September 14, 2026 8:00","September 14, 2026 5:00",9/14/26 8:00,9/14/26 5:00,5/8/26 9:59,5/11/26 9:59,0d,-90.75d,0ed,0,NA,NA,"July 3, 2026 10:00","July 3, 2026 3:00",As Soon As Possible,NA,NA,NA,4/30/26 1:10,8h,4h,0h,0,0,0,0,0,1.1.1.8.1.7,500,No,No,No,,,Black,,,,,,,,0,0,0,0d,0d,0d,No,No,No,No,No,No,No,No,No,No,No,0,0,0,0,0,
143,3376,Yes,Auto Scheduled,Security Manual Tasks,1d,Fixed Units,6,1d,142,"September 15, 2026 8:00","September 15, 2026 5:00",9/15/26 8:00,9/15/26 5:00,5/19/26 10:29,5/20/26 10:29,0d,-84.69d,0ed,0,NA,NA,"July 3, 2026 3:00","July 6, 2026 3:00",As Soon As Possible,NA,NA,NA,4/30/26 1:10,8h,8h,0h,0,0,0,0,0,1.1.1.8.1.8,500,No,No,No,,,Black,SS_OPT,,,,,,,0,0,0,0d,0d,0d,Yes,Yes,No,No,No,No,No,No,No,No,No,0,0,0,0,0,
144,3377,Yes,Auto Scheduled,Manual Technical Tasks,1d,Fixed Units,6,1d,142SS,"September 14, 2026 8:00","September 14, 2026 5:00",9/14/26 8:00,9/14/26 5:00,5/8/26 9:59,5/11/26 9:59,0d,-90.75d,0ed,0,NA,NA,"July 3, 2026 3:00","July 6, 2026 3:00",As Soon As Possible,NA,NA,NA,4/30/26 1:10,8h,8h,0h,0,0,0,0,0,1.1.1.8.1.9,500,No,No,No,,,Black,SS_OPT,,,,,,,0,0,0,0d,0d,0d,No,Yes,No,No,No,No,No,No,No,No,No,0,0,0,0,0,
145,3378,Yes,Auto Scheduled,Validate Fiori,1d,Fixed Units,6,0.5d,144,"September 15, 2026 8:00","September 15, 2026 5:00",9/15/26 8:00,9/15/26 5:00,5/11/26 9:59,5/12/26 9:59,0d,-90.75d,0ed,0,NA,NA,"July 6, 2026 3:00","July 7, 2026 10:00",As Soon As Possible,NA,NA,NA,4/30/26 1:10,8h,4h,0h,0,0,0,0,0,1.1.1.8.1.10,500,No,No,No,,,Black,,,,,,,,0,0,0,0d,0d,0d,No,No,No,No,No,No,No,No,No,No,No,0,0,0,0,0,
146,3379,Yes,Auto Scheduled,Fiori App Activation,1d,Fixed Units,6,0.75d,145SS,"September 15, 2026 8:00","September 15, 2026 5:00",9/15/26 8:00,9/15/26 5:00,5/19/26 10:29,5/20/26 10:29,0d,-84.69d,0ed,0,NA,NA,"July 7, 2026 10:00","July 7, 2026 5:00",As Soon As Possible,NA,NA,NA,4/30/26 1:10,8h,6h,0h,0,0,0,0,0,1.1.1.8.1.11,500,No,No,No,,,Black,SS_OPT,,,,,,,0,0,0,0d,0d,0d,Yes,Yes,No,No,No,No,No,No,No,No,No,0,0,0,0,0,
147,3380,Yes,Auto Scheduled,Download Transport List,1h,Fixed Units,6,0.13d,145,"September 16, 2026 8:00","September 16, 2026 9:00",9/16/26 8:00,9/16/26 9:00,5/20/26 9:29,5/20/26 10:29,0h,-678.52h,0ed,0,NA,NA,"July 7, 2026 10:00","July 7, 2026 11:00",As Soon As Possible,NA,NA,NA,4/30/26 1:10,1h,1h,0h,0,0,0,0,0,1.1.1.8.1.12,500,No,No,No,,,Black,,,,,,,,0,0,0,0d,0d,0d,No,No,No,No,No,No,No,No,No,No,No,0,0,0,0,0,
148,3381,Yes,Auto Scheduled,Business Functions Validation,1d,Fixed Units,6,1d,145SS,"September 15, 2026 8:00","September 15, 2026 5:00",9/15/26 8:00,9/15/26 5:00,5/19/26 10:29,5/20/26 10:29,0d,-84.69d,0ed,0,NA,NA,"July 7, 2026 10:00","July 8, 2026 10:00",Start No Earlier Than,1/5/26 8:00,NA,NA,4/30/26 1:10,8h,8h,0h,0,0,0,0,0,1.1.1.8.1.13,500,No,No,No,,,Black,SS_OPT,,,,,,,0,0,0,0d,0d,0d,Yes,Yes,No,No,No,No,No,No,No,No,No,0,0,0,0,0,
149,3382,Yes,Auto Scheduled,Functional Leads Validation of Transport List,1d,Fixed Units,6,0.13d,145SS,"September 15, 2026 8:00","September 15, 2026 5:00",9/15/26 8:00,9/15/26 5:00,5/11/26 9:59,5/12/26 9:59,0d,-90.75d,0ed,0,NA,NA,"July 7, 2026 11:00","July 7, 2026 12:00",As Soon As Possible,NA,NA,NA,4/30/26 1:10,8h,1h,0h,0,0,0,0,0,1.1.1.8.1.14,500,No,No,No,,,Black,SS_OPT,,,,,,,0,0,0,0d,0d,0d,Yes,Yes,No,No,No,No,No,No,No,No,No,0,0,0,0,0,
150,3383,Yes,Auto Scheduled,Release Security roles to Functional Team,1h,Fixed Units,6,0.13d,149,"September 16, 2026 8:00","September 16, 2026 9:00",9/16/26 8:00,9/16/26 9:00,5/20/26 9:29,5/20/26 10:29,0h,-678.52h,0ed,0,NA,NA,"July 7, 2026 1:00","July 7, 2026 2:00",As Soon As Possible,NA,NA,NA,4/30/26 1:10,1h,1h,0h,0,0,0,0,0,1.1.1.8.1.15,500,No,No,No,,,Black,,,,,,,,0,0,0,0d,0d,0d,No,No,No,No,No,No,No,No,No,No,No,0,0,0,0,0,
151,3384,Yes,Auto Scheduled,Release Transports to Client,5.5d,Fixed Duration,5,5.25d,149,"September 16, 2026 8:00","September 23, 2026 12:00",9/16/26 8:00,9/23/26 12:00,5/12/26 9:59,5/19/26 2:59,0d,-90.75d,0ed,0,NA,NA,"July 7, 2026 1:00","July 14, 2026 3:00",As Soon As Possible,NA,NA,NA,4/30/26 1:10,46h,42h,0h,0,0,0,0,0,1.1.1.8.2,500,No,Yes,Yes,,,Black,,,,,,,,0,0,0,0d,0d,0d,No,No,No,No,No,No,No,No,No,No,No,0,0,0,0,0,
152,3385,Yes,Auto Scheduled,Import Group 1 - Ent Structure,2h,Fixed Units,6,0.25d,149,"September 16, 2026 8:00","September 16, 2026 10:00",9/16/26 8:00,9/16/26 10:00,5/12/26 9:59,5/12/26 11:59,0h,-726.02h,0ed,0,NA,NA,"July 7, 2026 1:00","July 7, 2026 3:00",As Soon As Possible,NA,NA,NA,4/30/26 1:10,2h,2h,0h,0,0,0,0,0,1.1.1.8.2.1,500,No,No,No,,,Black,,,,,,,,0,0,0,0d,0d,0d,No,No,No,No,No,No,No,No,No,No,No,0,0,0,0,0,
153,3386,Yes,Auto Scheduled,Manual activities group 1,20h,Fixed Units,6,2.5d,152,"September 16, 2026 10:00","September 18, 2026 3:00",9/16/26 10:00,9/18/26 3:00,5/12/26 11:59,5/14/26 4:59,0h,-726.02h,0ed,0,NA,NA,"July 7, 2026 3:00","July 10, 2026 10:00",Finish No Earlier Than,2/11/26 5:00,NA,NA,4/30/26 1:10,20h,20h,0h,0,0,0,0,0,1.1.1.8.2.2,500,No,No,No,,,Black,,,,,,,,0,0,0,0d,0d,0d,No,No,No,No,No,No,No,No,No,No,No,0,0,0,0,0,
154,3387,Yes,Auto Scheduled,Import Group 2 - Core Transports,2h,Fixed Units,6,0.25d,153,"September 18, 2026 3:00","September 18, 2026 5:00",9/18/26 3:00,9/18/26 5:00,5/14/26 4:59,5/15/26 9:59,0h,-726.02h,0ed,0,NA,NA,"July 10, 2026 10:00","July 10, 2026 12:00",As Soon As Possible,NA,NA,NA,4/30/26 1:10,2h,2h,0h,0,0,0,0,0,1.1.1.8.2.3,500,No,No,No,,,Black,,,,,,,,0,0,0,0d,0d,0d,No,No,No,No,No,No,No,No,No,No,No,0,0,0,0,0,
155,3388,Yes,Auto Scheduled,Manual activities group 2,1d,Fixed Units,6,1d,154,"September 21, 2026 8:00","September 21, 2026 5:00",9/21/26 8:00,9/21/26 5:00,5/15/26 9:59,5/18/26 9:59,0d,-90.75d,0ed,0,NA,NA,"July 10, 2026 1:00","July 13, 2026 12:00",As Soon As Possible,NA,NA,NA,4/30/26 1:10,8h,8h,0h,0,0,0,0,0,1.1.1.8.2.4,500,No,No,No,,,Black,,,,,,,,0,0,0,0d,0d,0d,No,No,No,No,No,No,No,No,No,No,No,0,0,0,0,0,
156,3389,Yes,Auto Scheduled,Import Group 3 - prior to transactions,2h,Fixed Units,6,0.25d,155,"September 22, 2026 8:00","September 22, 2026 10:00",9/22/26 8:00,9/22/26 10:00,5/18/26 9:59,5/18/26 11:59,0h,-726.02h,0ed,0,NA,NA,"July 13, 2026 1:00","July 13, 2026 3:00",As Soon As Possible,NA,NA,NA,4/30/26 1:10,2h,2h,0h,0,0,0,0,0,1.1.1.8.2.5,500,No,No,No,,,Black,,,,,,,,0,0,0,0d,0d,0d,No,No,No,No,No,No,No,No,No,No,No,0,0,0,0,0,
157,3390,Yes,Auto Scheduled,Manual Activities Group 3,1d,Fixed Units,6,1d,156,"September 22, 2026 10:00","September 23, 2026 10:00",9/22/26 10:00,9/23/26 10:00,5/18/26 11:59,5/19/26 11:59,0d,-90.75d,0ed,0,NA,NA,"July 13, 2026 3:00","July 14, 2026 3:00",As Soon As Possible,NA,NA,NA,4/30/26 1:10,8h,8h,0h,0,0,0,0,0,1.1.1.8.2.6,500,No,No,No,,,Black,,,,,,,,0,0,0,0d,0d,0d,No,No,No,No,No,No,No,No,No,No,No,0,0,0,0,0,
158,3391,Yes,Auto Scheduled,Import Group 4 - workbench / dev work,2h,Fixed Units,6,0.25d,157,"September 23, 2026 10:00","September 23, 2026 12:00",9/23/26 10:00,9/23/26 12:00,5/19/26 11:59,5/19/26 2:59,0h,-726.02h,0ed,0,NA,NA,"July 14, 2026 3:00","July 14, 2026 5:00",Start No Earlier Than,4/3/25 8:00,NA,NA,4/30/26 1:10,2h,2h,0h,0,0,0,0,0,1.1.1.8.2.7,500,No,No,No,,,Black,CRITICAL,,,,,,,0,0,0,0d,0d,0d,No,No,No,No,No,No,No,No,No,No,No,0,0,0,0,0,
159,3392,Yes,Auto Scheduled,Import Group 5 - Config to support dev workbench,2h,Fixed Units,6,0.25d,158SS,"September 23, 2026 10:00","September 23, 2026 12:00",9/23/26 10:00,9/23/26 12:00,5/19/26 11:59,5/19/26 2:59,0h,-726.02h,0ed,0,NA,NA,"July 15, 2026 8:00","July 15, 2026 10:00",As Soon As Possible,NA,NA,NA,4/30/26 1:10,2h,2h,0h,0,0,0,0,0,1.1.1.8.2.8,500,No,No,No,,,Black,SS_OPT,,,,,,,0,0,0,0d,0d,0d,No,Yes,No,No,No,No,No,No,No,No,No,0,0,0,0,0,
160,3393,Yes,Auto Scheduled,Data Project Create,0.56d,Fixed Duration,5,1.06d,,"September 23, 2026 1:00","September 24, 2026 8:30",9/23/26 1:00,9/24/26 8:30,5/19/26 2:59,5/20/26 10:29,0d,-90.75d,0ed,0,NA,NA,"July 15, 2026 10:00","July 16, 2026 10:30",As Soon As Possible,NA,NA,NA,4/30/26 1:10,4.5h,8.5h,0h,0,0,0,0,0,1.1.1.8.3,500,No,Yes,Yes,,,Black,CRITICAL,,,,,,,0,0,0,0d,0d,0d,Yes,No,No,No,No,No,No,No,No,No,Yes,0,0,0,0,0,
161,3394,Yes,Auto Scheduled,Open Client,15m,Fixed Units,6,0.03d,159,"September 23, 2026 1:00","September 23, 2026 1:15",9/23/26 1:00,9/23/26 1:15,5/19/26 2:59,5/19/26 3:14,0m,-43561m,0ed,0,NA,NA,"July 15, 2026 10:00","July 15, 2026 10:15",As Soon As Possible,NA,NA,NA,4/30/26 1:10,0.25h,0.25h,0h,0,0,0,0,0,1.1.1.8.3.1,500,No,No,No,,,Black,,,,,,,,0,0,0,0d,0d,0d,No,No,No,No,No,No,No,No,No,No,No,0,0,0,0,0,
162,3395,Yes,Auto Scheduled,Create Migration Data Project in DMC,4h,Fixed Units,6,1d,161,"September 23, 2026 1:15","September 24, 2026 8:15",9/23/26 1:15,9/24/26 8:15,5/19/26 3:14,5/20/26 10:14,0h,-726.02h,0ed,0,NA,NA,"July 15, 2026 10:15","July 16, 2026 10:15",As Soon As Possible,NA,NA,NA,4/30/26 1:10,4h,8h,0h,0,0,0,0,0,1.1.1.8.3.2,500,No,No,No,,,Black,,,,,,,,0,0,0,0d,0d,0d,No,No,No,No,No,No,No,No,No,No,No,0,0,0,0,0,
163,3396,Yes,Auto Scheduled,Close Client,15m,Fixed Units,6,0.03d,162,"September 24, 2026 8:15","September 24, 2026 8:30",9/24/26 8:15,9/24/26 8:30,5/20/26 10:14,5/20/26 10:29,0m,-43561m,0ed,0,NA,NA,"July 16, 2026 10:15","July 16, 2026 10:30",As Soon As Possible,NA,NA,NA,4/30/26 1:10,0.25h,0.25h,0h,0,0,0,0,0,1.1.1.8.3.3,500,No,No,No,,,Black,,,,,,,,0,0,0,0d,0d,0d,No,No,No,No,No,No,No,No,No,No,No,0,0,0,0,0,
164,3397,Yes,Auto Scheduled,Environment Ready for Build,0m,Fixed Units,5,0d,160,"September 24, 2026 8:30","September 24, 2026 8:30",9/24/26 8:30,9/24/26 8:30,5/20/26 10:29,5/20/26 10:29,0m,-43561m,0ed,0,NA,NA,"March 13, 2025 8:00","March 13, 2025 8:00",As Soon As Possible,NA,NA,NA,4/30/26 1:10,0h,0h,0h,0,0,0,0,0,1.1.1.8.4,500,Yes,No,No,,,Black,CRITICAL,,,,,,,0,0,0,0d,0d,0d,Yes,No,No,No,No,No,No,No,No,No,Yes,0,0,0,0,0,
165,201,Yes,Auto Scheduled,Prod (PS4) Setup,17d,Fixed Duration,4,17.38d,,"September 7, 2026 8:00","September 29, 2026 5:00",9/7/26 8:00,9/29/26 5:00,10/16/26 8:00,11/9/26 5:00,29d,29d,0ed,0,NA,NA,"March 13, 2025 8:00","April 7, 2025 11:00",Start No Earlier Than,9/7/26 8:00,NA,NA,6/17/25 2:45,0h,0h,0h,0,0,0,0,0,1.1.1.9,500,No,No,No,,,Black,,,,,,,,0,0,0,0d,0d,0d,No,No,No,No,No,No,No,No,No,No,No,0,0,0,0,0,
166,248,Yes,Auto Scheduled,GRC Security Utility,439d?,Fixed Duration,3,296d,,"February 17, 2025 8:00","October 22, 2026 5:00",2/17/25 8:00,10/22/26 5:00,2/17/25 8:00,11/9/26 5:00,12d?,12d?,0ed,0.88,2/17/25 8:00,NA,"February 17, 2025 8:00","April 6, 2026 5:00",As Soon As Possible,NA,3/13/25 5:00,3/13/25 5:00,7/14/25 9:04,8h,8h,8h,0,0,0,0,0,1.1.2,500,No,Yes,Yes,,,GreenCircle,,,,,,,,0,0,0,0d,0d,0d,No,No,No,No,No,No,No,No,No,No,No,0,0,0,0,0,
167,299,Yes,Auto Scheduled,Initiation & Planning,262d,Fixed Duration,4,262d,,"February 17, 2025 8:00","February 17, 2026 5:00",2/17/25 8:00,2/17/26 5:00,2/17/25 8:00,2/17/26 5:00,0d,0d,0ed,1,2/17/25 8:00,2/17/26 5:00,"February 17, 2025 8:00","February 17, 2026 5:00",As Soon As Possible,NA,7/16/25 5:00,7/16/25 5:00,7/16/25 4:43,0h,0h,0h,0,0,0,0,0,1.1.2.1,500,No,Yes,Yes,,,GreenSquare,,,,,,,,0,0,0,0d,0d,0d,No,No,No,No,No,No,No,No,No,No,No,0,0,0,0,0,
168,249,Yes,Auto Scheduled,Project kickoff,1d,Fixed Units,5,1d,,"July 16, 2025 8:00","July 16, 2025 5:00",7/16/25 8:00,7/16/25 5:00,7/16/25 8:00,7/16/25 5:00,0d,0d,0ed,1,7/16/25 8:00,7/16/25 5:00,"July 16, 2025 8:00","July 16, 2025 5:00",Start No Earlier Than,7/16/25 8:00,7/16/25 5:00,7/16/25 5:00,7/14/25 9:05,0h,0h,0h,0,0,0,0,0,1.1.2.1.1,500,No,No,No,,,GreenSquare,,,,,,,,0,0,0,0d,0d,0d,No,No,No,No,No,No,No,No,No,No,No,0,0,0,0,0,
169,250,Yes,Auto Scheduled,Requirement gathering,130d,Fixed Units,5,130d,,"February 17, 2025 8:00","August 15, 2025 5:00",2/17/25 8:00,8/15/25 5:00,2/17/25 8:00,8/15/25 5:00,0d,0d,0ed,1,2/17/25 8:00,8/15/25 5:00,"February 17, 2025 8:00","August 15, 2025 5:00",Start No Earlier Than,2/16/25 8:00,8/15/25 5:00,8/15/25 5:00,7/14/25 9:05,0h,0h,0h,0,0,0,0,0,1.1.2.1.2,500,No,No,No,,,GreenSquare,,,,,,,,0,0,0,0d,0d,0d,No,No,No,No,No,No,No,No,No,No,No,0,0,0,0,0,
170,251,Yes,Auto Scheduled,Landscape design,2d,Fixed Units,5,2d,169,"August 18, 2025 8:00","August 19, 2025 5:00",8/18/25 8:00,8/19/25 5:00,8/18/25 8:00,8/19/25 5:00,0d,0d,0ed,1,8/18/25 8:00,8/19/25 5:00,"August 18, 2025 8:00","August 19, 2025 5:00",Finish No Earlier Than,8/19/25 5:00,8/19/25 5:00,8/19/25 5:00,7/14/25 9:05,0h,0h,0h,0,0,0,0,0,1.1.2.1.3,500,No,No,No,,,GreenSquare,,,,,,,,0,0,0,0d,0d,0d,No,No,No,No,No,No,No,No,No,No,No,0,0,0,0,0,
171,252,Yes,Auto Scheduled,Project plan finalization,2d,Fixed Units,5,2d,,"February 16, 2026 8:00","February 17, 2026 5:00",2/16/26 8:00,2/17/26 5:00,2/16/26 8:00,2/17/26 5:00,0d,0d,0ed,1,2/16/26 8:00,2/17/26 5:00,"February 16, 2026 8:00","February 17, 2026 5:00",Start No Earlier Than,2/16/26 8:00,2/17/26 5:00,2/17/26 5:00,7/14/25 9:05,0h,0h,0h,0,0,0,0,0,1.1.2.1.4,500,No,No,No,,,GreenSquare,,,,,,,,0,0,0,0d,0d,0d,No,No,No,No,No,No,No,No,No,No,No,0,0,0,0,0,
172,253,Yes,Auto Scheduled,System Setup & Connectivity,171d,Fixed Duration,4,171d,,"July 28, 2025 8:00","March 23, 2026 5:00",7/28/25 8:00,3/23/26 5:00,7/28/25 8:00,3/23/26 5:00,0d,0d,0ed,1,7/28/25 8:00,3/23/26 5:00,"July 28, 2025 8:00","March 23, 2026 5:00",As Soon As Possible,NA,8/1/25 5:00,8/1/25 5:00,7/14/25 9:05,0h,0h,0h,0,0,0,0,0,1.1.2.2,500,No,Yes,Yes,,,GreenSquare,,,,,,,,0,0,0,0d,0d,0d,No,No,No,No,No,No,No,No,No,No,No,0,0,0,0,0,
173,254,Yes,Auto Scheduled,Install GRC AC components,5d,Fixed Units,5,5d,,"July 28, 2025 8:00","August 1, 2025 5:00",7/28/25 8:00,8/1/25 5:00,7/28/25 8:00,8/1/25 5:00,0d,0d,0ed,1,7/28/25 8:00,8/1/25 5:00,"July 28, 2025 8:00","August 1, 2025 5:00",Start No Earlier Than,7/28/25 8:00,8/1/25 5:00,8/1/25 5:00,7/14/25 9:05,0h,0h,0h,0,0,0,0,0,1.1.2.2.1,500,No,No,No,,,GreenSquare,,,,,,,,0,0,0,0d,0d,0d,No,No,No,No,No,No,No,No,No,No,No,0,0,0,0,0,
174,258,Yes,Auto Scheduled,Install plug-ins on target systems,5d,Fixed Units,5,5d,171,"February 18, 2026 8:00","February 24, 2026 5:00",2/18/26 8:00,2/24/26 5:00,2/18/26 8:00,2/24/26 5:00,0d,0d,0ed,1,2/18/26 8:00,2/24/26 5:00,"February 18, 2026 8:00","February 24, 2026 5:00",As Soon As Possible,NA,2/24/26 5:00,2/24/26 5:00,7/16/25 4:39,0h,0h,0h,0,0,0,0,0,1.1.2.2.2,500,No,No,No,,,GreenSquare,,,,,,,,0,0,0,0d,0d,0d,No,No,No,No,No,No,No,No,No,No,No,0,0,0,0,0,
175,259,Yes,Auto Scheduled,Post installation Steps,5d,Fixed Units,5,5d,174,"February 25, 2026 8:00","March 3, 2026 5:00",2/25/26 8:00,3/3/26 5:00,2/25/26 8:00,3/3/26 5:00,0d,0d,0ed,1,2/25/26 8:00,3/3/26 5:00,"February 25, 2026 8:00","March 3, 2026 5:00",As Soon As Possible,NA,3/3/26 5:00,3/3/26 5:00,7/16/25 4:39,0h,0h,0h,0,0,0,0,0,1.1.2.2.3,500,No,No,No,,,GreenSquare,,,,,,,,0,0,0,0d,0d,0d,No,No,No,No,No,No,No,No,No,No,No,0,0,0,0,0,
176,260,Yes,Auto Scheduled,Activate BC Sets,2d,Fixed Units,5,2d,175,"March 4, 2026 8:00","March 5, 2026 5:00",3/4/26 8:00,3/5/26 5:00,3/4/26 8:00,3/5/26 5:00,0d,0d,0ed,1,3/4/26 8:00,3/5/26 5:00,"March 4, 2026 8:00","March 5, 2026 5:00",As Soon As Possible,NA,3/5/26 5:00,3/5/26 5:00,7/16/25 4:39,0h,0h,0h,0,0,0,0,0,1.1.2.2.4,500,No,No,No,,,GreenSquare,,,,,,,,0,0,0,0d,0d,0d,No,No,No,No,No,No,No,No,No,No,No,0,0,0,0,0,
177,261,Yes,Auto Scheduled,Connector configuration (S4 / LDAP Connector),5d,Fixed Units,5,5d,176,"March 6, 2026 8:00","March 12, 2026 5:00",3/6/26 8:00,3/12/26 5:00,3/6/26 8:00,3/12/26 5:00,0d,0d,0ed,1,3/6/26 8:00,3/12/26 5:00,"March 6, 2026 8:00","March 12, 2026 5:00",As Soon As Possible,NA,3/12/26 5:00,3/12/26 5:00,7/16/25 4:39,0h,0h,0h,0,0,0,0,0,1.1.2.2.5,500,No,No,No,,,GreenSquare,,,,,,,,0,0,0,0d,0d,0d,No,No,No,No,No,No,No,No,No,No,No,0,0,0,0,0,
178,262,Yes,Auto Scheduled,Initial configuration [GRC Parameter/Business Process/Sub Process and system Configuration],6d,Fixed Units,5,6d,177,"March 13, 2026 8:00","March 20, 2026 5:00",3/13/26 8:00,3/20/26 5:00,3/13/26 8:00,3/20/26 5:00,0d,0d,0ed,1,3/13/26 8:00,3/20/26 5:00,"March 13, 2026 8:00","March 20, 2026 5:00",As Soon As Possible,NA,3/20/26 5:00,3/20/26 5:00,7/16/25 4:39,0h,0h,0h,0,0,0,0,0,1.1.2.2.6,500,No,No,No,,,GreenSquare,,,,,,,,0,0,0,0d,0d,0d,No,No,No,No,No,No,No,No,No,No,No,0,0,0,0,0,
179,263,Yes,Auto Scheduled,Transport setup,1d,Fixed Units,5,1d,178,"March 23, 2026 8:00","March 23, 2026 5:00",3/23/26 8:00,3/23/26 5:00,3/23/26 8:00,3/23/26 5:00,0d,0d,0ed,1,3/23/26 8:00,3/23/26 5:00,"March 23, 2026 8:00","March 23, 2026 5:00",As Soon As Possible,NA,3/23/26 5:00,3/23/26 5:00,7/16/25 4:39,0h,0h,0h,0,0,0,0,0,1.1.2.2.7,500,No,No,No,,,GreenSquare,,,,,,,,0,0,0,0d,0d,0d,No,No,No,No,No,No,No,No,No,No,No,0,0,0,0,0,
180,264,Yes,Auto Scheduled,Workflow setup,10d,Fixed Duration,4,10d,,"March 24, 2026 8:00","April 6, 2026 5:00",3/24/26 8:00,4/6/26 5:00,3/24/26 8:00,4/6/26 5:00,0d,0d,0ed,1,3/24/26 8:00,4/6/26 5:00,"March 24, 2026 8:00","April 6, 2026 5:00",As Soon As Possible,NA,3/30/26 5:00,3/30/26 5:00,7/16/25 4:39,0h,0h,0h,0,0,0,0,0,1.1.2.3,500,No,Yes,Yes,,,GreenSquare,,,,,,,,0,0,0,0d,0d,0d,No,No,No,No,No,No,No,No,No,No,No,0,0,0,0,0,
181,265,Yes,Auto Scheduled,MSMP workflow configuration,5d,Fixed Units,5,5d,179,"March 24, 2026 8:00","March 30, 2026 5:00",3/24/26 8:00,3/30/26 5:00,3/24/26 8:00,3/30/26 5:00,0d,0d,0ed,1,3/24/26 8:00,3/30/26 5:00,"March 24, 2026 8:00","March 30, 2026 5:00",As Soon As Possible,NA,3/30/26 5:00,3/30/26 5:00,7/16/25 4:39,0h,0h,0h,0,0,0,0,0,1.1.2.3.1,500,No,No,No,,,GreenSquare,,,,,,,,0,0,0,0d,0d,0d,No,No,No,No,No,No,No,No,No,No,No,0,0,0,0,0,
182,266,Yes,Auto Scheduled,BRF+ decision tables,5d,Fixed Units,5,5d,181,"March 31, 2026 8:00","April 6, 2026 5:00",3/31/26 8:00,4/6/26 5:00,3/31/26 8:00,4/6/26 5:00,0d,0d,0ed,1,3/31/26 8:00,4/6/26 5:00,"March 31, 2026 8:00","April 6, 2026 5:00",As Soon As Possible,NA,4/6/26 5:00,4/6/26 5:00,7/16/25 4:39,0h,0h,0h,0,0,0,0,0,1.1.2.3.2,500,No,No,No,,,GreenSquare,,,,,,,,0,0,0,0d,0d,0d,No,No,No,No,No,No,No,No,No,No,No,0,0,0,0,0,
183,267,Yes,Auto Scheduled,Rule Set & Role Design,311d?,Fixed Duration,4,195d,,"March 13, 2025 8:00","May 21, 2026 5:00",3/13/25 8:00,5/21/26 5:00,3/13/25 8:00,11/9/26 5:00,122d?,122d?,0ed,0.77000000000000002,3/13/25 8:00,NA,"March 13, 2025 8:00","December 10, 2025 5:00",As Soon As Possible,NA,3/13/25 5:00,3/13/25 5:00,7/16/25 4:39,8h,8h,8h,0,0,0,0,0,1.1.2.4,500,No,Yes,Yes,,,GreenCircle,,,,,,,,0,0,0,0d,0d,0d,No,No,No,No,No,No,No,No,No,No,No,0,0,0,0,0,
184,268,Yes,Auto Scheduled,Extract the default Global Ruleset from SAP,4d,Fixed Units,5,4d,,"September 2, 2025 8:00","September 5, 2025 5:00",9/2/25 8:00,9/5/25 5:00,9/2/25 8:00,9/5/25 5:00,0d,0d,0ed,1,9/2/25 8:00,9/5/25 5:00,"September 2, 2025 8:00","September 5, 2025 5:00",Start No Earlier Than,9/2/25 8:00,9/5/25 5:00,9/5/25 5:00,7/16/25 4:39,0h,0h,0h,0,0,0,0,0,1.1.2.4.1,500,No,No,No,,,GreenSquare,,,,,,,,0,0,0,0d,0d,0d,No,No,No,No,No,No,No,No,No,No,No,0,0,0,0,0,
185,269,Yes,Auto Scheduled,Extract SU24 Details of transactions from global ruleset and Custom Transactions,7d,Fixed Units,5,7d,184,"September 8, 2025 8:00","September 16, 2025 5:00",9/8/25 8:00,9/16/25 5:00,9/8/25 8:00,9/16/25 5:00,0d,0d,0ed,1,9/8/25 8:00,9/16/25 5:00,"September 8, 2025 8:00","September 16, 2025 5:00",As Soon As Possible,NA,9/16/25 5:00,9/16/25 5:00,7/16/25 4:39,0h,0h,0h,0,0,0,0,0,1.1.2.4.2,500,No,No,No,,,GreenSquare,,,,,,,,0,0,0,0d,0d,0d,No,No,No,No,No,No,No,No,No,No,No,0,0,0,0,0,
186,281,Yes,Auto Scheduled,Prepare/Share the Ruleset Draft with all the functional leads for inputs,6d,Fixed Units,5,6d,185,"September 17, 2025 8:00","September 24, 2025 5:00",9/17/25 8:00,9/24/25 5:00,9/17/25 8:00,9/24/25 5:00,0d,0d,0ed,1,9/17/25 8:00,9/24/25 5:00,"September 17, 2025 8:00","September 24, 2025 5:00",As Soon As Possible,NA,9/24/25 5:00,9/24/25 5:00,7/16/25 4:40,0h,0h,0h,0,0,0,0,0,1.1.2.4.3,500,No,No,No,,,GreenSquare,,,,,,,,0,0,0,0d,0d,0d,No,No,No,No,No,No,No,No,No,No,No,0,0,0,0,0,
187,282,Yes,Auto Scheduled,Schedule workshops to collect complete details of ruleset module wise and close the gaps,26d,Fixed Units,5,26d,186,"September 25, 2025 8:00","October 30, 2025 5:00",9/25/25 8:00,10/30/25 5:00,9/25/25 8:00,10/30/25 5:00,0d,0d,0ed,1,9/25/25 8:00,10/30/25 5:00,"September 25, 2025 8:00","October 30, 2025 5:00",As Soon As Possible,NA,10/30/25 5:00,10/30/25 5:00,7/16/25 4:40,0h,0h,0h,0,0,0,0,0,1.1.2.4.4,500,No,No,No,,,GreenSquare,,,,,,,,0,0,0,0d,0d,0d,No,No,No,No,No,No,No,No,No,No,No,0,0,0,0,0,
188,283,Yes,Auto Scheduled,Final Review Rule Set and update the recommendations,4d,Fixed Units,5,4d,187,"October 31, 2025 8:00","May 4, 2026 1:48",10/31/25 8:00,5/4/26 1:48,10/31/25 8:00,11/9/26 5:00,135.4d,135.4d,0ed,0.59999999999999998,10/31/25 8:00,NA,"October 31, 2025 8:00","November 5, 2025 5:00",As Soon As Possible,NA,11/4/25 11:12,5/1/26 8:00,7/16/25 4:40,0h,0h,0h,0,0,0,0,0,1.1.2.4.5,500,No,No,No,,,Red,,,,,,,,0,0,0,0d,0d,0d,No,No,No,No,No,No,No,No,No,No,No,0,0,0,0,0,
189,284,Yes,Auto Scheduled,Import rulesets into system,4d,Fixed Units,5,4d,188,"November 6, 2025 8:00","November 11, 2025 5:00",11/6/25 8:00,11/11/25 5:00,11/6/25 8:00,11/11/25 5:00,0d,0d,0ed,1,11/6/25 8:00,11/11/25 5:00,"November 6, 2025 8:00","November 11, 2025 5:00",As Soon As Possible,NA,11/11/25 5:00,11/11/25 5:00,7/16/25 4:40,0h,0h,0h,0,0,0,0,0,1.1.2.4.6,500,No,No,No,,,GreenSquare,,,,,,,,0,0,0,0d,0d,0d,No,No,No,No,No,No,No,No,No,No,No,0,0,0,0,0,
190,303,Yes,Auto Scheduled,RCM Development,1d?,Fixed Units,5,1d,,"March 13, 2025 8:00","March 13, 2025 5:00",3/13/25 8:00,3/13/25 5:00,3/13/25 8:00,3/13/25 5:00,0d?,0d?,0ed,1,3/13/25 8:00,3/13/25 5:00,"March 13, 2025 8:00","March 13, 2025 5:00",As Soon As Possible,NA,3/13/25 5:00,3/13/25 5:00,7/18/25 8:44,8h,8h,8h,0,0,0,0,0,1.1.2.4.7,500,No,No,No,,,GreenSquare,,,,,,,,0,0,0,0d,0d,0d,No,No,No,No,No,No,No,No,No,No,No,0,0,0,0,0,
191,285,Yes,Auto Scheduled,Setup Mitigation controls,6d,Fixed Units,5,6d,189,"November 12, 2025 8:00","November 19, 2025 5:00",11/12/25 8:00,11/19/25 5:00,11/12/25 8:00,11/19/25 5:00,0d,0d,0ed,1,11/12/25 8:00,11/19/25 5:00,"November 12, 2025 8:00","November 19, 2025 5:00",As Soon As Possible,NA,11/19/25 5:00,11/19/25 5:00,7/16/25 4:40,0h,0h,0h,0,0,0,0,0,1.1.2.4.8,500,No,No,No,,,GreenSquare,,,,,,,,0,0,0,0d,0d,0d,No,No,No,No,No,No,No,No,No,No,No,0,0,0,0,0,
192,286,Yes,Auto Scheduled,Risk analysis on existing roles,5d,Fixed Units,5,5d,191,"May 1, 2026 8:00","May 7, 2026 5:00",5/1/26 8:00,5/7/26 5:00,10/20/26 8:00,10/26/26 5:00,0d,122d,0ed,0,NA,NA,"November 20, 2025 8:00","November 26, 2025 5:00",Start No Earlier Than,4/30/26 5:00,NA,NA,7/16/25 4:40,0h,0h,0h,0,0,0,0,0,1.1.2.4.9,500,No,No,No,,,,,,,,,,,0,0,0,0d,0d,0d,No,No,No,No,No,No,No,No,No,No,No,0,0,0,0,0,
193,270,Yes,Auto Scheduled,Role remediation planning - Can impact role design & Possible of retesting.,10d,Fixed Units,5,10d,192,"May 8, 2026 8:00","May 21, 2026 5:00",5/8/26 8:00,5/21/26 5:00,10/27/26 8:00,11/9/26 5:00,122d,122d,0ed,0,NA,NA,"November 27, 2025 8:00","December 10, 2025 5:00",Start No Earlier Than,4/30/26 5:00,NA,NA,7/16/25 4:40,0h,0h,0h,0,0,0,0,0,1.1.2.4.10,500,No,No,No,,,Black,,,,,,,,0,0,0,0d,0d,0d,No,No,No,No,No,No,No,No,No,No,No,0,0,0,0,0,
194,271,Yes,Auto Scheduled,Business Role Management,10d,Fixed Duration,4,10d,,"May 8, 2026 8:00","May 21, 2026 5:00",5/8/26 8:00,5/21/26 5:00,10/27/26 8:00,11/9/26 5:00,122d,122d,0ed,0,NA,NA,"November 27, 2025 8:00","December 10, 2025 5:00",As Soon As Possible,NA,NA,NA,7/16/25 4:40,0h,0h,0h,0,0,0,0,0,1.1.2.5,500,No,Yes,Yes,,,Black,,,,,,,,0,0,0,0d,0d,0d,No,No,No,No,No,No,No,No,No,No,No,0,0,0,0,0,
195,272,Yes,Auto Scheduled,Role Mapping with Business Process and Sub-Process /Functional Area,5d,Fixed Units,5,5d,192,"May 8, 2026 8:00","May 14, 2026 5:00",5/8/26 8:00,5/14/26 5:00,10/27/26 8:00,11/2/26 5:00,0d,122d,0ed,0,NA,NA,"November 27, 2025 8:00","December 3, 2025 5:00",Start No Earlier Than,4/30/26 5:00,NA,NA,7/16/25 4:40,0h,0h,0h,0,0,0,0,0,1.1.2.5.1,500,No,No,No,,,Black,,,,,,,,0,0,0,0d,0d,0d,No,No,No,No,No,No,No,No,No,No,No,0,0,0,0,0,
196,273,Yes,Auto Scheduled,Role Upload to SAP GRC,5d,Fixed Units,5,5d,195,"May 15, 2026 8:00","May 21, 2026 5:00",5/15/26 8:00,5/21/26 5:00,11/3/26 8:00,11/9/26 5:00,122d,122d,0ed,0,NA,NA,"December 4, 2025 8:00","December 10, 2025 5:00",Start No Earlier Than,4/30/26 5:00,NA,NA,7/16/25 4:40,0h,0h,0h,0,0,0,0,0,1.1.2.5.2,500,No,No,No,,,Black,,,,,,,,0,0,0,0d,0d,0d,No,No,No,No,No,No,No,No,No,No,No,0,0,0,0,0,
197,274,Yes,Auto Scheduled,Firefighter Configuration,15d,Fixed Duration,4,15d,,"May 1, 2026 8:00","May 21, 2026 5:00",5/1/26 8:00,5/21/26 5:00,10/20/26 8:00,11/9/26 5:00,122d,122d,0ed,0,NA,NA,"October 20, 2025 8:00","November 7, 2025 5:00",As Soon As Possible,NA,NA,NA,7/16/25 4:40,0h,0h,0h,0,0,0,0,0,1.1.2.6,500,No,Yes,Yes,,,,,,,,,,,0,0,0,0d,0d,0d,No,No,No,No,No,No,No,No,No,No,No,0,0,0,0,0,
198,275,Yes,Auto Scheduled,Firefighter ID setup,5d,Fixed Units,5,5d,,"May 1, 2026 8:00","May 7, 2026 5:00",5/1/26 8:00,5/7/26 5:00,10/20/26 8:00,10/26/26 5:00,0d,122d,0ed,0,NA,NA,"October 20, 2025 8:00","October 24, 2025 5:00",Start No Earlier Than,4/30/26 5:00,NA,NA,7/16/25 4:40,0h,0h,0h,0,0,0,0,0,1.1.2.6.1,500,No,No,No,,,,,,,,,,,0,0,0,0d,0d,0d,No,No,No,No,No,No,No,No,No,No,No,0,0,0,0,0,
199,276,Yes,Auto Scheduled,Firefighter log settings,5d,Fixed Units,5,5d,198,"May 8, 2026 8:00","May 14, 2026 5:00",5/8/26 8:00,5/14/26 5:00,10/27/26 8:00,11/2/26 5:00,0d,122d,0ed,0,NA,NA,"October 27, 2025 8:00","October 31, 2025 5:00",Start No Earlier Than,4/30/26 5:00,NA,NA,7/16/25 4:40,0h,0h,0h,0,0,0,0,0,1.1.2.6.2,500,No,No,No,,,Black,,,,,,,,0,0,0,0d,0d,0d,No,No,No,No,No,No,No,No,No,No,No,0,0,0,0,0,
200,277,Yes,Auto Scheduled,Functional validation,5d,Fixed Units,5,5d,199,"May 15, 2026 8:00","May 21, 2026 5:00",5/15/26 8:00,5/21/26 5:00,11/3/26 8:00,11/9/26 5:00,122d,122d,0ed,0,NA,NA,"November 3, 2025 8:00","November 7, 2025 5:00",Start No Earlier Than,4/30/26 5:00,NA,NA,7/16/25 4:40,0h,0h,0h,0,0,0,0,0,1.1.2.6.3,500,No,No,No,,,Black,,,,,,,,0,0,0,0d,0d,0d,No,No,No,No,No,No,No,No,No,No,No,0,0,0,0,0,
201,278,Yes,Auto Scheduled,Testing & Training,69d,Fixed Duration,4,69d,,"May 1, 2026 8:00","August 5, 2026 5:00",5/1/26 8:00,8/5/26 5:00,8/5/26 8:00,11/9/26 5:00,68d,68d,0ed,0,NA,NA,"November 10, 2025 8:00","February 12, 2026 5:00",As Soon As Possible,NA,NA,NA,7/16/25 4:40,0h,0h,0h,0,0,0,0,0,1.1.2.7,500,No,Yes,Yes,,,,,,,,,,,0,0,0,0d,0d,0d,No,No,No,No,No,No,No,No,No,No,No,0,0,0,0,0,
202,279,Yes,Auto Scheduled,Unit testing,9d,Fixed Units,5,9d,,"May 1, 2026 8:00","May 13, 2026 5:00",5/1/26 8:00,5/13/26 5:00,8/5/26 8:00,8/17/26 5:00,0d,68d,0ed,0,NA,NA,"November 10, 2025 8:00","November 20, 2025 5:00",Start No Earlier Than,4/30/26 5:00,NA,NA,7/16/25 4:40,0h,0h,0h,0,0,0,0,0,1.1.2.7.1,500,No,No,No,,,,,,,,,,,0,0,0,0d,0d,0d,No,No,No,No,No,No,No,No,No,No,No,0,0,0,0,0,
203,280,Yes,Auto Scheduled,Changes moved to Test System,3d,Fixed Units,5,3d,202,"May 14, 2026 8:00","May 18, 2026 5:00",5/14/26 8:00,5/18/26 5:00,8/18/26 8:00,8/20/26 5:00,0d,68d,0ed,0,NA,NA,"November 21, 2025 8:00","November 25, 2025 5:00",Start No Earlier Than,4/30/26 5:00,NA,NA,7/16/25 4:40,0h,0h,0h,0,0,0,0,0,1.1.2.7.2,500,No,No,No,,,Black,,,,,,,,0,0,0,0d,0d,0d,No,No,No,No,No,No,No,No,No,No,No,0,0,0,0,0,
204,287,Yes,Auto Scheduled,Connector configuration (S4 / LDAP Connector),3d,Fixed Units,5,3d,203,"May 19, 2026 8:00","May 21, 2026 5:00",5/19/26 8:00,5/21/26 5:00,8/21/26 8:00,8/25/26 5:00,0d,68d,0ed,0,NA,NA,"November 26, 2025 8:00","November 28, 2025 5:00",Start No Earlier Than,4/30/26 5:00,NA,NA,7/16/25 4:41,0h,0h,0h,0,0,0,0,0,1.1.2.7.3,500,No,No,No,,,Black,,,,,,,,0,0,0,0d,0d,0d,No,No,No,No,No,No,No,No,No,No,No,0,0,0,0,0,
205,288,Yes,Auto Scheduled,Workflow Activation / Data load in Test System,5d,Fixed Units,5,5d,204,"May 22, 2026 8:00","May 28, 2026 5:00",5/22/26 8:00,5/28/26 5:00,8/26/26 8:00,9/1/26 5:00,0d,68d,0ed,0,NA,NA,"December 1, 2025 8:00","December 5, 2025 5:00",Start No Earlier Than,4/30/26 5:00,NA,NA,7/16/25 4:41,0h,0h,0h,0,0,0,0,0,1.1.2.7.4,500,No,No,No,,,Black,,,,,,,,0,0,0,0d,0d,0d,No,No,No,No,No,No,No,No,No,No,No,0,0,0,0,0,
206,289,Yes,Auto Scheduled,Integration testing - Smoke Test,9d,Fixed Units,5,9d,205,"May 29, 2026 8:00","June 10, 2026 5:00",5/29/26 8:00,6/10/26 5:00,9/2/26 8:00,9/14/26 5:00,0d,68d,0ed,0,NA,NA,"December 8, 2025 8:00","December 18, 2025 5:00",Start No Earlier Than,4/30/26 5:00,NA,NA,7/16/25 4:41,0h,0h,0h,0,0,0,0,0,1.1.2.7.5,500,No,No,No,,,Black,,,,,,,,0,0,0,0d,0d,0d,No,No,No,No,No,No,No,No,No,No,No,0,0,0,0,0,
207,290,Yes,Auto Scheduled,UAT (User Acceptance Testing) - ITC-3 - with roles,16d,Fixed Units,5,16d,206,"June 11, 2026 8:00","July 2, 2026 5:00",6/11/26 8:00,7/2/26 5:00,9/15/26 8:00,10/6/26 5:00,0d,68d,0ed,0,NA,NA,"December 19, 2025 8:00","January 9, 2026 5:00",Start No Earlier Than,4/30/26 5:00,NA,NA,7/16/25 4:41,0h,0h,0h,0,0,0,0,0,1.1.2.7.6,500,No,No,No,,,Black,,,,,,,,0,0,0,0d,0d,0d,No,No,No,No,No,No,No,No,No,No,No,0,0,0,0,0,
208,291,Yes,Auto Scheduled,Issue resolution,10d,Fixed Units,5,10d,207,"July 3, 2026 8:00","July 16, 2026 5:00",7/3/26 8:00,7/16/26 5:00,10/7/26 8:00,10/20/26 5:00,0d,68d,0ed,0,NA,NA,"January 12, 2026 8:00","January 23, 2026 5:00",Start No Earlier Than,4/30/26 5:00,NA,NA,7/16/25 4:41,0h,0h,0h,0,0,0,0,0,1.1.2.7.7,500,No,No,No,,,Black,,,,,,,,0,0,0,0d,0d,0d,No,No,No,No,No,No,No,No,No,No,No,0,0,0,0,0,
209,292,Yes,Auto Scheduled,End-user training,6d,Fixed Units,5,6d,208,"July 17, 2026 8:00","July 24, 2026 5:00",7/17/26 8:00,7/24/26 5:00,10/21/26 8:00,10/28/26 5:00,0d,68d,0ed,0,NA,NA,"January 26, 2026 8:00","February 2, 2026 5:00",Start No Earlier Than,4/30/26 5:00,NA,NA,7/16/25 4:41,0h,0h,0h,0,0,0,0,0,1.1.2.7.8,500,No,No,No,,,Black,,,,,,,,0,0,0,0d,0d,0d,No,No,No,No,No,No,No,No,No,No,No,0,0,0,0,0,
210,293,Yes,Auto Scheduled,Initiate Preparation of Cutover Plans,8d,Fixed Units,5,8d,209,"July 27, 2026 8:00","August 5, 2026 5:00",7/27/26 8:00,8/5/26 5:00,10/29/26 8:00,11/9/26 5:00,68d,68d,0ed,0,NA,NA,"February 3, 2026 8:00","February 12, 2026 5:00",Start No Earlier Than,4/30/26 5:00,NA,NA,7/16/25 4:41,0h,0h,0h,0,0,0,0,0,1.1.2.7.9,500,No,No,No,,,Black,,,,,,,,0,0,0,0d,0d,0d,No,No,No,No,No,No,No,No,No,No,No,0,0,0,0,0,
211,294,Yes,Auto Scheduled,Go-Live,16d,Fixed Duration,4,16d,,"October 1, 2026 8:00","October 22, 2026 5:00",10/1/26 8:00,10/22/26 5:00,10/1/26 8:00,11/9/26 5:00,0d,0d,0ed,0,NA,NA,"January 1, 2026 8:00","January 22, 2026 5:00",Start No Earlier Than,9/24/26 8:00,NA,NA,7/16/25 4:41,0h,0h,0h,0,0,0,0,0,1.1.2.8,500,No,Yes,Yes,,,Black,,,,,,,,0,0,0,0d,0d,0d,No,No,No,No,No,No,No,No,No,No,No,0,0,0,0,0,
212,297,Yes,Auto Scheduled,Production deployment,7d,Fixed Units,5,7d,134,"October 1, 2026 8:00","October 9, 2026 5:00",10/1/26 8:00,10/9/26 5:00,10/1/26 8:00,10/9/26 5:00,0d,0d,0ed,0,NA,NA,"January 1, 2026 8:00","January 9, 2026 5:00",Must Start On,10/1/26 8:00,NA,NA,7/16/25 4:41,0h,0h,0h,0,0,0,0,0,1.1.2.8.1,500,No,No,No,,,Black,,,,,,,,0,0,0,0d,0d,0d,No,No,No,No,No,No,No,No,No,No,No,0,0,0,0,0,
213,295,Yes,Auto Scheduled,Execution of Cutover Plan(Business and Technical),7d,Fixed Units,5,7d,212SS,"October 1, 2026 8:00","October 9, 2026 5:00",10/1/26 8:00,10/9/26 5:00,10/19/26 8:00,10/27/26 5:00,0d,12d,0ed,0,NA,NA,"January 1, 2026 8:00","January 9, 2026 5:00",As Soon As Possible,NA,NA,NA,7/16/25 4:41,0h,0h,0h,0,0,0,0,0,1.1.2.8.2,500,No,No,No,,,Black,,,,,,,,0,0,0,0d,0d,0d,No,No,No,No,No,No,No,No,No,No,No,0,0,0,0,0,
214,296,Yes,Auto Scheduled,Final risk analysis,7d,Fixed Units,5,7d,213,"October 12, 2026 8:00","October 20, 2026 5:00",10/12/26 8:00,10/20/26 5:00,10/28/26 8:00,11/5/26 5:00,0d,12d,0ed,0,NA,NA,"January 12, 2026 8:00","January 20, 2026 5:00",As Soon As Possible,NA,NA,NA,7/16/25 4:41,0h,0h,0h,0,0,0,0,0,1.1.2.8.3,500,No,No,No,,,Black,,,,,,,,0,0,0,0d,0d,0d,No,No,No,No,No,No,No,No,No,No,No,0,0,0,0,0,
215,298,Yes,Auto Scheduled,Go-live (Technical),2d,Fixed Units,5,2d,214,"October 21, 2026 8:00","October 22, 2026 5:00",10/21/26 8:00,10/22/26 5:00,11/6/26 8:00,11/9/26 5:00,12d,12d,0ed,0,NA,NA,"January 21, 2026 8:00","January 22, 2026 5:00",As Soon As Possible,NA,NA,NA,7/16/25 4:41,0h,0h,0h,0,0,0,0,0,1.1.2.8.4,500,No,No,No,,,Black,,,,,,,,0,0,0,0d,0d,0d,No,No,No,No,No,No,No,No,No,No,No,0,0,0,0,0,
216,24,Yes,Auto Scheduled,Functional Build Tasks,119d,Fixed Duration,4,119d,,"April 7, 2025 8:00","September 18, 2025 5:00",4/7/25 8:00,9/18/25 5:00,4/7/25 8:00,9/18/25 5:00,0d,0d,0ed,1,4/7/25 8:00,9/18/25 5:00,"April 7, 2025 8:00","September 18, 2025 5:00",As Soon As Possible,NA,6/27/25 5:00,6/27/25 5:00,3/13/25 11:13,0h,0h,0h,0,0,0,0,0,1.1.2.9,500,No,Yes,Yes,,,GreenSquare,,,,,,,,0,0,0,0d,0d,0d,No,No,No,No,No,No,No,No,No,No,No,0,0,0,0,0,
217,25,Yes,Auto Scheduled,BPD Development / Configuration Specs,119d,Fixed Duration,5,119d,,"April 7, 2025 8:00","September 18, 2025 5:00",4/7/25 8:00,9/18/25 5:00,4/7/25 8:00,9/18/25 5:00,0d,0d,0ed,1,4/7/25 8:00,9/18/25 5:00,"April 7, 2025 8:00","September 18, 2025 5:00",As Soon As Possible,NA,6/27/25 5:00,6/27/25 5:00,3/13/25 11:13,0h,0h,0h,0,0,0,0,0,1.1.2.9.1,500,No,Yes,Yes,,,GreenSquare,,,,,,,,0,0,0,0d,0d,0d,No,No,No,No,No,No,No,No,No,No,No,0,0,0,0,0,
218,56,Yes,Auto Scheduled,Master Data,59d,Fixed Duration,6,59d,,"June 16, 2025 8:00","September 4, 2025 5:00",6/16/25 8:00,9/4/25 5:00,6/16/25 8:00,9/4/25 5:00,0d,0d,0ed,1,6/16/25 8:00,9/4/25 5:00,"June 16, 2025 8:00","September 4, 2025 5:00",As Soon As Possible,NA,7/15/25 5:00,7/15/25 5:00,3/13/25 11:18,0h,0h,0h,0,0,0,0,0,1.1.2.9.1.1,500,No,Yes,Yes,,,GreenSquare,,,,,,,,0,0,0,0d,0d,0d,No,No,No,No,No,No,No,No,No,No,No,0,0,0,0,0,
219,57,Yes,Auto Scheduled,In Draft,22d,Fixed Units,7,22d,,"June 16, 2025 8:00","July 15, 2025 5:00",6/16/25 8:00,7/15/25 5:00,6/16/25 8:00,7/15/25 5:00,0d,0d,0ed,1,6/16/25 8:00,7/15/25 5:00,"June 16, 2025 8:00","July 15, 2025 5:00",Finish No Earlier Than,7/15/25 5:00,7/15/25 5:00,7/15/25 5:00,3/13/25 11:14,0h,0h,0h,0,0,0,0,0,1.1.2.9.1.1.1,500,No,No,No,,,GreenSquare,,,,,,,,0,0,0,0d,0d,0d,No,No,No,No,No,No,No,No,No,No,No,0,0,0,0,0,
220,58,Yes,Auto Scheduled,Complete - Ready for Security Review,30d,Fixed Units,7,30d,,"July 7, 2025 8:00","August 15, 2025 5:00",7/7/25 8:00,8/15/25 5:00,7/7/25 8:00,8/15/25 5:00,0d,0d,0ed,1,7/7/25 8:00,8/15/25 5:00,"July 7, 2025 8:00","August 15, 2025 5:00",Finish No Earlier Than,8/15/25 5:00,8/15/25 5:00,8/15/25 5:00,3/13/25 11:15,0h,0h,0h,0,0,0,0,0,1.1.2.9.1.1.2,500,No,No,No,,,GreenSquare,,,,,,,,0,0,0,0d,0d,0d,No,No,No,No,No,No,No,No,No,No,No,0,0,0,0,0,
221,133,Yes,Auto Scheduled,Complete - Audit and Controls Review,14d,Fixed Units,7,14d,220,"August 18, 2025 8:00","September 4, 2025 5:00",8/18/25 8:00,9/4/25 5:00,8/18/25 8:00,9/4/25 5:00,0d,0d,0ed,1,8/18/25 8:00,9/4/25 5:00,"August 18, 2025 8:00","September 4, 2025 5:00",As Soon As Possible,NA,9/4/25 5:00,9/4/25 5:00,6/16/25 2:17,0h,0h,0h,0,0,0,0,0,1.1.2.9.1.1.3,500,No,No,No,,,GreenSquare,,,,,,,,0,0,0,0d,0d,0d,No,No,No,No,No,No,No,No,No,No,No,0,0,0,0,0,
222,26,Yes,Auto Scheduled,Finance,104d,Fixed Duration,6,104d,,"April 7, 2025 8:00","August 28, 2025 5:00",4/7/25 8:00,8/28/25 5:00,4/7/25 8:00,8/28/25 5:00,0d,0d,0ed,1,4/7/25 8:00,8/28/25 5:00,"April 7, 2025 8:00","August 28, 2025 5:00",As Soon As Possible,NA,6/27/25 5:00,6/27/25 5:00,3/13/25 11:13,0h,0h,0h,0,0,0,0,0,1.1.2.9.1.2,500,No,Yes,Yes,,,GreenSquare,,,,,,,,0,0,0,0d,0d,0d,No,No,No,No,No,No,No,No,No,No,No,0,0,0,0,0,
223,31,Yes,Auto Scheduled,In Draft,60d,Fixed Units,7,60d,,"April 7, 2025 8:00","June 27, 2025 5:00",4/7/25 8:00,6/27/25 5:00,4/7/25 8:00,6/27/25 5:00,0d,0d,0ed,1,4/7/25 8:00,6/27/25 5:00,"April 7, 2025 8:00","June 27, 2025 5:00",Finish No Earlier Than,6/27/25 5:00,6/27/25 5:00,6/27/25 5:00,3/13/25 11:14,0h,0h,0h,0,0,0,0,0,1.1.2.9.1.2.1,500,No,No,No,,,GreenSquare,,,,,,,,0,0,0,0d,0d,0d,No,No,No,No,No,No,No,No,No,No,No,0,0,0,0,0,
224,32,Yes,Auto Scheduled,Complete - Ready for Security Review,80d,Fixed Units,7,80d,,"April 21, 2025 8:00","August 8, 2025 5:00",4/21/25 8:00,8/8/25 5:00,4/21/25 8:00,8/8/25 5:00,0d,0d,0ed,1,4/21/25 8:00,8/8/25 5:00,"April 21, 2025 8:00","August 8, 2025 5:00",Start No Earlier Than,4/21/25 8:00,8/8/25 5:00,8/8/25 5:00,3/13/25 11:15,0h,0h,0h,0,0,0,0,0,1.1.2.9.1.2.2,500,No,No,No,,,GreenSquare,,,,,,,,0,0,0,0d,0d,0d,No,No,No,No,No,No,No,No,No,No,No,0,0,0,0,0,
225,134,Yes,Auto Scheduled,Complete - Ready for Audit and Controls Review,14d,Fixed Units,7,14d,224,"August 11, 2025 8:00","August 28, 2025 5:00",8/11/25 8:00,8/28/25 5:00,8/11/25 8:00,8/28/25 5:00,0d,0d,0ed,1,8/11/25 8:00,8/28/25 5:00,"August 11, 2025 8:00","August 28, 2025 5:00",As Soon As Possible,NA,8/28/25 5:00,8/28/25 5:00,6/16/25 2:17,0h,0h,0h,0,0,0,0,0,1.1.2.9.1.2.3,500,No,No,No,,,GreenSquare,,,,,,,,0,0,0,0d,0d,0d,No,No,No,No,No,No,No,No,No,No,No,0,0,0,0,0,
226,27,Yes,Auto Scheduled,Plan to Make,108d,Fixed Duration,6,109d,,"April 8, 2025 8:00","September 4, 2025 5:00",4/8/25 8:00,9/4/25 5:00,4/8/25 8:00,9/4/25 5:00,0d,0d,0ed,1,4/8/25 8:00,9/4/25 5:00,"April 7, 2025 8:00","September 4, 2025 5:00",As Soon As Possible,NA,7/21/25 5:00,7/21/25 5:00,3/13/25 11:13,0h,0h,0h,0,0,0,0,0,1.1.2.9.1.3,500,No,Yes,Yes,,,GreenSquare,,,,,,,,0,0,0,0d,0d,0d,No,No,No,No,No,No,No,No,No,No,No,0,0,0,0,0,
227,33,Yes,Auto Scheduled,In Draft,75d,Fixed Units,7,76d,,"April 8, 2025 8:00","July 21, 2025 5:00",4/8/25 8:00,7/21/25 5:00,4/8/25 8:00,7/21/25 5:00,0d,0d,0ed,1,4/8/25 8:00,7/21/25 5:00,"April 7, 2025 8:00","July 21, 2025 5:00",Finish No Earlier Than,7/21/25 5:00,7/21/25 5:00,7/21/25 5:00,3/13/25 11:14,0h,0h,0h,0,0,0,0,0,1.1.2.9.1.3.1,500,No,No,No,,,GreenSquare,,,,,,,,0,0,0,0d,0d,0d,No,No,No,No,No,No,No,No,No,No,No,0,0,0,0,0,
228,34,Yes,Auto Scheduled,Complete - Ready for Security Review,85d,Fixed Units,7,85d,,"April 21, 2025 8:00","August 15, 2025 5:00",4/21/25 8:00,8/15/25 5:00,4/21/25 8:00,8/15/25 5:00,0d,0d,0ed,1,4/21/25 8:00,8/15/25 5:00,"April 21, 2025 8:00","August 15, 2025 5:00",Start No Earlier Than,4/21/25 8:00,8/15/25 5:00,8/15/25 5:00,3/13/25 11:15,0h,0h,0h,0,0,0,0,0,1.1.2.9.1.3.2,500,No,No,No,,,GreenSquare,,,,,,,,0,0,0,0d,0d,0d,No,No,No,No,No,No,No,No,No,No,No,0,0,0,0,0,
229,135,Yes,Auto Scheduled,Complete - Ready for Audit and Controls Review,14d,Fixed Units,7,14d,228,"August 18, 2025 8:00","September 4, 2025 5:00",8/18/25 8:00,9/4/25 5:00,8/18/25 8:00,9/4/25 5:00,0d,0d,0ed,1,8/18/25 8:00,9/4/25 5:00,"August 18, 2025 8:00","September 4, 2025 5:00",As Soon As Possible,NA,9/4/25 5:00,9/4/25 5:00,6/16/25 2:17,0h,0h,0h,0,0,0,0,0,1.1.2.9.1.3.3,500,No,No,No,,,GreenSquare,,,,,,,,0,0,0,0d,0d,0d,No,No,No,No,No,No,No,No,No,No,No,0,0,0,0,0,
230,28,Yes,Auto Scheduled,Procure to Pay,119d,Fixed Duration,6,119d,,"April 7, 2025 8:00","September 18, 2025 5:00",4/7/25 8:00,9/18/25 5:00,4/7/25 8:00,9/18/25 5:00,0d,0d,0ed,1,4/7/25 8:00,9/18/25 5:00,"April 7, 2025 8:00","September 18, 2025 5:00",As Soon As Possible,NA,8/18/25 5:00,8/18/25 5:00,3/13/25 11:13,0h,0h,0h,0,0,0,0,0,1.1.2.9.1.4,500,No,Yes,Yes,,,GreenSquare,,,,,,,,0,0,0,0d,0d,0d,No,No,No,No,No,No,No,No,No,No,No,0,0,0,0,0,
231,35,Yes,Auto Scheduled,In Draft,96d,Fixed Units,7,96d,,"April 7, 2025 8:00","August 18, 2025 5:00",4/7/25 8:00,8/18/25 5:00,4/7/25 8:00,8/18/25 5:00,0d,0d,0ed,1,4/7/25 8:00,8/18/25 5:00,"April 7, 2025 8:00","August 18, 2025 5:00",Finish No Earlier Than,8/18/25 5:00,8/18/25 5:00,8/18/25 5:00,3/13/25 11:14,0h,0h,0h,0,0,0,0,0,1.1.2.9.1.4.1,500,No,No,No,,,GreenSquare,,,,,,,,0,0,0,0d,0d,0d,No,No,No,No,No,No,No,No,No,No,No,0,0,0,0,0,
232,36,Yes,Auto Scheduled,Complete - Ready for Security Review,95d,Fixed Units,7,95d,,"April 21, 2025 8:00","August 29, 2025 5:00",4/21/25 8:00,8/29/25 5:00,4/21/25 8:00,8/29/25 5:00,0d,0d,0ed,1,4/21/25 8:00,8/29/25 5:00,"April 21, 2025 8:00","August 29, 2025 5:00",Start No Earlier Than,4/21/25 8:00,8/29/25 5:00,8/29/25 5:00,3/13/25 11:15,0h,0h,0h,0,0,0,0,0,1.1.2.9.1.4.2,500,No,No,No,,,GreenSquare,,,,,,,,0,0,0,0d,0d,0d,No,No,No,No,No,No,No,No,No,No,No,0,0,0,0,0,
233,136,Yes,Auto Scheduled,Complete - Ready for Audit and Controls Review,14d,Fixed Units,7,14d,232,"September 1, 2025 8:00","September 18, 2025 5:00",9/1/25 8:00,9/18/25 5:00,9/1/25 8:00,9/18/25 5:00,0d,0d,0ed,1,9/1/25 8:00,9/18/25 5:00,"September 1, 2025 8:00","September 18, 2025 5:00",As Soon As Possible,NA,9/18/25 5:00,9/18/25 5:00,6/16/25 2:17,0h,0h,0h,0,0,0,0,0,1.1.2.9.1.4.3,500,No,No,No,,,GreenSquare,,,,,,,,0,0,0,0d,0d,0d,No,No,No,No,No,No,No,No,No,No,No,0,0,0,0,0,
234,29,Yes,Auto Scheduled,Order to Cash,99d,Fixed Duration,6,99d,,"April 7, 2025 8:00","August 21, 2025 5:00",4/7/25 8:00,8/21/25 5:00,4/7/25 8:00,8/21/25 5:00,0d,0d,0ed,1,4/7/25 8:00,8/21/25 5:00,"April 7, 2025 8:00","August 21, 2025 5:00",As Soon As Possible,NA,7/21/25 5:00,7/21/25 5:00,3/13/25 11:13,0h,0h,0h,0,0,0,0,0,1.1.2.9.1.5,500,No,Yes,Yes,,,GreenSquare,,,,,,,,0,0,0,0d,0d,0d,No,No,No,No,No,No,No,No,No,No,No,0,0,0,0,0,
235,37,Yes,Auto Scheduled,In Draft,76d,Fixed Units,7,76d,,"April 7, 2025 8:00","July 21, 2025 5:00",4/7/25 8:00,7/21/25 5:00,4/7/25 8:00,7/21/25 5:00,0d,0d,0ed,1,4/7/25 8:00,7/21/25 5:00,"April 7, 2025 8:00","July 21, 2025 5:00",Finish No Earlier Than,7/21/25 5:00,7/21/25 5:00,7/21/25 5:00,3/13/25 11:14,0h,0h,0h,0,0,0,0,0,1.1.2.9.1.5.1,500,No,No,No,,,GreenSquare,,,,,,,,0,0,0,0d,0d,0d,No,No,No,No,No,No,No,No,No,No,No,0,0,0,0,0,
236,38,Yes,Auto Scheduled,Complete - Ready for Security Review,75d,Fixed Units,7,75d,,"April 21, 2025 8:00","August 1, 2025 5:00",4/21/25 8:00,8/1/25 5:00,4/21/25 8:00,8/1/25 5:00,0d,0d,0ed,1,4/21/25 8:00,8/1/25 5:00,"April 21, 2025 8:00","August 1, 2025 5:00",Start No Earlier Than,4/21/25 8:00,8/1/25 5:00,8/1/25 5:00,3/13/25 11:15,0h,0h,0h,0,0,0,0,0,1.1.2.9.1.5.2,500,No,No,No,,,GreenSquare,,,,,,,,0,0,0,0d,0d,0d,No,No,No,No,No,No,No,No,No,No,No,0,0,0,0,0,
237,137,Yes,Auto Scheduled,Complete - Ready for Audit and Controls Review,14d,Fixed Units,7,14d,236,"August 4, 2025 8:00","August 21, 2025 5:00",8/4/25 8:00,8/21/25 5:00,8/4/25 8:00,8/21/25 5:00,0d,0d,0ed,1,8/4/25 8:00,8/21/25 5:00,"August 4, 2025 8:00","August 21, 2025 5:00",As Soon As Possible,NA,8/21/25 5:00,8/21/25 5:00,6/16/25 2:17,0h,0h,0h,0,0,0,0,0,1.1.2.9.1.5.3,500,No,No,No,,,GreenSquare,,,,,,,,0,0,0,0d,0d,0d,No,No,No,No,No,No,No,No,No,No,No,0,0,0,0,0,
238,55,Yes,Auto Scheduled,RICEFW Development Tasks (RICEFW Tracker),1d,Fixed Duration,4,1d,,"March 13, 2025 8:00","March 13, 2025 5:00",3/13/25 8:00,3/13/25 5:00,3/13/25 8:00,3/13/25 5:00,0d,0d,0ed,1,3/13/25 8:00,3/13/25 5:00,"March 13, 2025 8:00","March 13, 2025 5:00",As Soon As Possible,NA,3/13/25 5:00,3/13/25 5:00,3/13/25 11:18,0h,0h,0h,0,0,0,0,0,1.1.2.10,500,No,Yes,Yes,,,GreenSquare,,,,,,,,0,0,0,0d,0d,0d,No,No,No,No,No,No,No,No,No,No,No,0,0,0,0,0,
239,59,Yes,Auto Scheduled,Finance and Controlling,1d,Fixed Duration,5,1d,,"March 13, 2025 8:00","March 13, 2025 5:00",3/13/25 8:00,3/13/25 5:00,3/13/25 8:00,3/13/25 5:00,0d,0d,0ed,1,3/13/25 8:00,3/13/25 5:00,"March 13, 2025 8:00","March 13, 2025 5:00",As Soon As Possible,NA,3/13/25 5:00,3/13/25 5:00,3/13/25 11:13,0h,0h,0h,0,0,0,0,0,1.1.2.10.1,500,No,Yes,Yes,,,GreenSquare,,,,,,,,0,0,0,0d,0d,0d,No,No,No,No,No,No,No,No,No,No,No,0,0,0,0,0,
240,60,Yes,Auto Scheduled,Specs Completed,1d,Fixed Units,6,1d,,"March 13, 2025 8:00","March 13, 2025 5:00",3/13/25 8:00,3/13/25 5:00,3/13/25 8:00,3/13/25 5:00,0d,0d,0ed,1,3/13/25 8:00,3/13/25 5:00,"March 13, 2025 8:00","March 13, 2025 5:00",As Soon As Possible,NA,3/13/25 5:00,3/13/25 5:00,3/13/25 11:14,0h,0h,0h,0,0,0,0,0,1.1.2.10.1.1,500,No,No,No,,,GreenSquare,,,,,,,,0,0,0,0d,0d,0d,No,No,No,No,No,No,No,No,No,No,No,0,0,0,0,0,
241,61,Yes,Auto Scheduled,Specs Assigned to Developer,1d,Fixed Units,6,1d,,"March 13, 2025 8:00","March 13, 2025 5:00",3/13/25 8:00,3/13/25 5:00,3/13/25 8:00,3/13/25 5:00,0d,0d,0ed,1,3/13/25 8:00,3/13/25 5:00,"March 13, 2025 8:00","March 13, 2025 5:00",As Soon As Possible,NA,3/13/25 5:00,3/13/25 5:00,3/13/25 11:15,0h,0h,0h,0,0,0,0,0,1.1.2.10.1.2,500,No,No,No,,,GreenSquare,,,,,,,,0,0,0,0d,0d,0d,No,No,No,No,No,No,No,No,No,No,No,0,0,0,0,0,
242,71,Yes,Auto Scheduled,Testing Complete,1d,Fixed Units,6,1d,,"March 13, 2025 8:00","March 13, 2025 5:00",3/13/25 8:00,3/13/25 5:00,3/13/25 8:00,3/13/25 5:00,0d,0d,0ed,1,3/13/25 8:00,3/13/25 5:00,"March 13, 2025 8:00","March 13, 2025 5:00",As Soon As Possible,NA,3/13/25 5:00,3/13/25 5:00,3/13/25 11:21,0h,0h,0h,0,0,0,0,0,1.1.2.10.1.3,500,No,No,No,,,GreenSquare,,,,,,,,0,0,0,0d,0d,0d,No,No,No,No,No,No,No,No,No,No,No,0,0,0,0,0,
243,72,Yes,Auto Scheduled,Assigned to Testing Cycle,1d,Fixed Units,6,1d,,"March 13, 2025 8:00","March 13, 2025 5:00",3/13/25 8:00,3/13/25 5:00,3/13/25 8:00,3/13/25 5:00,0d,0d,0ed,1,3/13/25 8:00,3/13/25 5:00,"March 13, 2025 8:00","March 13, 2025 5:00",As Soon As Possible,NA,3/13/25 5:00,3/13/25 5:00,3/13/25 11:21,0h,0h,0h,0,0,0,0,0,1.1.2.10.1.4,500,No,No,No,,,GreenSquare,,,,,,,,0,0,0,0d,0d,0d,No,No,No,No,No,No,No,No,No,No,No,0,0,0,0,0,
244,62,Yes,Auto Scheduled,Plan to Make,1d,Fixed Duration,5,1d,,"March 13, 2025 8:00","March 13, 2025 5:00",3/13/25 8:00,3/13/25 5:00,3/13/25 8:00,3/13/25 5:00,0d,0d,0ed,1,3/13/25 8:00,3/13/25 5:00,"March 13, 2025 8:00","March 13, 2025 5:00",As Soon As Possible,NA,3/13/25 5:00,3/13/25 5:00,3/13/25 11:13,0h,0h,0h,0,0,0,0,0,1.1.2.10.2,500,No,Yes,Yes,,,GreenSquare,,,,,,,,0,0,0,0d,0d,0d,No,No,No,No,No,No,No,No,No,No,No,0,0,0,0,0,
245,73,Yes,Auto Scheduled,Specs Completed,1d,Fixed Units,6,1d,,"March 13, 2025 8:00","March 13, 2025 5:00",3/13/25 8:00,3/13/25 5:00,3/13/25 8:00,3/13/25 5:00,0d,0d,0ed,1,3/13/25 8:00,3/13/25 5:00,"March 13, 2025 8:00","March 13, 2025 5:00",As Soon As Possible,NA,3/13/25 5:00,3/13/25 5:00,3/13/25 11:14,0h,0h,0h,0,0,0,0,0,1.1.2.10.2.1,500,No,No,No,,,GreenSquare,,,,,,,,0,0,0,0d,0d,0d,No,No,No,No,No,No,No,No,No,No,No,0,0,0,0,0,
246,74,Yes,Auto Scheduled,Specs Assigned to Developer,1d,Fixed Units,6,1d,,"March 13, 2025 8:00","March 13, 2025 5:00",3/13/25 8:00,3/13/25 5:00,3/13/25 8:00,3/13/25 5:00,0d,0d,0ed,1,3/13/25 8:00,3/13/25 5:00,"March 13, 2025 8:00","March 13, 2025 5:00",As Soon As Possible,NA,3/13/25 5:00,3/13/25 5:00,3/13/25 11:15,0h,0h,0h,0,0,0,0,0,1.1.2.10.2.2,500,No,No,No,,,GreenSquare,,,,,,,,0,0,0,0d,0d,0d,No,No,No,No,No,No,No,No,No,No,No,0,0,0,0,0,
247,75,Yes,Auto Scheduled,Testing Complete,1d,Fixed Units,6,1d,,"March 13, 2025 8:00","March 13, 2025 5:00",3/13/25 8:00,3/13/25 5:00,3/13/25 8:00,3/13/25 5:00,0d,0d,0ed,1,3/13/25 8:00,3/13/25 5:00,"March 13, 2025 8:00","March 13, 2025 5:00",As Soon As Possible,NA,3/13/25 5:00,3/13/25 5:00,3/13/25 11:21,0h,0h,0h,0,0,0,0,0,1.1.2.10.2.3,500,No,No,No,,,GreenSquare,,,,,,,,0,0,0,0d,0d,0d,No,No,No,No,No,No,No,No,No,No,No,0,0,0,0,0,
248,76,Yes,Auto Scheduled,Assigned to Testing Cycle,1d,Fixed Units,6,1d,,"March 13, 2025 8:00","March 13, 2025 5:00",3/13/25 8:00,3/13/25 5:00,3/13/25 8:00,3/13/25 5:00,0d,0d,0ed,1,3/13/25 8:00,3/13/25 5:00,"March 13, 2025 8:00","March 13, 2025 5:00",As Soon As Possible,NA,3/13/25 5:00,3/13/25 5:00,3/13/25 11:21,0h,0h,0h,0,0,0,0,0,1.1.2.10.2.4,500,No,No,No,,,GreenSquare,,,,,,,,0,0,0,0d,0d,0d,No,No,No,No,No,No,No,No,No,No,No,0,0,0,0,0,
249,65,Yes,Auto Scheduled,Procure to Pay,1d,Fixed Duration,5,1d,,"March 13, 2025 8:00","March 13, 2025 5:00",3/13/25 8:00,3/13/25 5:00,3/13/25 8:00,3/13/25 5:00,0d,0d,0ed,1,3/13/25 8:00,3/13/25 5:00,"March 13, 2025 8:00","March 13, 2025 5:00",As Soon As Possible,NA,3/13/25 5:00,3/13/25 5:00,3/13/25 11:13,0h,0h,0h,0,0,0,0,0,1.1.2.10.3,500,No,Yes,Yes,,,GreenSquare,,,,,,,,0,0,0,0d,0d,0d,No,No,No,No,No,No,No,No,No,No,No,0,0,0,0,0,
250,77,Yes,Auto Scheduled,Specs Completed,1d,Fixed Units,6,1d,,"March 13, 2025 8:00","March 13, 2025 5:00",3/13/25 8:00,3/13/25 5:00,3/13/25 8:00,3/13/25 5:00,0d,0d,0ed,1,3/13/25 8:00,3/13/25 5:00,"March 13, 2025 8:00","March 13, 2025 5:00",As Soon As Possible,NA,3/13/25 5:00,3/13/25 5:00,3/13/25 11:14,0h,0h,0h,0,0,0,0,0,1.1.2.10.3.1,500,No,No,No,,,GreenSquare,,,,,,,,0,0,0,0d,0d,0d,No,No,No,No,No,No,No,No,No,No,No,0,0,0,0,0,
251,78,Yes,Auto Scheduled,Specs Assigned to Developer,1d,Fixed Units,6,1d,,"March 13, 2025 8:00","March 13, 2025 5:00",3/13/25 8:00,3/13/25 5:00,3/13/25 8:00,3/13/25 5:00,0d,0d,0ed,1,3/13/25 8:00,3/13/25 5:00,"March 13, 2025 8:00","March 13, 2025 5:00",As Soon As Possible,NA,3/13/25 5:00,3/13/25 5:00,3/13/25 11:15,0h,0h,0h,0,0,0,0,0,1.1.2.10.3.2,500,No,No,No,,,GreenSquare,,,,,,,,0,0,0,0d,0d,0d,No,No,No,No,No,No,No,No,No,No,No,0,0,0,0,0,
252,79,Yes,Auto Scheduled,Testing Complete,1d,Fixed Units,6,1d,,"March 13, 2025 8:00","March 13, 2025 5:00",3/13/25 8:00,3/13/25 5:00,3/13/25 8:00,3/13/25 5:00,0d,0d,0ed,1,3/13/25 8:00,3/13/25 5:00,"March 13, 2025 8:00","March 13, 2025 5:00",As Soon As Possible,NA,3/13/25 5:00,3/13/25 5:00,3/13/25 11:21,0h,0h,0h,0,0,0,0,0,1.1.2.10.3.3,500,No,No,No,,,GreenSquare,,,,,,,,0,0,0,0d,0d,0d,No,No,No,No,No,No,No,No,No,No,No,0,0,0,0,0,
253,80,Yes,Auto Scheduled,Assigned to Testing Cycle,1d,Fixed Units,6,1d,,"March 13, 2025 8:00","March 13, 2025 5:00",3/13/25 8:00,3/13/25 5:00,3/13/25 8:00,3/13/25 5:00,0d,0d,0ed,1,3/13/25 8:00,3/13/25 5:00,"March 13, 2025 8:00","March 13, 2025 5:00",As Soon As Possible,NA,3/13/25 5:00,3/13/25 5:00,3/13/25 11:21,0h,0h,0h,0,0,0,0,0,1.1.2.10.3.4,500,No,No,No,,,GreenSquare,,,,,,,,0,0,0,0d,0d,0d,No,No,No,No,No,No,No,No,No,No,No,0,0,0,0,0,
254,68,Yes,Auto Scheduled,Order to Cash,1d,Fixed Duration,5,1d,,"March 13, 2025 8:00","March 13, 2025 5:00",3/13/25 8:00,3/13/25 5:00,3/13/25 8:00,3/13/25 5:00,0d,0d,0ed,1,3/13/25 8:00,3/13/25 5:00,"March 13, 2025 8:00","March 13, 2025 5:00",As Soon As Possible,NA,3/13/25 5:00,3/13/25 5:00,3/13/25 11:13,0h,0h,0h,0,0,0,0,0,1.1.2.10.4,500,No,Yes,Yes,,,GreenSquare,,,,,,,,0,0,0,0d,0d,0d,No,No,No,No,No,No,No,No,No,No,No,0,0,0,0,0,
255,81,Yes,Auto Scheduled,Specs Completed,1d,Fixed Units,6,1d,,"March 13, 2025 8:00","March 13, 2025 5:00",3/13/25 8:00,3/13/25 5:00,3/13/25 8:00,3/13/25 5:00,0d,0d,0ed,1,3/13/25 8:00,3/13/25 5:00,"March 13, 2025 8:00","March 13, 2025 5:00",As Soon As Possible,NA,3/13/25 5:00,3/13/25 5:00,3/13/25 11:14,0h,0h,0h,0,0,0,0,0,1.1.2.10.4.1,500,No,No,No,,,GreenSquare,,,,,,,,0,0,0,0d,0d,0d,No,No,No,No,No,No,No,No,No,No,No,0,0,0,0,0,
256,82,Yes,Auto Scheduled,Specs Assigned to Developer,1d,Fixed Units,6,1d,,"March 13, 2025 8:00","March 13, 2025 5:00",3/13/25 8:00,3/13/25 5:00,3/13/25 8:00,3/13/25 5:00,0d,0d,0ed,1,3/13/25 8:00,3/13/25 5:00,"March 13, 2025 8:00","March 13, 2025 5:00",As Soon As Possible,NA,3/13/25 5:00,3/13/25 5:00,3/13/25 11:15,0h,0h,0h,0,0,0,0,0,1.1.2.10.4.2,500,No,No,No,,,GreenSquare,,,,,,,,0,0,0,0d,0d,0d,No,No,No,No,No,No,No,No,No,No,No,0,0,0,0,0,
257,83,Yes,Auto Scheduled,Testing Complete,1d,Fixed Units,6,1d,,"March 13, 2025 8:00","March 13, 2025 5:00",3/13/25 8:00,3/13/25 5:00,3/13/25 8:00,3/13/25 5:00,0d,0d,0ed,1,3/13/25 8:00,3/13/25 5:00,"March 13, 2025 8:00","March 13, 2025 5:00",As Soon As Possible,NA,3/13/25 5:00,3/13/25 5:00,3/13/25 11:21,0h,0h,0h,0,0,0,0,0,1.1.2.10.4.3,500,No,No,No,,,GreenSquare,,,,,,,,0,0,0,0d,0d,0d,No,No,No,No,No,No,No,No,No,No,No,0,0,0,0,0,
258,84,Yes,Auto Scheduled,Assigned to Testing Cycle,1d,Fixed Units,6,1d,,"March 13, 2025 8:00","March 13, 2025 5:00",3/13/25 8:00,3/13/25 5:00,3/13/25 8:00,3/13/25 5:00,0d,0d,0ed,1,3/13/25 8:00,3/13/25 5:00,"March 13, 2025 8:00","March 13, 2025 5:00",As Soon As Possible,NA,3/13/25 5:00,3/13/25 5:00,3/13/25 11:21,0h,0h,0h,0,0,0,0,0,1.1.2.10.4.4,500,No,No,No,,,GreenSquare,,,,,,,,0,0,0,0d,0d,0d,No,No,No,No,No,No,No,No,No,No,No,0,0,0,0,0,
259,682,Yes,Auto Scheduled,Data Readiness,135.66d,Fixed Duration,2,288.81d,,"April 6, 2026 8:00","October 12, 2026 2:15",4/6/26 8:00,10/12/26 2:15,4/6/26 8:00,10/8/26 2:01,0d,-2.03d,0ed,0.20000000000000001,4/6/26 8:00,NA,"March 13, 2025 8:00","April 21, 2026 3:30",As Soon As Possible,NA,4/6/26 8:15,4/6/26 8:15,3/24/26 6:43,"3,484.28h",592.25h,751.75h,0,0,0,0,0,1.2,500,No,Yes,Yes,,,GreenCircle,,,,,,,,0,0,0,0d,0d,0d,No,No,No,No,No,No,No,No,No,No,No,0,0,0,0,0,
260,425,Yes,Auto Scheduled,ITC1 Data Load Tasks QS5,13.66d,Fixed Duration,3,288.78d,,"April 6, 2026 8:00","April 23, 2026 2:15",4/6/26 8:00,4/23/26 2:15,4/6/26 8:00,4/23/26 2:15,0d,0d,0ed,1,4/6/26 8:00,4/23/26 2:15,"March 13, 2025 8:00","April 21, 2026 3:15",As Soon As Possible,NA,4/6/26 8:15,4/6/26 8:15,8/1/25 5:31,751.75h,592h,751.75h,0,0,0,0,0,1.2.1,500,No,Yes,Yes,,,GreenSquare,,,,,,,,0,0,0,0d,0d,0d,No,No,No,No,No,No,No,No,No,No,No,0,0,0,0,0,
261,956,Yes,Auto Scheduled,PMO Authorization to Start Data Loads,15m,Fixed Units,4,0.03d,,"April 6, 2026 8:00","April 6, 2026 8:15",4/6/26 8:00,4/6/26 8:15,4/6/26 8:00,4/6/26 8:15,0m,0m,0ed,1,4/6/26 8:00,4/6/26 8:15,"April 6, 2026 8:00","April 6, 2026 8:15",Start No Earlier Than,4/6/26 8:00,4/6/26 8:15,4/6/26 8:15,4/1/26 1:46,0.25h,0.25h,0.25h,0,0,0,0,0,1.2.1.1,500,No,No,No,,,GreenSquare,,,,,,,,0,0,0,0d,0d,0d,No,No,No,No,No,No,No,No,No,No,No,0,0,0,0,0,
262,755,Yes,Auto Scheduled,RTR_CM02_Profit Center Hierarchy,0.75d,Fixed Duration,4,0.75d,,"April 6, 2026 8:15","April 6, 2026 3:15",4/6/26 8:15,4/6/26 3:15,4/6/26 8:15,4/6/26 3:15,0d,0d,0ed,1,4/6/26 8:15,4/6/26 3:15,"April 6, 2026 8:15","April 6, 2026 3:15",As Soon As Possible,NA,4/6/26 9:15,4/6/26 9:15,3/25/26 2:32,6h,6h,6h,0,0,0,0,0,1.2.1.2,500,No,Yes,Yes,,,GreenSquare,,,,,,,,0,0,0,0d,0d,0d,No,No,No,No,No,No,No,No,No,No,No,0,0,0,0,0,
263,777,Yes,Auto Scheduled,"Manual File Staged and Posted ""Ready""",1h,Fixed Units,5,0.13d,261,"April 6, 2026 8:15","April 6, 2026 9:15",4/6/26 8:15,4/6/26 9:15,4/6/26 8:15,4/6/26 9:15,0h,0h,0ed,1,4/6/26 8:15,4/6/26 9:15,"April 6, 2026 8:15","April 6, 2026 9:15",Start No Earlier Than,4/6/26 8:00,4/6/26 9:15,4/6/26 9:15,3/25/26 2:41,1h,1h,1h,0,0,0,0,0,1.2.1.2.1,500,No,No,No,,,GreenSquare,,,,,,,,0,0,0,0d,0d,0d,No,No,No,No,No,No,No,No,No,No,No,0,0,0,0,0,
264,780,Yes,Auto Scheduled,Load,2h,Fixed Units,5,0.25d,263,"April 6, 2026 9:15","April 6, 2026 11:15",4/6/26 9:15,4/6/26 11:15,4/6/26 9:15,4/6/26 11:15,0h,0h,0ed,1,4/6/26 9:15,4/6/26 11:15,"April 6, 2026 9:15","April 6, 2026 11:15",As Soon As Possible,NA,4/6/26 11:15,4/6/26 11:15,3/25/26 2:41,2h,2h,2h,0,0,0,0,0,1.2.1.2.2,500,No,No,No,,,GreenSquare,,,,,,,,0,0,0,0d,0d,0d,No,No,No,No,No,No,No,No,No,No,No,0,0,0,0,0,
265,781,Yes,Auto Scheduled,Post Load Validation,3h,Fixed Units,5,0.38d,264,"April 6, 2026 11:15","April 6, 2026 3:15",4/6/26 11:15,4/6/26 3:15,4/6/26 11:15,4/6/26 3:15,0h,0h,0ed,1,4/6/26 11:15,4/6/26 3:15,"April 6, 2026 11:15","April 6, 2026 3:15",As Soon As Possible,NA,4/6/26 3:15,4/6/26 3:15,3/25/26 2:41,3h,3h,3h,0,0,0,0,0,1.2.1.2.3,500,No,No,No,,Brian Wagner,GreenSquare,,,,,,,,0,0,0,0d,0d,0d,No,No,No,No,No,No,No,No,No,No,No,0,0,0,0,0,
266,756,Yes,Auto Scheduled,RTR_CM03_Cost Center Hierarchy,0.75d,Fixed Duration,4,0.75d,262,"April 6, 2026 3:15","April 7, 2026 1:15",4/6/26 3:15,4/7/26 1:15,4/6/26 3:15,4/7/26 1:15,0d,0d,0ed,1,4/6/26 3:15,4/7/26 1:15,"April 6, 2026 3:15","April 7, 2026 1:15",As Soon As Possible,NA,4/6/26 4:15,4/6/26 4:15,3/25/26 2:32,6h,6h,6h,0,0,0,0,0,1.2.1.3,500,No,Yes,Yes,,,GreenSquare,,,,,,,,0,0,0,0d,0d,0d,No,No,No,No,No,No,No,No,No,No,No,0,0,0,0,0,
267,783,Yes,Auto Scheduled,"Manual File Staged and Posted ""Ready""",1h,Fixed Units,5,0.13d,265,"April 6, 2026 3:15","April 6, 2026 4:15",4/6/26 3:15,4/6/26 4:15,4/6/26 3:15,4/6/26 4:15,0h,0h,0ed,1,4/6/26 3:15,4/6/26 4:15,"April 6, 2026 3:15","April 6, 2026 4:15",Start No Earlier Than,4/6/26 8:00,4/6/26 4:15,4/6/26 4:15,3/25/26 2:45,1h,1h,1h,0,0,0,0,0,1.2.1.3.1,500,No,No,No,,,GreenSquare,,,,,,,,0,0,0,0d,0d,0d,No,No,No,No,No,No,No,No,No,No,No,0,0,0,0,0,
268,786,Yes,Auto Scheduled,Load,2h,Fixed Units,5,0.25d,267,"April 6, 2026 4:15","April 7, 2026 9:15",4/6/26 4:15,4/7/26 9:15,4/6/26 4:15,4/7/26 9:15,0h,0h,0ed,1,4/6/26 4:15,4/7/26 9:15,"April 6, 2026 4:15","April 7, 2026 9:15",As Soon As Possible,NA,4/7/26 9:15,4/7/26 9:15,3/25/26 2:45,2h,2h,2h,0,0,0,0,0,1.2.1.3.2,500,No,No,No,,,GreenSquare,,,,,,,,0,0,0,0d,0d,0d,No,No,No,No,No,No,No,No,No,No,No,0,0,0,0,0,
269,787,Yes,Auto Scheduled,Post Load Validation,3h,Fixed Units,5,0.38d,268,"April 7, 2026 9:15","April 7, 2026 1:15",4/7/26 9:15,4/7/26 1:15,4/7/26 9:15,4/7/26 1:15,0h,0h,0ed,1,4/7/26 9:15,4/7/26 1:15,"April 7, 2026 9:15","April 7, 2026 1:15",As Soon As Possible,NA,4/7/26 1:15,4/7/26 1:15,3/25/26 2:45,3h,3h,3h,0,0,0,0,0,1.2.1.3.3,500,No,No,No,,Brian Wagner,GreenSquare,,,,,,,,0,0,0,0d,0d,0d,No,No,No,No,No,No,No,No,No,No,No,0,0,0,0,0,
270,740,Yes,Auto Scheduled,RTR_CM01_GL_Account_Master to CC 1000,1.81d,Fixed Duration,4,1.81d,266,"April 7, 2026 1:15","April 9, 2026 10:45",4/7/26 1:15,4/9/26 10:45,4/7/26 1:15,4/9/26 10:45,0d,0d,0ed,1,4/7/26 1:15,4/9/26 10:45,"April 7, 2026 1:15","April 9, 2026 10:45",As Soon As Possible,NA,4/7/26 2:15,4/7/26 2:15,3/25/26 2:32,16h,16h,16h,0,0,0,0,0,1.2.1.4,500,No,Yes,Yes,,,GreenSquare,,,,,,,,0,0,0,0d,0d,0d,No,No,No,No,No,No,No,No,No,No,No,0,0,0,0,0,
271,958,Yes,Auto Scheduled,"Load File Staged and Posted ""Ready""",1h,Fixed Units,5,0.13d,269,"April 7, 2026 1:15","April 7, 2026 2:15",4/7/26 1:15,4/7/26 2:15,4/7/26 1:15,4/7/26 2:15,0h,0h,0ed,1,4/7/26 1:15,4/7/26 2:15,"April 7, 2026 1:15","April 7, 2026 2:15",Start No Earlier Than,4/6/26 8:00,4/7/26 2:15,4/7/26 2:15,4/1/26 1:54,1h,1h,1h,0,0,0,0,0,1.2.1.4.1,500,No,No,No,,,GreenSquare,,,,,,,,0,0,0,0d,0d,0d,No,No,No,No,No,No,No,No,No,No,No,0,0,0,0,0,
272,773,Yes,Auto Scheduled,Pre Load Validation,2h,Fixed Units,5,0.25d,271,"April 7, 2026 2:15","April 7, 2026 4:15",4/7/26 2:15,4/7/26 4:15,4/7/26 2:15,4/7/26 4:15,0h,0h,0ed,1,4/7/26 2:15,4/7/26 4:15,"April 7, 2026 2:15","April 7, 2026 4:15",As Soon As Possible,NA,4/7/26 4:15,4/7/26 4:15,3/25/26 2:35,2h,2h,2h,0,0,0,0,0,1.2.1.4.2,500,No,No,No,,Brian Wagner,GreenSquare,,,,,,,,0,0,0,0d,0d,0d,No,No,No,No,No,No,No,No,No,No,No,0,0,0,0,0,
273,774,Yes,Auto Scheduled,Simulate Load,6h,Fixed Units,5,0.75d,272,"April 7, 2026 4:15","April 8, 2026 2:15",4/7/26 4:15,4/8/26 2:15,4/7/26 4:15,4/8/26 2:15,0h,0h,0ed,1,4/7/26 4:15,4/8/26 2:15,"April 7, 2026 4:15","April 8, 2026 2:15",As Soon As Possible,NA,4/8/26 2:15,4/8/26 2:15,3/25/26 2:35,6h,6h,6h,0,0,0,0,0,1.2.1.4.3,500,No,No,No,,,GreenSquare,,,,,,,,0,0,0,0d,0d,0d,No,No,No,No,No,No,No,No,No,No,No,0,0,0,0,0,
274,775,Yes,Auto Scheduled,Error and Defect Mitigation,2h,Fixed Units,5,0.25d,273,"April 8, 2026 8:15","April 8, 2026 11:45",4/8/26 8:15,4/8/26 11:45,4/8/26 8:15,4/8/26 11:45,0h,0h,0ed,1,4/8/26 8:15,4/8/26 11:45,"April 8, 2026 8:15","April 8, 2026 11:45",As Soon As Possible,NA,4/8/26 11:45,4/8/26 11:45,3/25/26 2:35,2h,2h,2h,0,0,0,0,0,1.2.1.4.4,500,No,No,No,,Brian Wagner,GreenSquare,,,,,,,,0,0,0,0d,0d,0d,No,No,No,No,No,No,No,No,No,No,No,0,0,0,0,0,
275,795,Yes,Auto Scheduled,Load,1h,Fixed Units,5,0.13d,274,"April 8, 2026 11:45","April 8, 2026 1:45",4/8/26 11:45,4/8/26 1:45,4/8/26 11:45,4/8/26 1:45,0h,0h,0ed,1,4/8/26 11:45,4/8/26 1:45,"April 8, 2026 11:45","April 8, 2026 1:45",As Soon As Possible,NA,4/8/26 1:45,4/8/26 1:45,3/25/26 2:54,1h,1h,1h,0,0,0,0,0,1.2.1.4.5,500,No,No,No,,,GreenSquare,,,,,,,,0,0,0,0d,0d,0d,No,No,No,No,No,No,No,No,No,No,No,0,0,0,0,0,
276,776,Yes,Auto Scheduled,Post Load Validation,2h,Fixed Units,5,0.25d,275,"April 8, 2026 1:45","April 8, 2026 3:45",4/8/26 1:45,4/8/26 3:45,4/8/26 1:45,4/8/26 3:45,0h,0h,0ed,1,4/8/26 1:45,4/8/26 3:45,"April 8, 2026 1:45","April 8, 2026 3:45",As Soon As Possible,NA,4/8/26 3:45,4/8/26 3:45,3/25/26 2:35,2h,2h,2h,0,0,0,0,0,1.2.1.4.6,500,No,No,No,,Brian Wagner,GreenSquare,,,,,,,,0,0,0,0d,0d,0d,No,No,No,No,No,No,No,No,No,No,No,0,0,0,0,0,
277,1243,Yes,Auto Scheduled,Extend GL to all Company Codes,2h,Fixed Units,5,0.25d,276,"April 8, 2026 3:45","April 9, 2026 8:45",4/8/26 3:45,4/9/26 8:45,4/8/26 3:45,4/9/26 8:45,0h,0h,0ed,1,4/8/26 3:45,4/9/26 8:45,"April 8, 2026 3:45","April 9, 2026 8:45",As Soon As Possible,NA,4/9/26 8:45,4/9/26 8:45,4/8/26 9:16,2h,2h,2h,0,0,0,0,0,1.2.1.4.7,500,No,No,No,,,GreenSquare,,,,,,,,0,0,0,0d,0d,0d,No,No,No,No,No,No,No,No,No,No,No,0,0,0,0,0,
278,1244,Yes,Auto Scheduled,Post GL Extention Validation,2h,Fixed Units,5,0.25d,277,"April 9, 2026 8:45","April 9, 2026 10:45",4/9/26 8:45,4/9/26 10:45,4/9/26 8:45,4/9/26 10:45,0h,0h,0ed,1,4/9/26 8:45,4/9/26 10:45,"April 9, 2026 8:45","April 9, 2026 10:45",As Soon As Possible,NA,4/9/26 10:45,4/9/26 10:45,4/8/26 9:43,0h,0h,0h,0,0,0,0,0,1.2.1.4.8,500,No,No,No,,,GreenSquare,,,,,,,,0,0,0,0d,0d,0d,No,No,No,No,No,No,No,No,No,No,No,0,0,0,0,0,
279,759,Yes,Auto Scheduled,RTR_CM05_Profit_Center,1.13d,Fixed Duration,4,1.13d,270,"April 6, 2026 3:15","April 7, 2026 4:15",4/6/26 3:15,4/7/26 4:15,4/6/26 3:15,4/7/26 4:15,0d,0d,0ed,1,4/6/26 3:15,4/7/26 4:15,"April 6, 2026 3:15","April 7, 2026 4:15",As Soon As Possible,NA,4/6/26 4:15,4/6/26 4:15,3/25/26 2:32,9h,9h,9h,0,0,0,0,0,1.2.1.5,500,No,Yes,Yes,,,GreenSquare,,,,,,,,0,0,0,0d,0d,0d,No,No,No,No,No,No,No,No,No,No,No,0,0,0,0,0,
280,802,Yes,Auto Scheduled,"Load File Staged and Posted ""Ready""",1h,Fixed Units,5,0.13d,265,"April 6, 2026 3:15","April 6, 2026 4:15",4/6/26 3:15,4/6/26 4:15,4/6/26 3:15,4/6/26 4:15,0h,0h,0ed,1,4/6/26 3:15,4/6/26 4:15,"April 6, 2026 3:15","April 6, 2026 4:15",As Soon As Possible,NA,4/6/26 4:15,4/6/26 4:15,3/30/26 6:34,1h,1h,1h,0,0,0,0,0,1.2.1.5.1,500,No,No,No,,,GreenSquare,,,,,,,,0,0,0,0d,0d,0d,No,No,No,No,No,No,No,No,No,No,No,0,0,0,0,0,
281,803,Yes,Auto Scheduled,Pre Load Validation,2h,Fixed Units,5,0.25d,280,"April 6, 2026 4:15","April 7, 2026 9:15",4/6/26 4:15,4/7/26 9:15,4/6/26 4:15,4/7/26 9:15,0h,0h,0ed,1,4/6/26 4:15,4/7/26 9:15,"April 6, 2026 4:15","April 7, 2026 9:15",As Soon As Possible,NA,4/7/26 9:15,4/7/26 9:15,3/30/26 6:34,2h,2h,2h,0,0,0,0,0,1.2.1.5.2,500,No,No,No,,Brian Wagner,GreenSquare,,,,,,,,0,0,0,0d,0d,0d,No,No,No,No,No,No,No,No,No,No,No,0,0,0,0,0,
282,804,Yes,Auto Scheduled,Simulate Load,1h,Fixed Units,5,0.13d,281,"April 7, 2026 9:15","April 7, 2026 10:15",4/7/26 9:15,4/7/26 10:15,4/7/26 9:15,4/7/26 10:15,0h,0h,0ed,1,4/7/26 9:15,4/7/26 10:15,"April 7, 2026 9:15","April 7, 2026 10:15",As Soon As Possible,NA,4/7/26 10:15,4/7/26 10:15,3/30/26 6:34,1h,1h,1h,0,0,0,0,0,1.2.1.5.3,500,No,No,No,,,GreenSquare,,,,,,,,0,0,0,0d,0d,0d,No,No,No,No,No,No,No,No,No,No,No,0,0,0,0,0,
283,805,Yes,Auto Scheduled,Error and Defect Mitigation,2h,Fixed Units,5,0.25d,282,"April 7, 2026 10:15","April 7, 2026 1:15",4/7/26 10:15,4/7/26 1:15,4/7/26 10:15,4/7/26 1:15,0h,0h,0ed,1,4/7/26 10:15,4/7/26 1:15,"April 7, 2026 10:15","April 7, 2026 1:15",As Soon As Possible,NA,4/7/26 1:15,4/7/26 1:15,3/30/26 6:34,2h,2h,2h,0,0,0,0,0,1.2.1.5.4,500,No,No,No,,Brian Wagner,GreenSquare,,,,,,,,0,0,0,0d,0d,0d,No,No,No,No,No,No,No,No,No,No,No,0,0,0,0,0,
284,806,Yes,Auto Scheduled,Load,1h,Fixed Units,5,0.13d,283,"April 7, 2026 1:15","April 7, 2026 2:15",4/7/26 1:15,4/7/26 2:15,4/7/26 1:15,4/7/26 2:15,0h,0h,0ed,1,4/7/26 1:15,4/7/26 2:15,"April 7, 2026 1:15","April 7, 2026 2:15",As Soon As Possible,NA,4/7/26 2:15,4/7/26 2:15,3/30/26 6:34,1h,1h,1h,0,0,0,0,0,1.2.1.5.5,500,No,No,No,,,GreenSquare,,,,,,,,0,0,0,0d,0d,0d,No,No,No,No,No,No,No,No,No,No,No,0,0,0,0,0,
285,807,Yes,Auto Scheduled,Post Load Validation,2h,Fixed Units,5,0.25d,284,"April 7, 2026 2:15","April 7, 2026 4:15",4/7/26 2:15,4/7/26 4:15,4/7/26 2:15,4/7/26 4:15,0h,0h,0ed,1,4/7/26 2:15,4/7/26 4:15,"April 7, 2026 2:15","April 7, 2026 4:15",As Soon As Possible,NA,4/7/26 4:15,4/7/26 4:15,3/30/26 6:34,2h,2h,2h,0,0,0,0,0,1.2.1.5.6,500,No,No,No,,Brian Wagner,GreenSquare,,,,,,,,0,0,0,0d,0d,0d,No,No,No,No,No,No,No,No,No,No,No,0,0,0,0,0,
286,767,Yes,Auto Scheduled,RTR_CM04_Cost_Center,1.13d,Fixed Duration,4,1.13d,279,"April 7, 2026 4:15","April 9, 2026 8:15",4/7/26 4:15,4/9/26 8:15,4/7/26 4:15,4/9/26 8:15,0d,0d,0ed,1,4/7/26 4:15,4/9/26 8:15,"April 7, 2026 4:15","April 9, 2026 8:15",As Soon As Possible,NA,4/8/26 8:15,4/8/26 8:15,3/25/26 2:32,9h,9h,9h,0,0,0,0,0,1.2.1.6,500,No,Yes,Yes,,,GreenSquare,,,,,,,,0,0,0,0d,0d,0d,No,No,No,No,No,No,No,No,No,No,No,0,0,0,0,0,
287,959,Yes,Auto Scheduled,"Load File Staged and Posted ""Ready""",1h,Fixed Units,5,0.13d,285,"April 7, 2026 4:15","April 8, 2026 8:15",4/7/26 4:15,4/8/26 8:15,4/7/26 4:15,4/8/26 8:15,0h,0h,0ed,1,4/7/26 4:15,4/8/26 8:15,"April 7, 2026 4:15","April 8, 2026 8:15",As Soon As Possible,NA,4/8/26 8:15,4/8/26 8:15,4/1/26 1:59,1h,1h,1h,0,0,0,0,0,1.2.1.6.1,500,No,No,No,,,GreenSquare,,,,,,,,0,0,0,0d,0d,0d,No,No,No,No,No,No,No,No,No,No,No,0,0,0,0,0,
288,960,Yes,Auto Scheduled,Pre Load Validation,2h,Fixed Units,5,0.25d,287,"April 8, 2026 8:15","April 8, 2026 10:15",4/8/26 8:15,4/8/26 10:15,4/8/26 8:15,4/8/26 10:15,0h,0h,0ed,1,4/8/26 8:15,4/8/26 10:15,"April 8, 2026 8:15","April 8, 2026 10:15",As Soon As Possible,NA,4/8/26 10:15,4/8/26 10:15,4/1/26 1:59,2h,2h,2h,0,0,0,0,0,1.2.1.6.2,500,No,No,No,,Brian Wagner,GreenSquare,,,,,,,,0,0,0,0d,0d,0d,No,No,No,No,No,No,No,No,No,No,No,0,0,0,0,0,
289,961,Yes,Auto Scheduled,Simulate Load,1h,Fixed Units,5,0.13d,288,"April 8, 2026 10:15","April 8, 2026 11:15",4/8/26 10:15,4/8/26 11:15,4/8/26 10:15,4/8/26 11:15,0h,0h,0ed,1,4/8/26 10:15,4/8/26 11:15,"April 8, 2026 10:15","April 8, 2026 11:15",As Soon As Possible,NA,4/8/26 11:15,4/8/26 11:15,4/1/26 1:59,1h,1h,1h,0,0,0,0,0,1.2.1.6.3,500,No,No,No,,,GreenSquare,,,,,,,,0,0,0,0d,0d,0d,No,No,No,No,No,No,No,No,No,No,No,0,0,0,0,0,
290,962,Yes,Auto Scheduled,Error and Defect Mitigation,2h,Fixed Units,5,0.25d,289,"April 8, 2026 11:15","April 8, 2026 2:15",4/8/26 11:15,4/8/26 2:15,4/8/26 11:15,4/8/26 2:15,0h,0h,0ed,1,4/8/26 11:15,4/8/26 2:15,"April 8, 2026 11:15","April 8, 2026 2:15",As Soon As Possible,NA,4/8/26 2:15,4/8/26 2:15,4/1/26 1:59,2h,2h,2h,0,0,0,0,0,1.2.1.6.4,500,No,No,No,,Brian Wagner,GreenSquare,,,,,,,,0,0,0,0d,0d,0d,No,No,No,No,No,No,No,No,No,No,No,0,0,0,0,0,
291,963,Yes,Auto Scheduled,Load,1h,Fixed Units,5,0.13d,290,"April 8, 2026 2:15","April 8, 2026 3:15",4/8/26 2:15,4/8/26 3:15,4/8/26 2:15,4/8/26 3:15,0h,0h,0ed,1,4/8/26 2:15,4/8/26 3:15,"April 8, 2026 2:15","April 8, 2026 3:15",As Soon As Possible,NA,4/8/26 3:15,4/8/26 3:15,4/1/26 1:59,1h,1h,1h,0,0,0,0,0,1.2.1.6.5,500,No,No,No,,,GreenSquare,,,,,,,,0,0,0,0d,0d,0d,No,No,No,No,No,No,No,No,No,No,No,0,0,0,0,0,
292,964,Yes,Auto Scheduled,Post Load Validation,2h,Fixed Units,5,0.25d,291,"April 8, 2026 3:15","April 9, 2026 8:15",4/8/26 3:15,4/9/26 8:15,4/8/26 3:15,4/9/26 8:15,0h,0h,0ed,1,4/8/26 3:15,4/9/26 8:15,"April 8, 2026 3:15","April 9, 2026 8:15",As Soon As Possible,NA,4/9/26 8:15,4/9/26 8:15,4/1/26 1:59,2h,2h,2h,0,0,0,0,0,1.2.1.6.6,500,No,No,No,,Brian Wagner,GreenSquare,,,,,,,,0,0,0,0d,0d,0d,No,No,No,No,No,No,No,No,No,No,No,0,0,0,0,0,
293,881,Yes,Auto Scheduled,Manual Configuration Activities in QS5,7.16d,Fixed Duration,4,7.16d,286,"April 6, 2026 1:00","April 15, 2026 2:15",4/6/26 1:00,4/15/26 2:15,4/6/26 1:00,4/15/26 2:15,0d,0d,0ed,1,4/6/26 1:00,4/15/26 2:15,"April 6, 2026 1:00","April 15, 2026 2:15",As Soon As Possible,NA,4/6/26 1:30,4/6/26 1:30,3/31/26 7:06,43h,43h,43h,0,0,0,0,0,1.2.1.7,500,No,Yes,Yes,,,GreenSquare,,,,,,,,0,0,0,0d,0d,0d,No,No,No,No,No,No,No,No,No,No,No,0,0,0,0,0,
294,1219,Yes,Auto Scheduled,Open Client,30m,Fixed Units,5,0.06d,,"April 6, 2026 1:00","April 6, 2026 1:30",4/6/26 1:00,4/6/26 1:30,4/6/26 1:00,4/6/26 1:30,0m,0m,0ed,1,4/6/26 1:00,4/6/26 1:30,"April 6, 2026 1:00","April 6, 2026 1:30",As Soon As Possible,NA,4/6/26 1:30,4/6/26 1:30,4/8/26 8:20,0.5h,0.5h,0.5h,0,0,0,0,0,1.2.1.7.1,500,No,No,No,,,GreenSquare,,,,,,,,0,0,0,0d,0d,0d,No,No,No,No,No,No,No,No,No,No,No,0,0,0,0,0,
295,882,Yes,Auto Scheduled,Service Enterprise Setup,5d,Fixed Units,5,5d,"270,262,266","April 8, 2026 2:15","April 15, 2026 2:15",4/8/26 2:15,4/15/26 2:15,4/8/26 2:15,4/15/26 2:15,0d,0d,0ed,1,4/8/26 2:15,4/15/26 2:15,"April 8, 2026 2:15","April 15, 2026 2:15",As Soon As Possible,NA,4/15/26 2:15,4/15/26 2:15,3/31/26 7:06,40h,40h,40h,0,0,0,0,0,1.2.1.7.2,500,No,No,No,,,GreenSquare,,,,,,,,0,0,0,0d,0d,0d,No,No,No,No,No,No,No,No,No,No,No,0,0,0,0,0,
296,1220,Yes,Auto Scheduled,Close Client,30m,Fixed Units,5,0.06d,,"April 6, 2026 1:00","April 6, 2026 1:30",4/6/26 1:00,4/6/26 1:30,4/6/26 1:00,4/6/26 1:30,0m,0m,0ed,1,4/6/26 1:00,4/6/26 1:30,"April 6, 2026 1:00","April 6, 2026 1:30",As Soon As Possible,NA,4/6/26 1:30,4/6/26 1:30,4/8/26 8:20,0.5h,0.5h,0.5h,0,0,0,0,0,1.2.1.7.3,500,No,No,No,,,GreenSquare,,,,,,,,0,0,0,0d,0d,0d,No,No,No,No,No,No,No,No,No,No,No,0,0,0,0,0,
297,883,Yes,Auto Scheduled,Intercompany Business Partner Setup,2h,Fixed Units,5,0.25d,"262,266,278","April 8, 2026 3:45","April 9, 2026 8:45",4/8/26 3:45,4/9/26 8:45,4/8/26 3:45,4/9/26 8:45,0h,0h,0ed,1,4/8/26 3:45,4/9/26 8:45,"April 8, 2026 3:45","April 9, 2026 8:45",As Soon As Possible,NA,4/9/26 8:45,4/9/26 8:45,3/31/26 7:06,2h,2h,2h,0,0,0,0,0,1.2.1.7.4,500,No,No,No,,,GreenSquare,,,,,,,,0,0,0,0d,0d,0d,No,No,No,No,No,No,No,No,No,No,No,0,0,0,0,0,
298,760,Yes,Auto Scheduled,RTR_CM09_Activity_Type,1.22d,Fixed Duration,4,1.22d,286,"April 8, 2026 2:15","April 9, 2026 4:00",4/8/26 2:15,4/9/26 4:00,4/8/26 2:15,4/9/26 4:00,0d,0d,0ed,1,4/8/26 2:15,4/9/26 4:00,"April 8, 2026 2:15","April 9, 2026 4:00",As Soon As Possible,NA,4/8/26 4:30,4/8/26 4:30,3/25/26 2:32,9h,9h,9h,0,0,0,0,0,1.2.1.8,500,No,Yes,Yes,,,GreenSquare,,,,,,,,0,0,0,0d,0d,0d,No,No,No,No,No,No,No,No,No,No,No,0,0,0,0,0,
299,808,Yes,Auto Scheduled,"Load File Staged and Posted ""Ready""",1h,Fixed Units,5,0.13d,276,"April 8, 2026 2:15","April 8, 2026 4:30",4/8/26 2:15,4/8/26 4:30,4/8/26 2:15,4/8/26 4:30,0h,0h,0ed,1,4/8/26 2:15,4/8/26 4:30,"April 8, 2026 2:15","April 8, 2026 4:30",As Soon As Possible,NA,4/8/26 4:30,4/8/26 4:30,3/30/26 6:35,1h,1h,1h,0,0,0,0,0,1.2.1.8.1,500,No,No,No,,,GreenSquare,,,,,,,,0,0,0,0d,0d,0d,No,No,No,No,No,No,No,No,No,No,No,0,0,0,0,0,
300,809,Yes,Auto Scheduled,Pre Load Validation,2h,Fixed Units,5,0.25d,299,"April 8, 2026 3:15","April 9, 2026 9:00",4/8/26 3:15,4/9/26 9:00,4/8/26 3:15,4/9/26 9:00,0h,0h,0ed,1,4/8/26 3:15,4/9/26 9:00,"April 8, 2026 3:15","April 9, 2026 9:00",As Soon As Possible,NA,4/9/26 9:00,4/9/26 9:00,3/30/26 6:35,2h,2h,2h,0,0,0,0,0,1.2.1.8.2,500,No,No,No,,Brian Wagner,GreenSquare,,,,,,,,0,0,0,0d,0d,0d,No,No,No,No,No,No,No,No,No,No,No,0,0,0,0,0,
301,810,Yes,Auto Scheduled,Simulate Load,1h,Fixed Units,5,0.13d,300,"April 9, 2026 9:00","April 9, 2026 10:00",4/9/26 9:00,4/9/26 10:00,4/9/26 9:00,4/9/26 10:00,0h,0h,0ed,1,4/9/26 9:00,4/9/26 10:00,"April 9, 2026 9:00","April 9, 2026 10:00",As Soon As Possible,NA,4/9/26 10:00,4/9/26 10:00,3/30/26 6:35,1h,1h,1h,0,0,0,0,0,1.2.1.8.3,500,No,No,No,,,GreenSquare,,,,,,,,0,0,0,0d,0d,0d,No,No,No,No,No,No,No,No,No,No,No,0,0,0,0,0,
302,811,Yes,Auto Scheduled,Error and Defect Mitigation,2h,Fixed Units,5,0.25d,301,"April 9, 2026 10:00","April 9, 2026 12:00",4/9/26 10:00,4/9/26 12:00,4/9/26 10:00,4/9/26 12:00,0h,0h,0ed,1,4/9/26 10:00,4/9/26 12:00,"April 9, 2026 10:00","April 9, 2026 12:00",As Soon As Possible,NA,4/9/26 12:00,4/9/26 12:00,3/30/26 6:35,2h,2h,2h,0,0,0,0,0,1.2.1.8.4,500,No,No,No,,Brian Wagner,GreenSquare,,,,,,,,0,0,0,0d,0d,0d,No,No,No,No,No,No,No,No,No,No,No,0,0,0,0,0,
303,812,Yes,Auto Scheduled,Load,1h,Fixed Units,5,0.13d,302,"April 9, 2026 1:00","April 9, 2026 2:00",4/9/26 1:00,4/9/26 2:00,4/9/26 1:00,4/9/26 2:00,0h,0h,0ed,1,4/9/26 1:00,4/9/26 2:00,"April 9, 2026 1:00","April 9, 2026 2:00",As Soon As Possible,NA,4/9/26 2:00,4/9/26 2:00,3/30/26 6:35,1h,1h,1h,0,0,0,0,0,1.2.1.8.5,500,No,No,No,,,GreenSquare,,,,,,,,0,0,0,0d,0d,0d,No,No,No,No,No,No,No,No,No,No,No,0,0,0,0,0,
304,813,Yes,Auto Scheduled,Post Load Validation,2h,Fixed Units,5,0.25d,303,"April 9, 2026 2:00","April 9, 2026 4:00",4/9/26 2:00,4/9/26 4:00,4/9/26 2:00,4/9/26 4:00,0h,0h,0ed,1,4/9/26 2:00,4/9/26 4:00,"April 9, 2026 2:00","April 9, 2026 4:00",As Soon As Possible,NA,4/9/26 4:00,4/9/26 4:00,3/30/26 6:35,2h,2h,2h,0,0,0,0,0,1.2.1.8.6,500,No,No,No,,Brian Wagner,GreenSquare,,,,,,,,0,0,0,0d,0d,0d,No,No,No,No,No,No,No,No,No,No,No,0,0,0,0,0,
305,753,Yes,Auto Scheduled,RTR_CM12_Activity Rates,1.13d,Fixed Duration,4,1.13d,298,"April 7, 2026 1:15","April 8, 2026 2:15",4/7/26 1:15,4/8/26 2:15,4/7/26 1:15,4/8/26 2:15,0d,0d,0ed,1,4/7/26 1:15,4/8/26 2:15,"April 7, 2026 1:15","April 8, 2026 2:15",As Soon As Possible,NA,4/7/26 2:15,4/7/26 2:15,3/25/26 2:32,9h,9h,9h,0,0,0,0,0,1.2.1.9,500,No,Yes,Yes,,,GreenSquare,,,,,,,,0,0,0,0d,0d,0d,No,No,No,No,No,No,No,No,No,No,No,0,0,0,0,0,
306,965,Yes,Auto Scheduled,"Load File Staged and Posted ""Ready""",1h,Fixed Units,5,0.13d,269,"April 7, 2026 1:15","April 7, 2026 2:15",4/7/26 1:15,4/7/26 2:15,4/7/26 1:15,4/7/26 2:15,0h,0h,0ed,1,4/7/26 1:15,4/7/26 2:15,"April 7, 2026 1:15","April 7, 2026 2:15",As Soon As Possible,NA,4/7/26 2:15,4/7/26 2:15,4/1/26 2:01,1h,1h,1h,0,0,0,0,0,1.2.1.9.1,500,No,No,No,,,GreenSquare,,,,,,,,0,0,0,0d,0d,0d,No,No,No,No,No,No,No,No,No,No,No,0,0,0,0,0,
307,966,Yes,Auto Scheduled,Pre Load Validation,2h,Fixed Units,5,0.25d,306,"April 7, 2026 2:15","April 7, 2026 4:15",4/7/26 2:15,4/7/26 4:15,4/7/26 2:15,4/7/26 4:15,0h,0h,0ed,1,4/7/26 2:15,4/7/26 4:15,"April 7, 2026 2:15","April 7, 2026 4:15",As Soon As Possible,NA,4/7/26 4:15,4/7/26 4:15,4/1/26 2:01,2h,2h,2h,0,0,0,0,0,1.2.1.9.2,500,No,No,No,,Brian Wagner,GreenSquare,,,,,,,,0,0,0,0d,0d,0d,No,No,No,No,No,No,No,No,No,No,No,0,0,0,0,0,
308,967,Yes,Auto Scheduled,Simulate Load,1h,Fixed Units,5,0.13d,307,"April 7, 2026 4:15","April 8, 2026 8:15",4/7/26 4:15,4/8/26 8:15,4/7/26 4:15,4/8/26 8:15,0h,0h,0ed,1,4/7/26 4:15,4/8/26 8:15,"April 7, 2026 4:15","April 8, 2026 8:15",As Soon As Possible,NA,4/8/26 8:15,4/8/26 8:15,4/1/26 2:01,1h,1h,1h,0,0,0,0,0,1.2.1.9.3,500,No,No,No,,,GreenSquare,,,,,,,,0,0,0,0d,0d,0d,No,No,No,No,No,No,No,No,No,No,No,0,0,0,0,0,
309,968,Yes,Auto Scheduled,Error and Defect Mitigation,2h,Fixed Units,5,0.25d,308,"April 8, 2026 8:15","April 8, 2026 10:15",4/8/26 8:15,4/8/26 10:15,4/8/26 8:15,4/8/26 10:15,0h,0h,0ed,1,4/8/26 8:15,4/8/26 10:15,"April 8, 2026 8:15","April 8, 2026 10:15",As Soon As Possible,NA,4/8/26 10:15,4/8/26 10:15,4/1/26 2:01,2h,2h,2h,0,0,0,0,0,1.2.1.9.4,500,No,No,No,,Brian Wagner,GreenSquare,,,,,,,,0,0,0,0d,0d,0d,No,No,No,No,No,No,No,No,No,No,No,0,0,0,0,0,
310,969,Yes,Auto Scheduled,Load,1h,Fixed Units,5,0.13d,309,"April 8, 2026 10:15","April 8, 2026 11:15",4/8/26 10:15,4/8/26 11:15,4/8/26 10:15,4/8/26 11:15,0h,0h,0ed,1,4/8/26 10:15,4/8/26 11:15,"April 8, 2026 10:15","April 8, 2026 11:15",As Soon As Possible,NA,4/8/26 11:15,4/8/26 11:15,4/1/26 2:01,1h,1h,1h,0,0,0,0,0,1.2.1.9.5,500,No,No,No,,,GreenSquare,,,,,,,,0,0,0,0d,0d,0d,No,No,No,No,No,No,No,No,No,No,No,0,0,0,0,0,
311,970,Yes,Auto Scheduled,Post Load Validation,2h,Fixed Units,5,0.25d,310,"April 8, 2026 11:15","April 8, 2026 2:15",4/8/26 11:15,4/8/26 2:15,4/8/26 11:15,4/8/26 2:15,0h,0h,0ed,1,4/8/26 11:15,4/8/26 2:15,"April 8, 2026 11:15","April 8, 2026 2:15",As Soon As Possible,NA,4/8/26 2:15,4/8/26 2:15,4/1/26 2:01,2h,2h,2h,0,0,0,0,0,1.2.1.9.6,500,No,No,No,,Brian Wagner,GreenSquare,,,,,,,,0,0,0,0d,0d,0d,No,No,No,No,No,No,No,No,No,No,No,0,0,0,0,0,
312,757,Yes,Auto Scheduled,RTR_CM06_Bank_master,2.19d,Fixed Duration,4,1.22d,305,"April 14, 2026 8:00","April 16, 2026 9:30",4/14/26 8:00,4/16/26 9:30,4/14/26 8:00,4/16/26 9:30,0d,0d,0ed,1,4/14/26 8:00,4/16/26 9:30,"April 8, 2026 2:15","April 9, 2026 4:00",As Soon As Possible,NA,4/14/26 9:00,4/14/26 9:00,3/25/26 2:32,13h,9h,13h,0,0,0,0,0,1.2.1.10,500,No,Yes,Yes,,,GreenSquare,,,,,,,,0,0,0,0d,0d,0d,No,No,No,No,No,No,No,No,No,No,No,0,0,0,0,0,
313,789,Yes,Auto Scheduled,"Load File Staged and Posted ""Ready""",1h,Fixed Units,5,0.13d,276,"April 14, 2026 8:00","April 14, 2026 9:00",4/14/26 8:00,4/14/26 9:00,4/14/26 8:00,4/14/26 9:00,0h,0h,0ed,1,4/14/26 8:00,4/14/26 9:00,"April 8, 2026 2:15","April 8, 2026 4:30",As Soon As Possible,NA,4/14/26 9:00,4/14/26 9:00,3/25/26 2:49,1h,1h,1h,0,0,0,0,0,1.2.1.10.1,500,No,No,No,,,GreenSquare,,,,,,,,0,0,0,0d,0d,0d,No,No,No,No,No,No,No,No,No,No,No,0,0,0,0,0,
314,790,Yes,Auto Scheduled,Pre Load Validation,2h,Fixed Units,5,0.25d,313,"April 14, 2026 9:00","April 14, 2026 11:00",4/14/26 9:00,4/14/26 11:00,4/14/26 9:00,4/14/26 11:00,0h,0h,0ed,1,4/14/26 9:00,4/14/26 11:00,"April 8, 2026 4:30","April 9, 2026 9:30",As Soon As Possible,NA,4/14/26 11:00,4/14/26 11:00,3/25/26 2:49,2h,2h,2h,0,0,0,0,0,1.2.1.10.2,500,No,No,No,,Brian Wagner,GreenSquare,,,,,,,,0,0,0,0d,0d,0d,No,No,No,No,No,No,No,No,No,No,No,0,0,0,0,0,
315,791,Yes,Auto Scheduled,Simulate Load,1h,Fixed Units,5,0.13d,,"April 15, 2026 8:00","April 15, 2026 9:00",4/15/26 8:00,4/15/26 9:00,4/15/26 8:00,4/15/26 9:00,0h,0h,0ed,1,4/15/26 8:00,4/15/26 9:00,"April 9, 2026 9:30","April 9, 2026 10:30",Start No Earlier Than,4/15/26 8:00,4/15/26 9:00,4/15/26 9:00,3/25/26 2:49,1h,1h,1h,0,0,0,0,0,1.2.1.10.3,500,No,No,No,,,GreenSquare,,,,,,,,0,0,0,0d,0d,0d,No,No,No,No,No,No,No,No,No,No,No,0,0,0,0,0,
316,792,Yes,Auto Scheduled,Error and Defect Mitigation,2h,Fixed Units,5,0.25d,315,"April 15, 2026 9:00","April 15, 2026 11:00",4/15/26 9:00,4/15/26 11:00,4/15/26 9:00,4/15/26 11:00,0h,0h,0ed,1,4/15/26 9:00,4/15/26 11:00,"April 9, 2026 10:30","April 9, 2026 1:30",As Soon As Possible,NA,4/15/26 11:00,4/15/26 11:00,3/25/26 2:49,2h,2h,2h,0,0,0,0,0,1.2.1.10.4,500,No,No,No,,Brian Wagner,GreenSquare,,,,,,,,0,0,0,0d,0d,0d,No,No,No,No,No,No,No,No,No,No,No,0,0,0,0,0,
317,793,Yes,Auto Scheduled,Load,5h,Fixed Units,5,0.13d,316,"April 15, 2026 11:00","April 15, 2026 5:00",4/15/26 11:00,4/15/26 5:00,4/15/26 11:00,4/15/26 5:00,0h,0h,0ed,1,4/15/26 11:00,4/15/26 5:00,"April 9, 2026 1:30","April 9, 2026 2:30",Finish No Earlier Than,4/15/26 5:00,4/15/26 5:00,4/15/26 5:00,3/25/26 2:49,5h,1h,5h,0,0,0,0,0,1.2.1.10.5,500,No,No,No,,,GreenSquare,,,,,,,,0,0,0,0d,0d,0d,No,No,No,No,No,No,No,No,No,No,No,0,0,0,0,0,
318,794,Yes,Auto Scheduled,Post Load Validation,2h,Fixed Units,5,0.25d,317,"April 15, 2026 1:00","April 16, 2026 9:30",4/15/26 1:00,4/16/26 9:30,4/15/26 1:00,4/16/26 9:30,0h,0h,0ed,1,4/15/26 1:00,4/16/26 9:30,"April 9, 2026 8:00","April 9, 2026 4:00",Finish No Earlier Than,4/14/26 5:00,4/16/26 9:30,4/16/26 9:30,3/25/26 2:49,2h,2h,2h,0,0,0,0,0,1.2.1.10.6,500,No,No,No,,Brian Wagner,GreenSquare,,,,,,,,0,0,0,0d,0d,0d,No,No,No,No,No,No,No,No,No,No,No,0,0,0,0,0,
319,758,Yes,Auto Scheduled,RTR_CM08_Exchange_Rates,1.13d,Fixed Duration,4,1.13d,312,"April 9, 2026 2:30","April 10, 2026 3:30",4/9/26 2:30,4/10/26 3:30,4/9/26 2:30,4/10/26 3:30,0d,0d,0ed,1,4/9/26 2:30,4/10/26 3:30,"April 9, 2026 2:30","April 10, 2026 3:30",As Soon As Possible,NA,4/9/26 3:30,4/9/26 3:30,3/25/26 2:32,9h,9h,9h,0,0,0,0,0,1.2.1.11,500,No,Yes,Yes,,,GreenSquare,,,,,,,,0,0,0,0d,0d,0d,No,No,No,No,No,No,No,No,No,No,No,0,0,0,0,0,
320,796,Yes,Auto Scheduled,"Load File Staged and Posted ""Ready""",1h,Fixed Units,5,0.13d,317,"April 9, 2026 2:30","April 9, 2026 3:30",4/9/26 2:30,4/9/26 3:30,4/9/26 2:30,4/9/26 3:30,0h,0h,0ed,1,4/9/26 2:30,4/9/26 3:30,"April 9, 2026 2:30","April 9, 2026 3:30",As Soon As Possible,NA,4/9/26 3:30,4/9/26 3:30,3/30/26 6:34,1h,1h,1h,0,0,0,0,0,1.2.1.11.1,500,No,No,No,,,GreenSquare,,,,,,,,0,0,0,0d,0d,0d,No,No,No,No,No,No,No,No,No,No,No,0,0,0,0,0,
321,797,Yes,Auto Scheduled,Pre Load Validation,2h,Fixed Units,5,0.25d,320,"April 9, 2026 3:30","April 10, 2026 8:30",4/9/26 3:30,4/10/26 8:30,4/9/26 3:30,4/10/26 8:30,0h,0h,0ed,1,4/9/26 3:30,4/10/26 8:30,"April 9, 2026 3:30","April 10, 2026 8:30",As Soon As Possible,NA,4/10/26 8:30,4/10/26 8:30,3/30/26 6:34,2h,2h,2h,0,0,0,0,0,1.2.1.11.2,500,No,No,No,,Brian Wagner,GreenSquare,,,,,,,,0,0,0,0d,0d,0d,No,No,No,No,No,No,No,No,No,No,No,0,0,0,0,0,
322,798,Yes,Auto Scheduled,Simulate Load,1h,Fixed Units,5,0.13d,321,"April 10, 2026 8:30","April 10, 2026 9:30",4/10/26 8:30,4/10/26 9:30,4/10/26 8:30,4/10/26 9:30,0h,0h,0ed,1,4/10/26 8:30,4/10/26 9:30,"April 10, 2026 8:30","April 10, 2026 9:30",As Soon As Possible,NA,4/10/26 9:30,4/10/26 9:30,3/30/26 6:34,1h,1h,1h,0,0,0,0,0,1.2.1.11.3,500,No,No,No,,,GreenSquare,,,,,,,,0,0,0,0d,0d,0d,No,No,No,No,No,No,No,No,No,No,No,0,0,0,0,0,
323,799,Yes,Auto Scheduled,Error and Defect Mitigation,2h,Fixed Units,5,0.25d,322,"April 10, 2026 9:30","April 10, 2026 11:30",4/10/26 9:30,4/10/26 11:30,4/10/26 9:30,4/10/26 11:30,0h,0h,0ed,1,4/10/26 9:30,4/10/26 11:30,"April 10, 2026 9:30","April 10, 2026 11:30",As Soon As Possible,NA,4/10/26 11:30,4/10/26 11:30,3/30/26 6:34,2h,2h,2h,0,0,0,0,0,1.2.1.11.4,500,No,No,No,,Brian Wagner,GreenSquare,,,,,,,,0,0,0,0d,0d,0d,No,No,No,No,No,No,No,No,No,No,No,0,0,0,0,0,
324,800,Yes,Auto Scheduled,Load,1h,Fixed Units,5,0.13d,323,"April 10, 2026 11:30","April 10, 2026 1:30",4/10/26 11:30,4/10/26 1:30,4/10/26 11:30,4/10/26 1:30,0h,0h,0ed,1,4/10/26 11:30,4/10/26 1:30,"April 10, 2026 11:30","April 10, 2026 1:30",As Soon As Possible,NA,4/10/26 1:30,4/10/26 1:30,3/30/26 6:34,1h,1h,1h,0,0,0,0,0,1.2.1.11.5,500,No,No,No,,,GreenSquare,,,,,,,,0,0,0,0d,0d,0d,No,No,No,No,No,No,No,No,No,No,No,0,0,0,0,0,
325,801,Yes,Auto Scheduled,Post Load Validation,2h,Fixed Units,5,0.25d,324,"April 10, 2026 1:30","April 10, 2026 3:30",4/10/26 1:30,4/10/26 3:30,4/10/26 1:30,4/10/26 3:30,0h,0h,0ed,1,4/10/26 1:30,4/10/26 3:30,"April 10, 2026 1:30","April 10, 2026 3:30",As Soon As Possible,NA,4/10/26 3:30,4/10/26 3:30,3/30/26 6:34,2h,2h,2h,0,0,0,0,0,1.2.1.11.6,500,No,No,No,,Brian Wagner,GreenSquare,,,,,,,,0,0,0,0d,0d,0d,No,No,No,No,No,No,No,No,No,No,No,0,0,0,0,0,
326,761,Yes,Auto Scheduled,RTR_CM14_Cost Element_Group,5.38d,Fixed Duration,4,4.78d,319,"April 15, 2026 8:00","April 22, 2026 11:00",4/15/26 8:00,4/22/26 11:00,4/15/26 8:00,4/22/26 11:00,0d,0d,0ed,1,4/15/26 8:00,4/22/26 11:00,"April 8, 2026 3:45","April 15, 2026 2:00",As Soon As Possible,NA,4/15/26 8:30,4/15/26 8:30,3/25/26 2:32,78.5h,38.25h,78.5h,0,0,0,0,0,1.2.1.12,500,No,Yes,Yes,,Brian Wagner,GreenSquare,,,,,,,,0,0,0,0d,0d,0d,No,No,No,No,No,No,No,No,No,No,No,0,0,0,0,0,
327,814,Yes,Auto Scheduled,"Manual File Staged and Posted ""Ready""",30m,Fixed Units,5,4.16d,276,"April 15, 2026 8:00","April 15, 2026 8:30",4/15/26 8:00,4/15/26 8:30,4/15/26 8:00,4/15/26 8:30,0m,0m,0ed,1,4/15/26 8:00,4/15/26 8:30,"April 8, 2026 3:45","April 14, 2026 5:00",Finish No Earlier Than,4/14/26 5:00,4/15/26 8:30,4/15/26 8:30,3/30/26 6:35,0.5h,33.25h,0.5h,0,0,0,0,0,1.2.1.12.1,500,No,No,No,,,GreenSquare,,,,,,,,0,0,0,0d,0d,0d,No,No,No,No,No,No,No,No,No,No,No,0,0,0,0,0,
328,815,Yes,Auto Scheduled,Load,32h,Fixed Units,5,0.25d,327,"April 16, 2026 8:00","April 21, 2026 5:00",4/16/26 8:00,4/21/26 5:00,4/16/26 8:00,4/21/26 5:00,0h,0h,0ed,1,4/16/26 8:00,4/21/26 5:00,"April 15, 2026 8:00","April 15, 2026 10:00",Finish No Earlier Than,4/21/26 5:00,4/21/26 5:00,4/21/26 5:00,3/30/26 6:35,32h,2h,32h,0,0,0,0,0,1.2.1.12.2,500,No,No,No,,,GreenSquare,2026-04-20 15:36 - jsw73 - Start ignored — already in progress,,,,,,,0,0,0,0d,0d,0d,No,No,No,No,No,No,No,No,No,No,No,0,0,0,0,0,
329,816,Yes,Auto Scheduled,Post Load Validation,3h,Fixed Units,5,0.38d,328,"April 22, 2026 8:00","April 22, 2026 11:00",4/22/26 8:00,4/22/26 11:00,4/22/26 8:00,4/22/26 11:00,0h,0h,0ed,1,4/22/26 8:00,4/22/26 11:00,"April 15, 2026 10:00","April 15, 2026 2:00",Start No Earlier Than,4/17/26 8:00,4/22/26 11:00,4/22/26 11:00,3/30/26 6:35,3h,3h,3h,0,0,0,0,0,1.2.1.12.3,500,No,No,No,,Brian Wagner,GreenSquare,,,,,,,,0,0,0,0d,0d,0d,No,No,No,No,No,No,No,No,No,No,No,0,0,0,0,0,
330,764,Yes,Auto Scheduled,OTC_CM19_Customer_Master - Bill-To,2h,Fixed Units,4,0d,326,"April 16, 2026 8:00","April 16, 2026 10:00",4/16/26 8:00,4/16/26 10:00,4/16/26 8:00,4/16/26 10:00,0h,0h,0ed,1,4/16/26 8:00,4/16/26 10:00,"April 16, 2025 8:00","April 16, 2025 8:00",As Soon As Possible,NA,4/16/26 10:00,4/16/26 10:00,3/25/26 2:32,0h,0h,0h,0,0,0,0,0,1.2.1.13,500,No,No,No,,,GreenSquare,,,,,,,,0,0,0,0d,0d,0d,No,No,No,No,No,No,No,No,No,No,No,0,0,0,0,0,
331,763,Yes,Auto Scheduled,OTC_CM19_Customer_Master - Ship-To,2.16d,Fixed Duration,4,3.13d,330,"April 8, 2026 3:45","April 10, 2026 5:00",4/8/26 3:45,4/10/26 5:00,4/8/26 3:45,4/10/26 5:00,0d,0d,0ed,1,4/8/26 3:45,4/10/26 5:00,"April 8, 2026 3:45","April 13, 2026 4:45",As Soon As Possible,NA,4/8/26 4:15,4/8/26 4:15,3/25/26 2:32,13.25h,36h,13.25h,0,0,0,0,0,1.2.1.14,500,No,Yes,Yes,,,GreenSquare,,,,,,,,0,0,0,0d,0d,0d,No,No,No,No,No,No,No,No,No,No,No,0,0,0,0,0,
332,823,Yes,Auto Scheduled,"Load File Staged and Posted ""Ready""",30m,Fixed Units,5,0.06d,276,"April 8, 2026 3:45","April 8, 2026 4:15",4/8/26 3:45,4/8/26 4:15,4/8/26 3:45,4/8/26 4:15,0m,0m,0ed,1,4/8/26 3:45,4/8/26 4:15,"April 8, 2026 3:45","April 8, 2026 4:15",As Soon As Possible,NA,4/8/26 4:15,4/8/26 4:15,3/30/26 7:59,0.5h,0.5h,0.5h,0,0,0,0,0,1.2.1.14.1,500,No,No,No,,,GreenSquare,,,,,,,,0,0,0,0d,0d,0d,No,No,No,No,No,No,No,No,No,No,No,0,0,0,0,0,
333,824,Yes,Auto Scheduled,Pre Load Validation,30m,Fixed Units,5,0.06d,332,"April 8, 2026 4:15","April 8, 2026 4:45",4/8/26 4:15,4/8/26 4:45,4/8/26 4:15,4/8/26 4:45,0m,0m,0ed,1,4/8/26 4:15,4/8/26 4:45,"April 8, 2026 4:15","April 8, 2026 4:45",As Soon As Possible,NA,4/8/26 4:45,4/8/26 4:45,3/30/26 7:59,0.5h,0.5h,0.5h,0,0,0,0,0,1.2.1.14.2,500,No,No,No,,Kim Kolesar,GreenSquare,,,,,,,,0,0,0,0d,0d,0d,No,No,No,No,No,No,No,No,No,No,No,0,0,0,0,0,
334,1231,Yes,Auto Scheduled,Open client for BP number range update,30m,Fixed Units,5,1d,333,"April 8, 2026 4:45","April 9, 2026 8:15",4/8/26 4:45,4/9/26 8:15,4/8/26 4:45,4/9/26 8:15,0m,0m,0ed,1,4/8/26 4:45,4/9/26 8:15,"April 8, 2026 4:45","April 9, 2026 4:45",As Soon As Possible,NA,4/9/26 8:15,4/9/26 8:15,4/8/26 9:06,0.5h,8h,0.5h,0,0,0,0,0,1.2.1.14.3,500,No,No,No,,,GreenSquare,,,,,,,,0,0,0,0d,0d,0d,No,No,No,No,No,No,No,No,No,No,No,0,0,0,0,0,
335,1232,Yes,Auto Scheduled,Update number range BP02 from Internal to External,30m,Fixed Units,5,1d,334,"April 9, 2026 4:45","April 10, 2026 8:15",4/9/26 4:45,4/10/26 8:15,4/9/26 4:45,4/10/26 8:15,0m,0m,0ed,1,4/9/26 4:45,4/10/26 8:15,"April 9, 2026 4:45","April 10, 2026 4:45",As Soon As Possible,NA,4/10/26 8:15,4/10/26 8:15,4/8/26 9:07,0.5h,8h,0.5h,0,0,0,0,0,1.2.1.14.4,500,No,No,No,,,GreenSquare,,,,,,,,0,0,0,0d,0d,0d,No,No,No,No,No,No,No,No,No,No,No,0,0,0,0,0,
336,1233,Yes,Auto Scheduled,Close Client,15m,Fixed Units,5,1d,335,"April 10, 2026 4:45","April 10, 2026 5:00",4/10/26 4:45,4/10/26 5:00,4/10/26 4:45,4/10/26 5:00,0m,0m,0ed,1,4/10/26 4:45,4/10/26 5:00,"April 10, 2026 4:45","April 13, 2026 4:45",As Soon As Possible,NA,4/10/26 5:00,4/10/26 5:00,4/8/26 9:07,0.25h,8h,0.25h,0,0,0,0,0,1.2.1.14.5,500,No,No,No,,,GreenSquare,,,,,,,,0,0,0,0d,0d,0d,No,No,No,No,No,No,No,No,No,No,No,0,0,0,0,0,
337,825,Yes,Auto Scheduled,Simulate Load,1h,Fixed Units,5,0.13d,333,"April 8, 2026 4:45","April 9, 2026 8:45",4/8/26 4:45,4/9/26 8:45,4/8/26 4:45,4/9/26 8:45,0h,0h,0ed,1,4/8/26 4:45,4/9/26 8:45,"April 8, 2026 4:45","April 9, 2026 8:45",As Soon As Possible,NA,4/9/26 8:45,4/9/26 8:45,3/30/26 7:59,1h,1h,1h,0,0,0,0,0,1.2.1.14.6,500,No,No,No,,,GreenSquare,,,,,,,,0,0,0,0d,0d,0d,No,No,No,No,No,No,No,No,No,No,No,0,0,0,0,0,
338,826,Yes,Auto Scheduled,Error and Defect Mitigation,4h,Fixed Units,5,0.5d,337,"April 9, 2026 8:45","April 9, 2026 1:45",4/9/26 8:45,4/9/26 1:45,4/9/26 8:45,4/9/26 1:45,0h,0h,0ed,1,4/9/26 8:45,4/9/26 1:45,"April 9, 2026 8:45","April 9, 2026 1:45",As Soon As Possible,NA,4/9/26 1:45,4/9/26 1:45,3/30/26 7:59,4h,4h,4h,0,0,0,0,0,1.2.1.14.7,500,No,No,No,,Kim Kolesar,GreenSquare,,,,,,,,0,0,0,0d,0d,0d,No,No,No,No,No,No,No,No,No,No,No,0,0,0,0,0,
339,827,Yes,Auto Scheduled,Load,3h,Fixed Units,5,0.38d,338,"April 9, 2026 1:45","April 9, 2026 4:45",4/9/26 1:45,4/9/26 4:45,4/9/26 1:45,4/9/26 4:45,0h,0h,0ed,1,4/9/26 1:45,4/9/26 4:45,"April 9, 2026 1:45","April 9, 2026 4:45",As Soon As Possible,NA,4/9/26 4:45,4/9/26 4:45,3/30/26 7:59,3h,3h,3h,0,0,0,0,0,1.2.1.14.8,500,No,No,No,,,GreenSquare,,,,,,,,0,0,0,0d,0d,0d,No,No,No,No,No,No,No,No,No,No,No,0,0,0,0,0,
340,828,Yes,Auto Scheduled,Post Load Validation,3h,Fixed Units,5,0.38d,339,"April 9, 2026 4:45","April 10, 2026 10:45",4/9/26 4:45,4/10/26 10:45,4/9/26 4:45,4/10/26 10:45,0h,0h,0ed,1,4/9/26 4:45,4/10/26 10:45,"April 9, 2026 4:45","April 10, 2026 10:45",As Soon As Possible,NA,4/10/26 10:45,4/10/26 10:45,3/30/26 7:59,3h,3h,3h,0,0,0,0,0,1.2.1.14.9,500,No,No,No,,Kim Kolesar,GreenSquare,,,,,,,,0,0,0,0d,0d,0d,No,No,No,No,No,No,No,No,No,No,No,0,0,0,0,0,
341,762,Yes,Auto Scheduled,OTC_CM19_Customer_Master - Sold-To,1.63d,Fixed Duration,4,1.63d,331,"April 8, 2026 4:45","April 10, 2026 1:45",4/8/26 4:45,4/10/26 1:45,4/8/26 4:45,4/10/26 1:45,0d,0d,0ed,1,4/8/26 4:45,4/10/26 1:45,"April 8, 2026 4:45","April 10, 2026 1:45",As Soon As Possible,NA,4/9/26 8:15,4/9/26 8:15,3/25/26 2:32,11.75h,11.75h,11.75h,0,0,0,0,0,1.2.1.15,500,No,Yes,Yes,,,GreenSquare,,,,,,,,0,0,0,0d,0d,0d,No,No,No,No,No,No,No,No,No,No,No,0,0,0,0,0,
342,817,Yes,Auto Scheduled,"Load File Staged and Posted ""Ready""",30m,Fixed Units,5,0.06d,333,"April 8, 2026 4:45","April 9, 2026 8:15",4/8/26 4:45,4/9/26 8:15,4/8/26 4:45,4/9/26 8:15,0m,0m,0ed,1,4/8/26 4:45,4/9/26 8:15,"April 8, 2026 4:45","April 9, 2026 8:15",As Soon As Possible,NA,4/9/26 8:15,4/9/26 8:15,3/30/26 7:57,0.5h,0.5h,0.5h,0,0,0,0,0,1.2.1.15.1,500,No,No,No,,,GreenSquare,,,,,,,,0,0,0,0d,0d,0d,No,No,No,No,No,No,No,No,No,No,No,0,0,0,0,0,
343,818,Yes,Auto Scheduled,Pre Load Validation,30m,Fixed Units,5,0.06d,342,"April 9, 2026 8:15","April 9, 2026 8:45",4/9/26 8:15,4/9/26 8:45,4/9/26 8:15,4/9/26 8:45,0m,0m,0ed,1,4/9/26 8:15,4/9/26 8:45,"April 9, 2026 8:15","April 9, 2026 8:45",As Soon As Possible,NA,4/9/26 8:45,4/9/26 8:45,3/30/26 7:57,0.5h,0.5h,0.5h,0,0,0,0,0,1.2.1.15.2,500,No,No,No,,Kim Kolesar,GreenSquare,,,,,,,,0,0,0,0d,0d,0d,No,No,No,No,No,No,No,No,No,No,No,0,0,0,0,0,
344,819,Yes,Auto Scheduled,Simulate Load,1h,Fixed Units,5,0.13d,"337,278","April 9, 2026 10:45","April 9, 2026 11:45",4/9/26 10:45,4/9/26 11:45,4/9/26 10:45,4/9/26 11:45,0h,0h,0ed,1,4/9/26 10:45,4/9/26 11:45,"April 9, 2026 10:45","April 9, 2026 11:45",As Soon As Possible,NA,4/9/26 11:45,4/9/26 11:45,3/30/26 7:57,1h,1h,1h,0,0,0,0,0,1.2.1.15.3,500,No,No,No,,,GreenSquare,,,,,,,,0,0,0,0d,0d,0d,No,No,No,No,No,No,No,No,No,No,No,0,0,0,0,0,
345,820,Yes,Auto Scheduled,Error and Defect Mitigation,3h,Fixed Units,5,0.38d,344,"April 9, 2026 11:45","April 9, 2026 3:45",4/9/26 11:45,4/9/26 3:45,4/9/26 11:45,4/9/26 3:45,0h,0h,0ed,1,4/9/26 11:45,4/9/26 3:45,"April 9, 2026 11:45","April 9, 2026 3:45",As Soon As Possible,NA,4/9/26 3:45,4/9/26 3:45,3/30/26 7:57,3h,3h,3h,0,0,0,0,0,1.2.1.15.4,500,No,No,No,,Kim Kolesar,GreenSquare,,,,,,,,0,0,0,0d,0d,0d,No,No,No,No,No,No,No,No,No,No,No,0,0,0,0,0,
346,821,Yes,Auto Scheduled,Load,3h,Fixed Units,5,0.38d,345,"April 9, 2026 3:45","April 10, 2026 9:45",4/9/26 3:45,4/10/26 9:45,4/9/26 3:45,4/10/26 9:45,0h,0h,0ed,1,4/9/26 3:45,4/10/26 9:45,"April 9, 2026 3:45","April 10, 2026 9:45",As Soon As Possible,NA,4/10/26 9:45,4/10/26 9:45,3/30/26 7:57,3h,3h,3h,0,0,0,0,0,1.2.1.15.5,500,No,No,No,,,GreenSquare,,,,,,,,0,0,0,0d,0d,0d,No,No,No,No,No,No,No,No,No,No,No,0,0,0,0,0,
347,822,Yes,Auto Scheduled,Post Load Validation,3h,Fixed Units,5,0.38d,346,"April 10, 2026 9:45","April 10, 2026 1:45",4/10/26 9:45,4/10/26 1:45,4/10/26 9:45,4/10/26 1:45,0h,0h,0ed,1,4/10/26 9:45,4/10/26 1:45,"April 10, 2026 9:45","April 10, 2026 1:45",As Soon As Possible,NA,4/10/26 1:45,4/10/26 1:45,3/30/26 7:57,3h,3h,3h,0,0,0,0,0,1.2.1.15.6,500,No,No,No,,Kim Kolesar,GreenSquare,,,,,,,,0,0,0,0d,0d,0d,No,No,No,No,No,No,No,No,No,No,No,0,0,0,0,0,
348,1240,Yes,Auto Scheduled,Open client for BP number range update,15m,Fixed Units,5,0.03d,337,"April 9, 2026 8:45","April 9, 2026 9:00",4/9/26 8:45,4/9/26 9:00,4/9/26 8:45,4/9/26 9:00,0m,0m,0ed,1,4/9/26 8:45,4/9/26 9:00,"April 9, 2026 8:45","April 9, 2026 9:00",As Soon As Possible,NA,4/9/26 9:00,4/9/26 9:00,4/8/26 9:09,0.25h,0.25h,0.25h,0,0,0,0,0,1.2.1.15.7,500,No,No,No,,,GreenSquare,,,,,,,,0,0,0,0d,0d,0d,No,No,No,No,No,No,No,No,No,No,No,0,0,0,0,0,
349,1241,Yes,Auto Scheduled,Update number range BP02 from Internal to External,15m,Fixed Units,5,0.03d,348,"April 9, 2026 9:00","April 9, 2026 9:15",4/9/26 9:00,4/9/26 9:15,4/9/26 9:00,4/9/26 9:15,0m,0m,0ed,1,4/9/26 9:00,4/9/26 9:15,"April 9, 2026 9:00","April 9, 2026 9:15",As Soon As Possible,NA,4/9/26 9:15,4/9/26 9:15,4/8/26 9:09,0.25h,0.25h,0.25h,0,0,0,0,0,1.2.1.15.8,500,No,No,No,,,GreenSquare,,,,,,,,0,0,0,0d,0d,0d,No,No,No,No,No,No,No,No,No,No,No,0,0,0,0,0,
350,1242,Yes,Auto Scheduled,Close Client,15m,Fixed Units,5,0.03d,349,"April 9, 2026 9:15","April 9, 2026 9:30",4/9/26 9:15,4/9/26 9:30,4/9/26 9:15,4/9/26 9:30,0m,0m,0ed,1,4/9/26 9:15,4/9/26 9:30,"April 9, 2026 9:15","April 9, 2026 9:30",As Soon As Possible,NA,4/9/26 9:30,4/9/26 9:30,4/8/26 9:09,0.25h,0.25h,0.25h,0,0,0,0,0,1.2.1.15.9,500,No,No,No,,,GreenSquare,,,,,,,,0,0,0,0d,0d,0d,No,No,No,No,No,No,No,No,No,No,No,0,0,0,0,0,
351,765,Yes,Auto Scheduled,PTP_CM27_Vendor Master as Customer - FLCU01,2.31d,Fixed Duration,4,2.31d,341,"April 10, 2026 9:45","April 14, 2026 1:15",4/10/26 9:45,4/14/26 1:15,4/10/26 9:45,4/14/26 1:15,0d,0d,0ed,1,4/10/26 9:45,4/14/26 1:15,"April 10, 2026 9:45","April 14, 2026 1:15",As Soon As Possible,NA,4/10/26 10:45,4/10/26 10:45,3/25/26 2:32,19.25h,19.25h,19.25h,0,0,0,0,0,1.2.1.16,500,No,Yes,Yes,,,GreenSquare,,,,,,,,0,0,0,0d,0d,0d,No,No,No,No,No,No,No,No,No,No,No,0,0,0,0,0,
352,972,Yes,Auto Scheduled,Extract File,1h,Fixed Units,5,0.13d,346,"April 10, 2026 9:45","April 10, 2026 10:45",4/10/26 9:45,4/10/26 10:45,4/10/26 9:45,4/10/26 10:45,0h,0h,0ed,1,4/10/26 9:45,4/10/26 10:45,"April 10, 2026 9:45","April 10, 2026 10:45",As Soon As Possible,NA,4/10/26 10:45,4/10/26 10:45,4/1/26 2:18,1h,1h,1h,0,0,0,0,0,1.2.1.16.1,500,No,No,No,,,GreenSquare,,,,,,,,0,0,0,0d,0d,0d,No,No,No,No,No,No,No,No,No,No,No,0,0,0,0,0,
353,973,Yes,Auto Scheduled,Pre Load Validation,2h,Fixed Units,5,0.25d,352,"April 10, 2026 10:45","April 10, 2026 1:45",4/10/26 10:45,4/10/26 1:45,4/10/26 10:45,4/10/26 1:45,0h,0h,0ed,1,4/10/26 10:45,4/10/26 1:45,"April 10, 2026 10:45","April 10, 2026 1:45",As Soon As Possible,NA,4/10/26 1:45,4/10/26 1:45,4/1/26 2:18,2h,2h,2h,0,0,0,0,0,1.2.1.16.2,500,No,No,No,,Sam Houff,GreenSquare,,,,,,,,0,0,0,0d,0d,0d,No,No,No,No,No,No,No,No,No,No,No,0,0,0,0,0,
354,974,Yes,Auto Scheduled,Simulate Load,11.25h,Fixed Units,5,1.41d,"353,318","April 10, 2026 1:45","April 13, 2026 5:00",4/10/26 1:45,4/13/26 5:00,4/10/26 1:45,4/13/26 5:00,0h,0h,0ed,1,4/10/26 1:45,4/13/26 5:00,"April 10, 2026 1:45","April 13, 2026 5:00",Finish No Earlier Than,4/13/26 5:00,4/13/26 5:00,4/13/26 5:00,4/1/26 2:18,11.25h,11.25h,11.25h,0,0,0,0,0,1.2.1.16.3,500,No,No,No,,,GreenSquare,,,,,,,,0,0,0,0d,0d,0d,No,No,No,No,No,No,No,No,No,No,No,0,0,0,0,0,
355,975,Yes,Auto Scheduled,Error and Defect Mitigation,2h,Fixed Units,5,0.25d,354,"April 10, 2026 2:45","April 14, 2026 9:30",4/10/26 2:45,4/14/26 9:30,4/10/26 2:45,4/14/26 9:30,0h,0h,0ed,1,4/10/26 2:45,4/14/26 9:30,"April 10, 2026 2:45","April 14, 2026 9:30",As Soon As Possible,NA,4/14/26 9:30,4/14/26 9:30,4/1/26 2:18,2h,2h,2h,0,0,0,0,0,1.2.1.16.4,500,No,No,No,,Sam Houff,GreenSquare,,,,,,,,0,0,0,0d,0d,0d,No,No,No,No,No,No,No,No,No,No,No,0,0,0,0,0,
356,976,Yes,Auto Scheduled,Load,1h,Fixed Units,5,0.13d,355,"April 10, 2026 4:45","April 14, 2026 10:15",4/10/26 4:45,4/14/26 10:15,4/10/26 4:45,4/14/26 10:15,0h,0h,0ed,1,4/10/26 4:45,4/14/26 10:15,"April 10, 2026 4:45","April 14, 2026 10:15",As Soon As Possible,NA,4/14/26 10:15,4/14/26 10:15,4/1/26 2:18,1h,1h,1h,0,0,0,0,0,1.2.1.16.5,500,No,No,No,,,GreenSquare,,,,,,,,0,0,0,0d,0d,0d,No,No,No,No,No,No,No,No,No,No,No,0,0,0,0,0,
357,977,Yes,Auto Scheduled,Post Load Validation,2h,Fixed Units,5,0.25d,356,"April 14, 2026 10:15","April 14, 2026 1:15",4/14/26 10:15,4/14/26 1:15,4/14/26 10:15,4/14/26 1:15,0h,0h,0ed,1,4/14/26 10:15,4/14/26 1:15,"April 14, 2026 10:15","April 14, 2026 1:15",As Soon As Possible,NA,4/14/26 1:15,4/14/26 1:15,4/1/26 2:18,2h,2h,2h,0,0,0,0,0,1.2.1.16.6,500,No,No,No,,Sam Houff,GreenSquare,,,,,,,,0,0,0,0d,0d,0d,No,No,No,No,No,No,No,No,No,No,No,0,0,0,0,0,
358,771,Yes,Auto Scheduled,OTC_CM23_Customer_Hierarchy,3.03d,Fixed Duration,4,0.69d,351,"April 10, 2026 9:45","April 15, 2026 10:00",4/10/26 9:45,4/15/26 10:00,4/10/26 9:45,4/15/26 10:00,0d,0d,0ed,1,4/10/26 9:45,4/15/26 10:00,"April 10, 2026 9:45","April 10, 2026 4:15",As Soon As Possible,NA,4/10/26 10:15,4/10/26 10:15,3/25/26 2:32,5.5h,5.5h,5.5h,0,0,0,0,0,1.2.1.17,500,No,Yes,Yes,,,GreenSquare,,,,,,,,0,0,0,0d,0d,0d,No,No,No,No,No,No,No,No,No,No,No,0,0,0,0,0,
359,984,Yes,Auto Scheduled,"Manual File Staged and Posted ""Ready""",30m,Fixed Units,5,0.06d,346,"April 10, 2026 9:45","April 10, 2026 10:15",4/10/26 9:45,4/10/26 10:15,4/10/26 9:45,4/10/26 10:15,0m,0m,0ed,1,4/10/26 9:45,4/10/26 10:15,"April 10, 2026 9:45","April 10, 2026 10:15",Start No Earlier Than,4/6/26 8:00,4/10/26 10:15,4/10/26 10:15,4/1/26 2:20,0.5h,0.5h,0.5h,0,0,0,0,0,1.2.1.17.1,500,No,No,No,,Kim Kolesar,GreenSquare,,,,,,,,0,0,0,0d,0d,0d,No,No,No,No,No,No,No,No,No,No,No,0,0,0,0,0,
360,985,Yes,Auto Scheduled,Load,2h,Fixed Units,5,0.25d,359,"April 15, 2026 8:00","April 15, 2026 10:00",4/15/26 8:00,4/15/26 10:00,4/15/26 8:00,4/15/26 10:00,0h,0h,0ed,1,4/15/26 8:00,4/15/26 10:00,"April 10, 2026 10:15","April 10, 2026 1:15",Start No Earlier Than,4/15/26 8:00,4/15/26 10:00,4/15/26 10:00,4/1/26 2:20,2h,2h,2h,0,0,0,0,0,1.2.1.17.2,500,No,No,No,,,GreenSquare,,,,,,,,0,0,0,0d,0d,0d,No,No,No,No,No,No,No,No,No,No,No,0,0,0,0,0,
361,986,Yes,Auto Scheduled,Post Load Validation,3h,Fixed Units,5,0.38d,360,"April 10, 2026 1:15","April 10, 2026 4:15",4/10/26 1:15,4/10/26 4:15,4/10/26 1:15,4/10/26 4:15,0h,0h,0ed,1,4/10/26 1:15,4/10/26 4:15,"April 10, 2026 1:15","April 10, 2026 4:15",As Soon As Possible,NA,4/10/26 4:15,4/10/26 4:15,4/1/26 2:20,3h,3h,3h,0,0,0,0,0,1.2.1.17.3,500,No,No,No,,Kim Kolesar,GreenSquare,,,,,,,,0,0,0,0d,0d,0d,No,No,No,No,No,No,No,No,No,No,No,0,0,0,0,0,
362,766,Yes,Auto Scheduled,PTP_CM27_Vendor Master - Z001 - External Sales Rep,3.38d,Fixed Duration,4,1.13d,358,"April 10, 2026 9:45","April 15, 2026 1:45",4/10/26 9:45,4/15/26 1:45,4/10/26 9:45,4/15/26 1:45,0d,0d,0ed,1,4/10/26 9:45,4/15/26 1:45,"April 10, 2026 9:45","April 13, 2026 10:45",As Soon As Possible,NA,4/10/26 10:45,4/10/26 10:45,3/25/26 2:32,9h,9h,9h,0,0,0,0,0,1.2.1.18,500,No,Yes,Yes,,,GreenSquare,,,,,,,,0,0,0,0d,0d,0d,No,No,No,No,No,No,No,No,No,No,No,0,0,0,0,0,
363,987,Yes,Auto Scheduled,Extract File,1h,Fixed Units,5,0.13d,346,"April 10, 2026 9:45","April 10, 2026 10:45",4/10/26 9:45,4/10/26 10:45,4/10/26 9:45,4/10/26 10:45,0h,0h,0ed,1,4/10/26 9:45,4/10/26 10:45,"April 10, 2026 9:45","April 10, 2026 10:45",As Soon As Possible,NA,4/10/26 10:45,4/10/26 10:45,4/1/26 2:21,1h,1h,1h,0,0,0,0,0,1.2.1.18.1,500,No,No,No,,,GreenSquare,,,,,,,,0,0,0,0d,0d,0d,No,No,No,No,No,No,No,No,No,No,No,0,0,0,0,0,
364,988,Yes,Auto Scheduled,Pre Load Validation,2h,Fixed Units,5,0.25d,363,"April 10, 2026 10:45","April 10, 2026 1:45",4/10/26 10:45,4/10/26 1:45,4/10/26 10:45,4/10/26 1:45,0h,0h,0ed,1,4/10/26 10:45,4/10/26 1:45,"April 10, 2026 10:45","April 10, 2026 1:45",As Soon As Possible,NA,4/10/26 1:45,4/10/26 1:45,4/1/26 2:21,2h,2h,2h,0,0,0,0,0,1.2.1.18.2,500,No,No,No,,Sam Houff,GreenSquare,,,,,,,,0,0,0,0d,0d,0d,No,No,No,No,No,No,No,No,No,No,No,0,0,0,0,0,
365,989,Yes,Auto Scheduled,Simulate Load,1h,Fixed Units,5,0.13d,"364,318","April 10, 2026 1:45","April 10, 2026 2:45",4/10/26 1:45,4/10/26 2:45,4/10/26 1:45,4/10/26 2:45,0h,0h,0ed,1,4/10/26 1:45,4/10/26 2:45,"April 10, 2026 1:45","April 10, 2026 2:45",As Soon As Possible,NA,4/10/26 2:45,4/10/26 2:45,4/1/26 2:21,1h,1h,1h,0,0,0,0,0,1.2.1.18.3,500,No,No,No,,,GreenSquare,,,,,,,,0,0,0,0d,0d,0d,No,No,No,No,No,No,No,No,No,No,No,0,0,0,0,0,
366,990,Yes,Auto Scheduled,Error and Defect Mitigation,2h,Fixed Units,5,0.25d,365,"April 15, 2026 8:00","April 15, 2026 10:00",4/15/26 8:00,4/15/26 10:00,4/15/26 8:00,4/15/26 10:00,0h,0h,0ed,1,4/15/26 8:00,4/15/26 10:00,"April 10, 2026 2:45","April 10, 2026 4:45",As Soon As Possible,NA,4/15/26 10:00,4/15/26 10:00,4/1/26 2:21,2h,2h,2h,0,0,0,0,0,1.2.1.18.4,500,No,No,No,,Sam Houff,GreenSquare,,,,,,,,0,0,0,0d,0d,0d,No,No,No,No,No,No,No,No,No,No,No,0,0,0,0,0,
367,991,Yes,Auto Scheduled,Load,1h,Fixed Units,5,0.13d,366,"April 10, 2026 4:45","April 15, 2026 10:45",4/10/26 4:45,4/15/26 10:45,4/10/26 4:45,4/15/26 10:45,0h,0h,0ed,1,4/10/26 4:45,4/15/26 10:45,"April 10, 2026 4:45","April 13, 2026 8:45",As Soon As Possible,NA,4/15/26 10:45,4/15/26 10:45,4/1/26 2:21,1h,1h,1h,0,0,0,0,0,1.2.1.18.5,500,No,No,No,,,GreenSquare,,,,,,,,0,0,0,0d,0d,0d,No,No,No,No,No,No,No,No,No,No,No,0,0,0,0,0,
368,992,Yes,Auto Scheduled,Post Load Validation,2h,Fixed Units,5,0.25d,367,"April 15, 2026 10:45","April 15, 2026 1:45",4/15/26 10:45,4/15/26 1:45,4/15/26 10:45,4/15/26 1:45,0h,0h,0ed,1,4/15/26 10:45,4/15/26 1:45,"April 13, 2026 8:45","April 13, 2026 10:45",As Soon As Possible,NA,4/15/26 1:45,4/15/26 1:45,4/1/26 2:21,2h,2h,2h,0,0,0,0,0,1.2.1.18.6,500,No,No,No,,Sam Houff,GreenSquare,,,,,,,,0,0,0,0d,0d,0d,No,No,No,No,No,No,No,No,No,No,No,0,0,0,0,0,
369,768,Yes,Auto Scheduled,RTR_CM10_Credit_Management_Role,5.56d,Fixed Duration,4,1.13d,362,"April 10, 2026 9:45","April 17, 2026 3:15",4/10/26 9:45,4/17/26 3:15,4/10/26 9:45,4/17/26 3:15,0d,0d,0ed,1,4/10/26 9:45,4/17/26 3:15,"April 10, 2026 9:45","April 13, 2026 10:45",As Soon As Possible,NA,4/10/26 10:15,4/10/26 10:15,3/25/26 2:32,9h,9h,9h,0,0,0,0,0,1.2.1.19,500,No,Yes,Yes,,,GreenSquare,,,,,,,,0,0,0,0d,0d,0d,No,No,No,No,No,No,No,No,No,No,No,0,0,0,0,0,
370,993,Yes,Auto Scheduled,"Load File Staged and Posted ""Ready""",30m,Fixed Units,5,0.06d,346,"April 10, 2026 9:45","April 10, 2026 10:15",4/10/26 9:45,4/10/26 10:15,4/10/26 9:45,4/10/26 10:15,0m,0m,0ed,1,4/10/26 9:45,4/10/26 10:15,"April 10, 2026 9:45","April 10, 2026 10:15",As Soon As Possible,NA,4/10/26 10:15,4/10/26 10:15,4/1/26 2:22,0.5h,0.5h,0.5h,0,0,0,0,0,1.2.1.19.1,500,No,No,No,,,GreenSquare,,,,,,,,0,0,0,0d,0d,0d,No,No,No,No,No,No,No,No,No,No,No,0,0,0,0,0,
371,994,Yes,Auto Scheduled,Pre Load Validation,30m,Fixed Units,5,0.06d,370,"April 10, 2026 10:15","April 10, 2026 10:45",4/10/26 10:15,4/10/26 10:45,4/10/26 10:15,4/10/26 10:45,0m,0m,0ed,1,4/10/26 10:15,4/10/26 10:45,"April 10, 2026 10:15","April 10, 2026 10:45",As Soon As Possible,NA,4/10/26 10:45,4/10/26 10:45,4/1/26 2:22,0.5h,0.5h,0.5h,0,0,0,0,0,1.2.1.19.2,500,No,No,No,,Brian Wagner,GreenSquare,,,,,,,,0,0,0,0d,0d,0d,No,No,No,No,No,No,No,No,No,No,No,0,0,0,0,0,
372,995,Yes,Auto Scheduled,Simulate Load,1h,Fixed Units,5,0.13d,371,"April 17, 2026 8:00","April 17, 2026 9:00",4/17/26 8:00,4/17/26 9:00,4/17/26 8:00,4/17/26 9:00,0h,0h,0ed,1,4/17/26 8:00,4/17/26 9:00,"April 10, 2026 10:45","April 10, 2026 11:45",As Soon As Possible,NA,4/17/26 9:00,4/17/26 9:00,4/1/26 2:22,1h,1h,1h,0,0,0,0,0,1.2.1.19.3,500,No,No,No,,,GreenSquare,,,,,,,,0,0,0,0d,0d,0d,No,No,No,No,No,No,No,No,No,No,No,0,0,0,0,0,
373,996,Yes,Auto Scheduled,Error and Defect Mitigation,2h,Fixed Units,5,0.25d,372,"April 17, 2026 8:00","April 17, 2026 10:30",4/17/26 8:00,4/17/26 10:30,4/17/26 8:00,4/17/26 10:30,0h,0h,0ed,1,4/17/26 8:00,4/17/26 10:30,"April 10, 2026 11:45","April 10, 2026 2:45",As Soon As Possible,NA,4/17/26 10:30,4/17/26 10:30,4/1/26 2:22,2h,2h,2h,0,0,0,0,0,1.2.1.19.4,500,No,No,No,,Brian Wagner,GreenSquare,,,,,,,,0,0,0,0d,0d,0d,No,No,No,No,No,No,No,No,No,No,No,0,0,0,0,0,
374,997,Yes,Auto Scheduled,Load,2h,Fixed Units,5,0.25d,373,"April 17, 2026 8:00","April 17, 2026 12:00",4/17/26 8:00,4/17/26 12:00,4/17/26 8:00,4/17/26 12:00,0h,0h,0ed,1,4/17/26 8:00,4/17/26 12:00,"April 10, 2026 2:45","April 10, 2026 4:45",As Soon As Possible,NA,4/17/26 12:00,4/17/26 12:00,4/1/26 2:22,2h,2h,2h,0,0,0,0,0,1.2.1.19.5,500,No,No,No,,,GreenSquare,,,,,,,,0,0,0,0d,0d,0d,No,No,No,No,No,No,No,No,No,No,No,0,0,0,0,0,
375,998,Yes,Auto Scheduled,Post Load Validation,3h,Fixed Units,5,0.38d,374,"April 17, 2026 8:00","April 17, 2026 3:15",4/17/26 8:00,4/17/26 3:15,4/17/26 8:00,4/17/26 3:15,0h,0h,0ed,1,4/17/26 8:00,4/17/26 3:15,"April 10, 2026 4:45","April 13, 2026 10:45",As Soon As Possible,NA,4/17/26 3:15,4/17/26 3:15,4/1/26 2:22,3h,3h,3h,0,0,0,0,0,1.2.1.19.6,500,No,No,No,,Brian Wagner,GreenSquare,,,,,,,,0,0,0,0d,0d,0d,No,No,No,No,No,No,No,No,No,No,No,0,0,0,0,0,
376,752,Yes,Auto Scheduled,PTP_CM27_Vendor Master,3.72d,Fixed Duration,4,2.91d,369,"April 10, 2026 10:45","April 16, 2026 8:30",4/10/26 10:45,4/16/26 8:30,4/10/26 10:45,4/16/26 8:30,0d,0d,0ed,1,4/10/26 10:45,4/16/26 8:30,"April 10, 2026 10:45","April 15, 2026 10:00",As Soon As Possible,NA,4/10/26 11:45,4/10/26 11:45,3/25/26 2:32,10.25h,9h,10.25h,0,0,0,0,0,1.2.1.20,500,No,Yes,Yes,,,GreenSquare,,,,,,,,0,0,0,0d,0d,0d,No,No,No,No,No,No,No,No,No,No,No,0,0,0,0,0,
377,999,Yes,Auto Scheduled,Extract File,1h,Fixed Units,5,0.13d,363,"April 10, 2026 10:45","April 10, 2026 11:45",4/10/26 10:45,4/10/26 11:45,4/10/26 10:45,4/10/26 11:45,0h,0h,0ed,1,4/10/26 10:45,4/10/26 11:45,"April 10, 2026 10:45","April 10, 2026 11:45",As Soon As Possible,NA,4/10/26 11:45,4/10/26 11:45,4/1/26 2:24,1h,1h,1h,0,0,0,0,0,1.2.1.20.1,500,No,No,No,,,GreenSquare,,,,,,,,0,0,0,0d,0d,0d,No,No,No,No,No,No,No,No,No,No,No,0,0,0,0,0,
378,1000,Yes,Auto Scheduled,Pre Load Validation,2h,Fixed Units,5,0.25d,377,"April 10, 2026 11:45","April 10, 2026 2:45",4/10/26 11:45,4/10/26 2:45,4/10/26 11:45,4/10/26 2:45,0h,0h,0ed,1,4/10/26 11:45,4/10/26 2:45,"April 10, 2026 11:45","April 10, 2026 2:45",As Soon As Possible,NA,4/10/26 2:45,4/10/26 2:45,4/1/26 2:24,2h,2h,2h,0,0,0,0,0,1.2.1.20.2,500,No,No,No,,Sam Houff,GreenSquare,,,,,,,,0,0,0,0d,0d,0d,No,No,No,No,No,No,No,No,No,No,No,0,0,0,0,0,
379,1001,Yes,Auto Scheduled,Simulate Load,2.25h,Fixed Units,5,0.13d,378,"April 10, 2026 2:45","April 10, 2026 5:00",4/10/26 2:45,4/10/26 5:00,4/10/26 2:45,4/10/26 5:00,0h,0h,0ed,1,4/10/26 2:45,4/10/26 5:00,"April 10, 2026 2:45","April 14, 2026 2:00",Finish No Earlier Than,4/10/26 5:00,4/10/26 5:00,4/10/26 5:00,4/1/26 2:24,2.25h,1h,2.25h,0,0,0,0,0,1.2.1.20.3,500,No,No,No,,,GreenSquare,,,,,,,,0,0,0,0d,0d,0d,No,No,No,No,No,No,No,No,No,No,No,0,0,0,0,0,
380,1002,Yes,Auto Scheduled,Error and Defect Mitigation,2h,Fixed Units,5,0.25d,379,"April 13, 2026 8:00","April 13, 2026 2:30",4/13/26 8:00,4/13/26 2:30,4/13/26 8:00,4/13/26 2:30,0h,0h,0ed,1,4/13/26 8:00,4/13/26 2:30,"April 14, 2026 2:00","April 14, 2026 4:00",As Soon As Possible,NA,4/13/26 2:30,4/13/26 2:30,4/1/26 2:24,2h,2h,2h,0,0,0,0,0,1.2.1.20.4,500,No,No,No,,Sam Houff,GreenSquare,,,,,,,,0,0,0,0d,0d,0d,No,No,No,No,No,No,No,No,No,No,No,0,0,0,0,0,
381,1003,Yes,Auto Scheduled,Load,1h,Fixed Units,5,0.13d,,"April 15, 2026 2:30","April 15, 2026 3:30",4/15/26 2:30,4/15/26 3:30,4/15/26 2:30,4/15/26 3:30,0h,0h,0ed,1,4/15/26 2:30,4/15/26 3:30,"April 14, 2026 4:00","April 14, 2026 5:00",As Soon As Possible,NA,4/15/26 3:30,4/15/26 3:30,4/1/26 2:24,1h,1h,1h,0,0,0,0,0,1.2.1.20.5,500,No,No,No,,,GreenSquare,,,,,,,,0,0,0,0d,0d,0d,No,No,No,No,No,No,No,No,No,No,No,0,0,0,0,0,
382,1004,Yes,Auto Scheduled,Post Load Validation,2h,Fixed Units,5,0.25d,381,"April 15, 2026 3:30","April 16, 2026 8:30",4/15/26 3:30,4/16/26 8:30,4/15/26 3:30,4/16/26 8:30,0h,0h,0ed,1,4/15/26 3:30,4/16/26 8:30,"April 15, 2026 8:00","April 15, 2026 10:00",As Soon As Possible,NA,4/16/26 8:30,4/16/26 8:30,4/1/26 2:24,2h,2h,2h,0,0,0,0,0,1.2.1.20.6,500,No,No,No,,Sam Houff,GreenSquare,,,,,,,,0,0,0,0d,0d,0d,No,No,No,No,No,No,No,No,No,No,No,0,0,0,0,0,
383,692,Yes,Auto Scheduled,PTP_CM27_Vendor Master - Mass Maintenance - LFA1-WERKR,0.88d,Fixed Duration,4,3.16d,376,"April 16, 2026 8:00","April 16, 2026 4:00",4/16/26 8:00,4/16/26 4:00,4/16/26 8:00,4/16/26 4:00,0d,0d,0ed,1,4/16/26 8:00,4/16/26 4:00,"April 10, 2026 11:45","April 15, 2026 2:00",As Soon As Possible,NA,4/16/26 9:00,4/16/26 9:00,3/25/26 2:32,9h,9h,9h,0,0,0,0,0,1.2.1.21,500,No,Yes,Yes,,,GreenSquare,,,,,,,,0,0,0,0d,0d,0d,No,No,No,No,No,No,No,No,No,No,No,0,0,0,0,0,
384,1005,Yes,Auto Scheduled,Extract File(Will Extract from LFA1),1h,Fixed Units,5,0.13d,,"April 16, 2026 8:00","April 16, 2026 9:00",4/16/26 8:00,4/16/26 9:00,4/16/26 8:00,4/16/26 9:00,0h,0h,0ed,1,4/16/26 8:00,4/16/26 9:00,"April 10, 2026 11:45","April 10, 2026 1:45",Start No Earlier Than,4/16/26 8:00,4/16/26 9:00,4/16/26 9:00,4/1/26 2:33,1h,1h,1h,0,0,0,0,0,1.2.1.21.1,500,No,No,No,,,GreenSquare,,,,,,,,0,0,0,0d,0d,0d,No,No,No,No,No,No,No,No,No,No,No,0,0,0,0,0,
385,1006,Yes,Auto Scheduled,Pre Load Validation,2h,Fixed Units,5,0.25d,384,"April 16, 2026 9:00","April 16, 2026 11:00",4/16/26 9:00,4/16/26 11:00,4/16/26 9:00,4/16/26 11:00,0h,0h,0ed,1,4/16/26 9:00,4/16/26 11:00,"April 10, 2026 1:45","April 10, 2026 3:45",As Soon As Possible,NA,4/16/26 11:00,4/16/26 11:00,4/1/26 2:33,2h,2h,2h,0,0,0,0,0,1.2.1.21.2,500,No,No,No,,Sam Houff,GreenSquare,,,,,,,,0,0,0,0d,0d,0d,No,No,No,No,No,No,No,No,No,No,No,0,0,0,0,0,
386,1007,Yes,Auto Scheduled,Simulate Load/ Not Needed,1h,Fixed Units,5,0.13d,385,"April 16, 2026 11:00","April 16, 2026 12:00",4/16/26 11:00,4/16/26 12:00,4/16/26 11:00,4/16/26 12:00,0h,0h,0ed,1,4/16/26 11:00,4/16/26 12:00,"April 10, 2026 3:45","April 10, 2026 4:45",As Soon As Possible,NA,4/16/26 12:00,4/16/26 12:00,4/1/26 2:33,1h,1h,1h,0,0,0,0,0,1.2.1.21.3,500,No,No,No,,,GreenSquare,,,,,,,,0,0,0,0d,0d,0d,No,No,No,No,No,No,No,No,No,No,No,0,0,0,0,0,
387,1008,Yes,Auto Scheduled,Error and Defect Mitigation,2h,Fixed Units,5,0.25d,386,"April 16, 2026 1:00","April 16, 2026 3:00",4/16/26 1:00,4/16/26 3:00,4/16/26 1:00,4/16/26 3:00,0h,0h,0ed,1,4/16/26 1:00,4/16/26 3:00,"April 10, 2026 4:45","April 13, 2026 9:45",As Soon As Possible,NA,4/16/26 3:00,4/16/26 3:00,4/1/26 2:33,2h,2h,2h,0,0,0,0,0,1.2.1.21.4,500,No,No,No,,Sam Houff,GreenSquare,,,,,,,,0,0,0,0d,0d,0d,No,No,No,No,No,No,No,No,No,No,No,0,0,0,0,0,
388,1009,Yes,Auto Scheduled,Load,1h,Fixed Units,5,0.13d,386,"April 16, 2026 1:00","April 16, 2026 2:00",4/16/26 1:00,4/16/26 2:00,4/16/26 1:00,4/16/26 2:00,0h,0h,0ed,1,4/16/26 1:00,4/16/26 2:00,"April 15, 2026 10:00","April 15, 2026 11:00",As Soon As Possible,NA,4/16/26 2:00,4/16/26 2:00,4/1/26 2:33,1h,1h,1h,0,0,0,0,0,1.2.1.21.5,500,No,No,No,,,GreenSquare,,,,,,,,0,0,0,0d,0d,0d,No,No,No,No,No,No,No,No,No,No,No,0,0,0,0,0,
389,1010,Yes,Auto Scheduled,Post Load Validation,2h,Fixed Units,5,0.25d,388,"April 16, 2026 2:00","April 16, 2026 4:00",4/16/26 2:00,4/16/26 4:00,4/16/26 2:00,4/16/26 4:00,0h,0h,0ed,1,4/16/26 2:00,4/16/26 4:00,"April 15, 2026 11:00","April 15, 2026 2:00",As Soon As Possible,NA,4/16/26 4:00,4/16/26 4:00,4/1/26 2:33,2h,2h,2h,0,0,0,0,0,1.2.1.21.6,500,No,No,No,,Sam Houff,GreenSquare,,,,,,,,0,0,0,0d,0d,0d,No,No,No,No,No,No,No,No,No,No,No,0,0,0,0,0,
390,935,Yes,Auto Scheduled,RTR_****_Credit Hierarchy,1.38d,Fixed Duration,4,1.25d,383,"April 15, 2026 8:00","April 16, 2026 11:00",4/15/26 8:00,4/16/26 11:00,4/15/26 8:00,4/16/26 11:00,0d,0d,0ed,1,4/15/26 8:00,4/16/26 11:00,"April 10, 2026 2:45","April 13, 2026 4:45",As Soon As Possible,NA,4/15/26 8:30,4/15/26 8:30,3/25/26 2:32,5.5h,5.5h,5.5h,0,0,0,0,0,1.2.1.22,500,No,Yes,Yes,,,GreenSquare,,,,,,,,0,0,0,0d,0d,0d,No,No,No,No,No,No,No,No,No,No,No,0,0,0,0,0,
391,1011,Yes,Auto Scheduled,"Manual File Staged and Posted ""Ready""",30m,Fixed Units,5,0.06d,373,"April 15, 2026 8:00","April 15, 2026 8:30",4/15/26 8:00,4/15/26 8:30,4/15/26 8:00,4/15/26 8:30,0m,0m,0ed,1,4/15/26 8:00,4/15/26 8:30,"April 10, 2026 2:45","April 10, 2026 3:15",Start No Earlier Than,4/15/26 8:00,4/15/26 8:30,4/15/26 8:30,4/1/26 2:34,0.5h,0.5h,0.5h,0,0,0,0,0,1.2.1.22.1,500,No,No,No,,Brian Wagner,GreenSquare,,,,,,,,0,0,0,0d,0d,0d,No,No,No,No,No,No,No,No,No,No,No,0,0,0,0,0,
392,1012,Yes,Auto Scheduled,Load,2h,Fixed Units,5,0.25d,375,"April 15, 2026 8:00","April 15, 2026 10:00",4/15/26 8:00,4/15/26 10:00,4/15/26 8:00,4/15/26 10:00,0h,0h,0ed,1,4/15/26 8:00,4/15/26 10:00,"April 13, 2026 10:45","April 13, 2026 1:45",As Soon As Possible,NA,4/15/26 10:00,4/15/26 10:00,4/1/26 2:34,2h,2h,2h,0,0,0,0,0,1.2.1.22.2,500,No,No,No,,,GreenSquare,,,,,,,,0,0,0,0d,0d,0d,No,No,No,No,No,No,No,No,No,No,No,0,0,0,0,0,
393,1013,Yes,Auto Scheduled,Post Load Validation,3h,Fixed Units,5,0.38d,392,"April 16, 2026 8:00","April 16, 2026 11:00",4/16/26 8:00,4/16/26 11:00,4/16/26 8:00,4/16/26 11:00,0h,0h,0ed,1,4/16/26 8:00,4/16/26 11:00,"April 13, 2026 1:45","April 13, 2026 4:45",As Soon As Possible,NA,4/16/26 11:00,4/16/26 11:00,4/1/26 2:34,3h,3h,3h,0,0,0,0,0,1.2.1.22.3,500,No,No,No,,Brian Wagner,GreenSquare,,,,,,,,0,0,0,0d,0d,0d,No,No,No,No,No,No,No,No,No,No,No,0,0,0,0,0,
394,693,Yes,Auto Scheduled,PTP_CM27_BP_Intercompany Supplier,1.13d,Fixed Duration,4,1.13d,390,"April 13, 2026 11:45","April 14, 2026 1:45",4/13/26 11:45,4/14/26 1:45,4/13/26 11:45,4/14/26 1:45,0d,0d,0ed,1,4/13/26 11:45,4/14/26 1:45,"April 13, 2026 11:45","April 14, 2026 1:45",As Soon As Possible,NA,4/13/26 1:15,4/13/26 1:15,3/25/26 2:32,15h,15h,15h,0,0,0,0,0,1.2.1.23,500,No,Yes,Yes,,,GreenSquare,,,,,,,,0,0,0,0d,0d,0d,No,No,No,No,No,No,No,No,No,No,No,0,0,0,0,0,
395,1014,Yes,Auto Scheduled,"Load File Staged and Posted ""Ready""",30m,Fixed Units,5,0.06d,382,"April 13, 2026 11:45","April 13, 2026 1:15",4/13/26 11:45,4/13/26 1:15,4/13/26 11:45,4/13/26 1:15,0m,0m,0ed,1,4/13/26 11:45,4/13/26 1:15,"April 13, 2026 11:45","April 13, 2026 1:15",As Soon As Possible,NA,4/13/26 1:15,4/13/26 1:15,4/1/26 2:36,1h,1h,1h,0,0,0,0,0,1.2.1.23.1,500,No,No,No,,,GreenSquare,,,,,,,,0,0,0,0d,0d,0d,No,No,No,No,No,No,No,No,No,No,No,0,0,0,0,0,
396,1015,Yes,Auto Scheduled,Pre Load Validation,30m,Fixed Units,5,0.06d,395,"April 13, 2026 1:15","April 13, 2026 1:45",4/13/26 1:15,4/13/26 1:45,4/13/26 1:15,4/13/26 1:45,0m,0m,0ed,1,4/13/26 1:15,4/13/26 1:45,"April 13, 2026 1:15","April 13, 2026 1:45",As Soon As Possible,NA,4/13/26 1:45,4/13/26 1:45,4/1/26 2:36,1h,1h,1h,0,0,0,0,0,1.2.1.23.2,500,No,No,No,,"Sam Houff,Kim Kolesar",GreenSquare,,,,,,,,0,0,0,0d,0d,0d,No,No,No,No,No,No,No,No,No,No,No,0,0,0,0,0,
397,1016,Yes,Auto Scheduled,Simulate Load,1h,Fixed Units,5,0.13d,396,"April 13, 2026 1:45","April 13, 2026 2:45",4/13/26 1:45,4/13/26 2:45,4/13/26 1:45,4/13/26 2:45,0h,0h,0ed,1,4/13/26 1:45,4/13/26 2:45,"April 13, 2026 1:45","April 13, 2026 2:45",As Soon As Possible,NA,4/13/26 2:45,4/13/26 2:45,4/1/26 2:36,1h,1h,1h,0,0,0,0,0,1.2.1.23.3,500,No,No,No,,,GreenSquare,,,,,,,,0,0,0,0d,0d,0d,No,No,No,No,No,No,No,No,No,No,No,0,0,0,0,0,
398,1017,Yes,Auto Scheduled,Error and Defect Mitigation,2h,Fixed Units,5,0.25d,397,"April 13, 2026 2:45","April 13, 2026 4:45",4/13/26 2:45,4/13/26 4:45,4/13/26 2:45,4/13/26 4:45,0h,0h,0ed,1,4/13/26 2:45,4/13/26 4:45,"April 13, 2026 2:45","April 13, 2026 4:45",As Soon As Possible,NA,4/13/26 4:45,4/13/26 4:45,4/1/26 2:36,4h,4h,4h,0,0,0,0,0,1.2.1.23.4,500,No,No,No,,"Sam Houff,Kim Kolesar",GreenSquare,,,,,,,,0,0,0,0d,0d,0d,No,No,No,No,No,No,No,No,No,No,No,0,0,0,0,0,
399,1018,Yes,Auto Scheduled,Load,2h,Fixed Units,5,0.25d,398,"April 13, 2026 4:45","April 14, 2026 9:45",4/13/26 4:45,4/14/26 9:45,4/13/26 4:45,4/14/26 9:45,0h,0h,0ed,1,4/13/26 4:45,4/14/26 9:45,"April 13, 2026 4:45","April 14, 2026 9:45",As Soon As Possible,NA,4/14/26 9:45,4/14/26 9:45,4/1/26 2:36,2h,2h,2h,0,0,0,0,0,1.2.1.23.5,500,No,No,No,,,GreenSquare,,,,,,,,0,0,0,0d,0d,0d,No,No,No,No,No,No,No,No,No,No,No,0,0,0,0,0,
400,1019,Yes,Auto Scheduled,Post Load Validation,3h,Fixed Units,5,0.38d,399,"April 14, 2026 9:45","April 14, 2026 1:45",4/14/26 9:45,4/14/26 1:45,4/14/26 9:45,4/14/26 1:45,0h,0h,0ed,1,4/14/26 9:45,4/14/26 1:45,"April 14, 2026 9:45","April 14, 2026 1:45",As Soon As Possible,NA,4/14/26 1:45,4/14/26 1:45,4/1/26 2:36,6h,6h,6h,0,0,0,0,0,1.2.1.23.6,500,No,No,No,,"Sam Houff,Kim Kolesar",GreenSquare,,,,,,,,0,0,0,0d,0d,0d,No,No,No,No,No,No,No,No,No,No,No,0,0,0,0,0,
401,1245,Yes,Auto Scheduled,PTP_CM27_BP_Intercompany Customer,1.13d,Fixed Duration,4,1.13d,394,"April 13, 2026 11:45","April 14, 2026 1:45",4/13/26 11:45,4/14/26 1:45,4/13/26 11:45,4/14/26 1:45,0d,0d,0ed,1,4/13/26 11:45,4/14/26 1:45,"April 13, 2026 11:45","April 14, 2026 1:45",As Soon As Possible,NA,4/13/26 1:15,4/13/26 1:15,4/8/26 1:33,15h,15h,15h,0,0,0,0,0,1.2.1.24,500,No,Yes,Yes,,,GreenSquare,,,,,,,,0,0,0,0d,0d,0d,No,No,No,No,No,No,No,No,No,No,No,0,0,0,0,0,
402,1246,Yes,Auto Scheduled,"Load File Staged and Posted ""Ready""",30m,Fixed Units,5,0.06d,,"April 13, 2026 11:45","April 13, 2026 1:15",4/13/26 11:45,4/13/26 1:15,4/13/26 11:45,4/13/26 1:15,0m,0m,0ed,1,4/13/26 11:45,4/13/26 1:15,"April 13, 2026 11:45","April 13, 2026 1:15",As Soon As Possible,NA,4/13/26 1:15,4/13/26 1:15,4/8/26 1:33,1h,1h,1h,0,0,0,0,0,1.2.1.24.1,500,No,No,No,,,GreenSquare,,,,,,,,0,0,0,0d,0d,0d,No,No,No,No,No,No,No,No,No,No,No,0,0,0,0,0,
403,1247,Yes,Auto Scheduled,Pre Load Validation,30m,Fixed Units,5,0.06d,,"April 13, 2026 1:15","April 13, 2026 1:45",4/13/26 1:15,4/13/26 1:45,4/13/26 1:15,4/13/26 1:45,0m,0m,0ed,1,4/13/26 1:15,4/13/26 1:45,"April 13, 2026 1:15","April 13, 2026 1:45",As Soon As Possible,NA,4/13/26 1:45,4/13/26 1:45,4/8/26 1:33,1h,1h,1h,0,0,0,0,0,1.2.1.24.2,500,No,No,No,,"Sam Houff,Kim Kolesar",GreenSquare,,,,,,,,0,0,0,0d,0d,0d,No,No,No,No,No,No,No,No,No,No,No,0,0,0,0,0,
404,1248,Yes,Auto Scheduled,Simulate Load,1h,Fixed Units,5,0.13d,403,"April 13, 2026 1:45","April 13, 2026 2:45",4/13/26 1:45,4/13/26 2:45,4/13/26 1:45,4/13/26 2:45,0h,0h,0ed,1,4/13/26 1:45,4/13/26 2:45,"April 13, 2026 1:45","April 13, 2026 2:45",As Soon As Possible,NA,4/13/26 2:45,4/13/26 2:45,4/8/26 1:33,1h,1h,1h,0,0,0,0,0,1.2.1.24.3,500,No,No,No,,,GreenSquare,,,,,,,,0,0,0,0d,0d,0d,No,No,No,No,No,No,No,No,No,No,No,0,0,0,0,0,
405,1249,Yes,Auto Scheduled,Error and Defect Mitigation,2h,Fixed Units,5,0.25d,404,"April 13, 2026 2:45","April 13, 2026 4:45",4/13/26 2:45,4/13/26 4:45,4/13/26 2:45,4/13/26 4:45,0h,0h,0ed,1,4/13/26 2:45,4/13/26 4:45,"April 13, 2026 2:45","April 13, 2026 4:45",As Soon As Possible,NA,4/13/26 4:45,4/13/26 4:45,4/8/26 1:33,4h,4h,4h,0,0,0,0,0,1.2.1.24.4,500,No,No,No,,"Sam Houff,Kim Kolesar",GreenSquare,,,,,,,,0,0,0,0d,0d,0d,No,No,No,No,No,No,No,No,No,No,No,0,0,0,0,0,
406,1250,Yes,Auto Scheduled,Load,2h,Fixed Units,5,0.25d,405,"April 13, 2026 4:45","April 14, 2026 9:45",4/13/26 4:45,4/14/26 9:45,4/13/26 4:45,4/14/26 9:45,0h,0h,0ed,1,4/13/26 4:45,4/14/26 9:45,"April 13, 2026 4:45","April 14, 2026 9:45",As Soon As Possible,NA,4/14/26 9:45,4/14/26 9:45,4/8/26 1:33,2h,2h,2h,0,0,0,0,0,1.2.1.24.5,500,No,No,No,,,GreenSquare,,,,,,,,0,0,0,0d,0d,0d,No,No,No,No,No,No,No,No,No,No,No,0,0,0,0,0,
407,1251,Yes,Auto Scheduled,Post Load Validation,3h,Fixed Units,5,0.38d,406,"April 14, 2026 9:45","April 14, 2026 1:45",4/14/26 9:45,4/14/26 1:45,4/14/26 9:45,4/14/26 1:45,0h,0h,0ed,1,4/14/26 9:45,4/14/26 1:45,"April 14, 2026 9:45","April 14, 2026 1:45",As Soon As Possible,NA,4/14/26 1:45,4/14/26 1:45,4/8/26 1:33,6h,6h,6h,0,0,0,0,0,1.2.1.24.6,500,No,No,No,,"Sam Houff,Kim Kolesar",GreenSquare,,,,,,,,0,0,0,0d,0d,0d,No,No,No,No,No,No,No,No,No,No,No,0,0,0,0,0,
408,741,Yes,Auto Scheduled,PTP_CM26_Material_Master - All Types,3.16d,Fixed Duration,4,3.16d,401,"April 10, 2026 10:45","April 15, 2026 12:00",4/10/26 10:45,4/15/26 12:00,4/10/26 10:45,4/15/26 12:00,0d,0d,0ed,1,4/10/26 10:45,4/15/26 12:00,"April 10, 2026 10:45","April 15, 2026 12:00",As Soon As Possible,NA,4/13/26 9:30,4/13/26 9:30,3/25/26 2:32,19h,19h,19h,0,0,0,0,0,1.2.1.25,500,No,Yes,Yes,,,GreenSquare,,,,,,,,0,0,0,0d,0d,0d,No,No,No,No,No,No,No,No,No,No,No,0,0,0,0,0,
409,1020,Yes,Auto Scheduled,Extract File,5h,Fixed Units,5,0.63d,384,"April 10, 2026 10:45","April 13, 2026 9:30",4/10/26 10:45,4/13/26 9:30,4/10/26 10:45,4/13/26 9:30,0h,0h,0ed,1,4/10/26 10:45,4/13/26 9:30,"April 10, 2026 10:45","April 13, 2026 9:30",As Soon As Possible,NA,4/13/26 9:30,4/13/26 9:30,4/1/26 2:39,5h,5h,5h,0,0,0,0,0,1.2.1.25.1,500,No,No,No,,,GreenSquare,,,,,,,,0,0,0,0d,0d,0d,No,No,No,No,No,No,No,No,No,No,No,0,0,0,0,0,
410,1021,Yes,Auto Scheduled,Pre Load Validation,2h,Fixed Units,5,0.25d,382,"April 13, 2026 11:45","April 14, 2026 10:00",4/13/26 11:45,4/14/26 10:00,4/13/26 11:45,4/14/26 10:00,0h,0h,0ed,1,4/13/26 11:45,4/14/26 10:00,"April 13, 2026 11:45","April 14, 2026 10:00",As Soon As Possible,NA,4/14/26 10:00,4/14/26 10:00,4/1/26 2:39,4h,4h,4h,0,0,0,0,0,1.2.1.25.2,500,No,No,No,,"Sam Houff,Kim Kolesar,Matt",GreenSquare,,,,,,,,0,0,0,0d,0d,0d,No,No,No,No,No,No,No,No,No,No,No,0,0,0,0,0,
411,1022,Yes,Auto Scheduled,Simulate Load,1h,Fixed Units,5,0.13d,410,"April 14, 2026 10:00","April 14, 2026 11:00",4/14/26 10:00,4/14/26 11:00,4/14/26 10:00,4/14/26 11:00,0h,0h,0ed,1,4/14/26 10:00,4/14/26 11:00,"April 14, 2026 10:00","April 14, 2026 11:00",As Soon As Possible,NA,4/14/26 11:00,4/14/26 11:00,4/1/26 2:39,1h,1h,1h,0,0,0,0,0,1.2.1.25.3,500,No,No,No,,,GreenSquare,,,,,,,,0,0,0,0d,0d,0d,No,No,No,No,No,No,No,No,No,No,No,0,0,0,0,0,
412,1023,Yes,Auto Scheduled,Error and Defect Mitigation,4h,Fixed Units,5,0.5d,411,"April 14, 2026 11:00","April 14, 2026 4:00",4/14/26 11:00,4/14/26 4:00,4/14/26 11:00,4/14/26 4:00,0h,0h,0ed,1,4/14/26 11:00,4/14/26 4:00,"April 14, 2026 11:00","April 14, 2026 4:00",As Soon As Possible,NA,4/14/26 4:00,4/14/26 4:00,4/1/26 2:39,4h,4h,4h,0,0,0,0,0,1.2.1.25.4,500,No,No,No,,"Sam Houff,Kim Kolesar,Matt",GreenSquare,,,,,,,,0,0,0,0d,0d,0d,No,No,No,No,No,No,No,No,No,No,No,0,0,0,0,0,
413,1024,Yes,Auto Scheduled,Load,3h,Fixed Units,5,0.38d,412,"April 14, 2026 4:00","April 15, 2026 10:00",4/14/26 4:00,4/15/26 10:00,4/14/26 4:00,4/15/26 10:00,0h,0h,0ed,1,4/14/26 4:00,4/15/26 10:00,"April 14, 2026 4:00","April 15, 2026 10:00",As Soon As Possible,NA,4/15/26 10:00,4/15/26 10:00,4/1/26 2:39,3h,3h,3h,0,0,0,0,0,1.2.1.25.5,500,No,No,No,,,GreenSquare,,,,,,,,0,0,0,0d,0d,0d,No,No,No,No,No,No,No,No,No,No,No,0,0,0,0,0,
414,1025,Yes,Auto Scheduled,Post Load Validation,2h,Fixed Units,5,0.25d,413,"April 15, 2026 10:00","April 15, 2026 12:00",4/15/26 10:00,4/15/26 12:00,4/15/26 10:00,4/15/26 12:00,0h,0h,0ed,1,4/15/26 10:00,4/15/26 12:00,"April 15, 2026 10:00","April 15, 2026 12:00",As Soon As Possible,NA,4/15/26 12:00,4/15/26 12:00,4/1/26 2:39,2h,2h,2h,0,0,0,0,0,1.2.1.25.6,500,No,No,No,,"Sam Houff,Kim Kolesar,Matt",GreenSquare,,,,,,,,0,0,0,0d,0d,0d,No,No,No,No,No,No,No,No,No,No,No,0,0,0,0,0,
415,748,Yes,Auto Scheduled,PTP_CM26_Material_Master - SERV - Service Materials,5.88d,Fixed Duration,4,5.88d,408,"April 7, 2026 4:15","April 15, 2026 3:15",4/7/26 4:15,4/15/26 3:15,4/7/26 4:15,4/15/26 3:15,0d,0d,0ed,1,4/7/26 4:15,4/15/26 3:15,"April 7, 2026 4:15","April 15, 2026 3:15",As Soon As Possible,NA,4/7/26 4:45,4/7/26 4:45,3/25/26 2:32,15h,15h,15h,0,0,0,0,0,1.2.1.26,500,No,Yes,Yes,,,GreenSquare,,,,,,,,0,0,0,0d,0d,0d,No,No,No,No,No,No,No,No,No,No,No,0,0,0,0,0,
416,1026,Yes,Auto Scheduled,"Load File Staged and Posted ""Ready""",30m,Fixed Units,5,0.06d,285,"April 7, 2026 4:15","April 7, 2026 4:45",4/7/26 4:15,4/7/26 4:45,4/7/26 4:15,4/7/26 4:45,0m,0m,0ed,1,4/7/26 4:15,4/7/26 4:45,"April 7, 2026 4:15","April 7, 2026 4:45",As Soon As Possible,NA,4/7/26 4:45,4/7/26 4:45,4/1/26 2:43,1h,1h,1h,0,0,0,0,0,1.2.1.26.1,500,No,No,No,,,GreenSquare,,,,,,,,0,0,0,0d,0d,0d,No,No,No,No,No,No,No,No,No,No,No,0,0,0,0,0,
417,1027,Yes,Auto Scheduled,Pre Load Validation,30m,Fixed Units,5,0.06d,413,"April 14, 2026 2:45","April 14, 2026 3:15",4/14/26 2:45,4/14/26 3:15,4/14/26 2:45,4/14/26 3:15,0m,0m,0ed,1,4/14/26 2:45,4/14/26 3:15,"April 14, 2026 2:45","April 14, 2026 3:15",As Soon As Possible,NA,4/14/26 3:15,4/14/26 3:15,4/1/26 2:43,1h,1h,1h,0,0,0,0,0,1.2.1.26.2,500,No,No,No,,"Sam Houff,Kim Kolesar",GreenSquare,,,,,,,,0,0,0,0d,0d,0d,No,No,No,No,No,No,No,No,No,No,No,0,0,0,0,0,
418,1028,Yes,Auto Scheduled,Simulate Load,1h,Fixed Units,5,0.13d,417,"April 14, 2026 3:15","April 14, 2026 4:15",4/14/26 3:15,4/14/26 4:15,4/14/26 3:15,4/14/26 4:15,0h,0h,0ed,1,4/14/26 3:15,4/14/26 4:15,"April 14, 2026 3:15","April 14, 2026 4:15",As Soon As Possible,NA,4/14/26 4:15,4/14/26 4:15,4/1/26 2:43,1h,1h,1h,0,0,0,0,0,1.2.1.26.3,500,No,No,No,,,GreenSquare,,,,,,,,0,0,0,0d,0d,0d,No,No,No,No,No,No,No,No,No,No,No,0,0,0,0,0,
419,1029,Yes,Auto Scheduled,Error and Defect Mitigation,2h,Fixed Units,5,0.25d,418,"April 14, 2026 4:15","April 15, 2026 9:15",4/14/26 4:15,4/15/26 9:15,4/14/26 4:15,4/15/26 9:15,0h,0h,0ed,1,4/14/26 4:15,4/15/26 9:15,"April 14, 2026 4:15","April 15, 2026 9:15",As Soon As Possible,NA,4/15/26 9:15,4/15/26 9:15,4/1/26 2:43,4h,4h,4h,0,0,0,0,0,1.2.1.26.4,500,No,No,No,,"Sam Houff,Kim Kolesar",GreenSquare,,,,,,,,0,0,0,0d,0d,0d,No,No,No,No,No,No,No,No,No,No,No,0,0,0,0,0,
420,1030,Yes,Auto Scheduled,Load,2h,Fixed Units,5,0.25d,419,"April 15, 2026 9:15","April 15, 2026 11:15",4/15/26 9:15,4/15/26 11:15,4/15/26 9:15,4/15/26 11:15,0h,0h,0ed,1,4/15/26 9:15,4/15/26 11:15,"April 15, 2026 9:15","April 15, 2026 11:15",As Soon As Possible,NA,4/15/26 11:15,4/15/26 11:15,4/1/26 2:43,2h,2h,2h,0,0,0,0,0,1.2.1.26.5,500,No,No,No,,,GreenSquare,,,,,,,,0,0,0,0d,0d,0d,No,No,No,No,No,No,No,No,No,No,No,0,0,0,0,0,
421,1031,Yes,Auto Scheduled,Post Load Validation,3h,Fixed Units,5,0.38d,420,"April 15, 2026 11:15","April 15, 2026 3:15",4/15/26 11:15,4/15/26 3:15,4/15/26 11:15,4/15/26 3:15,0h,0h,0ed,1,4/15/26 11:15,4/15/26 3:15,"April 15, 2026 11:15","April 15, 2026 3:15",As Soon As Possible,NA,4/15/26 3:15,4/15/26 3:15,4/1/26 2:43,6h,6h,6h,0,0,0,0,0,1.2.1.26.6,500,No,No,No,,"Sam Houff,Kim Kolesar",GreenSquare,,,,,,,,0,0,0,0d,0d,0d,No,No,No,No,No,No,No,No,No,No,No,0,0,0,0,0,
422,749,Yes,Auto Scheduled,PTP_CM26_Material_Master - KMAT - Configurable Materials,5.88d,Fixed Duration,4,5.88d,415,"April 7, 2026 4:15","April 15, 2026 3:15",4/7/26 4:15,4/15/26 3:15,4/7/26 4:15,4/15/26 3:15,0d,0d,0ed,1,4/7/26 4:15,4/15/26 3:15,"April 7, 2026 4:15","April 15, 2026 3:15",As Soon As Possible,NA,4/7/26 4:45,4/7/26 4:45,3/25/26 2:32,9h,9h,9h,0,0,0,0,0,1.2.1.27,500,No,Yes,Yes,,,GreenSquare,,,,,,,,0,0,0,0d,0d,0d,No,No,No,No,No,No,No,No,No,No,No,0,0,0,0,0,
423,1032,Yes,Auto Scheduled,"Load File Staged and Posted ""Ready""",30m,Fixed Units,5,0.06d,285,"April 7, 2026 4:15","April 7, 2026 4:45",4/7/26 4:15,4/7/26 4:45,4/7/26 4:15,4/7/26 4:45,0m,0m,0ed,1,4/7/26 4:15,4/7/26 4:45,"April 7, 2026 4:15","April 7, 2026 4:45",As Soon As Possible,NA,4/7/26 4:45,4/7/26 4:45,4/1/26 2:45,0.5h,0.5h,0.5h,0,0,0,0,0,1.2.1.27.1,500,No,No,No,,,GreenSquare,,,,,,,,0,0,0,0d,0d,0d,No,No,No,No,No,No,No,No,No,No,No,0,0,0,0,0,
424,1033,Yes,Auto Scheduled,Pre Load Validation,30m,Fixed Units,5,0.06d,413,"April 14, 2026 2:45","April 14, 2026 3:15",4/14/26 2:45,4/14/26 3:15,4/14/26 2:45,4/14/26 3:15,0m,0m,0ed,1,4/14/26 2:45,4/14/26 3:15,"April 14, 2026 2:45","April 14, 2026 3:15",As Soon As Possible,NA,4/14/26 3:15,4/14/26 3:15,4/1/26 2:45,0.5h,0.5h,0.5h,0,0,0,0,0,1.2.1.27.2,500,No,No,No,,"Sam Houff,Kim Kolesar,Matt",GreenSquare,,,,,,,,0,0,0,0d,0d,0d,No,No,No,No,No,No,No,No,No,No,No,0,0,0,0,0,
425,1034,Yes,Auto Scheduled,Simulate Load,1h,Fixed Units,5,0.13d,424,"April 14, 2026 3:15","April 14, 2026 4:15",4/14/26 3:15,4/14/26 4:15,4/14/26 3:15,4/14/26 4:15,0h,0h,0ed,1,4/14/26 3:15,4/14/26 4:15,"April 14, 2026 3:15","April 14, 2026 4:15",As Soon As Possible,NA,4/14/26 4:15,4/14/26 4:15,4/1/26 2:45,1h,1h,1h,0,0,0,0,0,1.2.1.27.3,500,No,No,No,,,GreenSquare,,,,,,,,0,0,0,0d,0d,0d,No,No,No,No,No,No,No,No,No,No,No,0,0,0,0,0,
426,1035,Yes,Auto Scheduled,Error and Defect Mitigation,2h,Fixed Units,5,0.25d,425,"April 14, 2026 4:15","April 15, 2026 9:15",4/14/26 4:15,4/15/26 9:15,4/14/26 4:15,4/15/26 9:15,0h,0h,0ed,1,4/14/26 4:15,4/15/26 9:15,"April 14, 2026 4:15","April 15, 2026 9:15",As Soon As Possible,NA,4/15/26 9:15,4/15/26 9:15,4/1/26 2:45,2h,2h,2h,0,0,0,0,0,1.2.1.27.4,500,No,No,No,,"Sam Houff,Kim Kolesar,Matt",GreenSquare,,,,,,,,0,0,0,0d,0d,0d,No,No,No,No,No,No,No,No,No,No,No,0,0,0,0,0,
427,1036,Yes,Auto Scheduled,Load,2h,Fixed Units,5,0.25d,426,"April 15, 2026 9:15","April 15, 2026 11:15",4/15/26 9:15,4/15/26 11:15,4/15/26 9:15,4/15/26 11:15,0h,0h,0ed,1,4/15/26 9:15,4/15/26 11:15,"April 15, 2026 9:15","April 15, 2026 11:15",As Soon As Possible,NA,4/15/26 11:15,4/15/26 11:15,4/1/26 2:45,2h,2h,2h,0,0,0,0,0,1.2.1.27.5,500,No,No,No,,,GreenSquare,,,,,,,,0,0,0,0d,0d,0d,No,No,No,No,No,No,No,No,No,No,No,0,0,0,0,0,
428,1037,Yes,Auto Scheduled,Post Load Validation,3h,Fixed Units,5,0.38d,427,"April 15, 2026 11:15","April 15, 2026 3:15",4/15/26 11:15,4/15/26 3:15,4/15/26 11:15,4/15/26 3:15,0h,0h,0ed,1,4/15/26 11:15,4/15/26 3:15,"April 15, 2026 11:15","April 15, 2026 3:15",As Soon As Possible,NA,4/15/26 3:15,4/15/26 3:15,4/1/26 2:45,3h,3h,3h,0,0,0,0,0,1.2.1.27.6,500,No,No,No,,"Sam Houff,Kim Kolesar,Matt",GreenSquare,,,,,,,,0,0,0,0d,0d,0d,No,No,No,No,No,No,No,No,No,No,No,0,0,0,0,0,
429,703,Yes,Auto Scheduled,PTP_CM28_Purchase_Info_Records,1.59d,Fixed Duration,4,1.28d,,"April 15, 2026 3:15","April 17, 2026 11:00",4/15/26 3:15,4/17/26 11:00,4/15/26 3:15,4/17/26 11:00,0d,0d,0ed,1,4/15/26 3:15,4/17/26 11:00,"April 15, 2026 10:00","April 16, 2026 1:15",As Soon As Possible,NA,4/15/26 4:15,4/15/26 4:15,3/25/26 2:32,9h,9h,9h,0,0,0,0,0,1.2.1.28,500,No,Yes,Yes,,,GreenSquare,,,,,,,,0,0,0,0d,0d,0d,No,No,No,No,No,No,No,No,No,No,No,0,0,0,0,0,
430,1038,Yes,Auto Scheduled,Extract File,1h,Fixed Units,5,0.13d,"414,428","April 15, 2026 3:15","April 15, 2026 4:15",4/15/26 3:15,4/15/26 4:15,4/15/26 3:15,4/15/26 4:15,0h,0h,0ed,1,4/15/26 3:15,4/15/26 4:15,"April 15, 2026 3:15","April 15, 2026 4:15",As Soon As Possible,NA,4/15/26 4:15,4/15/26 4:15,4/1/26 2:50,1h,1h,1h,0,0,0,0,0,1.2.1.28.1,500,No,No,No,,,GreenSquare,,,,,,,,0,0,0,0d,0d,0d,No,No,No,No,No,No,No,No,No,No,No,0,0,0,0,0,
431,1039,Yes,Auto Scheduled,Pre Load Validation,2h,Fixed Units,5,0.25d,430,"April 15, 2026 4:15","April 16, 2026 9:15",4/15/26 4:15,4/16/26 9:15,4/15/26 4:15,4/16/26 9:15,0h,0h,0ed,1,4/15/26 4:15,4/16/26 9:15,"April 15, 2026 4:15","April 16, 2026 9:15",As Soon As Possible,NA,4/16/26 9:15,4/16/26 9:15,4/1/26 2:50,2h,2h,2h,0,0,0,0,0,1.2.1.28.2,500,No,No,No,,Sam Houff,GreenSquare,,,,,,,,0,0,0,0d,0d,0d,No,No,No,No,No,No,No,No,No,No,No,0,0,0,0,0,
432,1040,Yes,Auto Scheduled,Simulate Load,1h,Fixed Units,5,0.13d,431,"April 16, 2026 9:15","April 16, 2026 10:15",4/16/26 9:15,4/16/26 10:15,4/16/26 9:15,4/16/26 10:15,0h,0h,0ed,1,4/16/26 9:15,4/16/26 10:15,"April 16, 2026 9:15","April 16, 2026 10:15",As Soon As Possible,NA,4/16/26 10:15,4/16/26 10:15,4/1/26 2:50,1h,1h,1h,0,0,0,0,0,1.2.1.28.3,500,No,No,No,,,GreenSquare,,,,,,,,0,0,0,0d,0d,0d,No,No,No,No,No,No,No,No,No,No,No,0,0,0,0,0,
433,1041,Yes,Auto Scheduled,Error and Defect Mitigation,2h,Fixed Units,5,0.25d,432,"April 17, 2026 8:00","April 17, 2026 10:00",4/17/26 8:00,4/17/26 10:00,4/17/26 8:00,4/17/26 10:00,0h,0h,0ed,1,4/17/26 8:00,4/17/26 10:00,"April 16, 2026 10:15","April 16, 2026 1:15",Start No Earlier Than,4/17/26 8:00,4/17/26 10:00,4/17/26 10:00,4/1/26 2:50,2h,2h,2h,0,0,0,0,0,1.2.1.28.4,500,No,No,No,,Sam Houff,GreenSquare,,,,,,,,0,0,0,0d,0d,0d,No,No,No,No,No,No,No,No,No,No,No,0,0,0,0,0,
434,1042,Yes,Auto Scheduled,Load,1h,Fixed Units,5,0.13d,382,"April 17, 2026 8:00","April 17, 2026 9:00",4/17/26 8:00,4/17/26 9:00,4/17/26 8:00,4/17/26 9:00,0h,0h,0ed,1,4/17/26 8:00,4/17/26 9:00,"April 15, 2026 10:00","April 15, 2026 11:00",Start No Earlier Than,4/17/26 8:00,4/17/26 9:00,4/17/26 9:00,4/1/26 2:50,1h,1h,1h,0,0,0,0,0,1.2.1.28.5,500,No,No,No,,,GreenSquare,,,,,,,,0,0,0,0d,0d,0d,No,No,No,No,No,No,No,No,No,No,No,0,0,0,0,0,
435,1043,Yes,Auto Scheduled,Post Load Validation,2h,Fixed Units,5,0.25d,434,"April 17, 2026 9:00","April 17, 2026 11:00",4/17/26 9:00,4/17/26 11:00,4/17/26 9:00,4/17/26 11:00,0h,0h,0ed,1,4/17/26 9:00,4/17/26 11:00,"April 15, 2026 11:00","April 15, 2026 2:00",Start No Earlier Than,4/17/26 8:00,4/17/26 11:00,4/17/26 11:00,4/1/26 2:50,2h,2h,2h,0,0,0,0,0,1.2.1.28.6,500,No,No,No,,Sam Houff,GreenSquare,,,,,,,,0,0,0,0d,0d,0d,No,No,No,No,No,No,No,No,No,No,No,0,0,0,0,0,
436,936,Yes,Auto Scheduled,PTP_CM28_Purchase_Info_Record External Processing,1.47d,Fixed Duration,4,1.13d,,"April 15, 2026 3:15","April 17, 2026 10:00",4/15/26 3:15,4/17/26 10:00,4/15/26 3:15,4/17/26 10:00,0d,0d,0ed,1,4/15/26 3:15,4/17/26 10:00,"April 15, 2026 3:15","April 16, 2026 4:15",As Soon As Possible,NA,4/15/26 3:45,4/15/26 3:45,4/1/26 1:26,9h,9h,9h,0,0,0,0,0,1.2.1.29,500,No,Yes,Yes,,,GreenSquare,,,,,,,,0,0,0,0d,0d,0d,No,No,No,No,No,No,No,No,No,No,No,0,0,0,0,0,
437,1044,Yes,Auto Scheduled,"Load File Staged and Posted ""Ready""",30m,Fixed Units,5,0.06d,"414,428","April 15, 2026 3:15","April 15, 2026 3:45",4/15/26 3:15,4/15/26 3:45,4/15/26 3:15,4/15/26 3:45,0m,0m,0ed,1,4/15/26 3:15,4/15/26 3:45,"April 15, 2026 3:15","April 15, 2026 3:45",As Soon As Possible,NA,4/15/26 3:45,4/15/26 3:45,4/1/26 2:51,0.5h,0.5h,0.5h,0,0,0,0,0,1.2.1.29.1,500,No,No,No,,,GreenSquare,,,,,,,,0,0,0,0d,0d,0d,No,No,No,No,No,No,No,No,No,No,No,0,0,0,0,0,
438,1045,Yes,Auto Scheduled,Pre Load Validation,30m,Fixed Units,5,0.06d,437,"April 15, 2026 3:45","April 15, 2026 4:15",4/15/26 3:45,4/15/26 4:15,4/15/26 3:45,4/15/26 4:15,0m,0m,0ed,1,4/15/26 3:45,4/15/26 4:15,"April 15, 2026 3:45","April 15, 2026 4:15",As Soon As Possible,NA,4/15/26 4:15,4/15/26 4:15,4/1/26 2:51,0.5h,0.5h,0.5h,0,0,0,0,0,1.2.1.29.2,500,No,No,No,,Sam Houff,GreenSquare,,,,,,,,0,0,0,0d,0d,0d,No,No,No,No,No,No,No,No,No,No,No,0,0,0,0,0,
439,1046,Yes,Auto Scheduled,Simulate Load,1h,Fixed Units,5,0.13d,438,"April 16, 2026 8:00","April 16, 2026 9:00",4/16/26 8:00,4/16/26 9:00,4/16/26 8:00,4/16/26 9:00,0h,0h,0ed,1,4/16/26 8:00,4/16/26 9:00,"April 15, 2026 4:15","April 16, 2026 8:15",As Soon As Possible,NA,4/16/26 9:00,4/16/26 9:00,4/1/26 2:51,1h,1h,1h,0,0,0,0,0,1.2.1.29.3,500,No,No,No,,,GreenSquare,,,,,,,,0,0,0,0d,0d,0d,No,No,No,No,No,No,No,No,No,No,No,0,0,0,0,0,
440,1047,Yes,Auto Scheduled,Error and Defect Mitigation,2h,Fixed Units,5,0.25d,439,"April 16, 2026 9:00","April 16, 2026 11:00",4/16/26 9:00,4/16/26 11:00,4/16/26 9:00,4/16/26 11:00,0h,0h,0ed,1,4/16/26 9:00,4/16/26 11:00,"April 16, 2026 8:15","April 16, 2026 10:15",As Soon As Possible,NA,4/16/26 11:00,4/16/26 11:00,4/1/26 2:51,2h,2h,2h,0,0,0,0,0,1.2.1.29.4,500,No,No,No,,Sam Houff,GreenSquare,,,,,,,,0,0,0,0d,0d,0d,No,No,No,No,No,No,No,No,No,No,No,0,0,0,0,0,
441,1048,Yes,Auto Scheduled,Load,2h,Fixed Units,5,0.25d,440,"April 17, 2026 8:00","April 17, 2026 10:00",4/17/26 8:00,4/17/26 10:00,4/17/26 8:00,4/17/26 10:00,0h,0h,0ed,1,4/17/26 8:00,4/17/26 10:00,"April 16, 2026 10:15","April 16, 2026 1:15",As Soon As Possible,NA,4/17/26 10:00,4/17/26 10:00,4/1/26 2:51,2h,2h,2h,0,0,0,0,0,1.2.1.29.5,500,No,No,No,,,GreenSquare,,,,,,,,0,0,0,0d,0d,0d,No,No,No,No,No,No,No,No,No,No,No,0,0,0,0,0,
442,1049,Yes,Auto Scheduled,Post Load Validation,3h,Fixed Units,5,0.38d,441,"April 16, 2026 2:00","April 16, 2026 5:00",4/16/26 2:00,4/16/26 5:00,4/16/26 2:00,4/16/26 5:00,0h,0h,0ed,1,4/16/26 2:00,4/16/26 5:00,"April 16, 2026 1:15","April 16, 2026 4:15",As Soon As Possible,NA,4/16/26 5:00,4/16/26 5:00,4/1/26 2:51,3h,3h,3h,0,0,0,0,0,1.2.1.29.6,500,No,No,No,,Sam Houff,GreenSquare,,,,,,,,0,0,0,0d,0d,0d,No,No,No,No,No,No,No,No,No,No,No,0,0,0,0,0,
443,937,Yes,Auto Scheduled,PTP_CM28_Purchase_Info_Record Subcontracting and Consignment,1.13d,Fixed Duration,4,1.13d,,"April 15, 2026 3:15","April 16, 2026 4:15",4/15/26 3:15,4/16/26 4:15,4/15/26 3:15,4/16/26 4:15,0d,0d,0ed,1,4/15/26 3:15,4/16/26 4:15,"April 15, 2026 3:15","April 16, 2026 4:15",As Soon As Possible,NA,4/15/26 3:45,4/15/26 3:45,4/1/26 1:26,9h,9h,9h,0,0,0,0,0,1.2.1.30,500,No,Yes,Yes,,,GreenSquare,,,,,,,,0,0,0,0d,0d,0d,No,No,No,No,No,No,No,No,No,No,No,0,0,0,0,0,
444,1050,Yes,Auto Scheduled,"Load File Staged and Posted ""Ready""",30m,Fixed Units,5,0.06d,"414,428","April 15, 2026 3:15","April 15, 2026 3:45",4/15/26 3:15,4/15/26 3:45,4/15/26 3:15,4/15/26 3:45,0m,0m,0ed,1,4/15/26 3:15,4/15/26 3:45,"April 15, 2026 3:15","April 15, 2026 3:45",As Soon As Possible,NA,4/15/26 3:45,4/15/26 3:45,4/1/26 2:53,0.5h,0.5h,0.5h,0,0,0,0,0,1.2.1.30.1,500,No,No,No,,,GreenSquare,,,,,,,,0,0,0,0d,0d,0d,No,No,No,No,No,No,No,No,No,No,No,0,0,0,0,0,
445,1051,Yes,Auto Scheduled,Pre Load Validation,30m,Fixed Units,5,0.06d,444,"April 15, 2026 3:45","April 15, 2026 4:15",4/15/26 3:45,4/15/26 4:15,4/15/26 3:45,4/15/26 4:15,0m,0m,0ed,1,4/15/26 3:45,4/15/26 4:15,"April 15, 2026 3:45","April 15, 2026 4:15",As Soon As Possible,NA,4/15/26 4:15,4/15/26 4:15,4/1/26 2:53,0.5h,0.5h,0.5h,0,0,0,0,0,1.2.1.30.2,500,No,No,No,,Sam Houff,GreenSquare,,,,,,,,0,0,0,0d,0d,0d,No,No,No,No,No,No,No,No,No,No,No,0,0,0,0,0,
446,1052,Yes,Auto Scheduled,Simulate Load,1h,Fixed Units,5,0.13d,445,"April 15, 2026 4:15","April 16, 2026 8:15",4/15/26 4:15,4/16/26 8:15,4/15/26 4:15,4/16/26 8:15,0h,0h,0ed,1,4/15/26 4:15,4/16/26 8:15,"April 15, 2026 4:15","April 16, 2026 8:15",As Soon As Possible,NA,4/16/26 8:15,4/16/26 8:15,4/1/26 2:53,1h,1h,1h,0,0,0,0,0,1.2.1.30.3,500,No,No,No,,,GreenSquare,,,,,,,,0,0,0,0d,0d,0d,No,No,No,No,No,No,No,No,No,No,No,0,0,0,0,0,
447,1053,Yes,Auto Scheduled,Error and Defect Mitigation,2h,Fixed Units,5,0.25d,446,"April 16, 2026 8:15","April 16, 2026 10:15",4/16/26 8:15,4/16/26 10:15,4/16/26 8:15,4/16/26 10:15,0h,0h,0ed,1,4/16/26 8:15,4/16/26 10:15,"April 16, 2026 8:15","April 16, 2026 10:15",As Soon As Possible,NA,4/16/26 10:15,4/16/26 10:15,4/1/26 2:53,2h,2h,2h,0,0,0,0,0,1.2.1.30.4,500,No,No,No,,Sam Houff,GreenSquare,,,,,,,,0,0,0,0d,0d,0d,No,No,No,No,No,No,No,No,No,No,No,0,0,0,0,0,
448,1054,Yes,Auto Scheduled,Load,2h,Fixed Units,5,0.25d,447,"April 16, 2026 10:15","April 16, 2026 1:15",4/16/26 10:15,4/16/26 1:15,4/16/26 10:15,4/16/26 1:15,0h,0h,0ed,1,4/16/26 10:15,4/16/26 1:15,"April 16, 2026 10:15","April 16, 2026 1:15",As Soon As Possible,NA,4/16/26 1:15,4/16/26 1:15,4/1/26 2:53,2h,2h,2h,0,0,0,0,0,1.2.1.30.5,500,No,No,No,,,GreenSquare,,,,,,,,0,0,0,0d,0d,0d,No,No,No,No,No,No,No,No,No,No,No,0,0,0,0,0,
449,1055,Yes,Auto Scheduled,Post Load Validation,3h,Fixed Units,5,0.38d,448,"April 16, 2026 1:15","April 16, 2026 4:15",4/16/26 1:15,4/16/26 4:15,4/16/26 1:15,4/16/26 4:15,0h,0h,0ed,1,4/16/26 1:15,4/16/26 4:15,"April 16, 2026 1:15","April 16, 2026 4:15",As Soon As Possible,NA,4/16/26 4:15,4/16/26 4:15,4/1/26 2:53,3h,3h,3h,0,0,0,0,0,1.2.1.30.6,500,No,No,No,,Sam Houff,GreenSquare,,,,,,,,0,0,0,0d,0d,0d,No,No,No,No,No,No,No,No,No,No,No,0,0,0,0,0,
450,694,Yes,Auto Scheduled,PTM_CM31_BOM Conversion,2.09d,Fixed Duration,4,1.13d,,"April 15, 2026 4:15","April 17, 2026 5:00",4/15/26 4:15,4/17/26 5:00,4/15/26 4:15,4/17/26 5:00,0d,0d,0ed,1,4/15/26 4:15,4/17/26 5:00,"April 15, 2026 4:15","April 17, 2026 8:15",As Soon As Possible,NA,4/16/26 8:15,4/16/26 8:15,3/25/26 2:32,19h,9h,19h,0,0,0,0,0,1.2.1.31,500,No,Yes,Yes,,,GreenSquare,,,,,,,,0,0,0,0d,0d,0d,Yes,No,No,No,No,No,No,No,No,No,No,0,0,0,0,0,
451,1056,Yes,Auto Scheduled,Extract File,1h,Fixed Units,5,0.13d,430,"April 15, 2026 4:15","April 16, 2026 8:15",4/15/26 4:15,4/16/26 8:15,4/15/26 4:15,4/16/26 8:15,0h,0h,0ed,1,4/15/26 4:15,4/16/26 8:15,"April 15, 2026 4:15","April 16, 2026 8:15",As Soon As Possible,NA,4/16/26 8:15,4/16/26 8:15,4/1/26 2:53,1h,1h,1h,0,0,0,0,0,1.2.1.31.1,500,No,No,No,,,GreenSquare,,,,,,,,0,0,0,0d,0d,0d,No,No,No,No,No,No,No,No,No,No,No,0,0,0,0,0,
452,1057,Yes,Auto Scheduled,Pre Load Validation,0.5h,Fixed Units,5,0.25d,451,"April 16, 2026 8:15","April 16, 2026 8:45",4/16/26 8:15,4/16/26 8:45,4/16/26 8:15,4/16/26 8:45,0h,0h,0ed,1,4/16/26 8:15,4/16/26 8:45,"April 16, 2026 8:15","April 16, 2026 10:15",As Soon As Possible,NA,4/16/26 8:45,4/16/26 8:45,4/1/26 2:53,0.5h,2h,0.5h,0,0,0,0,0,1.2.1.31.2,500,No,No,No,,"Matt Palastro, Dave Duda",GreenSquare,,,,,,,,0,0,0,0d,0d,0d,No,No,No,No,No,No,No,No,No,No,No,0,0,0,0,0,
453,1058,Yes,Auto Scheduled,Simulate Load,15.5h,Fixed Units,5,0.13d,452,"April 16, 2026 8:00","April 17, 2026 5:00",4/16/26 8:00,4/17/26 5:00,4/16/26 8:00,4/17/26 5:00,0h,0h,0ed,1,4/16/26 8:00,4/17/26 5:00,"April 16, 2026 10:15","April 16, 2026 11:15",Finish No Earlier Than,4/17/26 5:00,4/17/26 5:00,4/17/26 5:00,4/1/26 2:53,15.5h,1h,15.5h,0,0,0,0,0,1.2.1.31.3,500,No,No,No,,,GreenSquare,,,,,,,,0,0,0,0d,0d,0d,No,No,No,No,No,No,No,No,No,No,No,0,0,0,0,0,
454,1059,Yes,Auto Scheduled,Error and Defect Mitigation,0.5h,Fixed Units,5,0.25d,453,"April 17, 2026 8:00","April 17, 2026 8:30",4/17/26 8:00,4/17/26 8:30,4/17/26 8:00,4/17/26 8:30,0h,0h,0ed,1,4/17/26 8:00,4/17/26 8:30,"April 16, 2026 11:15","April 16, 2026 2:15",Finish No Earlier Than,4/17/26 5:00,4/17/26 8:30,4/17/26 8:30,4/1/26 2:53,0.5h,2h,0.5h,0,0,0,0,0,1.2.1.31.4,500,No,No,No,,"Matt Palastro, Dave Duda",GreenSquare,,,,,,,,0,0,0,0d,0d,0d,No,No,No,No,No,No,No,No,No,No,No,0,0,0,0,0,
455,1060,Yes,Auto Scheduled,Load,1h,Fixed Units,5,0.13d,454,"April 17, 2026 8:00","April 17, 2026 9:15",4/17/26 8:00,4/17/26 9:15,4/17/26 8:00,4/17/26 9:15,0h,0h,0ed,1,4/17/26 8:00,4/17/26 9:15,"April 16, 2026 2:15","April 16, 2026 3:15",As Soon As Possible,NA,4/17/26 9:15,4/17/26 9:15,4/1/26 2:53,1h,1h,1h,0,0,0,0,0,4/1,500,No,No,No,,,GreenSquare,,,,,,,,0,0,0,0d,0d,0d,No,No,No,No,No,No,No,No,No,No,No,0,0,0,0,0,
456,1061,Yes,Auto Scheduled,Post Load Validation,0.5h,Fixed Units,5,0.25d,455,"April 17, 2026 9:00","April 17, 2026 9:38",4/17/26 9:00,4/17/26 9:38,4/17/26 9:00,4/17/26 9:38,0h,0h,0ed,1,4/17/26 9:00,4/17/26 9:38,"April 16, 2026 3:15","April 17, 2026 8:15",Finish No Earlier Than,4/16/26 5:00,4/17/26 9:38,4/17/26 9:38,4/1/26 2:53,0.5h,2h,0.5h,0,0,0,0,0,1.2.1.31.6,500,No,No,No,,"Matt Palastro, Dave Duda",GreenSquare,,,,,,,,0,0,0,0d,0d,0d,No,No,No,No,No,No,No,No,No,No,No,0,0,0,0,0,
457,695,Yes,Auto Scheduled,PTM_CM40_Work Center Conversion,0.38d,Fixed Duration,4,2d,,"April 16, 2026 8:00","April 16, 2026 11:00",4/16/26 8:00,4/16/26 11:00,4/16/26 8:00,4/16/26 11:00,0d,0d,0ed,1,4/16/26 8:00,4/16/26 11:00,"April 16, 2026 8:15","April 20, 2026 8:15",As Soon As Possible,NA,4/16/26 8:15,4/16/26 8:15,3/25/26 2:32,6.75h,9h,6.75h,0,0,0,0,0,1.2.1.32,500,No,Yes,Yes,,,GreenSquare,,,,,,,,0,0,0,0d,0d,0d,No,No,No,No,No,No,No,No,No,No,No,0,0,0,0,0,
458,1062,Yes,Auto Scheduled,Extract File,1h,Fixed Units,5,0.13d,451,"April 16, 2026 8:15","April 16, 2026 9:15",4/16/26 8:15,4/16/26 9:15,4/16/26 8:15,4/16/26 9:15,0h,0h,0ed,1,4/16/26 8:15,4/16/26 9:15,"April 16, 2026 8:15","April 16, 2026 9:15",As Soon As Possible,NA,4/16/26 9:15,4/16/26 9:15,4/1/26 2:56,1h,1h,1h,0,0,0,0,0,1.2.1.32.1,500,No,No,No,,,GreenSquare,,,,,,,,0,0,0,0d,0d,0d,No,No,No,No,No,No,No,No,No,No,No,0,0,0,0,0,
459,1063,Yes,Auto Scheduled,Pre Load Validation,2h,Fixed Units,5,0.25d,456,"April 16, 2026 8:30","April 16, 2026 10:30",4/16/26 8:30,4/16/26 10:30,4/16/26 8:30,4/16/26 10:30,0h,0h,0ed,1,4/16/26 8:30,4/16/26 10:30,"April 17, 2026 8:15","April 17, 2026 10:15",As Soon As Possible,NA,4/16/26 10:30,4/16/26 10:30,4/1/26 2:56,2h,2h,2h,0,0,0,0,0,1.2.1.32.2,500,No,No,No,,"Matt Palastro, Dave Duda",GreenSquare,,,,,,,,0,0,0,0d,0d,0d,No,No,No,No,No,No,No,No,No,No,No,0,0,0,0,0,
460,1064,Yes,Auto Scheduled,Simulate Load,0.25h,Fixed Units,5,0.13d,459,"April 16, 2026 8:00","April 16, 2026 8:15",4/16/26 8:00,4/16/26 8:15,4/16/26 8:00,4/16/26 8:15,0h,0h,0ed,1,4/16/26 8:00,4/16/26 8:15,"April 17, 2026 10:15","April 17, 2026 11:15",As Soon As Possible,NA,4/16/26 8:15,4/16/26 8:15,4/1/26 2:56,0.25h,1h,0.25h,0,0,0,0,0,1.2.1.32.3,500,No,No,No,,,GreenSquare,,,,,,,,0,0,0,0d,0d,0d,No,No,No,No,No,No,No,No,No,No,No,0,0,0,0,0,
461,1065,Yes,Auto Scheduled,Error and Defect Mitigation,0.5h,Fixed Units,5,0.25d,460,"April 16, 2026 8:00","April 16, 2026 8:30",4/16/26 8:00,4/16/26 8:30,4/16/26 8:00,4/16/26 8:30,0h,0h,0ed,1,4/16/26 8:00,4/16/26 8:30,"April 17, 2026 11:15","April 17, 2026 2:15",As Soon As Possible,NA,4/16/26 8:30,4/16/26 8:30,4/1/26 2:56,0.5h,2h,0.5h,0,0,0,0,0,1.2.1.32.4,500,No,No,No,,"Matt Palastro, Dave Duda",GreenSquare,,,,,,,,0,0,0,0d,0d,0d,No,No,No,No,No,No,No,No,No,No,No,0,0,0,0,0,
462,1066,Yes,Auto Scheduled,Load,1h,Fixed Units,5,0.13d,461,"April 16, 2026 8:00","April 16, 2026 9:00",4/16/26 8:00,4/16/26 9:00,4/16/26 8:00,4/16/26 9:00,0h,0h,0ed,1,4/16/26 8:00,4/16/26 9:00,"April 17, 2026 2:15","April 17, 2026 3:15",As Soon As Possible,NA,4/16/26 9:00,4/16/26 9:00,4/1/26 2:56,1h,1h,1h,0,0,0,0,0,1.2.1.32.5,500,No,No,No,,,GreenSquare,,,,,,,,0,0,0,0d,0d,0d,No,No,No,No,No,No,No,No,No,No,No,0,0,0,0,0,
463,1067,Yes,Auto Scheduled,Post Load Validation,2h,Fixed Units,5,0.25d,462,"April 16, 2026 9:00","April 16, 2026 11:00",4/16/26 9:00,4/16/26 11:00,4/16/26 9:00,4/16/26 11:00,0h,0h,0ed,1,4/16/26 9:00,4/16/26 11:00,"April 17, 2026 3:15","April 20, 2026 8:15",As Soon As Possible,NA,4/16/26 11:00,4/16/26 11:00,4/1/26 2:56,2h,2h,2h,0,0,0,0,0,1.2.1.32.6,500,No,No,No,,"Matt Palastro, Dave Duda",GreenSquare,,,,,,,,0,0,0,0d,0d,0d,No,No,No,No,No,No,No,No,No,No,No,0,0,0,0,0,
464,707,Yes,Auto Scheduled,PTM_CM38_Routing Conversion,2.75d,Fixed Duration,4,2.88d,,"April 16, 2026 8:00","April 20, 2026 3:00",4/16/26 8:00,4/20/26 3:00,4/16/26 8:00,4/20/26 3:00,0d,0d,0ed,1,4/16/26 8:00,4/20/26 3:00,"April 16, 2026 9:15","April 21, 2026 8:15",As Soon As Possible,NA,4/16/26 10:15,4/16/26 10:15,3/25/26 2:32,11h,9h,11h,0,0,0,0,0,1.2.1.33,500,No,Yes,Yes,,,GreenSquare,,,,,,,,0,0,0,0d,0d,0d,Yes,No,No,No,No,No,No,No,No,No,No,0,0,0,0,0,
465,1075,Yes,Auto Scheduled,Extract File,1h,Fixed Units,5,0.13d,458,"April 16, 2026 9:15","April 16, 2026 10:15",4/16/26 9:15,4/16/26 10:15,4/16/26 9:15,4/16/26 10:15,0h,0h,0ed,1,4/16/26 9:15,4/16/26 10:15,"April 16, 2026 9:15","April 16, 2026 10:15",As Soon As Possible,NA,4/16/26 10:15,4/16/26 10:15,4/1/26 2:56,1h,1h,1h,0,0,0,0,0,1.2.1.33.1,500,No,No,No,,,GreenSquare,,,,,,,,0,0,0,0d,0d,0d,No,No,No,No,No,No,No,No,No,No,No,0,0,0,0,0,
466,1076,Yes,Auto Scheduled,Pre Load Validation,2h,Fixed Units,5,0.25d,463,"April 16, 2026 8:00","April 16, 2026 1:30",4/16/26 8:00,4/16/26 1:30,4/16/26 8:00,4/16/26 1:30,0h,0h,0ed,1,4/16/26 8:00,4/16/26 1:30,"April 20, 2026 8:15","April 20, 2026 10:15",As Soon As Possible,NA,4/16/26 1:30,4/16/26 1:30,4/1/26 2:56,2h,2h,2h,0,0,0,0,0,1.2.1.33.2,500,No,No,No,,"Matt Palastro, Dave Duda",GreenSquare,,,,,,,,0,0,0,0d,0d,0d,No,No,No,No,No,No,No,No,No,No,No,0,0,0,0,0,
467,1077,Yes,Auto Scheduled,Simulate Load,2h,Fixed Units,5,0.13d,466,"April 20, 2026 8:00","April 20, 2026 10:00",4/20/26 8:00,4/20/26 10:00,4/20/26 8:00,4/20/26 10:00,0h,0h,0ed,1,4/20/26 8:00,4/20/26 10:00,"April 20, 2026 10:15","April 20, 2026 11:15",Finish No Earlier Than,4/17/26 5:00,4/20/26 10:00,4/20/26 10:00,4/1/26 2:56,2h,1h,2h,0,0,0,0,0,1.2.1.33.3,500,No,No,No,,,GreenSquare,,,,,,,,0,0,0,0d,0d,0d,No,No,No,No,No,No,No,No,No,No,No,0,0,0,0,0,
468,1078,Yes,Auto Scheduled,Error and Defect Mitigation,3h,Fixed Units,5,0.25d,467SS,"April 20, 2026 8:00","April 20, 2026 11:00",4/20/26 8:00,4/20/26 11:00,4/20/26 8:00,4/20/26 11:00,0h,0h,0ed,1,4/20/26 8:00,4/20/26 11:00,"April 20, 2026 11:15","April 20, 2026 2:15",Start No Earlier Than,4/17/26 8:00,4/20/26 11:00,4/20/26 11:00,4/1/26 2:56,3h,2h,3h,0,0,0,0,0,1.2.1.33.4,500,No,No,No,,"Matt Palastro, Dave Duda",GreenSquare,,,,,,,,0,0,0,0d,0d,0d,No,No,No,No,No,No,No,No,No,No,No,0,0,0,0,0,
469,1079,Yes,Auto Scheduled,Load,1h,Fixed Units,5,0.13d,468,"April 20, 2026 11:00","April 20, 2026 12:00",4/20/26 11:00,4/20/26 12:00,4/20/26 11:00,4/20/26 12:00,0h,0h,0ed,1,4/20/26 11:00,4/20/26 12:00,"April 20, 2026 2:15","April 20, 2026 3:15",Start No Earlier Than,4/20/26 8:00,4/20/26 12:00,4/20/26 12:00,4/1/26 2:56,1h,1h,1h,0,0,0,0,0,1.2.1.33.5,500,No,No,No,,,GreenSquare,,,,,,,,0,0,0,0d,0d,0d,No,No,No,No,No,No,No,No,No,No,No,0,0,0,0,0,
470,1080,Yes,Auto Scheduled,Post Load Validation,2h,Fixed Units,5,0.25d,469,"April 20, 2026 1:00","April 20, 2026 3:00",4/20/26 1:00,4/20/26 3:00,4/20/26 1:00,4/20/26 3:00,0h,0h,0ed,1,4/20/26 1:00,4/20/26 3:00,"April 20, 2026 3:15","April 21, 2026 8:15",Start No Earlier Than,4/20/26 8:00,4/20/26 3:00,4/20/26 3:00,4/1/26 2:56,2h,2h,2h,0,0,0,0,0,1.2.1.33.6,500,No,No,No,,"Matt Palastro, Dave Duda",GreenSquare,,,,,,,,0,0,0,0d,0d,0d,No,No,No,No,No,No,No,No,No,No,No,0,0,0,0,0,
471,709,Yes,Auto Scheduled,PTM_CM36_Production Version Conversion,1.13d,Fixed Duration,4,1.13d,,"April 20, 2026 8:00","April 21, 2026 9:00",4/20/26 8:00,4/21/26 9:00,4/20/26 8:00,4/21/26 9:00,0d,0d,0ed,1,4/20/26 8:00,4/21/26 9:00,"April 16, 2026 10:15","April 17, 2026 11:15",Start No Earlier Than,4/17/26 8:00,4/20/26 8:30,4/20/26 8:30,3/25/26 2:32,9h,9h,9h,0,0,0,0,0,1.2.1.34,500,No,Yes,Yes,,,GreenSquare,,,,,,,,0,0,0,0d,0d,0d,Yes,No,No,No,No,No,No,No,No,No,No,0,0,0,0,0,
472,1081,Yes,Auto Scheduled,"Load File Staged and Posted ""Ready""",30m,Fixed Units,5,0.06d,465,"April 20, 2026 8:00","April 20, 2026 8:30",4/20/26 8:00,4/20/26 8:30,4/20/26 8:00,4/20/26 8:30,0m,0m,0ed,1,4/20/26 8:00,4/20/26 8:30,"April 16, 2026 10:15","April 16, 2026 10:45",Start No Earlier Than,4/20/26 8:00,4/20/26 8:30,4/20/26 8:30,4/2/26 5:28,0.5h,0.5h,0.5h,0,0,0,0,0,1.2.1.34.1,500,No,No,No,,,GreenSquare,,,,,,,,0,0,0,0d,0d,0d,No,No,No,No,No,No,No,No,No,No,No,0,0,0,0,0,
473,1082,Yes,Auto Scheduled,Pre Load Validation,30m,Fixed Units,5,0.06d,472,"April 20, 2026 8:30","April 20, 2026 9:00",4/20/26 8:30,4/20/26 9:00,4/20/26 8:30,4/20/26 9:00,0m,0m,0ed,1,4/20/26 8:30,4/20/26 9:00,"April 16, 2026 10:45","April 16, 2026 11:15",As Soon As Possible,NA,4/20/26 9:00,4/20/26 9:00,4/2/26 5:28,0.5h,0.5h,0.5h,0,0,0,0,0,1.2.1.34.2,500,No,No,No,,"Matt Palastro, Dave Duda",GreenSquare,,,,,,,,0,0,0,0d,0d,0d,No,No,No,No,No,No,No,No,No,No,No,0,0,0,0,0,
474,1083,Yes,Auto Scheduled,Simulate Load,1h,Fixed Units,5,0.13d,473,"April 20, 2026 9:00","April 20, 2026 10:00",4/20/26 9:00,4/20/26 10:00,4/20/26 9:00,4/20/26 10:00,0h,0h,0ed,1,4/20/26 9:00,4/20/26 10:00,"April 16, 2026 11:15","April 16, 2026 1:15",As Soon As Possible,NA,4/20/26 10:00,4/20/26 10:00,4/2/26 5:28,1h,1h,1h,0,0,0,0,0,1.2.1.34.3,500,No,No,No,,,GreenSquare,,,,,,,,0,0,0,0d,0d,0d,No,No,No,No,No,No,No,No,No,No,No,0,0,0,0,0,
475,1084,Yes,Auto Scheduled,Error and Defect Mitigation,2h,Fixed Units,5,0.25d,474,"April 20, 2026 10:00","April 20, 2026 12:00",4/20/26 10:00,4/20/26 12:00,4/20/26 10:00,4/20/26 12:00,0h,0h,0ed,1,4/20/26 10:00,4/20/26 12:00,"April 16, 2026 1:15","April 16, 2026 3:15",As Soon As Possible,NA,4/20/26 12:00,4/20/26 12:00,4/2/26 5:28,2h,2h,2h,0,0,0,0,0,1.2.1.34.4,500,No,No,No,,"Matt Palastro, Dave Duda",GreenSquare,,,,,,,,0,0,0,0d,0d,0d,No,No,No,No,No,No,No,No,No,No,No,0,0,0,0,0,
476,1085,Yes,Auto Scheduled,Load,2h,Fixed Units,5,0.25d,475,"April 20, 2026 1:00","April 20, 2026 3:00",4/20/26 1:00,4/20/26 3:00,4/20/26 1:00,4/20/26 3:00,0h,0h,0ed,1,4/20/26 1:00,4/20/26 3:00,"April 16, 2026 3:15","April 17, 2026 8:15",As Soon As Possible,NA,4/20/26 3:00,4/20/26 3:00,4/2/26 5:28,2h,2h,2h,0,0,0,0,0,1.2.1.34.5,500,No,No,No,,,GreenSquare,,,,,,,,0,0,0,0d,0d,0d,No,No,No,No,No,No,No,No,No,No,No,0,0,0,0,0,
477,1086,Yes,Auto Scheduled,Post Load Validation,3h,Fixed Units,5,0.38d,476,"April 20, 2026 3:00","April 21, 2026 9:00",4/20/26 3:00,4/21/26 9:00,4/20/26 3:00,4/21/26 9:00,0h,0h,0ed,1,4/20/26 3:00,4/21/26 9:00,"April 17, 2026 8:15","April 17, 2026 11:15",Finish No Earlier Than,4/17/26 5:00,4/21/26 9:00,4/21/26 9:00,4/2/26 5:28,3h,3h,3h,0,0,0,0,0,1.2.1.34.6,500,No,No,No,,"Matt Palastro, Dave Duda",GreenSquare,,,,,,,,0,0,0,0d,0d,0d,No,No,No,No,No,No,No,No,No,No,No,0,0,0,0,0,
478,710,Yes,Auto Scheduled,PTM_CM35_Inspection Plan,1.13d,Fixed Duration,4,1.13d,,"April 21, 2026 9:00","April 22, 2026 10:00",4/21/26 9:00,4/22/26 10:00,4/21/26 9:00,4/22/26 10:00,0d,0d,0ed,1,4/21/26 9:00,4/22/26 10:00,"April 17, 2026 11:15","April 20, 2026 1:15",As Soon As Possible,NA,4/21/26 9:30,4/21/26 9:30,3/25/26 2:32,9h,9h,9h,0,0,0,0,0,1.2.1.35,500,No,Yes,Yes,,,GreenSquare,,,,,,,,0,0,0,0d,0d,0d,No,No,No,No,No,No,No,No,No,No,No,0,0,0,0,0,
479,1088,Yes,Auto Scheduled,"Load File Staged and Posted ""Ready""",30m,Fixed Units,5,0.06d,477,"April 21, 2026 9:00","April 21, 2026 9:30",4/21/26 9:00,4/21/26 9:30,4/21/26 9:00,4/21/26 9:30,0m,0m,0ed,1,4/21/26 9:00,4/21/26 9:30,"April 17, 2026 11:15","April 17, 2026 11:45",As Soon As Possible,NA,4/21/26 9:30,4/21/26 9:30,4/2/26 5:34,0.5h,0.5h,0.5h,0,0,0,0,0,1.2.1.35.1,500,No,No,No,,,GreenSquare,,,,,,,,0,0,0,0d,0d,0d,No,No,No,No,No,No,No,No,No,No,No,0,0,0,0,0,
480,1089,Yes,Auto Scheduled,Pre Load Validation,30m,Fixed Units,5,0.06d,479,"April 21, 2026 9:30","April 21, 2026 10:00",4/21/26 9:30,4/21/26 10:00,4/21/26 9:30,4/21/26 10:00,0m,0m,0ed,1,4/21/26 9:30,4/21/26 10:00,"April 17, 2026 11:45","April 17, 2026 1:15",As Soon As Possible,NA,4/21/26 10:00,4/21/26 10:00,4/2/26 5:34,0.5h,0.5h,0.5h,0,0,0,0,0,1.2.1.35.2,500,No,No,No,,"Matt Palastro, Dave Duda",GreenSquare,,,,,,,,0,0,0,0d,0d,0d,No,No,No,No,No,No,No,No,No,No,No,0,0,0,0,0,
481,1090,Yes,Auto Scheduled,Simulate Load,1h,Fixed Units,5,0.13d,480,"April 21, 2026 10:00","April 21, 2026 11:00",4/21/26 10:00,4/21/26 11:00,4/21/26 10:00,4/21/26 11:00,0h,0h,0ed,1,4/21/26 10:00,4/21/26 11:00,"April 17, 2026 1:15","April 17, 2026 2:15",As Soon As Possible,NA,4/21/26 11:00,4/21/26 11:00,4/2/26 5:34,1h,1h,1h,0,0,0,0,0,1.2.1.35.3,500,No,No,No,,,GreenSquare,,,,,,,,0,0,0,0d,0d,0d,No,No,No,No,No,No,No,No,No,No,No,0,0,0,0,0,
482,1091,Yes,Auto Scheduled,Error and Defect Mitigation,2h,Fixed Units,5,0.25d,481,"April 21, 2026 11:00","April 21, 2026 2:00",4/21/26 11:00,4/21/26 2:00,4/21/26 11:00,4/21/26 2:00,0h,0h,0ed,1,4/21/26 11:00,4/21/26 2:00,"April 17, 2026 2:15","April 17, 2026 4:15",As Soon As Possible,NA,4/21/26 2:00,4/21/26 2:00,4/2/26 5:34,2h,2h,2h,0,0,0,0,0,1.2.1.35.4,500,No,No,No,,"Matt Palastro, Dave Duda",GreenSquare,,,,,,,,0,0,0,0d,0d,0d,No,No,No,No,No,No,No,No,No,No,No,0,0,0,0,0,
483,1092,Yes,Auto Scheduled,Load,2h,Fixed Units,5,0.25d,482,"April 21, 2026 2:00","April 21, 2026 4:00",4/21/26 2:00,4/21/26 4:00,4/21/26 2:00,4/21/26 4:00,0h,0h,0ed,1,4/21/26 2:00,4/21/26 4:00,"April 17, 2026 4:15","April 20, 2026 9:15",Finish No Earlier Than,4/17/26 5:00,4/21/26 4:00,4/21/26 4:00,4/2/26 5:34,2h,2h,2h,0,0,0,0,0,1.2.1.35.5,500,No,No,No,,,GreenSquare,,,,,,,,0,0,0,0d,0d,0d,No,No,No,No,No,No,No,No,No,No,No,0,0,0,0,0,
484,1093,Yes,Auto Scheduled,Post Load Validation,3h,Fixed Units,5,0.38d,483,"April 21, 2026 4:00","April 22, 2026 10:00",4/21/26 4:00,4/22/26 10:00,4/21/26 4:00,4/22/26 10:00,0h,0h,0ed,1,4/21/26 4:00,4/22/26 10:00,"April 20, 2026 9:15","April 20, 2026 1:15",As Soon As Possible,NA,4/22/26 10:00,4/22/26 10:00,4/2/26 5:34,3h,3h,3h,0,0,0,0,0,1.2.1.35.6,500,No,No,No,,"Matt Palastro, Dave Duda",GreenSquare,,,,,,,,0,0,0,0d,0d,0d,No,No,No,No,No,No,No,No,No,No,No,0,0,0,0,0,
485,1194,Yes,Auto Scheduled,PTM_CM48_Equipment_Master_Serial Numbers,1.13d,Fixed Duration,4,1.13d,,"April 21, 2026 9:30","April 22, 2026 10:30",4/21/26 9:30,4/22/26 10:30,4/21/26 9:30,4/22/26 10:30,0d,0d,0ed,1,4/21/26 9:30,4/22/26 10:30,"April 17, 2026 11:45","April 20, 2026 1:45",As Soon As Possible,NA,4/21/26 10:00,4/21/26 10:00,4/2/26 10:29,9h,9h,9h,0,0,0,0,0,1.2.1.36,500,No,Yes,Yes,,,GreenSquare,,,,,,,,0,0,0,0d,0d,0d,No,No,No,No,No,No,No,No,No,No,No,0,0,0,0,0,
486,1196,Yes,Auto Scheduled,"Load File Staged and Posted ""Ready""",30m,Fixed Units,5,0.06d,479,"April 21, 2026 9:30","April 21, 2026 10:00",4/21/26 9:30,4/21/26 10:00,4/21/26 9:30,4/21/26 10:00,0m,0m,0ed,1,4/21/26 9:30,4/21/26 10:00,"April 17, 2026 11:45","April 17, 2026 1:15",As Soon As Possible,NA,4/21/26 10:00,4/21/26 10:00,4/2/26 10:31,0.5h,0.5h,0.5h,0,0,0,0,0,1.2.1.36.1,500,No,No,No,,,GreenSquare,,,,,,,,0,0,0,0d,0d,0d,No,No,No,No,No,No,No,No,No,No,No,0,0,0,0,0,
487,1197,Yes,Auto Scheduled,Pre Load Validation,30m,Fixed Units,5,0.06d,486,"April 21, 2026 10:00","April 21, 2026 10:30",4/21/26 10:00,4/21/26 10:30,4/21/26 10:00,4/21/26 10:30,0m,0m,0ed,1,4/21/26 10:00,4/21/26 10:30,"April 17, 2026 1:15","April 17, 2026 1:45",As Soon As Possible,NA,4/21/26 10:30,4/21/26 10:30,4/2/26 10:31,0.5h,0.5h,0.5h,0,0,0,0,0,1.2.1.36.2,500,No,No,No,,"Matt Palastro, Dave Duda",GreenSquare,,,,,,,,0,0,0,0d,0d,0d,No,No,No,No,No,No,No,No,No,No,No,0,0,0,0,0,
488,1198,Yes,Auto Scheduled,Simulate Load,1h,Fixed Units,5,0.13d,487,"April 21, 2026 10:30","April 21, 2026 11:30",4/21/26 10:30,4/21/26 11:30,4/21/26 10:30,4/21/26 11:30,0h,0h,0ed,1,4/21/26 10:30,4/21/26 11:30,"April 17, 2026 1:45","April 17, 2026 2:45",As Soon As Possible,NA,4/21/26 11:30,4/21/26 11:30,4/2/26 10:31,1h,1h,1h,0,0,0,0,0,1.2.1.36.3,500,No,No,No,,,GreenSquare,,,,,,,,0,0,0,0d,0d,0d,No,No,No,No,No,No,No,No,No,No,No,0,0,0,0,0,
489,1199,Yes,Auto Scheduled,Error and Defect Mitigation,2h,Fixed Units,5,0.25d,488,"April 21, 2026 11:30","April 21, 2026 2:30",4/21/26 11:30,4/21/26 2:30,4/21/26 11:30,4/21/26 2:30,0h,0h,0ed,1,4/21/26 11:30,4/21/26 2:30,"April 17, 2026 2:45","April 17, 2026 4:45",As Soon As Possible,NA,4/21/26 2:30,4/21/26 2:30,4/2/26 10:31,2h,2h,2h,0,0,0,0,0,1.2.1.36.4,500,No,No,No,,"Matt Palastro, Dave Duda",GreenSquare,,,,,,,,0,0,0,0d,0d,0d,No,No,No,No,No,No,No,No,No,No,No,0,0,0,0,0,
490,1200,Yes,Auto Scheduled,Load,2h,Fixed Units,5,0.25d,489,"April 21, 2026 2:30","April 21, 2026 4:30",4/21/26 2:30,4/21/26 4:30,4/21/26 2:30,4/21/26 4:30,0h,0h,0ed,1,4/21/26 2:30,4/21/26 4:30,"April 17, 2026 4:45","April 20, 2026 9:45",As Soon As Possible,NA,4/21/26 4:30,4/21/26 4:30,4/2/26 10:31,2h,2h,2h,0,0,0,0,0,1.2.1.36.5,500,No,No,No,,,GreenSquare,,,,,,,,0,0,0,0d,0d,0d,No,No,No,No,No,No,No,No,No,No,No,0,0,0,0,0,
491,1201,Yes,Auto Scheduled,Post Load Validation,3h,Fixed Units,5,0.38d,490,"April 21, 2026 4:30","April 22, 2026 10:30",4/21/26 4:30,4/22/26 10:30,4/21/26 4:30,4/22/26 10:30,0h,0h,0ed,1,4/21/26 4:30,4/22/26 10:30,"April 20, 2026 9:45","April 20, 2026 1:45",As Soon As Possible,NA,4/22/26 10:30,4/22/26 10:30,4/2/26 10:31,3h,3h,3h,0,0,0,0,0,1.2.1.36.6,500,No,No,No,,"Matt Palastro, Dave Duda",GreenSquare,,,,,,,,0,0,0,0d,0d,0d,No,No,No,No,No,No,No,No,No,No,No,0,0,0,0,0,
492,1195,Yes,Auto Scheduled,PTM_CM48_Equipment_Master_Service,2.06d,Fixed Duration,4,1.13d,,"April 21, 2026 8:00","April 23, 2026 8:30",4/21/26 8:00,4/23/26 8:30,4/21/26 8:00,4/23/26 8:30,0d,0d,0ed,1,4/21/26 8:00,4/23/26 8:30,"April 20, 2026 1:45","April 21, 2026 2:45",As Soon As Possible,NA,4/21/26 11:00,4/21/26 11:00,4/2/26 10:29,9h,9h,9h,0,0,0,0,0,1.2.1.37,500,No,Yes,Yes,,,GreenSquare,,,,,,,,0,0,0,0d,0d,0d,No,No,No,No,No,No,No,No,No,No,No,0,0,0,0,0,
493,1202,Yes,Auto Scheduled,"Load File Staged and Posted ""Ready""",30m,Fixed Units,5,0.06d,491,"April 22, 2026 10:30","April 22, 2026 11:00",4/22/26 10:30,4/22/26 11:00,4/22/26 10:30,4/22/26 11:00,0m,0m,0ed,1,4/22/26 10:30,4/22/26 11:00,"April 20, 2026 1:45","April 20, 2026 2:15",As Soon As Possible,NA,4/22/26 11:00,4/22/26 11:00,4/2/26 10:35,0.5h,0.5h,0.5h,0,0,0,0,0,1.2.1.37.1,500,No,No,No,,,GreenSquare,,,,,,,,0,0,0,0d,0d,0d,No,No,No,No,No,No,No,No,No,No,No,0,0,0,0,0,
494,1203,Yes,Auto Scheduled,Pre Load Validation,30m,Fixed Units,5,0.06d,493,"April 22, 2026 11:00","April 22, 2026 11:30",4/22/26 11:00,4/22/26 11:30,4/22/26 11:00,4/22/26 11:30,0m,0m,0ed,1,4/22/26 11:00,4/22/26 11:30,"April 20, 2026 2:15","April 20, 2026 2:45",As Soon As Possible,NA,4/22/26 11:30,4/22/26 11:30,4/2/26 10:35,0.5h,0.5h,0.5h,0,0,0,0,0,1.2.1.37.2,500,No,No,No,,"Matt Palastro, Dave Duda",GreenSquare,,,,,,,,0,0,0,0d,0d,0d,No,No,No,No,No,No,No,No,No,No,No,0,0,0,0,0,
495,1204,Yes,Auto Scheduled,Simulate Load,1h,Fixed Units,5,0.13d,494,"April 22, 2026 11:30","April 22, 2026 1:30",4/22/26 11:30,4/22/26 1:30,4/22/26 11:30,4/22/26 1:30,0h,0h,0ed,1,4/22/26 11:30,4/22/26 1:30,"April 20, 2026 2:45","April 20, 2026 3:45",As Soon As Possible,NA,4/22/26 1:30,4/22/26 1:30,4/2/26 10:35,1h,1h,1h,0,0,0,0,0,1.2.1.37.3,500,No,No,No,,,GreenSquare,,,,,,,,0,0,0,0d,0d,0d,No,No,No,No,No,No,No,No,No,No,No,0,0,0,0,0,
496,1205,Yes,Auto Scheduled,Error and Defect Mitigation,2h,Fixed Units,5,0.25d,495,"April 22, 2026 1:30","April 22, 2026 3:30",4/22/26 1:30,4/22/26 3:30,4/22/26 1:30,4/22/26 3:30,0h,0h,0ed,1,4/22/26 1:30,4/22/26 3:30,"April 20, 2026 3:45","April 21, 2026 8:45",As Soon As Possible,NA,4/22/26 3:30,4/22/26 3:30,4/2/26 10:35,2h,2h,2h,0,0,0,0,0,1.2.1.37.4,500,No,No,No,,"Matt Palastro, Dave Duda",GreenSquare,,,,,,,,0,0,0,0d,0d,0d,No,No,No,No,No,No,No,No,No,No,No,0,0,0,0,0,
497,1206,Yes,Auto Scheduled,Load,2h,Fixed Units,5,0.25d,496,"April 22, 2026 3:30","April 23, 2026 8:30",4/22/26 3:30,4/23/26 8:30,4/22/26 3:30,4/23/26 8:30,0h,0h,0ed,1,4/22/26 3:30,4/23/26 8:30,"April 21, 2026 8:45","April 21, 2026 10:45",Finish No Earlier Than,4/21/26 5:00,4/23/26 8:30,4/23/26 8:30,4/2/26 10:35,2h,2h,2h,0,0,0,0,0,1.2.1.37.5,500,No,No,No,,,GreenSquare,,,,,,,,0,0,0,0d,0d,0d,No,No,No,No,No,No,No,No,No,No,No,0,0,0,0,0,
498,1207,Yes,Auto Scheduled,Post Load Validation,3h,Fixed Units,5,0.38d,,"April 21, 2026 8:00","April 21, 2026 11:00",4/21/26 8:00,4/21/26 11:00,4/21/26 8:00,4/21/26 11:00,0h,0h,0ed,1,4/21/26 8:00,4/21/26 11:00,"April 21, 2026 10:45","April 21, 2026 2:45",Start No Earlier Than,4/21/26 8:00,4/21/26 11:00,4/21/26 11:00,4/2/26 10:35,3h,3h,3h,0,0,0,0,0,1.2.1.37.6,500,No,No,No,,"Matt Palastro, Dave Duda",GreenSquare,,,,,,,,0,0,0,0d,0d,0d,No,No,No,No,No,No,No,No,No,No,No,0,0,0,0,0,
499,938,Yes,Auto Scheduled,VC_Object Dependencies,0.63d,Fixed Duration,4,0.63d,,"April 6, 2026 8:15","April 6, 2026 2:15",4/6/26 8:15,4/6/26 2:15,4/6/26 8:15,4/6/26 2:15,0d,0d,0ed,1,4/6/26 8:15,4/6/26 2:15,"April 6, 2026 8:15","April 6, 2026 2:15",As Soon As Possible,NA,4/6/26 10:15,4/6/26 10:15,4/1/26 1:30,5h,5h,5h,0,0,0,0,0,1.2.1.38,500,No,Yes,Yes,,,GreenSquare,,,,,,,,0,0,0,0d,0d,0d,No,No,No,No,No,No,No,No,No,No,No,0,0,0,0,0,
500,1151,Yes,Auto Scheduled,Run ALE Transaction to QS5 from DS4 130,2h,Fixed Units,5,0.25d,261,"April 6, 2026 8:15","April 6, 2026 10:15",4/6/26 8:15,4/6/26 10:15,4/6/26 8:15,4/6/26 10:15,0h,0h,0ed,1,4/6/26 8:15,4/6/26 10:15,"April 6, 2026 8:15","April 6, 2026 10:15",As Soon As Possible,NA,4/6/26 10:15,4/6/26 10:15,4/2/26 6:13,2h,2h,2h,0,0,0,0,0,1.2.1.38.1,500,No,No,No,,,GreenSquare,,,,,,,,0,0,0,0d,0d,0d,No,No,No,No,No,No,No,No,No,No,No,0,0,0,0,0,
501,1153,Yes,Auto Scheduled,Post Load Validation,3h,Fixed Units,5,0.38d,500,"April 6, 2026 10:15","April 6, 2026 2:15",4/6/26 10:15,4/6/26 2:15,4/6/26 10:15,4/6/26 2:15,0h,0h,0ed,1,4/6/26 10:15,4/6/26 2:15,"April 6, 2026 10:15","April 6, 2026 2:15",As Soon As Possible,NA,4/6/26 2:15,4/6/26 2:15,4/2/26 6:14,3h,3h,3h,0,0,0,0,0,1.2.1.38.2,500,No,No,No,,"Matt Palastro, Dave Duda",GreenSquare,,,,,,,,0,0,0,0d,0d,0d,No,No,No,No,No,No,No,No,No,No,No,0,0,0,0,0,
502,939,Yes,Auto Scheduled,VC_Characteristics,0.63d,Fixed Duration,4,0.63d,,"April 6, 2026 2:15","April 7, 2026 10:15",4/6/26 2:15,4/7/26 10:15,4/6/26 2:15,4/7/26 10:15,0d,0d,0ed,1,4/6/26 2:15,4/7/26 10:15,"April 6, 2026 2:15","April 7, 2026 10:15",As Soon As Possible,NA,4/6/26 4:15,4/6/26 4:15,4/1/26 1:30,5h,5h,5h,0,0,0,0,0,1.2.1.39,500,No,Yes,Yes,,,GreenSquare,,,,,,,,0,0,0,0d,0d,0d,No,No,No,No,No,No,No,No,No,No,No,0,0,0,0,0,
503,1154,Yes,Auto Scheduled,Run ALE Transaction to QS5 from DS4 130,2h,Fixed Units,5,0.25d,501,"April 6, 2026 2:15","April 6, 2026 4:15",4/6/26 2:15,4/6/26 4:15,4/6/26 2:15,4/6/26 4:15,0h,0h,0ed,1,4/6/26 2:15,4/6/26 4:15,"April 6, 2026 2:15","April 6, 2026 4:15",As Soon As Possible,NA,4/6/26 4:15,4/6/26 4:15,4/2/26 6:15,2h,2h,2h,0,0,0,0,0,1.2.1.39.1,500,No,No,No,,,GreenSquare,,,,,,,,0,0,0,0d,0d,0d,No,No,No,No,No,No,No,No,No,No,No,0,0,0,0,0,
504,1155,Yes,Auto Scheduled,Post Load Validation,3h,Fixed Units,5,0.38d,503,"April 6, 2026 4:15","April 7, 2026 10:15",4/6/26 4:15,4/7/26 10:15,4/6/26 4:15,4/7/26 10:15,0h,0h,0ed,1,4/6/26 4:15,4/7/26 10:15,"April 6, 2026 4:15","April 7, 2026 10:15",As Soon As Possible,NA,4/7/26 10:15,4/7/26 10:15,4/2/26 6:15,3h,3h,3h,0,0,0,0,0,1.2.1.39.2,500,No,No,No,,"Matt Palastro, Dave Duda",GreenSquare,,,,,,,,0,0,0,0d,0d,0d,No,No,No,No,No,No,No,No,No,No,No,0,0,0,0,0,
505,940,Yes,Auto Scheduled,VC_Classes,0.63d,Fixed Duration,4,0.63d,,"April 7, 2026 10:15","April 7, 2026 4:15",4/7/26 10:15,4/7/26 4:15,4/7/26 10:15,4/7/26 4:15,0d,0d,0ed,1,4/7/26 10:15,4/7/26 4:15,"April 7, 2026 10:15","April 7, 2026 4:15",As Soon As Possible,NA,4/7/26 1:15,4/7/26 1:15,4/1/26 1:30,5h,5h,5h,0,0,0,0,0,1.2.1.40,500,No,Yes,Yes,,,GreenSquare,,,,,,,,0,0,0,0d,0d,0d,No,No,No,No,No,No,No,No,No,No,No,0,0,0,0,0,
506,1156,Yes,Auto Scheduled,Run ALE Transaction to QS5 from DS4 130,2h,Fixed Units,5,0.25d,504,"April 7, 2026 10:15","April 7, 2026 1:15",4/7/26 10:15,4/7/26 1:15,4/7/26 10:15,4/7/26 1:15,0h,0h,0ed,1,4/7/26 10:15,4/7/26 1:15,"April 7, 2026 10:15","April 7, 2026 1:15",As Soon As Possible,NA,4/7/26 1:15,4/7/26 1:15,4/2/26 6:16,2h,2h,2h,0,0,0,0,0,1.2.1.40.1,500,No,No,No,,,GreenSquare,,,,,,,,0,0,0,0d,0d,0d,No,No,No,No,No,No,No,No,No,No,No,0,0,0,0,0,
507,1157,Yes,Auto Scheduled,Post Load Validation,3h,Fixed Units,5,0.38d,506,"April 7, 2026 1:15","April 7, 2026 4:15",4/7/26 1:15,4/7/26 4:15,4/7/26 1:15,4/7/26 4:15,0h,0h,0ed,1,4/7/26 1:15,4/7/26 4:15,"April 7, 2026 1:15","April 7, 2026 4:15",As Soon As Possible,NA,4/7/26 4:15,4/7/26 4:15,4/2/26 6:16,3h,3h,3h,0,0,0,0,0,1.2.1.40.2,500,No,No,No,,"Matt Palastro, Dave Duda",GreenSquare,,,,,,,,0,0,0,0d,0d,0d,No,No,No,No,No,No,No,No,No,No,No,0,0,0,0,0,
508,941,Yes,Auto Scheduled,VC_Classification (Class Type 200),0.63d,Fixed Duration,4,0.63d,,"April 15, 2026 3:15","April 16, 2026 11:15",4/15/26 3:15,4/16/26 11:15,4/15/26 3:15,4/16/26 11:15,0d,0d,0ed,1,4/15/26 3:15,4/16/26 11:15,"April 15, 2026 3:15","April 16, 2026 11:15",As Soon As Possible,NA,4/16/26 8:15,4/16/26 8:15,4/1/26 1:30,5h,5h,5h,0,0,0,0,0,1.2.1.41,500,No,Yes,Yes,,,GreenSquare,,,,,,,,0,0,0,0d,0d,0d,No,No,No,No,No,No,No,No,No,No,No,0,0,0,0,0,
509,1158,Yes,Auto Scheduled,Run ALE Transaction to QS5 from DS4 130,2h,Fixed Units,5,0.25d,428,"April 15, 2026 3:15","April 16, 2026 8:15",4/15/26 3:15,4/16/26 8:15,4/15/26 3:15,4/16/26 8:15,0h,0h,0ed,1,4/15/26 3:15,4/16/26 8:15,"April 15, 2026 3:15","April 16, 2026 8:15",As Soon As Possible,NA,4/16/26 8:15,4/16/26 8:15,4/2/26 6:16,2h,2h,2h,0,0,0,0,0,1.2.1.41.1,500,No,No,No,,,GreenSquare,,,,,,,,0,0,0,0d,0d,0d,No,No,No,No,No,No,No,No,No,No,No,0,0,0,0,0,
510,1159,Yes,Auto Scheduled,Post Load Validation,3h,Fixed Units,5,0.38d,509,"April 16, 2026 8:15","April 16, 2026 11:15",4/16/26 8:15,4/16/26 11:15,4/16/26 8:15,4/16/26 11:15,0h,0h,0ed,1,4/16/26 8:15,4/16/26 11:15,"April 16, 2026 8:15","April 16, 2026 11:15",As Soon As Possible,NA,4/16/26 11:15,4/16/26 11:15,4/2/26 6:16,3h,3h,3h,0,0,0,0,0,1.2.1.41.2,500,No,No,No,,"Matt Palastro, Dave Duda",GreenSquare,,,,,,,,0,0,0,0d,0d,0d,No,No,No,No,No,No,No,No,No,No,No,0,0,0,0,0,
511,942,Yes,Auto Scheduled,VC_Dependency Nets,0.63d,Fixed Duration,4,0.63d,,"April 15, 2026 3:15","April 16, 2026 11:15",4/15/26 3:15,4/16/26 11:15,4/15/26 3:15,4/16/26 11:15,0d,0d,0ed,1,4/15/26 3:15,4/16/26 11:15,"April 15, 2026 3:15","April 16, 2026 11:15",As Soon As Possible,NA,4/16/26 8:15,4/16/26 8:15,4/1/26 1:30,5h,5h,5h,0,0,0,0,0,1.2.1.42,500,No,Yes,Yes,,,GreenSquare,,,,,,,,0,0,0,0d,0d,0d,No,No,No,No,No,No,No,No,No,No,No,0,0,0,0,0,
512,1160,Yes,Auto Scheduled,Run ALE Transaction to QS5 from DS4 130,2h,Fixed Units,5,0.25d,"507,422","April 15, 2026 3:15","April 16, 2026 8:15",4/15/26 3:15,4/16/26 8:15,4/15/26 3:15,4/16/26 8:15,0h,0h,0ed,1,4/15/26 3:15,4/16/26 8:15,"April 15, 2026 3:15","April 16, 2026 8:15",As Soon As Possible,NA,4/16/26 8:15,4/16/26 8:15,4/2/26 6:17,2h,2h,2h,0,0,0,0,0,1.2.1.42.1,500,No,No,No,,,GreenSquare,,,,,,,,0,0,0,0d,0d,0d,No,No,No,No,No,No,No,No,No,No,No,0,0,0,0,0,
513,1161,Yes,Auto Scheduled,Post Load Validation,3h,Fixed Units,5,0.38d,512,"April 16, 2026 8:15","April 16, 2026 11:15",4/16/26 8:15,4/16/26 11:15,4/16/26 8:15,4/16/26 11:15,0h,0h,0ed,1,4/16/26 8:15,4/16/26 11:15,"April 16, 2026 8:15","April 16, 2026 11:15",As Soon As Possible,NA,4/16/26 11:15,4/16/26 11:15,4/2/26 6:17,3h,3h,3h,0,0,0,0,0,1.2.1.42.2,500,No,No,No,,"Matt Palastro, Dave Duda",GreenSquare,,,,,,,,0,0,0,0d,0d,0d,No,No,No,No,No,No,No,No,No,No,No,0,0,0,0,0,
514,943,Yes,Auto Scheduled,VC_Configuration Profiles,0.63d,Fixed Duration,4,0.63d,,"April 15, 2026 3:15","April 16, 2026 11:15",4/15/26 3:15,4/16/26 11:15,4/15/26 3:15,4/16/26 11:15,0d,0d,0ed,1,4/15/26 3:15,4/16/26 11:15,"April 15, 2026 3:15","April 16, 2026 11:15",As Soon As Possible,NA,4/16/26 8:15,4/16/26 8:15,4/1/26 1:30,5h,5h,5h,0,0,0,0,0,1.2.1.43,500,No,Yes,Yes,,,GreenSquare,,,,,,,,0,0,0,0d,0d,0d,No,No,No,No,No,No,No,No,No,No,No,0,0,0,0,0,
515,1162,Yes,Auto Scheduled,Run ALE Transaction to QS5 from DS4 130,2h,Fixed Units,5,0.25d,422,"April 15, 2026 3:15","April 16, 2026 8:15",4/15/26 3:15,4/16/26 8:15,4/15/26 3:15,4/16/26 8:15,0h,0h,0ed,1,4/15/26 3:15,4/16/26 8:15,"April 15, 2026 3:15","April 16, 2026 8:15",As Soon As Possible,NA,4/16/26 8:15,4/16/26 8:15,4/2/26 6:17,2h,2h,2h,0,0,0,0,0,1.2.1.43.1,500,No,No,No,,,GreenSquare,,,,,,,,0,0,0,0d,0d,0d,No,No,No,No,No,No,No,No,No,No,No,0,0,0,0,0,
516,1163,Yes,Auto Scheduled,Post Load Validation,3h,Fixed Units,5,0.38d,515,"April 16, 2026 8:15","April 16, 2026 11:15",4/16/26 8:15,4/16/26 11:15,4/16/26 8:15,4/16/26 11:15,0h,0h,0ed,1,4/16/26 8:15,4/16/26 11:15,"April 16, 2026 8:15","April 16, 2026 11:15",As Soon As Possible,NA,4/16/26 11:15,4/16/26 11:15,4/2/26 6:17,3h,3h,3h,0,0,0,0,0,1.2.1.43.2,500,No,No,No,,"Matt Palastro, Dave Duda",GreenSquare,,,,,,,,0,0,0,0d,0d,0d,No,No,No,No,No,No,No,No,No,No,No,0,0,0,0,0,
517,944,Yes,Auto Scheduled,VC_Variant Tables,0.63d,Fixed Duration,4,0.63d,,"April 16, 2026 11:15","April 17, 2026 8:15",4/16/26 11:15,4/17/26 8:15,4/16/26 11:15,4/17/26 8:15,0d,0d,0ed,1,4/16/26 11:15,4/17/26 8:15,"April 16, 2026 11:15","April 17, 2026 8:15",As Soon As Possible,NA,4/16/26 2:15,4/16/26 2:15,4/1/26 1:30,5h,5h,5h,0,0,0,0,0,1.2.1.44,500,No,Yes,Yes,,,GreenSquare,,,,,,,,0,0,0,0d,0d,0d,No,No,No,No,No,No,No,No,No,No,No,0,0,0,0,0,
518,1164,Yes,Auto Scheduled,Run ALE Transaction to QS5 from DS4 130,2h,Fixed Units,5,0.25d,516,"April 16, 2026 11:15","April 16, 2026 2:15",4/16/26 11:15,4/16/26 2:15,4/16/26 11:15,4/16/26 2:15,0h,0h,0ed,1,4/16/26 11:15,4/16/26 2:15,"April 16, 2026 11:15","April 16, 2026 2:15",As Soon As Possible,NA,4/16/26 2:15,4/16/26 2:15,4/2/26 6:18,2h,2h,2h,0,0,0,0,0,1.2.1.44.1,500,No,No,No,,,GreenSquare,,,,,,,,0,0,0,0d,0d,0d,No,No,No,No,No,No,No,No,No,No,No,0,0,0,0,0,
519,1165,Yes,Auto Scheduled,Post Load Validation,3h,Fixed Units,5,0.38d,518,"April 16, 2026 2:15","April 17, 2026 8:15",4/16/26 2:15,4/17/26 8:15,4/16/26 2:15,4/17/26 8:15,0h,0h,0ed,1,4/16/26 2:15,4/17/26 8:15,"April 16, 2026 2:15","April 17, 2026 8:15",As Soon As Possible,NA,4/17/26 8:15,4/17/26 8:15,4/2/26 6:18,3h,3h,3h,0,0,0,0,0,1.2.1.44.2,500,No,No,No,,"Matt Palastro, Dave Duda",GreenSquare,,,,,,,,0,0,0,0d,0d,0d,No,No,No,No,No,No,No,No,No,No,No,0,0,0,0,0,
520,945,Yes,Auto Scheduled,VC_Variant Tables Content,0.63d,Fixed Duration,4,0.63d,,"April 17, 2026 8:15","April 17, 2026 2:15",4/17/26 8:15,4/17/26 2:15,4/17/26 8:15,4/17/26 2:15,0d,0d,0ed,1,4/17/26 8:15,4/17/26 2:15,"April 17, 2026 8:15","April 17, 2026 2:15",As Soon As Possible,NA,4/17/26 10:15,4/17/26 10:15,4/1/26 1:30,5h,5h,5h,0,0,0,0,0,1.2.1.45,500,No,Yes,Yes,,,GreenSquare,,,,,,,,0,0,0,0d,0d,0d,No,No,No,No,No,No,No,No,No,No,No,0,0,0,0,0,
521,1166,Yes,Auto Scheduled,Run ALE Transaction to QS5 from DS4 130,2h,Fixed Units,5,0.25d,519,"April 17, 2026 8:15","April 17, 2026 10:15",4/17/26 8:15,4/17/26 10:15,4/17/26 8:15,4/17/26 10:15,0h,0h,0ed,1,4/17/26 8:15,4/17/26 10:15,"April 17, 2026 8:15","April 17, 2026 10:15",As Soon As Possible,NA,4/17/26 10:15,4/17/26 10:15,4/2/26 6:18,2h,2h,2h,0,0,0,0,0,1.2.1.45.1,500,No,No,No,,,GreenSquare,,,,,,,,0,0,0,0d,0d,0d,No,No,No,No,No,No,No,No,No,No,No,0,0,0,0,0,
522,1167,Yes,Auto Scheduled,Post Load Validation,3h,Fixed Units,5,0.38d,521,"April 17, 2026 10:15","April 17, 2026 2:15",4/17/26 10:15,4/17/26 2:15,4/17/26 10:15,4/17/26 2:15,0h,0h,0ed,1,4/17/26 10:15,4/17/26 2:15,"April 17, 2026 10:15","April 17, 2026 2:15",As Soon As Possible,NA,4/17/26 2:15,4/17/26 2:15,4/2/26 6:18,3h,3h,3h,0,0,0,0,0,1.2.1.45.2,500,No,No,No,,"Matt Palastro, Dave Duda",GreenSquare,,,,,,,,0,0,0,0d,0d,0d,No,No,No,No,No,No,No,No,No,No,No,0,0,0,0,0,
523,946,Yes,Auto Scheduled,VC_Characteristic Groups,1.97d,Fixed Duration,4,0.63d,,"April 17, 2026 8:00","April 20, 2026 4:45",4/17/26 8:00,4/20/26 4:45,4/17/26 8:00,4/20/26 4:45,0d,0d,0ed,1,4/17/26 8:00,4/20/26 4:45,"April 16, 2026 11:15","April 17, 2026 8:15",As Soon As Possible,NA,4/20/26 1:45,4/20/26 1:45,4/1/26 1:30,15.75h,5h,15.75h,0,0,0,0,0,1.2.1.46,500,No,Yes,Yes,,,GreenSquare,,,,,,,,0,0,0,0d,0d,0d,No,No,No,No,No,No,No,No,No,No,No,0,0,0,0,0,
524,1168,Yes,Auto Scheduled,Run ALE Transaction to QS5 from DS4 130,12.75h,Fixed Units,5,0.25d,516,"April 17, 2026 8:00","April 20, 2026 1:45",4/17/26 8:00,4/20/26 1:45,4/17/26 8:00,4/20/26 1:45,0h,0h,0ed,1,4/17/26 8:00,4/20/26 1:45,"April 16, 2026 11:15","April 16, 2026 2:15",Finish No Earlier Than,4/17/26 5:00,4/20/26 1:45,4/20/26 1:45,4/2/26 6:18,12.75h,2h,12.75h,0,0,0,0,0,1.2.1.46.1,500,No,No,No,,,GreenSquare,,,,,,,,0,0,0,0d,0d,0d,No,No,No,No,No,No,No,No,No,No,No,0,0,0,0,0,
525,1169,Yes,Auto Scheduled,Post Load Validation,3h,Fixed Units,5,0.38d,524,"April 20, 2026 1:45","April 20, 2026 4:45",4/20/26 1:45,4/20/26 4:45,4/20/26 1:45,4/20/26 4:45,0h,0h,0ed,1,4/20/26 1:45,4/20/26 4:45,"April 16, 2026 2:15","April 17, 2026 8:15",As Soon As Possible,NA,4/20/26 4:45,4/20/26 4:45,4/2/26 6:18,3h,3h,3h,0,0,0,0,0,1.2.1.46.2,500,No,No,No,,"Matt Palastro, Dave Duda",GreenSquare,,,,,,,,0,0,0,0d,0d,0d,No,No,No,No,No,No,No,No,No,No,No,0,0,0,0,0,
526,713,Yes,Auto Scheduled,PTM_CM52_Super_BOM,4.09d,Fixed Duration,4,1.13d,,"April 15, 2026 3:15","April 21, 2026 4:00",4/15/26 3:15,4/21/26 4:00,4/15/26 3:15,4/21/26 4:00,0d,0d,0ed,1,4/15/26 3:15,4/21/26 4:00,"April 15, 2026 3:15","April 16, 2026 4:15",As Soon As Possible,NA,4/15/26 3:45,4/15/26 3:45,3/25/26 2:32,32.75h,9h,32.75h,0,0,0,0,0,1.2.1.47,500,No,Yes,Yes,,,GreenSquare,,,,,,,,0,0,0,0d,0d,0d,Yes,No,No,No,No,No,No,No,No,No,No,0,0,0,0,0,
527,1094,Yes,Auto Scheduled,"Load File Staged and Posted ""Ready""",30m,Fixed Units,5,0.06d,428,"April 15, 2026 3:15","April 15, 2026 3:45",4/15/26 3:15,4/15/26 3:45,4/15/26 3:15,4/15/26 3:45,0m,0m,0ed,1,4/15/26 3:15,4/15/26 3:45,"April 15, 2026 3:15","April 15, 2026 3:45",As Soon As Possible,NA,4/15/26 3:45,4/15/26 3:45,4/2/26 5:35,0.5h,0.5h,0.5h,0,0,0,0,0,1.2.1.47.1,500,No,No,No,,,GreenSquare,,,,,,,,0,0,0,0d,0d,0d,No,No,No,No,No,No,No,No,No,No,No,0,0,0,0,0,
528,1095,Yes,Auto Scheduled,Pre Load Validation,30m,Fixed Units,5,0.06d,527,"April 15, 2026 3:45","April 15, 2026 4:15",4/15/26 3:45,4/15/26 4:15,4/15/26 3:45,4/15/26 4:15,0m,0m,0ed,1,4/15/26 3:45,4/15/26 4:15,"April 15, 2026 3:45","April 15, 2026 4:15",As Soon As Possible,NA,4/15/26 4:15,4/15/26 4:15,4/2/26 5:35,0.5h,0.5h,0.5h,0,0,0,0,0,1.2.1.47.2,500,No,No,No,,"Matt Palastro, Dave Duda",GreenSquare,,,,,,,,0,0,0,0d,0d,0d,No,No,No,No,No,No,No,No,No,No,No,0,0,0,0,0,
529,1096,Yes,Auto Scheduled,Simulate Load,24.75h,Fixed Units,5,0.13d,528,"April 15, 2026 4:15","April 20, 2026 5:00",4/15/26 4:15,4/20/26 5:00,4/15/26 4:15,4/20/26 5:00,0h,0h,0ed,1,4/15/26 4:15,4/20/26 5:00,"April 15, 2026 4:15","April 16, 2026 8:15",Finish No Earlier Than,4/20/26 5:00,4/20/26 5:00,4/20/26 5:00,4/2/26 5:35,24.75h,1h,24.75h,0,0,0,0,0,1.2.1.47.3,500,No,No,No,,"Matt Palastro, Dave Duda",GreenSquare,,,,,,,,0,0,0,0d,0d,0d,No,No,No,No,No,No,No,No,No,No,No,0,0,0,0,0,
530,1097,Yes,Auto Scheduled,Error and Defect Mitigation,2h,Fixed Units,5,0.25d,529,"April 21, 2026 8:00","April 21, 2026 10:00",4/21/26 8:00,4/21/26 10:00,4/21/26 8:00,4/21/26 10:00,0h,0h,0ed,1,4/21/26 8:00,4/21/26 10:00,"April 16, 2026 8:15","April 16, 2026 10:15",Finish No Earlier Than,4/17/26 5:00,4/21/26 10:00,4/21/26 10:00,4/2/26 5:35,2h,2h,2h,0,0,0,0,0,1.2.1.47.4,500,No,No,No,,"Matt Palastro, Dave Duda",GreenSquare,,,,,,,,0,0,0,0d,0d,0d,No,No,No,No,No,No,No,No,No,No,No,0,0,0,0,0,
531,1098,Yes,Auto Scheduled,Load,2h,Fixed Units,5,0.25d,530,"April 21, 2026 10:00","April 21, 2026 12:00",4/21/26 10:00,4/21/26 12:00,4/21/26 10:00,4/21/26 12:00,0h,0h,0ed,1,4/21/26 10:00,4/21/26 12:00,"April 16, 2026 10:15","April 16, 2026 1:15",Start No Earlier Than,4/17/26 8:00,4/21/26 12:00,4/21/26 12:00,4/2/26 5:35,2h,2h,2h,0,0,0,0,0,1.2.1.47.5,500,No,No,No,,,GreenSquare,,,,,,,,0,0,0,0d,0d,0d,No,No,No,No,No,No,No,No,No,No,No,0,0,0,0,0,
532,1099,Yes,Auto Scheduled,Post Load Validation,3h,Fixed Units,5,0.38d,531,"April 21, 2026 1:00","April 21, 2026 4:00",4/21/26 1:00,4/21/26 4:00,4/21/26 1:00,4/21/26 4:00,0h,0h,0ed,1,4/21/26 1:00,4/21/26 4:00,"April 16, 2026 1:15","April 16, 2026 4:15",As Soon As Possible,NA,4/21/26 4:00,4/21/26 4:00,4/2/26 5:35,3h,3h,3h,0,0,0,0,0,1.2.1.47.6,500,No,No,No,,"Matt Palastro, Dave Duda",GreenSquare,,,,,,,,0,0,0,0d,0d,0d,No,No,No,No,No,No,No,No,No,No,No,0,0,0,0,0,
533,714,Yes,Auto Scheduled,PTM_CM53_Super_Routing,2d,Fixed Duration,4,1.13d,,"April 16, 2026 8:00","April 17, 2026 5:00",4/16/26 8:00,4/17/26 5:00,4/16/26 8:00,4/17/26 5:00,0d,0d,0ed,1,4/16/26 8:00,4/17/26 5:00,"April 16, 2026 4:15","April 20, 2026 8:15",As Soon As Possible,NA,4/16/26 4:45,4/16/26 4:45,3/25/26 2:32,9h,9h,9h,0,0,0,0,0,1.2.1.48,500,No,Yes,Yes,,,GreenSquare,,,,,,,,0,0,0,0d,0d,0d,Yes,No,No,No,No,No,No,No,No,No,No,0,0,0,0,0,
534,1100,Yes,Auto Scheduled,"Load File Staged and Posted ""Ready""",30m,Fixed Units,5,0.06d,532,"April 16, 2026 4:15","April 16, 2026 4:45",4/16/26 4:15,4/16/26 4:45,4/16/26 4:15,4/16/26 4:45,0m,0m,0ed,1,4/16/26 4:15,4/16/26 4:45,"April 16, 2026 4:15","April 16, 2026 4:45",As Soon As Possible,NA,4/16/26 4:45,4/16/26 4:45,4/2/26 5:36,0.5h,0.5h,0.5h,0,0,0,0,0,1.2.1.48.1,500,No,No,No,,,GreenSquare,,,,,,,,0,0,0,0d,0d,0d,No,No,No,No,No,No,No,No,No,No,No,0,0,0,0,0,
535,1101,Yes,Auto Scheduled,Pre Load Validation,30m,Fixed Units,5,0.06d,534,"April 16, 2026 4:45","April 17, 2026 8:15",4/16/26 4:45,4/17/26 8:15,4/16/26 4:45,4/17/26 8:15,0m,0m,0ed,1,4/16/26 4:45,4/17/26 8:15,"April 16, 2026 4:45","April 17, 2026 8:15",As Soon As Possible,NA,4/17/26 8:15,4/17/26 8:15,4/2/26 5:36,0.5h,0.5h,0.5h,0,0,0,0,0,1.2.1.48.2,500,No,No,No,,"Matt Palastro, Dave Duda",GreenSquare,,,,,,,,0,0,0,0d,0d,0d,No,No,No,No,No,No,No,No,No,No,No,0,0,0,0,0,
536,1102,Yes,Auto Scheduled,Simulate Load,1h,Fixed Units,5,0.13d,535,"April 16, 2026 8:00","April 17, 2026 9:00",4/16/26 8:00,4/17/26 9:00,4/16/26 8:00,4/17/26 9:00,0h,0h,0ed,1,4/16/26 8:00,4/17/26 9:00,"April 17, 2026 8:15","April 17, 2026 9:15",As Soon As Possible,NA,4/17/26 9:00,4/17/26 9:00,4/2/26 5:36,1h,1h,1h,0,0,0,0,0,1.2.1.48.3,500,No,No,No,,,GreenSquare,,,,,,,,0,0,0,0d,0d,0d,No,No,No,No,No,No,No,No,No,No,No,0,0,0,0,0,
537,1103,Yes,Auto Scheduled,Error and Defect Mitigation,2h,Fixed Units,5,0.25d,536,"April 17, 2026 9:00","April 17, 2026 11:00",4/17/26 9:00,4/17/26 11:00,4/17/26 9:00,4/17/26 11:00,0h,0h,0ed,1,4/17/26 9:00,4/17/26 11:00,"April 17, 2026 9:15","April 17, 2026 11:15",As Soon As Possible,NA,4/17/26 11:00,4/17/26 11:00,4/2/26 5:36,2h,2h,2h,0,0,0,0,0,1.2.1.48.4,500,No,No,No,,"Matt Palastro, Dave Duda",GreenSquare,,,,,,,,0,0,0,0d,0d,0d,No,No,No,No,No,No,No,No,No,No,No,0,0,0,0,0,
538,1104,Yes,Auto Scheduled,Load,2h,Fixed Units,5,0.25d,537,"April 17, 2026 11:00","April 17, 2026 2:00",4/17/26 11:00,4/17/26 2:00,4/17/26 11:00,4/17/26 2:00,0h,0h,0ed,1,4/17/26 11:00,4/17/26 2:00,"April 17, 2026 11:15","April 17, 2026 2:15",As Soon As Possible,NA,4/17/26 2:00,4/17/26 2:00,4/2/26 5:36,2h,2h,2h,0,0,0,0,0,1.2.1.48.5,500,No,No,No,,,GreenSquare,,,,,,,,0,0,0,0d,0d,0d,No,No,No,No,No,No,No,No,No,No,No,0,0,0,0,0,
539,1105,Yes,Auto Scheduled,Post Load Validation,3h,Fixed Units,5,0.38d,538,"April 17, 2026 2:00","April 17, 2026 5:00",4/17/26 2:00,4/17/26 5:00,4/17/26 2:00,4/17/26 5:00,0h,0h,0ed,1,4/17/26 2:00,4/17/26 5:00,"April 17, 2026 2:15","April 20, 2026 8:15",As Soon As Possible,NA,4/17/26 5:00,4/17/26 5:00,4/2/26 5:36,3h,3h,3h,0,0,0,0,0,1.2.1.48.6,500,No,No,No,,"Matt Palastro, Dave Duda",GreenSquare,,,,,,,,0,0,0,0d,0d,0d,No,No,No,No,No,No,No,No,No,No,No,0,0,0,0,0,
540,949,Yes,Auto Scheduled,VC_VK30 Pricing Variant,0.38d,Fixed Duration,4,0.69d,,"April 16, 2026 8:00","April 16, 2026 11:00",4/16/26 8:00,4/16/26 11:00,4/16/26 8:00,4/16/26 11:00,0d,0d,0ed,1,4/16/26 8:00,4/16/26 11:00,"April 17, 2026 2:15","April 20, 2026 10:45",As Soon As Possible,NA,4/16/26 8:30,4/16/26 8:30,4/1/26 1:34,5.5h,5.5h,5.5h,0,0,0,0,0,1.2.1.49,500,No,Yes,Yes,,,GreenSquare,,,,,,,,0,0,0,0d,0d,0d,No,No,No,No,No,No,No,No,No,No,No,0,0,0,0,0,
541,1106,Yes,Auto Scheduled,"Manual File Staged and Posted ""Ready""",30m,Fixed Units,5,0.06d,538,"April 16, 2026 8:00","April 16, 2026 8:30",4/16/26 8:00,4/16/26 8:30,4/16/26 8:00,4/16/26 8:30,0m,0m,0ed,1,4/16/26 8:00,4/16/26 8:30,"April 17, 2026 2:15","April 17, 2026 2:45",Start No Earlier Than,4/6/26 8:00,4/16/26 8:30,4/16/26 8:30,4/2/26 5:37,0.5h,0.5h,0.5h,0,0,0,0,0,1.2.1.49.1,500,No,No,No,,"Matt Palastro, Dave Duda",GreenSquare,,,,,,,,0,0,0,0d,0d,0d,No,No,No,No,No,No,No,No,No,No,No,0,0,0,0,0,
542,1107,Yes,Auto Scheduled,Load,2h,Fixed Units,5,0.25d,541,"April 16, 2026 8:00","April 16, 2026 10:00",4/16/26 8:00,4/16/26 10:00,4/16/26 8:00,4/16/26 10:00,0h,0h,0ed,1,4/16/26 8:00,4/16/26 10:00,"April 17, 2026 2:45","April 17, 2026 4:45",As Soon As Possible,NA,4/16/26 10:00,4/16/26 10:00,4/2/26 5:37,2h,2h,2h,0,0,0,0,0,1.2.1.49.2,500,No,No,No,,,GreenSquare,,,,,,,,0,0,0,0d,0d,0d,No,No,No,No,No,No,No,No,No,No,No,0,0,0,0,0,
543,1108,Yes,Auto Scheduled,Post Load Validation,3h,Fixed Units,5,0.38d,542,"April 16, 2026 8:00","April 16, 2026 11:00",4/16/26 8:00,4/16/26 11:00,4/16/26 8:00,4/16/26 11:00,0h,0h,0ed,1,4/16/26 8:00,4/16/26 11:00,"April 17, 2026 4:45","April 20, 2026 10:45",As Soon As Possible,NA,4/16/26 11:00,4/16/26 11:00,4/2/26 5:37,3h,3h,3h,0,0,0,0,0,1.2.1.49.3,500,No,No,No,,"Matt Palastro, Dave Duda",GreenSquare,,,,,,,,0,0,0,0d,0d,0d,No,No,No,No,No,No,No,No,No,No,No,0,0,0,0,0,
544,951,Yes,Auto Scheduled,OTC_CM22_Pricing_Condition,1.38d,Fixed Duration,4,0.69d,,"April 15, 2026 8:00","April 16, 2026 11:00",4/15/26 8:00,4/16/26 11:00,4/15/26 8:00,4/16/26 11:00,0d,0d,0ed,1,4/15/26 8:00,4/16/26 11:00,"April 20, 2026 10:45","April 21, 2026 8:15",As Soon As Possible,NA,4/15/26 8:30,4/15/26 8:30,3/25/26 2:32,8.5h,5.5h,8.5h,0,0,0,0,0,1.2.1.50,500,No,Yes,Yes,,,GreenSquare,,,,,,,,0,0,0,0d,0d,0d,No,No,No,No,No,No,No,No,No,No,No,0,0,0,0,0,
545,1109,Yes,Auto Scheduled,"Manual File Staged and Posted ""Ready""",30m,Fixed Units,5,0.06d,543,"April 15, 2026 8:00","April 15, 2026 8:30",4/15/26 8:00,4/15/26 8:30,4/15/26 8:00,4/15/26 8:30,0m,0m,0ed,1,4/15/26 8:00,4/15/26 8:30,"April 20, 2026 10:45","April 20, 2026 11:15",Start No Earlier Than,4/6/26 8:00,4/15/26 8:30,4/15/26 8:30,4/2/26 5:38,0.5h,0.5h,0.5h,0,0,0,0,0,1.2.1.50.1,500,No,No,No,,"Matt Palastro, Dave Duda",GreenSquare,,,,,,,,0,0,0,0d,0d,0d,No,No,No,No,No,No,No,No,No,No,No,0,0,0,0,0,
546,1110,Yes,Auto Scheduled,Load,2h,Fixed Units,5,0.25d,545,"April 15, 2026 8:00","April 15, 2026 10:00",4/15/26 8:00,4/15/26 10:00,4/15/26 8:00,4/15/26 10:00,0h,0h,0ed,1,4/15/26 8:00,4/15/26 10:00,"April 20, 2026 11:15","April 20, 2026 2:15",As Soon As Possible,NA,4/15/26 10:00,4/15/26 10:00,4/2/26 5:38,2h,2h,2h,0,0,0,0,0,1.2.1.50.2,500,No,No,No,,,GreenSquare,,,,,,,,0,0,0,0d,0d,0d,No,No,No,No,No,No,No,No,No,No,No,0,0,0,0,0,
547,1111,Yes,Auto Scheduled,Post Load Validation,3h,Fixed Units,5,0.38d,546,"April 16, 2026 8:00","April 16, 2026 11:00",4/16/26 8:00,4/16/26 11:00,4/16/26 8:00,4/16/26 11:00,0h,0h,0ed,1,4/16/26 8:00,4/16/26 11:00,"April 20, 2026 2:15","April 21, 2026 8:15",As Soon As Possible,NA,4/16/26 11:00,4/16/26 11:00,4/2/26 5:38,6h,3h,6h,0,0,0,0,0,1.2.1.50.3,500,No,No,No,,"Matt Palastro, Dave Duda,kim",GreenSquare,,,,,,,,0,0,0,0d,0d,0d,No,No,No,No,No,No,No,No,No,No,No,0,0,0,0,0,
548,691,Yes,Auto Scheduled,OTC_CM21_CMIR,2.72d,Fixed Duration,4,1.13d,,"April 16, 2026 8:00","April 20, 2026 2:45",4/16/26 8:00,4/20/26 2:45,4/16/26 8:00,4/20/26 2:45,0d,0d,0ed,1,4/16/26 8:00,4/20/26 2:45,"April 20, 2026 2:15","April 21, 2026 3:15",As Soon As Possible,NA,4/16/26 8:00,4/16/26 8:00,3/25/26 2:32,4h,9h,4h,0,0,0,0,0,1.2.1.51,500,No,Yes,Yes,,,GreenSquare,,,,,,,,0,0,0,0d,0d,0d,No,No,No,No,No,No,No,No,No,No,No,0,0,0,0,0,
549,1112,Yes,Auto Scheduled,"Load File Staged and Posted ""Ready""",30m,Fixed Units,5,0.06d,"546,557","April 20, 2026 2:15","April 20, 2026 2:45",4/20/26 2:15,4/20/26 2:45,4/20/26 2:15,4/20/26 2:45,0m,0m,0ed,1,4/20/26 2:15,4/20/26 2:45,"April 20, 2026 2:15","April 20, 2026 2:45",As Soon As Possible,NA,4/20/26 2:45,4/20/26 2:45,4/2/26 5:40,0.5h,0.5h,0.5h,0,0,0,0,0,1.2.1.51.1,500,No,No,No,,,GreenSquare,,,,,,,,0,0,0,0d,0d,0d,No,No,No,No,No,No,No,No,No,No,No,0,0,0,0,0,
550,1113,Yes,Auto Scheduled,Pre Load Validation,30m,Fixed Units,5,0.06d,549,"April 16, 2026 8:00","April 16, 2026 8:30",4/16/26 8:00,4/16/26 8:30,4/16/26 8:00,4/16/26 8:30,0m,0m,0ed,1,4/16/26 8:00,4/16/26 8:30,"April 20, 2026 2:45","April 20, 2026 3:15",As Soon As Possible,NA,4/16/26 8:30,4/16/26 8:30,4/2/26 5:40,0.5h,0.5h,0.5h,0,0,0,0,0,1.2.1.51.2,500,No,No,No,,Kim,GreenSquare,,,,,,,,0,0,0,0d,0d,0d,No,No,No,No,No,No,No,No,No,No,No,0,0,0,0,0,
551,1114,Yes,Auto Scheduled,Simulate Load,0h,Fixed Units,5,0.13d,550,"April 16, 2026 8:00","April 16, 2026 8:00",4/16/26 8:00,4/16/26 8:00,4/16/26 8:00,4/16/26 8:00,0h,0h,0ed,1,4/16/26 8:00,4/16/26 8:00,"April 20, 2026 3:15","April 20, 2026 4:15",As Soon As Possible,NA,4/16/26 8:00,4/16/26 8:00,4/2/26 5:40,0h,1h,0h,0,0,0,0,0,1.2.1.51.3,500,Yes,No,No,,,GreenSquare,,,,,,,,0,0,0,0d,0d,0d,No,No,No,No,No,No,No,No,No,No,No,0,0,0,0,0,
552,1115,Yes,Auto Scheduled,Error and Defect Mitigation,0h,Fixed Units,5,0.25d,551,"April 16, 2026 8:00","April 16, 2026 8:00",4/16/26 8:00,4/16/26 8:00,4/16/26 8:00,4/16/26 8:00,0h,0h,0ed,1,4/16/26 8:00,4/16/26 8:00,"April 20, 2026 4:15","April 21, 2026 9:15",As Soon As Possible,NA,4/16/26 8:00,4/16/26 8:00,4/2/26 5:40,0h,2h,0h,0,0,0,0,0,1.2.1.51.4,500,Yes,No,No,,Kim,GreenSquare,,,,,,,,0,0,0,0d,0d,0d,No,No,No,No,No,No,No,No,No,No,No,0,0,0,0,0,
553,1116,Yes,Auto Scheduled,Load,0h,Fixed Units,5,0.25d,552,"April 16, 2026 8:00","April 16, 2026 8:00",4/16/26 8:00,4/16/26 8:00,4/16/26 8:00,4/16/26 8:00,0h,0h,0ed,1,4/16/26 8:00,4/16/26 8:00,"April 21, 2026 9:15","April 21, 2026 11:15",As Soon As Possible,NA,4/16/26 8:00,4/16/26 8:00,4/2/26 5:40,0h,2h,0h,0,0,0,0,0,1.2.1.51.5,500,Yes,No,No,,,GreenSquare,,,,,,,,0,0,0,0d,0d,0d,No,No,No,No,No,No,No,No,No,No,No,0,0,0,0,0,
554,1117,Yes,Auto Scheduled,Post Load Validation,3h,Fixed Units,5,0.38d,553,"April 16, 2026 8:00","April 16, 2026 11:00",4/16/26 8:00,4/16/26 11:00,4/16/26 8:00,4/16/26 11:00,0h,0h,0ed,1,4/16/26 8:00,4/16/26 11:00,"April 21, 2026 11:15","April 21, 2026 3:15",As Soon As Possible,NA,4/16/26 11:00,4/16/26 11:00,4/2/26 5:40,3h,3h,3h,0,0,0,0,0,1.2.1.51.6,500,No,No,No,,Kim,GreenSquare,,,,,,,,0,0,0,0d,0d,0d,No,No,No,No,No,No,No,No,No,No,No,0,0,0,0,0,
555,704,Yes,Auto Scheduled,PTP_CM29_Source_List,1.41d,Fixed Duration,4,0.94d,,"April 17, 2026 8:00","April 20, 2026 11:15",4/17/26 8:00,4/20/26 11:15,4/17/26 8:00,4/20/26 11:15,0d,0d,0ed,1,4/17/26 8:00,4/20/26 11:15,"April 13, 2026 10:45","April 14, 2026 10:15",As Soon As Possible,NA,4/17/26 8:30,4/17/26 8:30,3/25/26 2:32,5.5h,5.5h,5.5h,0,0,0,0,0,1.2.1.52,500,No,Yes,Yes,,,GreenSquare,,,,,,,,0,0,0,0d,0d,0d,No,No,No,No,No,No,No,No,No,No,No,0,0,0,0,0,
556,1118,Yes,Auto Scheduled,"Manual File Staged and Posted ""Ready""",30m,Fixed Units,5,0.06d,"399,406","April 17, 2026 8:00","April 17, 2026 8:30",4/17/26 8:00,4/17/26 8:30,4/17/26 8:00,4/17/26 8:30,0m,0m,0ed,1,4/17/26 8:00,4/17/26 8:30,"April 14, 2026 9:45","April 14, 2026 10:15",Start No Earlier Than,4/17/26 8:00,4/17/26 8:30,4/17/26 8:30,4/2/26 5:41,0.5h,0.5h,0.5h,0,0,0,0,0,1.2.1.52.1,500,No,No,No,,Sam,GreenSquare,,,,,,,,0,0,0,0d,0d,0d,No,No,No,No,No,No,No,No,No,No,No,0,0,0,0,0,
557,1119,Yes,Auto Scheduled,Load,2h,Fixed Units,5,0.25d,375,"April 17, 2026 3:15","April 20, 2026 8:15",4/17/26 3:15,4/20/26 8:15,4/17/26 3:15,4/20/26 8:15,0h,0h,0ed,1,4/17/26 3:15,4/20/26 8:15,"April 13, 2026 10:45","April 13, 2026 1:45",Finish No Earlier Than,4/17/26 5:00,4/20/26 8:15,4/20/26 8:15,4/2/26 5:41,2h,2h,2h,0,0,0,0,0,1.2.1.52.2,500,No,No,No,,,GreenSquare,,,,,,,,0,0,0,0d,0d,0d,No,No,No,No,No,No,No,No,No,No,No,0,0,0,0,0,
558,1120,Yes,Auto Scheduled,Post Load Validation,3h,Fixed Units,5,0.38d,557,"April 20, 2026 8:15","April 20, 2026 11:15",4/20/26 8:15,4/20/26 11:15,4/20/26 8:15,4/20/26 11:15,0h,0h,0ed,1,4/20/26 8:15,4/20/26 11:15,"April 13, 2026 1:45","April 13, 2026 4:45",As Soon As Possible,NA,4/20/26 11:15,4/20/26 11:15,4/2/26 5:41,3h,3h,3h,0,0,0,0,0,1.2.1.52.3,500,No,No,No,,Sam,GreenSquare,,,,,,,,0,0,0,0d,0d,0d,No,No,No,No,No,No,No,No,No,No,No,0,0,0,0,0,
559,702,Yes,Auto Scheduled,RTR_CM11_Asset_Master,6.63d,Fixed Duration,4,1.13d,,"April 15, 2026 8:00","April 23, 2026 2:00",4/15/26 8:00,4/23/26 2:00,4/15/26 8:00,4/23/26 2:00,0d,0d,0ed,1,4/15/26 8:00,4/23/26 2:00,"April 10, 2026 9:45","April 13, 2026 10:45",As Soon As Possible,NA,4/15/26 8:30,4/15/26 8:30,3/25/26 2:32,53.5h,9h,53.5h,0,0,0,0,0,1.2.1.53,500,No,Yes,Yes,,,GreenSquare,,,,,,,,0,0,0,0d,0d,0d,No,No,No,No,No,No,No,No,No,No,No,0,0,0,0,0,
560,1121,Yes,Auto Scheduled,"Load File Staged and Posted ""Ready""",30m,Fixed Units,5,0.06d,,"April 15, 2026 8:00","April 15, 2026 8:30",4/15/26 8:00,4/15/26 8:30,4/15/26 8:00,4/15/26 8:30,0m,0m,0ed,1,4/15/26 8:00,4/15/26 8:30,"April 10, 2026 9:45","April 10, 2026 10:15",Start No Earlier Than,4/15/26 8:00,4/15/26 8:30,4/15/26 8:30,4/2/26 5:43,0.5h,0.5h,0.5h,0,0,0,0,0,1.2.1.53.1,500,No,No,No,,,GreenSquare,,,,,,,,0,0,0,0d,0d,0d,No,No,No,No,No,No,No,No,No,No,No,0,0,0,0,0,
561,1122,Yes,Auto Scheduled,Pre Load Validation,30m,Fixed Units,5,0.06d,560,"April 15, 2026 8:30","April 15, 2026 9:00",4/15/26 8:30,4/15/26 9:00,4/15/26 8:30,4/15/26 9:00,0m,0m,0ed,1,4/15/26 8:30,4/15/26 9:00,"April 10, 2026 10:15","April 10, 2026 10:45",As Soon As Possible,NA,4/15/26 9:00,4/15/26 9:00,4/2/26 5:43,1h,0.5h,1h,0,0,0,0,0,1.2.1.53.2,500,No,No,No,,Brian Wagner,GreenSquare,,,,,,,,0,0,0,0d,0d,0d,No,No,No,No,No,No,No,No,No,No,No,0,0,0,0,0,
562,1123,Yes,Auto Scheduled,Simulate Load,31h,Fixed Units,5,0.13d,561,"April 15, 2026 9:00","April 20, 2026 5:00",4/15/26 9:00,4/20/26 5:00,4/15/26 9:00,4/20/26 5:00,0h,0h,0ed,1,4/15/26 9:00,4/20/26 5:00,"April 10, 2026 10:45","April 10, 2026 11:45",Finish No Earlier Than,4/20/26 5:00,4/20/26 5:00,4/20/26 5:00,4/2/26 5:43,31h,1h,31h,0,0,0,0,0,1.2.1.53.3,500,No,No,No,,,GreenSquare,,,,,,,,0,0,0,0d,0d,0d,No,No,No,No,No,No,No,No,No,No,No,0,0,0,0,0,
563,1124,Yes,Auto Scheduled,Error and Defect Mitigation,16h,Fixed Units,5,0.25d,562,"April 21, 2026 8:00","April 22, 2026 5:00",4/21/26 8:00,4/22/26 5:00,4/21/26 8:00,4/22/26 5:00,0h,0h,0ed,1,4/21/26 8:00,4/22/26 5:00,"April 10, 2026 11:45","April 10, 2026 2:45",Finish No Earlier Than,4/17/26 5:00,4/22/26 5:00,4/22/26 5:00,4/2/26 5:43,16h,2h,16h,0,0,0,0,0,1.2.1.53.4,500,No,No,No,,Brian Wagner,GreenSquare,,,,,,,,0,0,0,0d,0d,0d,No,No,No,No,No,No,No,No,No,No,No,0,0,0,0,0,
564,1125,Yes,Auto Scheduled,Load,2h,Fixed Units,5,0.25d,563,"April 23, 2026 8:00","April 23, 2026 10:00",4/23/26 8:00,4/23/26 10:00,4/23/26 8:00,4/23/26 10:00,0h,0h,0ed,1,4/23/26 8:00,4/23/26 10:00,"April 10, 2026 2:45","April 10, 2026 4:45",Start No Earlier Than,4/17/26 8:00,4/23/26 10:00,4/23/26 10:00,4/2/26 5:43,2h,2h,2h,0,0,0,0,0,1.2.1.53.5,500,No,No,No,,,GreenSquare,,,,,,,,0,0,0,0d,0d,0d,No,No,No,No,No,No,No,No,No,No,No,0,0,0,0,0,
565,1126,Yes,Auto Scheduled,Post Load Validation,3h,Fixed Units,5,0.38d,564,"April 23, 2026 10:00","April 23, 2026 2:00",4/23/26 10:00,4/23/26 2:00,4/23/26 10:00,4/23/26 2:00,0h,0h,0ed,1,4/23/26 10:00,4/23/26 2:00,"April 10, 2026 4:45","April 13, 2026 10:45",As Soon As Possible,NA,4/23/26 2:00,4/23/26 2:00,4/2/26 5:43,3h,3h,3h,0,0,0,0,0,1.2.1.53.6,500,No,No,No,,Brian Wagner,GreenSquare,,,,,,,,0,0,0,0d,0d,0d,No,No,No,No,No,No,No,No,No,No,No,0,0,0,0,0,
566,712,Yes,Auto Scheduled,PTM_CM50_Material Class,2.66d,Fixed Duration,4,0.25d,,"April 16, 2026 10:45","April 20, 2026 5:00",4/16/26 10:45,4/20/26 5:00,4/16/26 10:45,4/20/26 5:00,0d,0d,0ed,1,4/16/26 10:45,4/20/26 5:00,"April 16, 2026 10:45","April 16, 2026 1:45",As Soon As Possible,NA,4/16/26 11:15,4/16/26 11:15,3/25/26 2:32,17h,2h,17h,0,0,0,0,0,1.2.1.54,500,No,Yes,Yes,,,GreenSquare,,,,,,,,0,0,0,0d,0d,0d,No,No,No,No,No,No,No,No,No,No,No,0,0,0,0,0,
567,1127,Yes,Auto Scheduled,"Manual File Staged and Posted ""Ready""",30m,Fixed Units,5,0.06d,472,"April 16, 2026 10:45","April 16, 2026 11:15",4/16/26 10:45,4/16/26 11:15,4/16/26 10:45,4/16/26 11:15,0m,0m,0ed,1,4/16/26 10:45,4/16/26 11:15,"April 16, 2026 10:45","April 16, 2026 11:15",As Soon As Possible,NA,4/16/26 11:15,4/16/26 11:15,4/2/26 5:46,0.5h,0.5h,0.5h,0,0,0,0,0,1.2.1.54.1,500,No,No,No,,,GreenSquare,,,,,,,,0,0,0,0d,0d,0d,No,No,No,No,No,No,No,No,No,No,No,0,0,0,0,0,
568,1128,Yes,Auto Scheduled,Load,30m,Fixed Units,5,0.06d,567,"April 16, 2026 11:15","April 16, 2026 11:45",4/16/26 11:15,4/16/26 11:45,4/16/26 11:15,4/16/26 11:45,0m,0m,0ed,1,4/16/26 11:15,4/16/26 11:45,"April 16, 2026 11:15","April 16, 2026 11:45",As Soon As Possible,NA,4/16/26 11:45,4/16/26 11:45,4/2/26 5:46,0.5h,0.5h,0.5h,0,0,0,0,0,1.2.1.54.2,500,No,No,No,,"Matt Palastro, Dave Duda",GreenSquare,,,,,,,,0,0,0,0d,0d,0d,No,No,No,No,No,No,No,No,No,No,No,0,0,0,0,0,
569,1129,Yes,Auto Scheduled,Post Load Validation,16h,Fixed Units,5,0.13d,568,"April 17, 2026 8:00","April 20, 2026 5:00",4/17/26 8:00,4/20/26 5:00,4/17/26 8:00,4/20/26 5:00,0h,0h,0ed,1,4/17/26 8:00,4/20/26 5:00,"April 16, 2026 11:45","April 16, 2026 1:45",Finish No Earlier Than,4/20/26 5:00,4/20/26 5:00,4/20/26 5:00,4/2/26 5:46,16h,1h,16h,0,0,0,0,0,1.2.1.54.3,500,No,No,No,,brad,GreenSquare,,,,,,,,0,0,0,0d,0d,0d,No,No,No,No,No,No,No,No,No,No,No,0,0,0,0,0,
570,715,Yes,Auto Scheduled,PTM_CM55_Class assignment to materials,1.13d,Fixed Duration,4,1.13d,,"April 16, 2026 11:15","April 17, 2026 1:15",4/16/26 11:15,4/17/26 1:15,4/16/26 11:15,4/17/26 1:15,0d,0d,0ed,1,4/16/26 11:15,4/17/26 1:15,"April 16, 2026 11:15","April 17, 2026 1:15",As Soon As Possible,NA,4/16/26 11:45,4/16/26 11:45,3/25/26 2:32,9h,9h,9h,0,0,0,0,0,1.2.1.55,500,No,Yes,Yes,,,GreenSquare,,,,,,,,0,0,0,0d,0d,0d,No,No,No,No,No,No,No,No,No,No,No,0,0,0,0,0,
571,1133,Yes,Auto Scheduled,"Load File Staged and Posted ""Ready""",30m,Fixed Units,5,0.06d,567,"April 16, 2026 11:15","April 16, 2026 11:45",4/16/26 11:15,4/16/26 11:45,4/16/26 11:15,4/16/26 11:45,0m,0m,0ed,1,4/16/26 11:15,4/16/26 11:45,"April 16, 2026 11:15","April 16, 2026 11:45",As Soon As Possible,NA,4/16/26 11:45,4/16/26 11:45,4/2/26 5:49,0.5h,0.5h,0.5h,0,0,0,0,0,1.2.1.55.1,500,No,No,No,,,GreenSquare,,,,,,,,0,0,0,0d,0d,0d,No,No,No,No,No,No,No,No,No,No,No,0,0,0,0,0,
572,1134,Yes,Auto Scheduled,Pre Load Validation,30m,Fixed Units,5,0.06d,571,"April 16, 2026 11:45","April 16, 2026 1:15",4/16/26 11:45,4/16/26 1:15,4/16/26 11:45,4/16/26 1:15,0m,0m,0ed,1,4/16/26 11:45,4/16/26 1:15,"April 16, 2026 11:45","April 16, 2026 1:15",As Soon As Possible,NA,4/16/26 1:15,4/16/26 1:15,4/2/26 5:49,0.5h,0.5h,0.5h,0,0,0,0,0,1.2.1.55.2,500,No,No,No,,"Matt Palastro, Dave Duda",GreenSquare,,,,,,,,0,0,0,0d,0d,0d,No,No,No,No,No,No,No,No,No,No,No,0,0,0,0,0,
573,1135,Yes,Auto Scheduled,Simulate Load,1h,Fixed Units,5,0.13d,572,"April 16, 2026 1:15","April 16, 2026 2:15",4/16/26 1:15,4/16/26 2:15,4/16/26 1:15,4/16/26 2:15,0h,0h,0ed,1,4/16/26 1:15,4/16/26 2:15,"April 16, 2026 1:15","April 16, 2026 2:15",As Soon As Possible,NA,4/16/26 2:15,4/16/26 2:15,4/2/26 5:49,1h,1h,1h,0,0,0,0,0,1.2.1.55.3,500,No,No,No,,,GreenSquare,,,,,,,,0,0,0,0d,0d,0d,No,No,No,No,No,No,No,No,No,No,No,0,0,0,0,0,
574,1136,Yes,Auto Scheduled,Error and Defect Mitigation,2h,Fixed Units,5,0.25d,573,"April 16, 2026 2:15","April 16, 2026 4:15",4/16/26 2:15,4/16/26 4:15,4/16/26 2:15,4/16/26 4:15,0h,0h,0ed,1,4/16/26 2:15,4/16/26 4:15,"April 16, 2026 2:15","April 16, 2026 4:15",As Soon As Possible,NA,4/16/26 4:15,4/16/26 4:15,4/2/26 5:49,2h,2h,2h,0,0,0,0,0,1.2.1.55.4,500,No,No,No,,"Matt Palastro, Dave Duda",GreenSquare,,,,,,,,0,0,0,0d,0d,0d,No,No,No,No,No,No,No,No,No,No,No,0,0,0,0,0,
575,1137,Yes,Auto Scheduled,Load,2h,Fixed Units,5,0.25d,574,"April 16, 2026 4:15","April 17, 2026 9:15",4/16/26 4:15,4/17/26 9:15,4/16/26 4:15,4/17/26 9:15,0h,0h,0ed,1,4/16/26 4:15,4/17/26 9:15,"April 16, 2026 4:15","April 17, 2026 9:15",As Soon As Possible,NA,4/17/26 9:15,4/17/26 9:15,4/2/26 5:49,2h,2h,2h,0,0,0,0,0,1.2.1.55.5,500,No,No,No,,,GreenSquare,,,,,,,,0,0,0,0d,0d,0d,No,No,No,No,No,No,No,No,No,No,No,0,0,0,0,0,
576,1138,Yes,Auto Scheduled,Post Load Validation,3h,Fixed Units,5,0.38d,575,"April 17, 2026 9:15","April 17, 2026 1:15",4/17/26 9:15,4/17/26 1:15,4/17/26 9:15,4/17/26 1:15,0h,0h,0ed,1,4/17/26 9:15,4/17/26 1:15,"April 17, 2026 9:15","April 17, 2026 1:15",As Soon As Possible,NA,4/17/26 1:15,4/17/26 1:15,4/2/26 5:49,3h,3h,3h,0,0,0,0,0,1.2.1.55.6,500,No,No,No,,"Matt Palastro, Dave Duda",GreenSquare,,,,,,,,0,0,0,0d,0d,0d,No,No,No,No,No,No,No,No,No,No,No,0,0,0,0,0,
577,952,Yes,Auto Scheduled,GTS - Material initial load from S4 (Run Interface),2.09d,Fixed Duration,4,0.25d,,"April 16, 2026 8:15","April 20, 2026 9:00",4/16/26 8:15,4/20/26 9:00,4/16/26 8:15,4/20/26 9:00,0d,0d,0ed,1,4/16/26 8:15,4/20/26 9:00,"April 16, 2026 8:15","April 16, 2026 10:15",As Soon As Possible,NA,4/17/26 5:00,4/17/26 5:00,4/1/26 1:39,16.75h,2h,16.75h,0,0,0,0,0,1.2.1.56,500,No,Yes,Yes,,,GreenSquare,,,,,,,,0,0,0,0d,0d,0d,No,No,No,No,No,No,No,No,No,No,No,0,0,0,0,0,
578,1171,Yes,Auto Scheduled,Run material interface to GTS,15.75h,Fixed Units,5,0.13d,446,"April 16, 2026 8:15","April 17, 2026 5:00",4/16/26 8:15,4/17/26 5:00,4/16/26 8:15,4/17/26 5:00,0h,0h,0ed,1,4/16/26 8:15,4/17/26 5:00,"April 16, 2026 8:15","April 16, 2026 9:15",Finish No Earlier Than,4/17/26 5:00,4/17/26 5:00,4/17/26 5:00,4/2/26 7:53,15.75h,1h,15.75h,0,0,0,0,0,1.2.1.56.1,500,No,No,No,,,GreenSquare,,,,,,,,0,0,0,0d,0d,0d,No,No,No,No,No,No,No,No,No,No,No,0,0,0,0,0,
579,1173,Yes,Auto Scheduled,Post Load Validation,1h,Fixed Units,5,0.13d,578,"April 20, 2026 8:00","April 20, 2026 9:00",4/20/26 8:00,4/20/26 9:00,4/20/26 8:00,4/20/26 9:00,0h,0h,0ed,1,4/20/26 8:00,4/20/26 9:00,"April 16, 2026 9:15","April 16, 2026 10:15",As Soon As Possible,NA,4/20/26 9:00,4/20/26 9:00,4/2/26 7:55,1h,1h,1h,0,0,0,0,0,1.2.1.56.2,500,No,No,No,,Kim Kolesar,GreenSquare,,,,,,,,0,0,0,0d,0d,0d,No,No,No,No,No,No,No,No,No,No,No,0,0,0,0,0,
580,953,Yes,Auto Scheduled,GTS - Customers  initial load from S4 (Run Interface),4d,Fixed Duration,4,0.25d,,"April 15, 2026 8:00","April 20, 2026 5:00",4/15/26 8:00,4/20/26 5:00,4/15/26 8:00,4/20/26 5:00,0d,0d,0ed,1,4/15/26 8:00,4/20/26 5:00,"April 10, 2026 1:45","April 10, 2026 3:45",As Soon As Possible,NA,4/15/26 9:00,4/15/26 9:00,4/1/26 1:39,2h,2h,2h,0,0,0,0,0,1.2.1.57,500,No,Yes,Yes,,,GreenSquare,,,,,,,,0,0,0,0d,0d,0d,No,No,No,No,No,No,No,No,No,No,No,0,0,0,0,0,
581,1174,Yes,Auto Scheduled,Run material interface to GTS,1h,Fixed Units,5,0.13d,,"April 15, 2026 8:00","April 15, 2026 9:00",4/15/26 8:00,4/15/26 9:00,4/15/26 8:00,4/15/26 9:00,0h,0h,0ed,1,4/15/26 8:00,4/15/26 9:00,"April 10, 2026 1:45","April 10, 2026 2:45",Start No Earlier Than,4/15/26 8:00,4/15/26 9:00,4/15/26 9:00,4/2/26 7:56,1h,1h,1h,0,0,0,0,0,1.2.1.57.1,500,No,No,No,,,GreenSquare,,,,,,,,0,0,0,0d,0d,0d,No,No,No,No,No,No,No,No,No,No,No,0,0,0,0,0,
582,1175,Yes,Auto Scheduled,Post Load Validation,1h,Fixed Units,5,0.13d,581,"April 20, 2026 4:00","April 20, 2026 5:00",4/20/26 4:00,4/20/26 5:00,4/20/26 4:00,4/20/26 5:00,0h,0h,0ed,1,4/20/26 4:00,4/20/26 5:00,"April 10, 2026 2:45","April 10, 2026 3:45",Finish No Earlier Than,4/20/26 5:00,4/20/26 5:00,4/20/26 5:00,4/2/26 7:56,1h,1h,1h,0,0,0,0,0,1.2.1.57.2,500,No,No,No,,Kim Kolesar,GreenSquare,,,,,,,,0,0,0,0d,0d,0d,No,No,No,No,No,No,No,No,No,No,No,0,0,0,0,0,
583,954,Yes,Auto Scheduled,GTS - Vendors  initial load from S4 (Run Interface),0.25d,Fixed Duration,4,0.25d,,"April 16, 2026 4:00","April 17, 2026 9:00",4/16/26 4:00,4/17/26 9:00,4/16/26 4:00,4/17/26 9:00,0d,0d,0ed,1,4/16/26 4:00,4/17/26 9:00,"April 15, 2026 2:00","April 15, 2026 4:00",As Soon As Possible,NA,4/16/26 5:00,4/16/26 5:00,4/1/26 1:39,2h,2h,2h,0,0,0,0,0,1.2.1.58,500,No,Yes,Yes,,,GreenSquare,,,,,,,,0,0,0,0d,0d,0d,No,No,No,No,No,No,No,No,No,No,No,0,0,0,0,0,
584,1176,Yes,Auto Scheduled,Run material interface to GTS,1h,Fixed Units,5,0.13d,389,"April 16, 2026 4:00","April 16, 2026 5:00",4/16/26 4:00,4/16/26 5:00,4/16/26 4:00,4/16/26 5:00,0h,0h,0ed,1,4/16/26 4:00,4/16/26 5:00,"April 15, 2026 2:00","April 15, 2026 3:00",As Soon As Possible,NA,4/16/26 5:00,4/16/26 5:00,4/2/26 7:56,1h,1h,1h,0,0,0,0,0,1.2.1.58.1,500,No,No,No,,,GreenSquare,,,,,,,,0,0,0,0d,0d,0d,No,No,No,No,No,No,No,No,No,No,No,0,0,0,0,0,
585,1177,Yes,Auto Scheduled,Post Load Validation,1h,Fixed Units,5,0.13d,584,"April 17, 2026 8:00","April 17, 2026 9:00",4/17/26 8:00,4/17/26 9:00,4/17/26 8:00,4/17/26 9:00,0h,0h,0ed,1,4/17/26 8:00,4/17/26 9:00,"April 15, 2026 3:00","April 15, 2026 4:00",As Soon As Possible,NA,4/17/26 9:00,4/17/26 9:00,4/2/26 7:56,1h,1h,1h,0,0,0,0,0,1.2.1.58.2,500,No,No,No,,Kim Kolesar,GreenSquare,,,,,,,,0,0,0,0d,0d,0d,No,No,No,No,No,No,No,No,No,No,No,0,0,0,0,0,
586,698,Yes,Auto Scheduled,GTS - ECCN - Create,5.63d,Fixed Duration,4,5.63d,,"April 6, 2026 8:15","April 13, 2026 2:15",4/6/26 8:15,4/13/26 2:15,4/6/26 8:15,4/13/26 2:15,0d,0d,0ed,1,4/6/26 8:15,4/13/26 2:15,"April 6, 2026 8:15","April 13, 2026 2:15",As Soon As Possible,NA,4/6/26 9:15,4/6/26 9:15,3/25/26 2:32,2h,2h,2h,0,0,0,0,0,1.2.1.59,500,No,Yes,Yes,,,GreenSquare,,,,,,,,0,0,0,0d,0d,0d,No,No,No,No,No,No,No,No,No,No,No,0,0,0,0,0,
587,1178,Yes,Auto Scheduled,Load Descartes XML File,1h,Fixed Units,5,0.13d,261,"April 6, 2026 8:15","April 6, 2026 9:15",4/6/26 8:15,4/6/26 9:15,4/6/26 8:15,4/6/26 9:15,0h,0h,0ed,1,4/6/26 8:15,4/6/26 9:15,"April 6, 2026 8:15","April 6, 2026 9:15",As Soon As Possible,NA,4/6/26 9:15,4/6/26 9:15,4/2/26 7:58,1h,1h,1h,0,0,0,0,0,1.2.1.59.1,500,No,No,No,,,GreenSquare,,,,,,,,0,0,0,0d,0d,0d,No,No,No,No,No,No,No,No,No,No,No,0,0,0,0,0,
588,1179,Yes,Auto Scheduled,Post Load Validation,1h,Fixed Units,5,0.13d,584,"April 13, 2026 1:15","April 13, 2026 2:15",4/13/26 1:15,4/13/26 2:15,4/13/26 1:15,4/13/26 2:15,0h,0h,0ed,1,4/13/26 1:15,4/13/26 2:15,"April 13, 2026 1:15","April 13, 2026 2:15",As Soon As Possible,NA,4/13/26 2:15,4/13/26 2:15,4/2/26 7:58,1h,1h,1h,0,0,0,0,0,1.2.1.59.2,500,No,No,No,,Kim Kolesar,GreenSquare,,,,,,,,0,0,0,0d,0d,0d,No,No,No,No,No,No,No,No,No,No,No,0,0,0,0,0,
589,699,Yes,Auto Scheduled,GTS - ECCN - Assign,0.25d,Fixed Duration,4,0.25d,,"April 16, 2026 10:15","April 16, 2026 1:15",4/16/26 10:15,4/16/26 1:15,4/16/26 10:15,4/16/26 1:15,0d,0d,0ed,1,4/16/26 10:15,4/16/26 1:15,"April 16, 2026 10:15","April 16, 2026 1:15",As Soon As Possible,NA,4/16/26 11:15,4/16/26 11:15,3/25/26 2:32,2h,2h,2h,0,0,0,0,0,1.2.1.60,500,No,Yes,Yes,,,GreenSquare,,,,,,,,0,0,0,0d,0d,0d,No,No,No,No,No,No,No,No,No,No,No,0,0,0,0,0,
590,1180,Yes,Auto Scheduled,Load Descartes XML File,1h,Fixed Units,5,0.13d,579,"April 16, 2026 10:15","April 16, 2026 11:15",4/16/26 10:15,4/16/26 11:15,4/16/26 10:15,4/16/26 11:15,0h,0h,0ed,1,4/16/26 10:15,4/16/26 11:15,"April 16, 2026 10:15","April 16, 2026 11:15",Finish No Earlier Than,4/17/26 5:00,4/16/26 11:15,4/16/26 11:15,4/2/26 7:59,1h,1h,1h,0,0,0,0,0,1.2.1.60.1,500,No,No,No,,,GreenSquare,,,,,,,,0,0,0,0d,0d,0d,No,No,No,No,No,No,No,No,No,No,No,0,0,0,0,0,
591,1181,Yes,Auto Scheduled,Post Load Validation,1h,Fixed Units,5,0.13d,590,"April 16, 2026 11:15","April 16, 2026 1:15",4/16/26 11:15,4/16/26 1:15,4/16/26 11:15,4/16/26 1:15,0h,0h,0ed,1,4/16/26 11:15,4/16/26 1:15,"April 16, 2026 11:15","April 16, 2026 1:15",As Soon As Possible,NA,4/16/26 1:15,4/16/26 1:15,4/2/26 7:59,1h,1h,1h,0,0,0,0,0,1.2.1.60.2,500,No,No,No,,Kim Kolesar,GreenSquare,,,,,,,,0,0,0,0d,0d,0d,No,No,No,No,No,No,No,No,No,No,No,0,0,0,0,0,
592,700,Yes,Auto Scheduled,GTS - HTS - Create,0.25d,Fixed Duration,4,0.25d,,"April 6, 2026 8:15","April 6, 2026 10:15",4/6/26 8:15,4/6/26 10:15,4/6/26 8:15,4/6/26 10:15,0d,0d,0ed,1,4/6/26 8:15,4/6/26 10:15,"April 6, 2026 8:15","April 6, 2026 10:15",As Soon As Possible,NA,4/6/26 9:15,4/6/26 9:15,3/25/26 2:32,2h,2h,2h,0,0,0,0,0,1.2.1.61,500,No,Yes,Yes,,,GreenSquare,,,,,,,,0,0,0,0d,0d,0d,No,No,No,No,No,No,No,No,No,No,No,0,0,0,0,0,
593,1182,Yes,Auto Scheduled,Load Descartes XML File,1h,Fixed Units,5,0.13d,261,"April 6, 2026 8:15","April 6, 2026 9:15",4/6/26 8:15,4/6/26 9:15,4/6/26 8:15,4/6/26 9:15,0h,0h,0ed,1,4/6/26 8:15,4/6/26 9:15,"April 6, 2026 8:15","April 6, 2026 9:15",As Soon As Possible,NA,4/6/26 9:15,4/6/26 9:15,4/2/26 8:01,1h,1h,1h,0,0,0,0,0,1.2.1.61.1,500,No,No,No,,,GreenSquare,,,,,,,,0,0,0,0d,0d,0d,No,No,No,No,No,No,No,No,No,No,No,0,0,0,0,0,
594,1183,Yes,Auto Scheduled,Post Load Validation,1h,Fixed Units,5,0.13d,593,"April 6, 2026 9:15","April 6, 2026 10:15",4/6/26 9:15,4/6/26 10:15,4/6/26 9:15,4/6/26 10:15,0h,0h,0ed,1,4/6/26 9:15,4/6/26 10:15,"April 6, 2026 9:15","April 6, 2026 10:15",As Soon As Possible,NA,4/6/26 10:15,4/6/26 10:15,4/2/26 8:01,1h,1h,1h,0,0,0,0,0,1.2.1.61.2,500,No,No,No,,Kim Kolesar,GreenSquare,,,,,,,,0,0,0,0d,0d,0d,No,No,No,No,No,No,No,No,No,No,No,0,0,0,0,0,
595,701,Yes,Auto Scheduled,GTS - HTS - Assign,0.25d,Fixed Duration,4,0.25d,,"April 16, 2026 8:45","April 16, 2026 10:45",4/16/26 8:45,4/16/26 10:45,4/16/26 8:45,4/16/26 10:45,0d,0d,0ed,1,4/16/26 8:45,4/16/26 10:45,"April 16, 2026 8:45","April 16, 2026 10:45",As Soon As Possible,NA,4/16/26 9:45,4/16/26 9:45,3/25/26 2:32,2h,2h,2h,0,0,0,0,0,1.2.1.62,500,No,Yes,Yes,,,GreenSquare,,,,,,,,0,0,0,0d,0d,0d,No,No,No,No,No,No,No,No,No,No,No,0,0,0,0,0,
596,1184,Yes,Auto Scheduled,Load Descartes XML File,1h,Fixed Units,5,0.13d,591,"April 16, 2026 8:45","April 16, 2026 9:45",4/16/26 8:45,4/16/26 9:45,4/16/26 8:45,4/16/26 9:45,0h,0h,0ed,1,4/16/26 8:45,4/16/26 9:45,"April 16, 2026 8:45","April 16, 2026 9:45",As Soon As Possible,NA,4/16/26 9:45,4/16/26 9:45,4/2/26 8:01,1h,1h,1h,0,0,0,0,0,1.2.1.62.1,500,No,No,No,,,GreenSquare,,,,,,,,0,0,0,0d,0d,0d,No,No,No,No,No,No,No,No,No,No,No,0,0,0,0,0,
597,1185,Yes,Auto Scheduled,Post Load Validation,1h,Fixed Units,5,0.13d,596,"April 16, 2026 9:45","April 16, 2026 10:45",4/16/26 9:45,4/16/26 10:45,4/16/26 9:45,4/16/26 10:45,0h,0h,0ed,1,4/16/26 9:45,4/16/26 10:45,"April 16, 2026 9:45","April 16, 2026 10:45",As Soon As Possible,NA,4/16/26 10:45,4/16/26 10:45,4/2/26 8:01,1h,1h,1h,0,0,0,0,0,1.2.1.62.2,500,No,No,No,,Kim Kolesar,GreenSquare,,,,,,,,0,0,0,0d,0d,0d,No,No,No,No,No,No,No,No,No,No,No,0,0,0,0,0,
598,706,Yes,Auto Scheduled,GTS - License - Create,0.25d,Fixed Duration,4,0.25d,,"April 16, 2026 11:45","April 16, 2026 2:45",4/16/26 11:45,4/16/26 2:45,4/16/26 11:45,4/16/26 2:45,0d,0d,0ed,1,4/16/26 11:45,4/16/26 2:45,"April 16, 2026 11:45","April 16, 2026 2:45",As Soon As Possible,NA,4/16/26 1:45,4/16/26 1:45,3/25/26 2:32,2h,2h,2h,0,0,0,0,0,1.2.1.63,500,No,Yes,Yes,,,GreenSquare,,,,,,,,0,0,0,0d,0d,0d,No,No,No,No,No,No,No,No,No,No,No,0,0,0,0,0,
599,1186,Yes,Auto Scheduled,Load Descartes XML File,1h,Fixed Units,5,0.13d,"596,612","April 16, 2026 11:45","April 16, 2026 1:45",4/16/26 11:45,4/16/26 1:45,4/16/26 11:45,4/16/26 1:45,0h,0h,0ed,1,4/16/26 11:45,4/16/26 1:45,"April 16, 2026 11:45","April 16, 2026 1:45",As Soon As Possible,NA,4/16/26 1:45,4/16/26 1:45,4/2/26 8:01,1h,1h,1h,0,0,0,0,0,1.2.1.63.1,500,No,No,No,,,GreenSquare,,,,,,,,0,0,0,0d,0d,0d,No,No,No,No,No,No,No,No,No,No,No,0,0,0,0,0,
600,1187,Yes,Auto Scheduled,Post Load Validation,1h,Fixed Units,5,0.13d,599,"April 16, 2026 1:45","April 16, 2026 2:45",4/16/26 1:45,4/16/26 2:45,4/16/26 1:45,4/16/26 2:45,0h,0h,0ed,1,4/16/26 1:45,4/16/26 2:45,"April 16, 2026 1:45","April 16, 2026 2:45",As Soon As Possible,NA,4/16/26 2:45,4/16/26 2:45,4/2/26 8:01,1h,1h,1h,0,0,0,0,0,1.2.1.63.2,500,No,No,No,,Kim Kolesar,GreenSquare,,,,,,,,0,0,0,0d,0d,0d,No,No,No,No,No,No,No,No,No,No,No,0,0,0,0,0,
601,1213,Yes,Auto Scheduled,Commodity Code/Tarif,2.78d,Fixed Duration,4,0.25d,,"April 16, 2026 10:45","April 21, 2026 9:00",4/16/26 10:45,4/21/26 9:00,4/16/26 10:45,4/21/26 9:00,0d,0d,0ed,1,4/16/26 10:45,4/21/26 9:00,"April 16, 2026 10:45","April 16, 2026 1:45",As Soon As Possible,NA,4/20/26 5:00,4/20/26 5:00,4/7/26 9:27,22.25h,2h,22.25h,0,0,0,0,0,1.2.1.64,500,No,Yes,Yes,,,GreenSquare,,,,,,,,0,0,0,0d,0d,0d,No,No,No,No,No,No,No,No,No,No,No,0,0,0,0,0,
602,1214,Yes,Auto Scheduled,Load,21.25h,Fixed Units,5,0.13d,597,"April 16, 2026 10:45","April 20, 2026 5:00",4/16/26 10:45,4/20/26 5:00,4/16/26 10:45,4/20/26 5:00,0h,0h,0ed,1,4/16/26 10:45,4/20/26 5:00,"April 16, 2026 10:45","April 16, 2026 11:45",Finish No Earlier Than,4/20/26 5:00,4/20/26 5:00,4/20/26 5:00,4/7/26 9:27,21.25h,1h,21.25h,0,0,0,0,0,1.2.1.64.1,500,No,No,No,,,GreenSquare,,,,,,,,0,0,0,0d,0d,0d,No,No,No,No,No,No,No,No,No,No,No,0,0,0,0,0,
603,1215,Yes,Auto Scheduled,Post Load Validation,1h,Fixed Units,5,0.13d,602,"April 21, 2026 8:00","April 21, 2026 9:00",4/21/26 8:00,4/21/26 9:00,4/21/26 8:00,4/21/26 9:00,0h,0h,0ed,1,4/21/26 8:00,4/21/26 9:00,"April 16, 2026 11:45","April 16, 2026 1:45",Start No Earlier Than,4/17/26 8:00,4/21/26 9:00,4/21/26 9:00,4/7/26 9:27,1h,1h,1h,0,0,0,0,0,1.2.1.64.2,500,No,No,No,,Kim Kolesar,GreenSquare,,,,,,,,0,0,0,0d,0d,0d,No,No,No,No,No,No,No,No,No,No,No,0,0,0,0,0,
604,1216,Yes,Auto Scheduled,SPL Master File,1.34d,Fixed Duration,4,0.25d,,"April 15, 2026 8:00","April 16, 2026 10:45",4/15/26 8:00,4/16/26 10:45,4/15/26 8:00,4/16/26 10:45,0d,0d,0ed,1,4/15/26 8:00,4/16/26 10:45,"March 13, 2025 8:00","March 13, 2025 10:00",As Soon As Possible,NA,4/15/26 9:00,4/15/26 9:00,4/7/26 9:30,2h,2h,2h,0,0,0,0,0,1.2.1.65,500,No,Yes,Yes,,,GreenSquare,,,,,,,,0,0,0,0d,0d,0d,No,No,No,No,No,No,No,No,No,No,No,0,0,0,0,0,
605,1217,Yes,Auto Scheduled,Load,1h,Fixed Units,5,0.13d,596,"April 16, 2026 9:45","April 16, 2026 10:45",4/16/26 9:45,4/16/26 10:45,4/16/26 9:45,4/16/26 10:45,0h,0h,0ed,1,4/16/26 9:45,4/16/26 10:45,"March 13, 2025 8:00","March 13, 2025 9:00",As Soon As Possible,NA,4/16/26 10:45,4/16/26 10:45,4/7/26 9:30,1h,1h,1h,0,0,0,0,0,1.2.1.65.1,500,No,No,No,,,GreenSquare,,,,,,,,0,0,0,0d,0d,0d,No,No,No,No,No,No,No,No,No,No,No,0,0,0,0,0,
606,1218,Yes,Auto Scheduled,Post Load Validation,1h,Fixed Units,5,0.13d,605,"April 15, 2026 8:00","April 15, 2026 9:00",4/15/26 8:00,4/15/26 9:00,4/15/26 8:00,4/15/26 9:00,0h,0h,0ed,1,4/15/26 8:00,4/15/26 9:00,"March 13, 2025 9:00","March 13, 2025 10:00",As Soon As Possible,NA,4/15/26 9:00,4/15/26 9:00,4/7/26 9:30,1h,1h,1h,0,0,0,0,0,1.2.1.65.2,500,No,No,No,,Kim Kolesar,GreenSquare,,,,,,,,0,0,0,0d,0d,0d,No,No,No,No,No,No,No,No,No,No,No,0,0,0,0,0,
607,1209,Yes,Auto Scheduled,Initialize Embargo situation,0.59d,Fixed Duration,4,0.38d,,"April 13, 2026 2:15","April 14, 2026 10:00",4/13/26 2:15,4/14/26 10:00,4/13/26 2:15,4/14/26 10:00,0d,0d,0ed,1,4/13/26 2:15,4/14/26 10:00,"April 13, 2026 2:15","April 14, 2026 8:15",As Soon As Possible,NA,4/13/26 3:15,4/13/26 3:15,4/7/26 9:24,3h,3h,3h,0,0,0,0,0,1.2.1.66,500,No,Yes,Yes,,,GreenSquare,,,,,,,,0,0,0,0d,0d,0d,No,No,No,No,No,No,No,No,No,No,No,0,0,0,0,0,
608,1210,Yes,Auto Scheduled,Run report /SAPSLL/EMB_CNTRY_INIT,1h,Fixed Units,5,0.13d,588,"April 13, 2026 2:15","April 13, 2026 3:15",4/13/26 2:15,4/13/26 3:15,4/13/26 2:15,4/13/26 3:15,0h,0h,0ed,1,4/13/26 2:15,4/13/26 3:15,"April 13, 2026 2:15","April 13, 2026 3:15",As Soon As Possible,NA,4/13/26 3:15,4/13/26 3:15,4/7/26 9:24,1h,1h,1h,0,0,0,0,0,1.2.1.66.1,500,No,No,No,,,GreenSquare,,,,,,,,0,0,0,0d,0d,0d,No,No,No,No,No,No,No,No,No,No,No,0,0,0,0,0,
609,1211,Yes,Auto Scheduled,Set Embargo situations,1h,Fixed Units,5,0.13d,608,"April 14, 2026 8:00","April 14, 2026 9:00",4/14/26 8:00,4/14/26 9:00,4/14/26 8:00,4/14/26 9:00,0h,0h,0ed,1,4/14/26 8:00,4/14/26 9:00,"April 13, 2026 3:15","April 13, 2026 4:15",As Soon As Possible,NA,4/14/26 9:00,4/14/26 9:00,4/7/26 9:24,1h,1h,1h,0,0,0,0,0,1.2.1.66.2,500,No,No,No,,,GreenSquare,,,,,,,,0,0,0,0d,0d,0d,No,No,No,No,No,No,No,No,No,No,No,0,0,0,0,0,
610,1212,Yes,Auto Scheduled,Post Load Validation,1h,Fixed Units,5,0.13d,609,"April 14, 2026 9:00","April 14, 2026 10:00",4/14/26 9:00,4/14/26 10:00,4/14/26 9:00,4/14/26 10:00,0h,0h,0ed,1,4/14/26 9:00,4/14/26 10:00,"April 13, 2026 4:15","April 14, 2026 8:15",As Soon As Possible,NA,4/14/26 10:00,4/14/26 10:00,4/7/26 9:26,1h,1h,1h,0,0,0,0,0,1.2.1.66.3,500,No,No,No,,Kim Kolesar,GreenSquare,,,,,,,,0,0,0,0d,0d,0d,No,No,No,No,No,No,No,No,No,No,No,0,0,0,0,0,
611,955,Yes,Auto Scheduled,GTS - SPL (Sanctioned party list),0.25d,Fixed Duration,4,0.25d,,"April 16, 2026 10:45","April 16, 2026 1:45",4/16/26 10:45,4/16/26 1:45,4/16/26 10:45,4/16/26 1:45,0d,0d,0ed,1,4/16/26 10:45,4/16/26 1:45,"April 16, 2026 10:45","April 16, 2026 1:45",As Soon As Possible,NA,4/16/26 11:45,4/16/26 11:45,4/1/26 1:40,2h,2h,2h,0,0,0,0,0,1.2.1.67,500,No,Yes,Yes,,,GreenSquare,,,,,,,,0,0,0,0d,0d,0d,No,No,No,No,No,No,No,No,No,No,No,0,0,0,0,0,
612,1188,Yes,Auto Scheduled,Load Descartes XML File,1h,Fixed Units,5,0.13d,597,"April 16, 2026 10:45","April 16, 2026 11:45",4/16/26 10:45,4/16/26 11:45,4/16/26 10:45,4/16/26 11:45,0h,0h,0ed,1,4/16/26 10:45,4/16/26 11:45,"April 16, 2026 10:45","April 16, 2026 11:45",As Soon As Possible,NA,4/16/26 11:45,4/16/26 11:45,4/2/26 8:02,1h,1h,1h,0,0,0,0,0,1.2.1.67.1,500,No,No,No,,,GreenSquare,,,,,,,,0,0,0,0d,0d,0d,No,No,No,No,No,No,No,No,No,No,No,0,0,0,0,0,
613,1189,Yes,Auto Scheduled,Post Load Validation,1h,Fixed Units,5,0.13d,612,"April 16, 2026 11:45","April 16, 2026 1:45",4/16/26 11:45,4/16/26 1:45,4/16/26 11:45,4/16/26 1:45,0h,0h,0ed,1,4/16/26 11:45,4/16/26 1:45,"April 16, 2026 11:45","April 16, 2026 1:45",As Soon As Possible,NA,4/16/26 1:45,4/16/26 1:45,4/2/26 8:02,1h,1h,1h,0,0,0,0,0,1.2.1.67.2,500,No,No,No,,Kim Kolesar,GreenSquare,,,,,,,,0,0,0,0d,0d,0d,No,No,No,No,No,No,No,No,No,No,No,0,0,0,0,0,
614,950,Yes,Auto Scheduled,RTR_CM17_Project Definition / Builder,1.13d,Fixed Duration,4,5.38d,,"April 20, 2026 8:00","April 21, 2026 9:00",4/20/26 8:00,4/21/26 9:00,4/20/26 8:00,4/21/26 9:00,0d,0d,0ed,1,4/20/26 8:00,4/21/26 9:00,"April 10, 2026 10:15","April 17, 2026 2:15",As Soon As Possible,NA,4/20/26 8:30,4/20/26 8:30,3/25/26 2:32,9h,9h,9h,0,0,0,0,0,1.2.1.68,500,No,Yes,Yes,,,GreenSquare,,,,,,,,0,0,0,0d,0d,0d,No,No,No,No,No,No,No,No,No,No,No,0,0,0,0,0,
615,1139,Yes,Auto Scheduled,"Load File Staged and Posted ""Ready""",30m,Fixed Units,5,0.06d,560,"April 20, 2026 8:00","April 20, 2026 8:30",4/20/26 8:00,4/20/26 8:30,4/20/26 8:00,4/20/26 8:30,0m,0m,0ed,1,4/20/26 8:00,4/20/26 8:30,"April 10, 2026 10:15","April 10, 2026 10:45",Start No Earlier Than,4/20/26 8:00,4/20/26 8:30,4/20/26 8:30,4/2/26 5:52,0.5h,0.5h,0.5h,0,0,0,0,0,1.2.1.68.1,500,No,No,No,,,GreenSquare,,,,,,,,0,0,0,0d,0d,0d,No,No,No,No,No,No,No,No,No,No,No,0,0,0,0,0,
616,1140,Yes,Auto Scheduled,Pre Load Validation,30m,Fixed Units,5,0.06d,615,"April 20, 2026 8:30","April 20, 2026 9:00",4/20/26 8:30,4/20/26 9:00,4/20/26 8:30,4/20/26 9:00,0m,0m,0ed,1,4/20/26 8:30,4/20/26 9:00,"April 10, 2026 10:45","April 10, 2026 11:15",As Soon As Possible,NA,4/20/26 9:00,4/20/26 9:00,4/2/26 5:52,0.5h,0.5h,0.5h,0,0,0,0,0,1.2.1.68.2,500,No,No,No,,Brian Wagner,GreenSquare,,,,,,,,0,0,0,0d,0d,0d,No,No,No,No,No,No,No,No,No,No,No,0,0,0,0,0,
617,1141,Yes,Auto Scheduled,Simulate Load,1h,Fixed Units,5,0.13d,616,"April 20, 2026 9:00","April 20, 2026 10:00",4/20/26 9:00,4/20/26 10:00,4/20/26 9:00,4/20/26 10:00,0h,0h,0ed,1,4/20/26 9:00,4/20/26 10:00,"April 16, 2026 2:15","April 16, 2026 3:15",As Soon As Possible,NA,4/20/26 10:00,4/20/26 10:00,4/2/26 5:52,1h,1h,1h,0,0,0,0,0,1.2.1.68.3,500,No,No,No,,,GreenSquare,,,,,,,,0,0,0,0d,0d,0d,No,No,No,No,No,No,No,No,No,No,No,0,0,0,0,0,
618,1142,Yes,Auto Scheduled,Error and Defect Mitigation,2h,Fixed Units,5,0.25d,617,"April 20, 2026 10:00","April 20, 2026 12:00",4/20/26 10:00,4/20/26 12:00,4/20/26 10:00,4/20/26 12:00,0h,0h,0ed,1,4/20/26 10:00,4/20/26 12:00,"April 16, 2026 3:15","April 17, 2026 8:15",As Soon As Possible,NA,4/20/26 12:00,4/20/26 12:00,4/2/26 5:52,2h,2h,2h,0,0,0,0,0,1.2.1.68.4,500,No,No,No,,Brian Wagner,GreenSquare,,,,,,,,0,0,0,0d,0d,0d,No,No,No,No,No,No,No,No,No,No,No,0,0,0,0,0,
619,1143,Yes,Auto Scheduled,Load,2h,Fixed Units,5,0.25d,618,"April 20, 2026 1:00","April 20, 2026 3:00",4/20/26 1:00,4/20/26 3:00,4/20/26 1:00,4/20/26 3:00,0h,0h,0ed,1,4/20/26 1:00,4/20/26 3:00,"April 17, 2026 8:15","April 17, 2026 10:15",As Soon As Possible,NA,4/20/26 3:00,4/20/26 3:00,4/2/26 5:52,2h,2h,2h,0,0,0,0,0,1.2.1.68.5,500,No,No,No,,,GreenSquare,,,,,,,,0,0,0,0d,0d,0d,No,No,No,No,No,No,No,No,No,No,No,0,0,0,0,0,
620,1144,Yes,Auto Scheduled,Post Load Validation,3h,Fixed Units,5,0.38d,619,"April 20, 2026 3:00","April 21, 2026 9:00",4/20/26 3:00,4/21/26 9:00,4/20/26 3:00,4/21/26 9:00,0h,0h,0ed,1,4/20/26 3:00,4/21/26 9:00,"April 17, 2026 10:15","April 17, 2026 2:15",As Soon As Possible,NA,4/21/26 9:00,4/21/26 9:00,4/2/26 5:52,3h,3h,3h,0,0,0,0,0,1.2.1.68.6,500,No,No,No,,Brian Wagner,GreenSquare,,,,,,,,0,0,0,0d,0d,0d,No,No,No,No,No,No,No,No,No,No,No,0,0,0,0,0,
621,754,Yes,Auto Scheduled,RTR_CM18_WBS Element,1.13d,Fixed Duration,4,5.44d,,"April 20, 2026 8:30","April 21, 2026 9:30",4/20/26 8:30,4/21/26 9:30,4/20/26 8:30,4/21/26 9:30,0d,0d,0ed,1,4/20/26 8:30,4/21/26 9:30,"April 10, 2026 10:45","April 17, 2026 3:15",As Soon As Possible,NA,4/20/26 9:00,4/20/26 9:00,3/25/26 2:32,9h,9h,9h,0,0,0,0,0,1.2.1.69,500,No,Yes,Yes,,,GreenSquare,,,,,,,,0,0,0,0d,0d,0d,No,No,No,No,No,No,No,No,No,No,No,0,0,0,0,0,
622,1145,Yes,Auto Scheduled,"Load File Staged and Posted ""Ready""",30m,Fixed Units,5,0.06d,615,"April 20, 2026 8:30","April 20, 2026 9:00",4/20/26 8:30,4/20/26 9:00,4/20/26 8:30,4/20/26 9:00,0m,0m,0ed,1,4/20/26 8:30,4/20/26 9:00,"April 10, 2026 10:45","April 10, 2026 11:15",Start No Earlier Than,4/17/26 8:00,4/20/26 9:00,4/20/26 9:00,4/2/26 5:53,0.5h,0.5h,0.5h,0,0,0,0,0,1.2.1.69.1,500,No,No,No,,,GreenSquare,,,,,,,,0,0,0,0d,0d,0d,No,No,No,No,No,No,No,No,No,No,No,0,0,0,0,0,
623,1146,Yes,Auto Scheduled,Pre Load Validation,30m,Fixed Units,5,0.06d,622,"April 20, 2026 9:00","April 20, 2026 9:30",4/20/26 9:00,4/20/26 9:30,4/20/26 9:00,4/20/26 9:30,0m,0m,0ed,1,4/20/26 9:00,4/20/26 9:30,"April 10, 2026 11:15","April 10, 2026 11:45",As Soon As Possible,NA,4/20/26 9:30,4/20/26 9:30,4/2/26 5:53,0.5h,0.5h,0.5h,0,0,0,0,0,1.2.1.69.2,500,No,No,No,,Brian Wagner,GreenSquare,,,,,,,,0,0,0,0d,0d,0d,No,No,No,No,No,No,No,No,No,No,No,0,0,0,0,0,
624,1147,Yes,Auto Scheduled,Simulate Load,1h,Fixed Units,5,0.13d,623,"April 20, 2026 9:30","April 20, 2026 10:30",4/20/26 9:30,4/20/26 10:30,4/20/26 9:30,4/20/26 10:30,0h,0h,0ed,1,4/20/26 9:30,4/20/26 10:30,"April 16, 2026 3:15","April 16, 2026 4:15",As Soon As Possible,NA,4/20/26 10:30,4/20/26 10:30,4/2/26 5:53,1h,1h,1h,0,0,0,0,0,1.2.1.69.3,500,No,No,No,,,GreenSquare,,,,,,,,0,0,0,0d,0d,0d,No,No,No,No,No,No,No,No,No,No,No,0,0,0,0,0,
625,1148,Yes,Auto Scheduled,Error and Defect Mitigation,2h,Fixed Units,5,0.25d,624,"April 20, 2026 10:30","April 20, 2026 1:30",4/20/26 10:30,4/20/26 1:30,4/20/26 10:30,4/20/26 1:30,0h,0h,0ed,1,4/20/26 10:30,4/20/26 1:30,"April 16, 2026 4:15","April 17, 2026 9:15",As Soon As Possible,NA,4/20/26 1:30,4/20/26 1:30,4/2/26 5:53,2h,2h,2h,0,0,0,0,0,1.2.1.69.4,500,No,No,No,,Brian Wagner,GreenSquare,,,,,,,,0,0,0,0d,0d,0d,No,No,No,No,No,No,No,No,No,No,No,0,0,0,0,0,
626,1149,Yes,Auto Scheduled,Load,2h,Fixed Units,5,0.25d,625,"April 20, 2026 1:30","April 20, 2026 3:30",4/20/26 1:30,4/20/26 3:30,4/20/26 1:30,4/20/26 3:30,0h,0h,0ed,1,4/20/26 1:30,4/20/26 3:30,"April 17, 2026 9:15","April 17, 2026 11:15",As Soon As Possible,NA,4/20/26 3:30,4/20/26 3:30,4/2/26 5:53,2h,2h,2h,0,0,0,0,0,1.2.1.69.5,500,No,No,No,,,GreenSquare,,,,,,,,0,0,0,0d,0d,0d,No,No,No,No,No,No,No,No,No,No,No,0,0,0,0,0,
627,1150,Yes,Auto Scheduled,Post Load Validation,3h,Fixed Units,5,0.38d,626,"April 20, 2026 3:30","April 21, 2026 9:30",4/20/26 3:30,4/21/26 9:30,4/20/26 3:30,4/21/26 9:30,0h,0h,0ed,1,4/20/26 3:30,4/21/26 9:30,"April 17, 2026 11:15","April 17, 2026 3:15",As Soon As Possible,NA,4/21/26 9:30,4/21/26 9:30,4/2/26 5:53,3h,3h,3h,0,0,0,0,0,1.2.1.69.6,500,No,No,No,,Brian Wagner,GreenSquare,,,,,,,,0,0,0,0d,0d,0d,No,No,No,No,No,No,No,No,No,No,No,0,0,0,0,0,
628,1170,Yes,Auto Scheduled,ITC1 Mock Data Loads Complete,15m,Fixed Units,4,0.03d,,"April 23, 2026 2:00","April 23, 2026 2:15",4/23/26 2:00,4/23/26 2:15,4/23/26 2:00,4/23/26 2:15,0m,0m,0ed,1,4/23/26 2:00,4/23/26 2:15,"April 21, 2026 3:15","April 21, 2026 3:30",As Soon As Possible,NA,4/23/26 2:15,4/23/26 2:15,4/2/26 7:49,0.25h,0.25h,0.25h,0,0,0,0,0,1.2.1.70,500,Yes,No,No,,,GreenSquare,,,,,,,,0,0,0,0d,0d,0d,No,No,No,No,No,No,No,No,No,No,No,0,0,0,0,0,
629,2809,Yes,Auto Scheduled,ITC2 Data Load Tasks QS4,105.63d,Fixed Duration,3,0d,"260,41","May 18, 2026 8:00","October 12, 2026 2:00",5/18/26 8:00,10/12/26 2:00,5/4/26 2:29,6/5/26 4:00,0d,-90.75d,0ed,0,NA,NA,NA,NA,As Soon As Possible,NA,NA,NA,4/23/26 1:03,657.5h,0h,0h,0,0,0,0,0,1.2.2,500,No,Yes,Yes,,,Black,,,,,,,,0,0,0,0d,0d,0d,No,No,No,No,No,No,No,No,No,No,No,0,0,0,0,0,
630,1685,Yes,Auto Scheduled,PMO Authorization to Start Data Loads,2h,Fixed Units,4,0.03d,41,"May 18, 2026 8:00","May 18, 2026 10:00",5/18/26 8:00,5/18/26 10:00,5/18/26 8:00,5/18/26 10:00,0h,0h,0ed,0,NA,NA,"April 6, 2026 8:00","April 6, 2026 8:15",Must Start On,5/18/26 8:00,NA,NA,4/23/26 10:49,2h,0.25h,0h,0,0,0,0,0,1.2.2.1,500,No,No,No,,,Black,,,,,,,,0,0,0,0d,0d,0d,No,No,No,No,No,No,No,No,No,No,No,0,0,0,0,0,
631,2800,Yes,Auto Scheduled,Master Data Loads,9.63d,Fixed Duration,4,0d,630,"May 18, 2026 10:00","May 29, 2026 4:00",5/18/26 10:00,5/29/26 4:00,5/4/26 2:29,5/18/26 10:29,0d,-9.56d,0ed,0,NA,NA,NA,NA,As Soon As Possible,NA,NA,NA,4/23/26 11:42,655.5h,0h,0h,0,0,0,0,0,1.2.2.2,500,No,Yes,Yes,,,Black,,,,,,,,0,0,0,0d,0d,0d,No,No,No,No,No,No,No,No,No,No,No,0,0,0,0,0,
632,1686,Yes,Auto Scheduled,RTR_CM02_Profit Center Hierarchy,0.75d,Fixed Duration,5,0.75d,,"May 18, 2026 10:00","May 18, 2026 5:00",5/18/26 10:00,5/18/26 5:00,5/4/26 2:29,5/5/26 11:29,0d,-9.56d,0ed,0,NA,NA,"April 6, 2026 8:15","April 6, 2026 3:15",As Soon As Possible,NA,NA,NA,4/23/26 10:49,6h,6h,0h,0,0,0,0,0,1.2.2.2.1,500,No,Yes,Yes,,,Black,,,,,,,,0,0,0,0d,0d,0d,No,No,No,No,No,No,No,No,No,No,No,0,0,0,0,0,
633,1687,Yes,Auto Scheduled,"Manual File Staged and Posted ""Ready""",1h,Fixed Units,6,0.13d,,"May 18, 2026 10:00","May 18, 2026 11:00",5/18/26 10:00,5/18/26 11:00,5/4/26 2:29,5/4/26 3:29,0h,-76.52h,0ed,0,NA,NA,"April 6, 2026 8:15","April 6, 2026 9:15",As Soon As Possible,NA,NA,NA,4/23/26 10:49,1h,1h,0h,0,0,0,0,0,1.2.2.2.1.1,500,No,No,No,,,Black,,,,,,,,0,0,0,0d,0d,0d,No,No,No,No,No,No,No,No,No,No,No,0,0,0,0,0,
634,1688,Yes,Auto Scheduled,Load,2h,Fixed Units,6,0.25d,633,"May 18, 2026 11:00","May 18, 2026 2:00",5/18/26 11:00,5/18/26 2:00,5/4/26 3:29,5/5/26 8:29,0h,-76.52h,0ed,0,NA,NA,"April 6, 2026 9:15","April 6, 2026 11:15",As Soon As Possible,NA,NA,NA,4/23/26 10:49,2h,2h,0h,0,0,0,0,0,1.2.2.2.1.2,500,No,No,No,,,Black,,,,,,,,0,0,0,0d,0d,0d,No,No,No,No,No,No,No,No,No,No,No,0,0,0,0,0,
635,1689,Yes,Auto Scheduled,Post Load Validation,3h,Fixed Units,6,0.38d,634,"May 18, 2026 2:00","May 18, 2026 5:00",5/18/26 2:00,5/18/26 5:00,5/5/26 8:29,5/5/26 11:29,0h,-76.52h,0ed,0,NA,NA,"April 6, 2026 11:15","April 6, 2026 3:15",As Soon As Possible,NA,NA,NA,4/23/26 10:49,3h,3h,0h,0,0,0,0,0,1.2.2.2.1.3,500,No,No,No,,Brian Wagner,Black,,,,,,,,0,0,0,0d,0d,0d,No,No,No,No,No,No,No,No,No,No,No,0,0,0,0,0,
636,1690,Yes,Auto Scheduled,RTR_CM03_Cost Center Hierarchy,0.75d,Fixed Duration,5,0.75d,,"May 19, 2026 8:00","May 19, 2026 3:00",5/19/26 8:00,5/19/26 3:00,5/5/26 11:29,5/6/26 9:29,0d,-9.56d,0ed,0,NA,NA,"April 6, 2026 3:15","April 7, 2026 1:15",As Soon As Possible,NA,NA,NA,4/23/26 10:49,6h,6h,0h,0,0,0,0,0,1.2.2.2.2,500,No,Yes,Yes,,,Black,,,,,,,,0,0,0,0d,0d,0d,No,No,No,No,No,No,No,No,No,No,No,0,0,0,0,0,
637,1691,Yes,Auto Scheduled,"Manual File Staged and Posted ""Ready""",1h,Fixed Units,6,0.13d,635,"May 19, 2026 8:00","May 19, 2026 9:00",5/19/26 8:00,5/19/26 9:00,5/5/26 11:29,5/5/26 1:29,0h,-76.52h,0ed,0,NA,NA,"April 6, 2026 3:15","April 6, 2026 4:15",As Soon As Possible,NA,NA,NA,4/23/26 10:49,1h,1h,0h,0,0,0,0,0,1.2.2.2.2.1,500,No,No,No,,,Black,,,,,,,,0,0,0,0d,0d,0d,No,No,No,No,No,No,No,No,No,No,No,0,0,0,0,0,
638,1692,Yes,Auto Scheduled,Load,2h,Fixed Units,6,0.25d,637,"May 19, 2026 9:00","May 19, 2026 11:00",5/19/26 9:00,5/19/26 11:00,5/5/26 1:29,5/5/26 3:29,0h,-76.52h,0ed,0,NA,NA,"April 6, 2026 4:15","April 7, 2026 9:15",As Soon As Possible,NA,NA,NA,4/23/26 10:49,2h,2h,0h,0,0,0,0,0,1.2.2.2.2.2,500,No,No,No,,,Black,,,,,,,,0,0,0,0d,0d,0d,No,No,No,No,No,No,No,No,No,No,No,0,0,0,0,0,
639,1693,Yes,Auto Scheduled,Post Load Validation,3h,Fixed Units,6,0.38d,638,"May 19, 2026 11:00","May 19, 2026 3:00",5/19/26 11:00,5/19/26 3:00,5/5/26 3:29,5/6/26 9:29,0h,-76.52h,0ed,0,NA,NA,"April 7, 2026 9:15","April 7, 2026 1:15",As Soon As Possible,NA,NA,NA,4/23/26 10:49,3h,3h,0h,0,0,0,0,0,1.2.2.2.2.3,500,No,No,No,,Brian Wagner,Black,,,,,,,,0,0,0,0d,0d,0d,No,No,No,No,No,No,No,No,No,No,No,0,0,0,0,0,
640,1694,Yes,Auto Scheduled,RTR_CM01_GL_Account_Master to CC 1000,2.44d,Fixed Duration,5,1.81d,,"May 19, 2026 3:00","May 22, 2026 9:30",5/19/26 3:00,5/22/26 9:30,5/6/26 9:29,5/8/26 1:59,0d,-9.56d,0ed,0,NA,NA,"April 7, 2026 1:15","April 9, 2026 10:45",As Soon As Possible,NA,NA,NA,4/23/26 10:49,16h,16h,0h,0,0,0,0,0,1.2.2.2.3,500,No,Yes,Yes,,,Black,,,,,,,,0,0,0,0d,0d,0d,No,No,No,No,No,No,No,No,No,No,No,0,0,0,0,0,
641,1695,Yes,Auto Scheduled,"Load File Staged and Posted ""Ready""",1h,Fixed Units,6,0.13d,639,"May 19, 2026 3:00","May 19, 2026 4:00",5/19/26 3:00,5/19/26 4:00,5/6/26 9:29,5/6/26 10:29,0h,-76.52h,0ed,0,NA,NA,"April 7, 2026 1:15","April 7, 2026 2:15",As Soon As Possible,NA,NA,NA,4/23/26 10:49,1h,1h,0h,0,0,0,0,0,1.2.2.2.3.1,500,No,No,No,,,Black,,,,,,,,0,0,0,0d,0d,0d,No,No,No,No,No,No,No,No,No,No,No,0,0,0,0,0,
642,1696,Yes,Auto Scheduled,Pre Load Validation,2h,Fixed Units,6,0.25d,641,"May 19, 2026 4:00","May 20, 2026 9:00",5/19/26 4:00,5/20/26 9:00,5/6/26 10:29,5/6/26 1:29,0h,-76.52h,0ed,0,NA,NA,"April 7, 2026 2:15","April 7, 2026 4:15",As Soon As Possible,NA,NA,NA,4/23/26 10:49,2h,2h,0h,0,0,0,0,0,1.2.2.2.3.2,500,No,No,No,,Brian Wagner,Black,,,,,,,,0,0,0,0d,0d,0d,No,No,No,No,No,No,No,No,No,No,No,0,0,0,0,0,
643,1697,Yes,Auto Scheduled,Simulate Load,6h,Fixed Units,6,0.75d,642,"May 20, 2026 9:00","May 20, 2026 4:00",5/20/26 9:00,5/20/26 4:00,5/6/26 1:29,5/7/26 10:29,0h,-76.52h,0ed,0,NA,NA,"April 7, 2026 4:15","April 8, 2026 2:15",As Soon As Possible,NA,NA,NA,4/23/26 10:49,6h,6h,0h,0,0,0,0,0,1.2.2.2.3.3,500,No,No,No,,,Black,,,,,,,,0,0,0,0d,0d,0d,No,No,No,No,No,No,No,No,No,No,No,0,0,0,0,0,
644,1698,Yes,Auto Scheduled,Error and Defect Mitigation,2h,Fixed Units,6,0.25d,643,"May 20, 2026 4:00","May 21, 2026 10:30",5/20/26 4:00,5/21/26 10:30,5/7/26 10:29,5/7/26 2:59,0h,-76.52h,0ed,0,NA,NA,"April 8, 2026 8:15","April 8, 2026 11:45",As Soon As Possible,NA,NA,NA,4/23/26 10:49,2h,2h,0h,0,0,0,0,0,1.2.2.2.3.4,500,No,No,No,,Brian Wagner,Black,,,,,,,,0,0,0,0d,0d,0d,No,No,No,No,No,No,No,No,No,No,No,0,0,0,0,0,
645,1699,Yes,Auto Scheduled,Load,1h,Fixed Units,6,0.13d,644,"May 21, 2026 10:30","May 21, 2026 11:30",5/21/26 10:30,5/21/26 11:30,5/7/26 2:59,5/7/26 3:59,0h,-76.52h,0ed,0,NA,NA,"April 8, 2026 11:45","April 8, 2026 1:45",As Soon As Possible,NA,NA,NA,4/23/26 10:49,1h,1h,0h,0,0,0,0,0,1.2.2.2.3.5,500,No,No,No,,,Black,,,,,,,,0,0,0,0d,0d,0d,No,No,No,No,No,No,No,No,No,No,No,0,0,0,0,0,
646,1700,Yes,Auto Scheduled,Post Load Validation,2h,Fixed Units,6,0.25d,645,"May 21, 2026 11:30","May 21, 2026 2:30",5/21/26 11:30,5/21/26 2:30,5/7/26 3:59,5/8/26 8:59,0h,-76.52h,0ed,0,NA,NA,"April 8, 2026 1:45","April 8, 2026 3:45",As Soon As Possible,NA,NA,NA,4/23/26 10:49,2h,2h,0h,0,0,0,0,0,1.2.2.2.3.6,500,No,No,No,,Brian Wagner,Black,,,,,,,,0,0,0,0d,0d,0d,No,No,No,No,No,No,No,No,No,No,No,0,0,0,0,0,
647,1701,Yes,Auto Scheduled,Extend GL to all Company Codes,2h,Fixed Units,6,0.25d,646,"May 21, 2026 2:30","May 21, 2026 4:30",5/21/26 2:30,5/21/26 4:30,5/8/26 8:59,5/8/26 10:59,0h,-76.52h,0ed,0,NA,NA,"April 8, 2026 3:45","April 9, 2026 8:45",As Soon As Possible,NA,NA,NA,4/23/26 10:49,2h,2h,0h,0,0,0,0,0,1.2.2.2.3.7,500,No,No,No,,,Black,,,,,,,,0,0,0,0d,0d,0d,No,No,No,No,No,No,No,No,No,No,No,0,0,0,0,0,
648,1702,Yes,Auto Scheduled,Post GL Extention Validation,2h,Fixed Units,6,0.25d,647,"May 21, 2026 4:30","May 22, 2026 9:30",5/21/26 4:30,5/22/26 9:30,5/8/26 10:59,5/8/26 1:59,0h,-76.52h,0ed,0,NA,NA,"April 9, 2026 8:45","April 9, 2026 10:45",As Soon As Possible,NA,NA,NA,4/23/26 10:49,0h,0h,0h,0,0,0,0,0,1.2.2.2.3.8,500,No,No,No,,,Black,,,,,,,,0,0,0,0d,0d,0d,No,No,No,No,No,No,No,No,No,No,No,0,0,0,0,0,
649,1703,Yes,Auto Scheduled,RTR_CM05_Profit_Center,1.13d,Fixed Duration,5,1.13d,,"May 19, 2026 8:00","May 20, 2026 9:00",5/19/26 8:00,5/20/26 9:00,5/7/26 8:29,5/8/26 9:29,0d,-7.94d,0ed,0,NA,NA,"April 6, 2026 3:15","April 7, 2026 4:15",As Soon As Possible,NA,NA,NA,4/23/26 10:49,9h,9h,0h,0,0,0,0,0,1.2.2.2.4,500,No,Yes,Yes,,,Black,,,,,,,,0,0,0,0d,0d,0d,No,No,No,No,No,No,No,No,No,No,No,0,0,0,0,0,
650,1704,Yes,Auto Scheduled,"Load File Staged and Posted ""Ready""",1h,Fixed Units,6,0.13d,635,"May 19, 2026 8:00","May 19, 2026 9:00",5/19/26 8:00,5/19/26 9:00,5/7/26 8:29,5/7/26 9:29,0h,-63.52h,0ed,0,NA,NA,"April 6, 2026 3:15","April 6, 2026 4:15",As Soon As Possible,NA,NA,NA,4/23/26 10:49,1h,1h,0h,0,0,0,0,0,1.2.2.2.4.1,500,No,No,No,,,Black,,,,,,,,0,0,0,0d,0d,0d,No,No,No,No,No,No,No,No,No,No,No,0,0,0,0,0,
651,1705,Yes,Auto Scheduled,Pre Load Validation,2h,Fixed Units,6,0.25d,650,"May 19, 2026 9:00","May 19, 2026 11:00",5/19/26 9:00,5/19/26 11:00,5/7/26 9:29,5/7/26 11:29,0h,-63.52h,0ed,0,NA,NA,"April 6, 2026 4:15","April 7, 2026 9:15",As Soon As Possible,NA,NA,NA,4/23/26 10:49,2h,2h,0h,0,0,0,0,0,1.2.2.2.4.2,500,No,No,No,,Brian Wagner,Black,,,,,,,,0,0,0,0d,0d,0d,No,No,No,No,No,No,No,No,No,No,No,0,0,0,0,0,
652,1706,Yes,Auto Scheduled,Simulate Load,1h,Fixed Units,6,0.13d,651,"May 19, 2026 11:00","May 19, 2026 12:00",5/19/26 11:00,5/19/26 12:00,5/7/26 11:29,5/7/26 1:29,0h,-63.52h,0ed,0,NA,NA,"April 7, 2026 9:15","April 7, 2026 10:15",As Soon As Possible,NA,NA,NA,4/23/26 10:49,1h,1h,0h,0,0,0,0,0,1.2.2.2.4.3,500,No,No,No,,,Black,,,,,,,,0,0,0,0d,0d,0d,No,No,No,No,No,No,No,No,No,No,No,0,0,0,0,0,
653,1707,Yes,Auto Scheduled,Error and Defect Mitigation,2h,Fixed Units,6,0.25d,652,"May 19, 2026 1:00","May 19, 2026 3:00",5/19/26 1:00,5/19/26 3:00,5/7/26 1:29,5/7/26 3:29,0h,-63.52h,0ed,0,NA,NA,"April 7, 2026 10:15","April 7, 2026 1:15",As Soon As Possible,NA,NA,NA,4/23/26 10:49,2h,2h,0h,0,0,0,0,0,1.2.2.2.4.4,500,No,No,No,,Brian Wagner,Black,,,,,,,,0,0,0,0d,0d,0d,No,No,No,No,No,No,No,No,No,No,No,0,0,0,0,0,
654,1708,Yes,Auto Scheduled,Load,1h,Fixed Units,6,0.13d,653,"May 19, 2026 3:00","May 19, 2026 4:00",5/19/26 3:00,5/19/26 4:00,5/7/26 3:29,5/7/26 4:29,0h,-63.52h,0ed,0,NA,NA,"April 7, 2026 1:15","April 7, 2026 2:15",As Soon As Possible,NA,NA,NA,4/23/26 10:49,1h,1h,0h,0,0,0,0,0,1.2.2.2.4.5,500,No,No,No,,,Black,,,,,,,,0,0,0,0d,0d,0d,No,No,No,No,No,No,No,No,No,No,No,0,0,0,0,0,
655,1709,Yes,Auto Scheduled,Post Load Validation,2h,Fixed Units,6,0.25d,654,"May 19, 2026 4:00","May 20, 2026 9:00",5/19/26 4:00,5/20/26 9:00,5/7/26 4:29,5/8/26 9:29,0h,-63.52h,0ed,0,NA,NA,"April 7, 2026 2:15","April 7, 2026 4:15",As Soon As Possible,NA,NA,NA,4/23/26 10:49,2h,2h,0h,0,0,0,0,0,1.2.2.2.4.6,500,No,No,No,,Brian Wagner,Black,,,,,,,,0,0,0,0d,0d,0d,No,No,No,No,No,No,No,No,No,No,No,0,0,0,0,0,
656,1710,Yes,Auto Scheduled,RTR_CM04_Cost_Center,1.13d,Fixed Duration,5,1.13d,,"May 20, 2026 9:00","May 21, 2026 10:00",5/20/26 9:00,5/21/26 10:00,5/8/26 9:29,5/11/26 10:29,0d,-7.94d,0ed,0,NA,NA,"April 7, 2026 4:15","April 9, 2026 8:15",As Soon As Possible,NA,NA,NA,4/23/26 10:49,9h,9h,0h,0,0,0,0,0,1.2.2.2.5,500,No,Yes,Yes,,,Black,,,,,,,,0,0,0,0d,0d,0d,No,No,No,No,No,No,No,No,No,No,No,0,0,0,0,0,
657,1711,Yes,Auto Scheduled,"Load File Staged and Posted ""Ready""",1h,Fixed Units,6,0.13d,655,"May 20, 2026 9:00","May 20, 2026 10:00",5/20/26 9:00,5/20/26 10:00,5/8/26 9:29,5/8/26 10:29,0h,-63.52h,0ed,0,NA,NA,"April 7, 2026 4:15","April 8, 2026 8:15",As Soon As Possible,NA,NA,NA,4/23/26 10:49,1h,1h,0h,0,0,0,0,0,1.2.2.2.5.1,500,No,No,No,,,Black,,,,,,,,0,0,0,0d,0d,0d,No,No,No,No,No,No,No,No,No,No,No,0,0,0,0,0,
658,1712,Yes,Auto Scheduled,Pre Load Validation,2h,Fixed Units,6,0.25d,657,"May 20, 2026 10:00","May 20, 2026 12:00",5/20/26 10:00,5/20/26 12:00,5/8/26 10:29,5/8/26 1:29,0h,-63.52h,0ed,0,NA,NA,"April 8, 2026 8:15","April 8, 2026 10:15",As Soon As Possible,NA,NA,NA,4/23/26 10:49,2h,2h,0h,0,0,0,0,0,1.2.2.2.5.2,500,No,No,No,,Brian Wagner,Black,,,,,,,,0,0,0,0d,0d,0d,No,No,No,No,No,No,No,No,No,No,No,0,0,0,0,0,
659,1713,Yes,Auto Scheduled,Simulate Load,1h,Fixed Units,6,0.13d,658,"May 20, 2026 1:00","May 20, 2026 2:00",5/20/26 1:00,5/20/26 2:00,5/8/26 1:29,5/8/26 2:29,0h,-63.52h,0ed,0,NA,NA,"April 8, 2026 10:15","April 8, 2026 11:15",As Soon As Possible,NA,NA,NA,4/23/26 10:49,1h,1h,0h,0,0,0,0,0,1.2.2.2.5.3,500,No,No,No,,,Black,,,,,,,,0,0,0,0d,0d,0d,No,No,No,No,No,No,No,No,No,No,No,0,0,0,0,0,
660,1714,Yes,Auto Scheduled,Error and Defect Mitigation,2h,Fixed Units,6,0.25d,659,"May 20, 2026 2:00","May 20, 2026 4:00",5/20/26 2:00,5/20/26 4:00,5/8/26 2:29,5/8/26 4:29,0h,-63.52h,0ed,0,NA,NA,"April 8, 2026 11:15","April 8, 2026 2:15",As Soon As Possible,NA,NA,NA,4/23/26 10:49,2h,2h,0h,0,0,0,0,0,1.2.2.2.5.4,500,No,No,No,,Brian Wagner,Black,,,,,,,,0,0,0,0d,0d,0d,No,No,No,No,No,No,No,No,No,No,No,0,0,0,0,0,
661,1715,Yes,Auto Scheduled,Load,1h,Fixed Units,6,0.13d,660,"May 20, 2026 4:00","May 20, 2026 5:00",5/20/26 4:00,5/20/26 5:00,5/8/26 4:29,5/11/26 8:29,0h,-63.52h,0ed,0,NA,NA,"April 8, 2026 2:15","April 8, 2026 3:15",As Soon As Possible,NA,NA,NA,4/23/26 10:49,1h,1h,0h,0,0,0,0,0,1.2.2.2.5.5,500,No,No,No,,,Black,,,,,,,,0,0,0,0d,0d,0d,No,No,No,No,No,No,No,No,No,No,No,0,0,0,0,0,
662,1716,Yes,Auto Scheduled,Post Load Validation,2h,Fixed Units,6,0.25d,661,"May 21, 2026 8:00","May 21, 2026 10:00",5/21/26 8:00,5/21/26 10:00,5/11/26 8:29,5/11/26 10:29,0h,-63.52h,0ed,0,NA,NA,"April 8, 2026 3:15","April 9, 2026 8:15",As Soon As Possible,NA,NA,NA,4/23/26 10:49,2h,2h,0h,0,0,0,0,0,1.2.2.2.5.6,500,No,No,No,,Brian Wagner,Black,,,,,,,,0,0,0,0d,0d,0d,No,No,No,No,No,No,No,No,No,No,No,0,0,0,0,0,
663,1717,Yes,Auto Scheduled,Manual Configuration Activities in QS5,5.94d,Fixed Duration,5,7.16d,656,"May 21, 2026 10:00","May 29, 2026 9:30",5/21/26 10:00,5/29/26 9:30,5/11/26 10:29,5/18/26 10:29,0d,-8.88d,0ed,0,NA,NA,"April 6, 2026 1:00","April 15, 2026 2:15",As Soon As Possible,NA,NA,NA,4/23/26 10:49,43h,43h,0h,0,0,0,0,0,1.2.2.2.6,500,No,Yes,Yes,,,Black,,,,,,,,0,0,0,0d,0d,0d,No,No,No,No,No,No,No,No,No,No,No,0,0,0,0,0,
664,1718,Yes,Auto Scheduled,Open Client,30m,Fixed Units,6,0.06d,,"May 21, 2026 10:00","May 21, 2026 10:30",5/21/26 10:00,5/21/26 10:30,5/18/26 9:59,5/18/26 10:29,0m,-1441m,0ed,0,NA,NA,"April 6, 2026 1:00","April 6, 2026 1:30",As Soon As Possible,NA,NA,NA,4/23/26 10:49,0.5h,0.5h,0h,0,0,0,0,0,1.2.2.2.6.1,500,No,No,No,,,Black,,,,,,,,0,0,0,0d,0d,0d,No,No,No,No,No,No,No,No,No,No,No,0,0,0,0,0,
665,1719,Yes,Auto Scheduled,Service Enterprise Setup,5d,Fixed Units,6,5d,"632,636,640","May 22, 2026 9:30","May 29, 2026 9:30",5/22/26 9:30,5/29/26 9:30,5/11/26 10:29,5/18/26 10:29,0d,-8.88d,0ed,0,NA,NA,"April 8, 2026 2:15","April 15, 2026 2:15",As Soon As Possible,NA,NA,NA,4/23/26 10:49,40h,40h,0h,0,0,0,0,0,1.2.2.2.6.2,500,No,No,No,,,Black,,,,,,,,0,0,0,0d,0d,0d,No,No,No,No,No,No,No,No,No,No,No,0,0,0,0,0,
666,1720,Yes,Auto Scheduled,Close Client,30m,Fixed Units,6,0.06d,,"May 21, 2026 10:00","May 21, 2026 10:30",5/21/26 10:00,5/21/26 10:30,5/18/26 9:59,5/18/26 10:29,0m,-1441m,0ed,0,NA,NA,"April 6, 2026 1:00","April 6, 2026 1:30",As Soon As Possible,NA,NA,NA,4/23/26 10:49,0.5h,0.5h,0h,0,0,0,0,0,1.2.2.2.6.3,500,No,No,No,,,Black,,,,,,,,0,0,0,0d,0d,0d,No,No,No,No,No,No,No,No,No,No,No,0,0,0,0,0,
667,1721,Yes,Auto Scheduled,Intercompany Business Partner Setup,2h,Fixed Units,6,0.25d,"632,636,648","May 22, 2026 9:30","May 22, 2026 11:30",5/22/26 9:30,5/22/26 11:30,5/18/26 8:29,5/18/26 10:29,0h,-33.02h,0ed,0,NA,NA,"April 8, 2026 3:45","April 9, 2026 8:45",As Soon As Possible,NA,NA,NA,4/23/26 10:49,2h,2h,0h,0,0,0,0,0,1.2.2.2.6.4,500,No,No,No,,,Black,,,,,,,,0,0,0,0d,0d,0d,No,No,No,No,No,No,No,No,No,No,No,0,0,0,0,0,
668,1722,Yes,Auto Scheduled,RTR_CM09_Activity_Type,1.38d,Fixed Duration,5,1.22d,,"May 21, 2026 2:30","May 25, 2026 8:30",5/21/26 2:30,5/25/26 8:30,5/14/26 4:29,5/18/26 10:29,0d,-4.75d,0ed,0,NA,NA,"April 8, 2026 2:15","April 9, 2026 4:00",As Soon As Possible,NA,NA,NA,4/23/26 10:49,9h,9h,0h,0,0,0,0,0,1.2.2.2.7,500,No,Yes,Yes,,,Black,,,,,,,,0,0,0,0d,0d,0d,No,No,No,No,No,No,No,No,No,No,No,0,0,0,0,0,
669,1723,Yes,Auto Scheduled,"Load File Staged and Posted ""Ready""",1h,Fixed Units,6,0.13d,646,"May 21, 2026 2:30","May 21, 2026 4:45",5/21/26 2:30,5/21/26 4:45,5/14/26 4:29,5/15/26 9:44,0h,-38.02h,0ed,0,NA,NA,"April 8, 2026 2:15","April 8, 2026 4:30",As Soon As Possible,NA,NA,NA,4/23/26 10:49,1h,1h,0h,0,0,0,0,0,1.2.2.2.7.1,500,No,No,No,,,Black,,,,,,,,0,0,0,0d,0d,0d,No,No,No,No,No,No,No,No,No,No,No,0,0,0,0,0,
670,1724,Yes,Auto Scheduled,Pre Load Validation,2h,Fixed Units,6,0.25d,669,"May 21, 2026 4:45","May 22, 2026 10:30",5/21/26 4:45,5/22/26 10:30,5/15/26 9:44,5/15/26 1:29,0h,-38.02h,0ed,0,NA,NA,"April 8, 2026 3:15","April 9, 2026 9:00",As Soon As Possible,NA,NA,NA,4/23/26 10:49,2h,2h,0h,0,0,0,0,0,1.2.2.2.7.2,500,No,No,No,,Brian Wagner,Black,,,,,,,,0,0,0,0d,0d,0d,No,No,No,No,No,No,No,No,No,No,No,0,0,0,0,0,
671,1725,Yes,Auto Scheduled,Simulate Load,1h,Fixed Units,6,0.13d,670,"May 22, 2026 10:30","May 22, 2026 11:30",5/22/26 10:30,5/22/26 11:30,5/15/26 1:29,5/15/26 2:29,0h,-38.02h,0ed,0,NA,NA,"April 9, 2026 9:00","April 9, 2026 10:00",As Soon As Possible,NA,NA,NA,4/23/26 10:49,1h,1h,0h,0,0,0,0,0,1.2.2.2.7.3,500,No,No,No,,,Black,,,,,,,,0,0,0,0d,0d,0d,No,No,No,No,No,No,No,No,No,No,No,0,0,0,0,0,
672,1726,Yes,Auto Scheduled,Error and Defect Mitigation,2h,Fixed Units,6,0.25d,671,"May 22, 2026 11:30","May 22, 2026 2:30",5/22/26 11:30,5/22/26 2:30,5/15/26 2:29,5/15/26 4:29,0h,-38.02h,0ed,0,NA,NA,"April 9, 2026 10:00","April 9, 2026 12:00",As Soon As Possible,NA,NA,NA,4/23/26 10:49,2h,2h,0h,0,0,0,0,0,1.2.2.2.7.4,500,No,No,No,,Brian Wagner,Black,,,,,,,,0,0,0,0d,0d,0d,No,No,No,No,No,No,No,No,No,No,No,0,0,0,0,0,
673,1727,Yes,Auto Scheduled,Load,1h,Fixed Units,6,0.13d,672,"May 22, 2026 2:30","May 22, 2026 3:30",5/22/26 2:30,5/22/26 3:30,5/15/26 4:29,5/18/26 8:29,0h,-38.02h,0ed,0,NA,NA,"April 9, 2026 1:00","April 9, 2026 2:00",As Soon As Possible,NA,NA,NA,4/23/26 10:49,1h,1h,0h,0,0,0,0,0,1.2.2.2.7.5,500,No,No,No,,,Black,,,,,,,,0,0,0,0d,0d,0d,No,No,No,No,No,No,No,No,No,No,No,0,0,0,0,0,
674,1728,Yes,Auto Scheduled,Post Load Validation,2h,Fixed Units,6,0.25d,673,"May 22, 2026 3:30","May 25, 2026 8:30",5/22/26 3:30,5/25/26 8:30,5/18/26 8:29,5/18/26 10:29,0h,-38.02h,0ed,0,NA,NA,"April 9, 2026 2:00","April 9, 2026 4:00",As Soon As Possible,NA,NA,NA,4/23/26 10:49,2h,2h,0h,0,0,0,0,0,1.2.2.2.7.6,500,No,No,No,,Brian Wagner,Black,,,,,,,,0,0,0,0d,0d,0d,No,No,No,No,No,No,No,No,No,No,No,0,0,0,0,0,
675,1729,Yes,Auto Scheduled,RTR_CM12_Activity Rates,1.13d,Fixed Duration,5,1.13d,,"May 19, 2026 3:00","May 20, 2026 4:00",5/19/26 3:00,5/20/26 4:00,5/15/26 9:29,5/18/26 10:29,0d,-2.56d,0ed,0,NA,NA,"April 7, 2026 1:15","April 8, 2026 2:15",As Soon As Possible,NA,NA,NA,4/23/26 10:49,9h,9h,0h,0,0,0,0,0,1.2.2.2.8,500,No,Yes,Yes,,,Black,,,,,,,,0,0,0,0d,0d,0d,No,No,No,No,No,No,No,No,No,No,No,0,0,0,0,0,
676,1730,Yes,Auto Scheduled,"Load File Staged and Posted ""Ready""",1h,Fixed Units,6,0.13d,639,"May 19, 2026 3:00","May 19, 2026 4:00",5/19/26 3:00,5/19/26 4:00,5/15/26 9:29,5/15/26 10:29,0h,-20.52h,0ed,0,NA,NA,"April 7, 2026 1:15","April 7, 2026 2:15",As Soon As Possible,NA,NA,NA,4/23/26 10:49,1h,1h,0h,0,0,0,0,0,1.2.2.2.8.1,500,No,No,No,,,Black,,,,,,,,0,0,0,0d,0d,0d,No,No,No,No,No,No,No,No,No,No,No,0,0,0,0,0,
677,1731,Yes,Auto Scheduled,Pre Load Validation,2h,Fixed Units,6,0.25d,676,"May 19, 2026 4:00","May 20, 2026 9:00",5/19/26 4:00,5/20/26 9:00,5/15/26 10:29,5/15/26 1:29,0h,-20.52h,0ed,0,NA,NA,"April 7, 2026 2:15","April 7, 2026 4:15",As Soon As Possible,NA,NA,NA,4/23/26 10:49,2h,2h,0h,0,0,0,0,0,1.2.2.2.8.2,500,No,No,No,,Brian Wagner,Black,,,,,,,,0,0,0,0d,0d,0d,No,No,No,No,No,No,No,No,No,No,No,0,0,0,0,0,
678,1732,Yes,Auto Scheduled,Simulate Load,1h,Fixed Units,6,0.13d,677,"May 20, 2026 9:00","May 20, 2026 10:00",5/20/26 9:00,5/20/26 10:00,5/15/26 1:29,5/15/26 2:29,0h,-20.52h,0ed,0,NA,NA,"April 7, 2026 4:15","April 8, 2026 8:15",As Soon As Possible,NA,NA,NA,4/23/26 10:49,1h,1h,0h,0,0,0,0,0,1.2.2.2.8.3,500,No,No,No,,,Black,,,,,,,,0,0,0,0d,0d,0d,No,No,No,No,No,No,No,No,No,No,No,0,0,0,0,0,
679,1733,Yes,Auto Scheduled,Error and Defect Mitigation,2h,Fixed Units,6,0.25d,678,"May 20, 2026 10:00","May 20, 2026 12:00",5/20/26 10:00,5/20/26 12:00,5/15/26 2:29,5/15/26 4:29,0h,-20.52h,0ed,0,NA,NA,"April 8, 2026 8:15","April 8, 2026 10:15",As Soon As Possible,NA,NA,NA,4/23/26 10:49,2h,2h,0h,0,0,0,0,0,1.2.2.2.8.4,500,No,No,No,,Brian Wagner,Black,,,,,,,,0,0,0,0d,0d,0d,No,No,No,No,No,No,No,No,No,No,No,0,0,0,0,0,
680,1734,Yes,Auto Scheduled,Load,1h,Fixed Units,6,0.13d,679,"May 20, 2026 1:00","May 20, 2026 2:00",5/20/26 1:00,5/20/26 2:00,5/15/26 4:29,5/18/26 8:29,0h,-20.52h,0ed,0,NA,NA,"April 8, 2026 10:15","April 8, 2026 11:15",As Soon As Possible,NA,NA,NA,4/23/26 10:49,1h,1h,0h,0,0,0,0,0,1.2.2.2.8.5,500,No,No,No,,,Black,,,,,,,,0,0,0,0d,0d,0d,No,No,No,No,No,No,No,No,No,No,No,0,0,0,0,0,
681,1735,Yes,Auto Scheduled,Post Load Validation,2h,Fixed Units,6,0.25d,680,"May 20, 2026 2:00","May 20, 2026 4:00",5/20/26 2:00,5/20/26 4:00,5/18/26 8:29,5/18/26 10:29,0h,-20.52h,0ed,0,NA,NA,"April 8, 2026 11:15","April 8, 2026 2:15",As Soon As Possible,NA,NA,NA,4/23/26 10:49,2h,2h,0h,0,0,0,0,0,1.2.2.2.8.6,500,No,No,No,,Brian Wagner,Black,,,,,,,,0,0,0,0d,0d,0d,No,No,No,No,No,No,No,No,No,No,No,0,0,0,0,0,
682,1736,Yes,Auto Scheduled,RTR_CM06_Bank_master,3.81d,Fixed Duration,5,1.22d,,"May 18, 2026 10:00","May 22, 2026 8:30",5/18/26 10:00,5/22/26 8:30,5/8/26 9:29,5/18/26 10:29,0d,-6.06d,0ed,0,NA,NA,"April 8, 2026 2:15","April 9, 2026 4:00",As Soon As Possible,NA,NA,NA,4/23/26 10:49,13h,9h,0h,0,0,0,0,0,1.2.2.2.9,500,No,Yes,Yes,,,Black,,,,,,,,0,0,0,0d,0d,0d,No,No,No,No,No,No,No,No,No,No,No,0,0,0,0,0,
683,1737,Yes,Auto Scheduled,"Load File Staged and Posted ""Ready""",1h,Fixed Units,6,0.13d,646,"May 21, 2026 2:30","May 21, 2026 3:30",5/21/26 2:30,5/21/26 3:30,5/15/26 4:29,5/18/26 8:29,0h,-30.02h,0ed,0,NA,NA,"April 8, 2026 2:15","April 8, 2026 4:30",As Soon As Possible,NA,NA,NA,4/23/26 10:49,1h,1h,0h,0,0,0,0,0,1.2.2.2.9.1,500,No,No,No,,,Black,,,,,,,,0,0,0,0d,0d,0d,No,No,No,No,No,No,No,No,No,No,No,0,0,0,0,0,
684,1738,Yes,Auto Scheduled,Pre Load Validation,2h,Fixed Units,6,0.25d,683,"May 21, 2026 3:30","May 22, 2026 8:30",5/21/26 3:30,5/22/26 8:30,5/18/26 8:29,5/18/26 10:29,0h,-30.02h,0ed,0,NA,NA,"April 8, 2026 4:30","April 9, 2026 9:30",As Soon As Possible,NA,NA,NA,4/23/26 10:49,2h,2h,0h,0,0,0,0,0,1.2.2.2.9.2,500,No,No,No,,Brian Wagner,Black,,,,,,,,0,0,0,0d,0d,0d,No,No,No,No,No,No,No,No,No,No,No,0,0,0,0,0,
685,1739,Yes,Auto Scheduled,Simulate Load,1h,Fixed Units,6,0.13d,,"May 18, 2026 10:00","May 18, 2026 11:00",5/18/26 10:00,5/18/26 11:00,5/8/26 9:29,5/8/26 10:29,0h,-48.52h,0ed,0,NA,NA,"April 9, 2026 9:30","April 9, 2026 10:30",Start No Earlier Than,4/15/26 8:00,NA,NA,4/23/26 10:49,1h,1h,0h,0,0,0,0,0,1.2.2.2.9.3,500,No,No,No,,,Black,,,,,,,,0,0,0,0d,0d,0d,No,No,No,No,No,No,No,No,No,No,No,0,0,0,0,0,
686,1740,Yes,Auto Scheduled,Error and Defect Mitigation,2h,Fixed Units,6,0.25d,685,"May 18, 2026 11:00","May 18, 2026 2:00",5/18/26 11:00,5/18/26 2:00,5/8/26 10:29,5/8/26 1:29,0h,-48.52h,0ed,0,NA,NA,"April 9, 2026 10:30","April 9, 2026 1:30",As Soon As Possible,NA,NA,NA,4/23/26 10:49,2h,2h,0h,0,0,0,0,0,1.2.2.2.9.4,500,No,No,No,,Brian Wagner,Black,,,,,,,,0,0,0,0d,0d,0d,No,No,No,No,No,No,No,No,No,No,No,0,0,0,0,0,
687,1741,Yes,Auto Scheduled,Load,5h,Fixed Units,6,0.13d,686,"May 18, 2026 2:00","May 19, 2026 10:00",5/18/26 2:00,5/19/26 10:00,5/8/26 1:29,5/11/26 9:29,0h,-48.52h,0ed,0,NA,NA,"April 9, 2026 1:30","April 9, 2026 2:30",Finish No Earlier Than,4/15/26 5:00,NA,NA,4/23/26 10:49,5h,1h,0h,0,0,0,0,0,1.2.2.2.9.5,500,No,No,No,,,Black,,,,,,,,0,0,0,0d,0d,0d,No,No,No,No,No,No,No,No,No,No,No,0,0,0,0,0,
688,1742,Yes,Auto Scheduled,Post Load Validation,2h,Fixed Units,6,0.25d,687,"May 19, 2026 10:00","May 19, 2026 4:30",5/19/26 10:00,5/19/26 4:30,5/11/26 9:29,5/11/26 3:59,0h,-48.52h,0ed,0,NA,NA,"April 9, 2026 8:00","April 9, 2026 4:00",Finish No Earlier Than,4/14/26 5:00,NA,NA,4/23/26 10:49,2h,2h,0h,0,0,0,0,0,1.2.2.2.9.6,500,No,No,No,,Brian Wagner,Black,,,,,,,,0,0,0,0d,0d,0d,No,No,No,No,No,No,No,No,No,No,No,0,0,0,0,0,
689,1743,Yes,Auto Scheduled,RTR_CM08_Exchange_Rates,1.13d,Fixed Duration,5,1.13d,,"May 19, 2026 10:00","May 20, 2026 11:00",5/19/26 10:00,5/20/26 11:00,5/15/26 9:29,5/18/26 10:29,0d,-2.06d,0ed,0,NA,NA,"April 9, 2026 2:30","April 10, 2026 3:30",As Soon As Possible,NA,NA,NA,4/23/26 10:49,9h,9h,0h,0,0,0,0,0,1.2.2.2.10,500,No,Yes,Yes,,,Black,,,,,,,,0,0,0,0d,0d,0d,No,No,No,No,No,No,No,No,No,No,No,0,0,0,0,0,
690,1744,Yes,Auto Scheduled,"Load File Staged and Posted ""Ready""",1h,Fixed Units,6,0.13d,687,"May 19, 2026 10:00","May 19, 2026 11:00",5/19/26 10:00,5/19/26 11:00,5/15/26 9:29,5/15/26 10:29,0h,-16.52h,0ed,0,NA,NA,"April 9, 2026 2:30","April 9, 2026 3:30",As Soon As Possible,NA,NA,NA,4/23/26 10:49,1h,1h,0h,0,0,0,0,0,1.2.2.2.10.1,500,No,No,No,,,Black,,,,,,,,0,0,0,0d,0d,0d,No,No,No,No,No,No,No,No,No,No,No,0,0,0,0,0,
691,1745,Yes,Auto Scheduled,Pre Load Validation,2h,Fixed Units,6,0.25d,690,"May 19, 2026 11:00","May 19, 2026 2:00",5/19/26 11:00,5/19/26 2:00,5/15/26 10:29,5/15/26 1:29,0h,-16.52h,0ed,0,NA,NA,"April 9, 2026 3:30","April 10, 2026 8:30",As Soon As Possible,NA,NA,NA,4/23/26 10:49,2h,2h,0h,0,0,0,0,0,1.2.2.2.10.2,500,No,No,No,,Brian Wagner,Black,,,,,,,,0,0,0,0d,0d,0d,No,No,No,No,No,No,No,No,No,No,No,0,0,0,0,0,
692,1746,Yes,Auto Scheduled,Simulate Load,1h,Fixed Units,6,0.13d,691,"May 19, 2026 2:00","May 19, 2026 3:00",5/19/26 2:00,5/19/26 3:00,5/15/26 1:29,5/15/26 2:29,0h,-16.52h,0ed,0,NA,NA,"April 10, 2026 8:30","April 10, 2026 9:30",As Soon As Possible,NA,NA,NA,4/23/26 10:49,1h,1h,0h,0,0,0,0,0,1.2.2.2.10.3,500,No,No,No,,,Black,,,,,,,,0,0,0,0d,0d,0d,No,No,No,No,No,No,No,No,No,No,No,0,0,0,0,0,
693,1747,Yes,Auto Scheduled,Error and Defect Mitigation,2h,Fixed Units,6,0.25d,692,"May 19, 2026 3:00","May 19, 2026 5:00",5/19/26 3:00,5/19/26 5:00,5/15/26 2:29,5/15/26 4:29,0h,-16.52h,0ed,0,NA,NA,"April 10, 2026 9:30","April 10, 2026 11:30",As Soon As Possible,NA,NA,NA,4/23/26 10:49,2h,2h,0h,0,0,0,0,0,1.2.2.2.10.4,500,No,No,No,,Brian Wagner,Black,,,,,,,,0,0,0,0d,0d,0d,No,No,No,No,No,No,No,No,No,No,No,0,0,0,0,0,
694,1748,Yes,Auto Scheduled,Load,1h,Fixed Units,6,0.13d,693,"May 20, 2026 8:00","May 20, 2026 9:00",5/20/26 8:00,5/20/26 9:00,5/15/26 4:29,5/18/26 8:29,0h,-16.52h,0ed,0,NA,NA,"April 10, 2026 11:30","April 10, 2026 1:30",As Soon As Possible,NA,NA,NA,4/23/26 10:49,1h,1h,0h,0,0,0,0,0,1.2.2.2.10.5,500,No,No,No,,,Black,,,,,,,,0,0,0,0d,0d,0d,No,No,No,No,No,No,No,No,No,No,No,0,0,0,0,0,
695,1749,Yes,Auto Scheduled,Post Load Validation,2h,Fixed Units,6,0.25d,694,"May 20, 2026 9:00","May 20, 2026 11:00",5/20/26 9:00,5/20/26 11:00,5/18/26 8:29,5/18/26 10:29,0h,-16.52h,0ed,0,NA,NA,"April 10, 2026 1:30","April 10, 2026 3:30",As Soon As Possible,NA,NA,NA,4/23/26 10:49,2h,2h,0h,0,0,0,0,0,1.2.2.2.10.6,500,No,No,No,,Brian Wagner,Black,,,,,,,,0,0,0,0d,0d,0d,No,No,No,No,No,No,No,No,No,No,No,0,0,0,0,0,
696,1750,Yes,Auto Scheduled,RTR_CM14_Cost Element_Group,1.44d,Fixed Duration,5,4.78d,,"May 21, 2026 2:30","May 25, 2026 9:00",5/21/26 2:30,5/25/26 9:00,5/14/26 3:59,5/18/26 10:29,0d,-4.81d,0ed,0,NA,NA,"April 8, 2026 3:45","April 15, 2026 2:00",As Soon As Possible,NA,NA,NA,4/23/26 10:49,22.5h,38.25h,0h,0,0,0,0,0,1.2.2.2.11,500,No,Yes,Yes,,Brian Wagner,Black,,,,,,,,0,0,0,0d,0d,0d,No,No,No,No,No,No,No,No,No,No,No,0,0,0,0,0,
697,1751,Yes,Auto Scheduled,"Manual File Staged and Posted ""Ready""",30m,Fixed Units,6,4.16d,646,"May 21, 2026 2:30","May 21, 2026 3:00",5/21/26 2:30,5/21/26 3:00,5/14/26 3:59,5/14/26 4:29,0m,-2311m,0ed,0,NA,NA,"April 8, 2026 3:45","April 14, 2026 5:00",As Soon As Possible,NA,NA,NA,4/23/26 10:49,0.5h,33.25h,0h,0,0,0,0,0,1.2.2.2.11.1,500,No,No,No,,,Black,,,,,,,,0,0,0,0d,0d,0d,No,No,No,No,No,No,No,No,No,No,No,0,0,0,0,0,
698,1752,Yes,Auto Scheduled,Load,8h,Fixed Units,6,0.25d,697,"May 21, 2026 3:00","May 22, 2026 3:00",5/21/26 3:00,5/22/26 3:00,5/14/26 4:29,5/15/26 4:29,0h,-38.52h,0ed,0,NA,NA,"April 15, 2026 8:00","April 15, 2026 10:00",As Soon As Possible,NA,NA,NA,4/23/26 10:49,8h,2h,0h,0,0,0,0,0,1.2.2.2.11.2,500,No,No,No,,,Black,2026-04-20 15:36 - jsw73 - Start ignored — already in progress,,,,,,,0,0,0,0d,0d,0d,No,No,No,No,No,No,No,No,No,No,No,0,0,0,0,0,
699,1753,Yes,Auto Scheduled,Post Load Validation,3h,Fixed Units,6,0.38d,698,"May 22, 2026 3:00","May 25, 2026 9:00",5/22/26 3:00,5/25/26 9:00,5/15/26 4:29,5/18/26 10:29,0h,-38.52h,0ed,0,NA,NA,"April 15, 2026 10:00","April 15, 2026 2:00",Start No Earlier Than,4/17/26 8:00,NA,NA,4/23/26 10:49,3h,3h,0h,0,0,0,0,0,1.2.2.2.11.3,500,No,No,No,,Brian Wagner,Black,,,,,,,,0,0,0,0d,0d,0d,No,No,No,No,No,No,No,No,No,No,No,0,0,0,0,0,
700,1754,Yes,Auto Scheduled,OTC_CM19_Customer_Master - Bill-To,2h,Fixed Units,5,0d,,"May 18, 2026 10:00","May 18, 2026 12:00",5/18/26 10:00,5/18/26 12:00,5/18/26 8:29,5/18/26 10:29,0h,-1.52h,0ed,0,NA,NA,"April 16, 2025 8:00","April 16, 2025 8:00",As Soon As Possible,NA,NA,NA,4/23/26 10:49,0h,0h,0h,0,0,0,0,0,1.2.2.2.12,500,No,No,No,,,Black,,,,,,,,0,0,0,0d,0d,0d,No,No,No,No,No,No,No,No,No,No,No,0,0,0,0,0,
701,1755,Yes,Auto Scheduled,OTC_CM19_Customer_Master - Ship-To,1.5d,Fixed Duration,5,3.13d,,"May 21, 2026 2:30","May 25, 2026 9:30",5/21/26 2:30,5/25/26 9:30,5/8/26 10:59,5/18/26 10:29,0d,-9.31d,0ed,0,NA,NA,"April 8, 2026 3:45","April 13, 2026 4:45",As Soon As Possible,NA,NA,NA,4/23/26 10:49,13.25h,36h,0h,0,0,0,0,0,1.2.2.2.13,500,No,Yes,Yes,,,Black,,,,,,,,0,0,0,0d,0d,0d,No,No,No,No,No,No,No,No,No,No,No,0,0,0,0,0,
702,1756,Yes,Auto Scheduled,"Load File Staged and Posted ""Ready""",30m,Fixed Units,6,0.06d,646,"May 21, 2026 2:30","May 21, 2026 3:00",5/21/26 2:30,5/21/26 3:00,5/8/26 10:59,5/8/26 11:29,0m,-4471m,0ed,0,NA,NA,"April 8, 2026 3:45","April 8, 2026 4:15",As Soon As Possible,NA,NA,NA,4/23/26 10:49,0.5h,0.5h,0h,0,0,0,0,0,1.2.2.2.13.1,500,No,No,No,,,Black,,,,,,,,0,0,0,0d,0d,0d,No,No,No,No,No,No,No,No,No,No,No,0,0,0,0,0,
703,1757,Yes,Auto Scheduled,Pre Load Validation,30m,Fixed Units,6,0.06d,702,"May 21, 2026 3:00","May 21, 2026 3:30",5/21/26 3:00,5/21/26 3:30,5/8/26 11:29,5/8/26 11:59,0m,-4471m,0ed,0,NA,NA,"April 8, 2026 4:15","April 8, 2026 4:45",As Soon As Possible,NA,NA,NA,4/23/26 10:49,0.5h,0.5h,0h,0,0,0,0,0,1.2.2.2.13.2,500,No,No,No,,Kim Kolesar,Black,,,,,,,,0,0,0,0d,0d,0d,No,No,No,No,No,No,No,No,No,No,No,0,0,0,0,0,
704,1758,Yes,Auto Scheduled,Open client for BP number range update,30m,Fixed Units,6,1d,703,"May 21, 2026 3:30","May 21, 2026 4:00",5/21/26 3:30,5/21/26 4:00,5/18/26 9:14,5/18/26 9:44,0m,-1756m,0ed,0,NA,NA,"April 8, 2026 4:45","April 9, 2026 4:45",As Soon As Possible,NA,NA,NA,4/23/26 10:49,0.5h,8h,0h,0,0,0,0,0,1.2.2.2.13.3,500,No,No,No,,,Black,,,,,,,,0,0,0,0d,0d,0d,No,No,No,No,No,No,No,No,No,No,No,0,0,0,0,0,
705,1759,Yes,Auto Scheduled,Update number range BP02 from Internal to External,30m,Fixed Units,6,1d,704,"May 21, 2026 4:00","May 21, 2026 4:30",5/21/26 4:00,5/21/26 4:30,5/18/26 9:44,5/18/26 10:14,0m,-1756m,0ed,0,NA,NA,"April 9, 2026 4:45","April 10, 2026 4:45",As Soon As Possible,NA,NA,NA,4/23/26 10:49,0.5h,8h,0h,0,0,0,0,0,1.2.2.2.13.4,500,No,No,No,,,Black,,,,,,,,0,0,0,0d,0d,0d,No,No,No,No,No,No,No,No,No,No,No,0,0,0,0,0,
706,1760,Yes,Auto Scheduled,Close Client,15m,Fixed Units,6,1d,705,"May 21, 2026 4:30","May 21, 2026 4:45",5/21/26 4:30,5/21/26 4:45,5/18/26 10:14,5/18/26 10:29,0m,-1756m,0ed,0,NA,NA,"April 10, 2026 4:45","April 13, 2026 4:45",As Soon As Possible,NA,NA,NA,4/23/26 10:49,0.25h,8h,0h,0,0,0,0,0,1.2.2.2.13.5,500,No,No,No,,,Black,,,,,,,,0,0,0,0d,0d,0d,No,No,No,No,No,No,No,No,No,No,No,0,0,0,0,0,
707,1761,Yes,Auto Scheduled,Simulate Load,1h,Fixed Units,6,0.13d,703,"May 21, 2026 3:30","May 21, 2026 4:30",5/21/26 3:30,5/21/26 4:30,5/8/26 11:59,5/8/26 1:59,0h,-74.52h,0ed,0,NA,NA,"April 8, 2026 4:45","April 9, 2026 8:45",As Soon As Possible,NA,NA,NA,4/23/26 10:49,1h,1h,0h,0,0,0,0,0,1.2.2.2.13.6,500,No,No,No,,,Black,,,,,,,,0,0,0,0d,0d,0d,No,No,No,No,No,No,No,No,No,No,No,0,0,0,0,0,
708,1762,Yes,Auto Scheduled,Error and Defect Mitigation,4h,Fixed Units,6,0.5d,707,"May 21, 2026 4:30","May 22, 2026 11:30",5/21/26 4:30,5/22/26 11:30,5/15/26 8:29,5/15/26 1:29,0h,-39.02h,0ed,0,NA,NA,"April 9, 2026 8:45","April 9, 2026 1:45",As Soon As Possible,NA,NA,NA,4/23/26 10:49,4h,4h,0h,0,0,0,0,0,1.2.2.2.13.7,500,No,No,No,,Kim Kolesar,Black,,,,,,,,0,0,0,0d,0d,0d,No,No,No,No,No,No,No,No,No,No,No,0,0,0,0,0,
709,1763,Yes,Auto Scheduled,Load,3h,Fixed Units,6,0.38d,708,"May 22, 2026 11:30","May 22, 2026 3:30",5/22/26 11:30,5/22/26 3:30,5/15/26 1:29,5/15/26 4:29,0h,-39.02h,0ed,0,NA,NA,"April 9, 2026 1:45","April 9, 2026 4:45",As Soon As Possible,NA,NA,NA,4/23/26 10:49,3h,3h,0h,0,0,0,0,0,1.2.2.2.13.8,500,No,No,No,,,Black,,,,,,,,0,0,0,0d,0d,0d,No,No,No,No,No,No,No,No,No,No,No,0,0,0,0,0,
710,1764,Yes,Auto Scheduled,Post Load Validation,3h,Fixed Units,6,0.38d,709,"May 22, 2026 3:30","May 25, 2026 9:30",5/22/26 3:30,5/25/26 9:30,5/15/26 4:29,5/18/26 10:29,0h,-39.02h,0ed,0,NA,NA,"April 9, 2026 4:45","April 10, 2026 10:45",As Soon As Possible,NA,NA,NA,4/23/26 10:49,3h,3h,0h,0,0,0,0,0,1.2.2.2.13.9,500,No,No,No,,Kim Kolesar,Black,,,,,,,,0,0,0,0d,0d,0d,No,No,No,No,No,No,No,No,No,No,No,0,0,0,0,0,
711,1765,Yes,Auto Scheduled,OTC_CM19_Customer_Master - Sold-To,1.63d,Fixed Duration,5,1.63d,,"May 21, 2026 3:30","May 25, 2026 11:30",5/21/26 3:30,5/25/26 11:30,5/8/26 1:59,5/18/26 10:29,0d,-9.19d,0ed,0,NA,NA,"April 8, 2026 4:45","April 10, 2026 1:45",As Soon As Possible,NA,NA,NA,4/23/26 10:49,11.75h,11.75h,0h,0,0,0,0,0,1.2.2.2.14,500,No,Yes,Yes,,,Black,,,,,,,,0,0,0,0d,0d,0d,No,No,No,No,No,No,No,No,No,No,No,0,0,0,0,0,
712,1766,Yes,Auto Scheduled,"Load File Staged and Posted ""Ready""",30m,Fixed Units,6,0.06d,703,"May 21, 2026 3:30","May 21, 2026 4:00",5/21/26 3:30,5/21/26 4:00,5/18/26 9:29,5/18/26 9:59,0m,-1741m,0ed,0,NA,NA,"April 8, 2026 4:45","April 9, 2026 8:15",As Soon As Possible,NA,NA,NA,4/23/26 10:49,0.5h,0.5h,0h,0,0,0,0,0,1.2.2.2.14.1,500,No,No,No,,,Black,,,,,,,,0,0,0,0d,0d,0d,No,No,No,No,No,No,No,No,No,No,No,0,0,0,0,0,
713,1767,Yes,Auto Scheduled,Pre Load Validation,30m,Fixed Units,6,0.06d,712,"May 21, 2026 4:00","May 21, 2026 4:30",5/21/26 4:00,5/21/26 4:30,5/18/26 9:59,5/18/26 10:29,0m,-1741m,0ed,0,NA,NA,"April 9, 2026 8:15","April 9, 2026 8:45",As Soon As Possible,NA,NA,NA,4/23/26 10:49,0.5h,0.5h,0h,0,0,0,0,0,1.2.2.2.14.2,500,No,No,No,,Kim Kolesar,Black,,,,,,,,0,0,0,0d,0d,0d,No,No,No,No,No,No,No,No,No,No,No,0,0,0,0,0,
714,1768,Yes,Auto Scheduled,Simulate Load,1h,Fixed Units,6,0.13d,"648,707","May 22, 2026 9:30","May 22, 2026 10:30",5/22/26 9:30,5/22/26 10:30,5/8/26 1:59,5/8/26 2:59,0h,-76.52h,0ed,0,NA,NA,"April 9, 2026 10:45","April 9, 2026 11:45",As Soon As Possible,NA,NA,NA,4/23/26 10:49,1h,1h,0h,0,0,0,0,0,1.2.2.2.14.3,500,No,No,No,,,Black,,,,,,,,0,0,0,0d,0d,0d,No,No,No,No,No,No,No,No,No,No,No,0,0,0,0,0,
715,1769,Yes,Auto Scheduled,Error and Defect Mitigation,3h,Fixed Units,6,0.38d,714,"May 22, 2026 10:30","May 22, 2026 2:30",5/22/26 10:30,5/22/26 2:30,5/8/26 2:59,5/11/26 8:59,0h,-76.52h,0ed,0,NA,NA,"April 9, 2026 11:45","April 9, 2026 3:45",As Soon As Possible,NA,NA,NA,4/23/26 10:49,3h,3h,0h,0,0,0,0,0,1.2.2.2.14.4,500,No,No,No,,Kim Kolesar,Black,,,,,,,,0,0,0,0d,0d,0d,No,No,No,No,No,No,No,No,No,No,No,0,0,0,0,0,
716,1770,Yes,Auto Scheduled,Load,3h,Fixed Units,6,0.38d,715,"May 22, 2026 2:30","May 25, 2026 8:30",5/22/26 2:30,5/25/26 8:30,5/11/26 8:59,5/11/26 11:59,0h,-76.52h,0ed,0,NA,NA,"April 9, 2026 3:45","April 10, 2026 9:45",As Soon As Possible,NA,NA,NA,4/23/26 10:49,3h,3h,0h,0,0,0,0,0,1.2.2.2.14.5,500,No,No,No,,,Black,,,,,,,,0,0,0,0d,0d,0d,No,No,No,No,No,No,No,No,No,No,No,0,0,0,0,0,
717,1771,Yes,Auto Scheduled,Post Load Validation,3h,Fixed Units,6,0.38d,716,"May 25, 2026 8:30","May 25, 2026 11:30",5/25/26 8:30,5/25/26 11:30,5/15/26 4:29,5/18/26 10:29,0h,-41.02h,0ed,0,NA,NA,"April 10, 2026 9:45","April 10, 2026 1:45",As Soon As Possible,NA,NA,NA,4/23/26 10:49,3h,3h,0h,0,0,0,0,0,1.2.2.2.14.6,500,No,No,No,,Kim Kolesar,Black,,,,,,,,0,0,0,0d,0d,0d,No,No,No,No,No,No,No,No,No,No,No,0,0,0,0,0,
718,1772,Yes,Auto Scheduled,Open client for BP number range update,15m,Fixed Units,6,0.03d,707,"May 21, 2026 4:30","May 21, 2026 4:45",5/21/26 4:30,5/21/26 4:45,5/18/26 9:44,5/18/26 9:59,0m,-1786m,0ed,0,NA,NA,"April 9, 2026 8:45","April 9, 2026 9:00",As Soon As Possible,NA,NA,NA,4/23/26 10:49,0.25h,0.25h,0h,0,0,0,0,0,1.2.2.2.14.7,500,No,No,No,,,Black,,,,,,,,0,0,0,0d,0d,0d,No,No,No,No,No,No,No,No,No,No,No,0,0,0,0,0,
719,1773,Yes,Auto Scheduled,Update number range BP02 from Internal to External,15m,Fixed Units,6,0.03d,718,"May 21, 2026 4:45","May 21, 2026 5:00",5/21/26 4:45,5/21/26 5:00,5/18/26 9:59,5/18/26 10:14,0m,-1786m,0ed,0,NA,NA,"April 9, 2026 9:00","April 9, 2026 9:15",As Soon As Possible,NA,NA,NA,4/23/26 10:49,0.25h,0.25h,0h,0,0,0,0,0,1.2.2.2.14.8,500,No,No,No,,,Black,,,,,,,,0,0,0,0d,0d,0d,No,No,No,No,No,No,No,No,No,No,No,0,0,0,0,0,
720,1774,Yes,Auto Scheduled,Close Client,15m,Fixed Units,6,0.03d,719,"May 22, 2026 8:00","May 22, 2026 8:15",5/22/26 8:00,5/22/26 8:15,5/18/26 10:14,5/18/26 10:29,0m,-1786m,0ed,0,NA,NA,"April 9, 2026 9:15","April 9, 2026 9:30",As Soon As Possible,NA,NA,NA,4/23/26 10:49,0.25h,0.25h,0h,0,0,0,0,0,1.2.2.2.14.9,500,No,No,No,,,Black,,,,,,,,0,0,0,0d,0d,0d,No,No,No,No,No,No,No,No,No,No,No,0,0,0,0,0,
721,1775,Yes,Auto Scheduled,PTP_CM27_Vendor Master as Customer - FLCU01,4.81d,Fixed Duration,5,2.31d,,"May 25, 2026 8:30","May 29, 2026 4:00",5/25/26 8:30,5/29/26 4:00,5/11/26 11:59,5/18/26 10:29,0d,-9.56d,0ed,0,NA,NA,"April 10, 2026 9:45","April 14, 2026 1:15",As Soon As Possible,NA,NA,NA,4/23/26 10:49,19.25h,19.25h,0h,0,0,0,0,0,1.2.2.2.15,500,No,Yes,Yes,,,Black,,,,,,,,0,0,0,0d,0d,0d,No,No,No,No,No,No,No,No,No,No,No,0,0,0,0,0,
722,1776,Yes,Auto Scheduled,Extract File,1h,Fixed Units,6,0.13d,716,"May 25, 2026 8:30","May 25, 2026 9:30",5/25/26 8:30,5/25/26 9:30,5/11/26 11:59,5/11/26 1:59,0h,-76.52h,0ed,0,NA,NA,"April 10, 2026 9:45","April 10, 2026 10:45",As Soon As Possible,NA,NA,NA,4/23/26 10:49,1h,1h,0h,0,0,0,0,0,1.2.2.2.15.1,500,No,No,No,,,Black,,,,,,,,0,0,0,0d,0d,0d,No,No,No,No,No,No,No,No,No,No,No,0,0,0,0,0,
723,1777,Yes,Auto Scheduled,Pre Load Validation,2h,Fixed Units,6,0.25d,722,"May 25, 2026 9:30","May 25, 2026 11:30",5/25/26 9:30,5/25/26 11:30,5/11/26 1:59,5/11/26 3:59,0h,-76.52h,0ed,0,NA,NA,"April 10, 2026 10:45","April 10, 2026 1:45",As Soon As Possible,NA,NA,NA,4/23/26 10:49,2h,2h,0h,0,0,0,0,0,1.2.2.2.15.2,500,No,No,No,,Sam Houff,Black,,,,,,,,0,0,0,0d,0d,0d,No,No,No,No,No,No,No,No,No,No,No,0,0,0,0,0,
724,1778,Yes,Auto Scheduled,Simulate Load,11.25h,Fixed Units,6,1.41d,"688,723","May 25, 2026 11:30","May 26, 2026 3:45",5/25/26 11:30,5/26/26 3:45,5/11/26 3:59,5/13/26 10:14,0h,-76.52h,0ed,0,NA,NA,"April 10, 2026 1:45","April 13, 2026 5:00",As Soon As Possible,NA,NA,NA,4/23/26 10:49,11.25h,11.25h,0h,0,0,0,0,0,1.2.2.2.15.3,500,No,No,No,,,Black,,,,,,,,0,0,0,0d,0d,0d,No,No,No,No,No,No,No,No,No,No,No,0,0,0,0,0,
725,1779,Yes,Auto Scheduled,Error and Defect Mitigation,2h,Fixed Units,6,0.25d,724,"May 26, 2026 3:45","May 28, 2026 10:30",5/26/26 3:45,5/28/26 10:30,5/13/26 10:14,5/14/26 2:59,0h,-76.52h,0ed,0,NA,NA,"April 10, 2026 2:45","April 14, 2026 9:30",As Soon As Possible,NA,NA,NA,4/23/26 10:49,2h,2h,0h,0,0,0,0,0,1.2.2.2.15.4,500,No,No,No,,Sam Houff,Black,,,,,,,,0,0,0,0d,0d,0d,No,No,No,No,No,No,No,No,No,No,No,0,0,0,0,0,
726,1780,Yes,Auto Scheduled,Load,1h,Fixed Units,6,0.13d,725,"May 28, 2026 10:30","May 29, 2026 2:00",5/28/26 10:30,5/29/26 2:00,5/14/26 2:59,5/18/26 8:29,0h,-76.52h,0ed,0,NA,NA,"April 10, 2026 4:45","April 14, 2026 10:15",As Soon As Possible,NA,NA,NA,4/23/26 10:49,1h,1h,0h,0,0,0,0,0,1.2.2.2.15.5,500,No,No,No,,,Black,,,,,,,,0,0,0,0d,0d,0d,No,No,No,No,No,No,No,No,No,No,No,0,0,0,0,0,
727,1781,Yes,Auto Scheduled,Post Load Validation,2h,Fixed Units,6,0.25d,726,"May 29, 2026 2:00","May 29, 2026 4:00",5/29/26 2:00,5/29/26 4:00,5/18/26 8:29,5/18/26 10:29,0h,-76.52h,0ed,0,NA,NA,"April 14, 2026 10:15","April 14, 2026 1:15",As Soon As Possible,NA,NA,NA,4/23/26 10:49,2h,2h,0h,0,0,0,0,0,1.2.2.2.15.6,500,No,No,No,,Sam Houff,Black,,,,,,,,0,0,0,0d,0d,0d,No,No,No,No,No,No,No,No,No,No,No,0,0,0,0,0,
728,1782,Yes,Auto Scheduled,OTC_CM23_Customer_Hierarchy,0.69d,Fixed Duration,5,0.69d,,"May 25, 2026 8:30","May 25, 2026 3:00",5/25/26 8:30,5/25/26 3:00,5/15/26 1:59,5/18/26 10:29,0d,-5.44d,0ed,0,NA,NA,"April 10, 2026 9:45","April 10, 2026 4:15",As Soon As Possible,NA,NA,NA,4/23/26 10:49,5.5h,5.5h,0h,0,0,0,0,0,1.2.2.2.16,500,No,Yes,Yes,,,Black,,,,,,,,0,0,0,0d,0d,0d,No,No,No,No,No,No,No,No,No,No,No,0,0,0,0,0,
729,1783,Yes,Auto Scheduled,"Manual File Staged and Posted ""Ready""",30m,Fixed Units,6,0.06d,716,"May 25, 2026 8:30","May 25, 2026 9:00",5/25/26 8:30,5/25/26 9:00,5/15/26 1:59,5/15/26 2:29,0m,-2611m,0ed,0,NA,NA,"April 10, 2026 9:45","April 10, 2026 10:15",As Soon As Possible,NA,NA,NA,4/23/26 10:49,0.5h,0.5h,0h,0,0,0,0,0,1.2.2.2.16.1,500,No,No,No,,Kim Kolesar,Black,,,,,,,,0,0,0,0d,0d,0d,No,No,No,No,No,No,No,No,No,No,No,0,0,0,0,0,
730,1784,Yes,Auto Scheduled,Load,2h,Fixed Units,6,0.25d,729,"May 25, 2026 9:00","May 25, 2026 11:00",5/25/26 9:00,5/25/26 11:00,5/15/26 2:29,5/15/26 4:29,0h,-43.52h,0ed,0,NA,NA,"April 10, 2026 10:15","April 10, 2026 1:15",As Soon As Possible,NA,NA,NA,4/23/26 10:49,2h,2h,0h,0,0,0,0,0,1.2.2.2.16.2,500,No,No,No,,,Black,,,,,,,,0,0,0,0d,0d,0d,No,No,No,No,No,No,No,No,No,No,No,0,0,0,0,0,
731,1785,Yes,Auto Scheduled,Post Load Validation,3h,Fixed Units,6,0.38d,730,"May 25, 2026 11:00","May 25, 2026 3:00",5/25/26 11:00,5/25/26 3:00,5/15/26 4:29,5/18/26 10:29,0h,-43.52h,0ed,0,NA,NA,"April 10, 2026 1:15","April 10, 2026 4:15",As Soon As Possible,NA,NA,NA,4/23/26 10:49,3h,3h,0h,0,0,0,0,0,1.2.2.2.16.3,500,No,No,No,,Kim Kolesar,Black,,,,,,,,0,0,0,0d,0d,0d,No,No,No,No,No,No,No,No,No,No,No,0,0,0,0,0,
732,1786,Yes,Auto Scheduled,PTP_CM27_Vendor Master - Z001 - External Sales Rep,3.38d,Fixed Duration,5,1.13d,,"May 25, 2026 8:30","May 28, 2026 11:30",5/25/26 8:30,5/28/26 11:30,5/12/26 4:29,5/18/26 10:29,0d,-8.13d,0ed,0,NA,NA,"April 10, 2026 9:45","April 13, 2026 10:45",As Soon As Possible,NA,NA,NA,4/23/26 10:49,9h,9h,0h,0,0,0,0,0,1.2.2.2.17,500,No,Yes,Yes,,,Black,,,,,,,,0,0,0,0d,0d,0d,No,No,No,No,No,No,No,No,No,No,No,0,0,0,0,0,
733,1787,Yes,Auto Scheduled,Extract File,1h,Fixed Units,6,0.13d,716,"May 25, 2026 8:30","May 25, 2026 9:30",5/25/26 8:30,5/25/26 9:30,5/12/26 4:29,5/13/26 8:29,0h,-65.02h,0ed,0,NA,NA,"April 10, 2026 9:45","April 10, 2026 10:45",As Soon As Possible,NA,NA,NA,4/23/26 10:49,1h,1h,0h,0,0,0,0,0,1.2.2.2.17.1,500,No,No,No,,,Black,,,,,,,,0,0,0,0d,0d,0d,No,No,No,No,No,No,No,No,No,No,No,0,0,0,0,0,
734,1788,Yes,Auto Scheduled,Pre Load Validation,2h,Fixed Units,6,0.25d,733,"May 25, 2026 9:30","May 25, 2026 11:30",5/25/26 9:30,5/25/26 11:30,5/13/26 8:29,5/13/26 10:29,0h,-65.02h,0ed,0,NA,NA,"April 10, 2026 10:45","April 10, 2026 1:45",As Soon As Possible,NA,NA,NA,4/23/26 10:49,2h,2h,0h,0,0,0,0,0,1.2.2.2.17.2,500,No,No,No,,Sam Houff,Black,,,,,,,,0,0,0,0d,0d,0d,No,No,No,No,No,No,No,No,No,No,No,0,0,0,0,0,
735,1789,Yes,Auto Scheduled,Simulate Load,1h,Fixed Units,6,0.13d,"688,734","May 25, 2026 11:30","May 25, 2026 1:30",5/25/26 11:30,5/25/26 1:30,5/13/26 10:29,5/13/26 11:29,0h,-65.02h,0ed,0,NA,NA,"April 10, 2026 1:45","April 10, 2026 2:45",As Soon As Possible,NA,NA,NA,4/23/26 10:49,1h,1h,0h,0,0,0,0,0,1.2.2.2.17.3,500,No,No,No,,,Black,,,,,,,,0,0,0,0d,0d,0d,No,No,No,No,No,No,No,No,No,No,No,0,0,0,0,0,
736,1790,Yes,Auto Scheduled,Error and Defect Mitigation,2h,Fixed Units,6,0.25d,735,"May 25, 2026 1:30","May 25, 2026 3:30",5/25/26 1:30,5/25/26 3:30,5/13/26 11:29,5/13/26 2:29,0h,-65.02h,0ed,0,NA,NA,"April 10, 2026 2:45","April 10, 2026 4:45",As Soon As Possible,NA,NA,NA,4/23/26 10:49,2h,2h,0h,0,0,0,0,0,1.2.2.2.17.4,500,No,No,No,,Sam Houff,Black,,,,,,,,0,0,0,0d,0d,0d,No,No,No,No,No,No,No,No,No,No,No,0,0,0,0,0,
737,1791,Yes,Auto Scheduled,Load,1h,Fixed Units,6,0.13d,736,"May 25, 2026 3:30","May 28, 2026 9:30",5/25/26 3:30,5/28/26 9:30,5/13/26 2:29,5/18/26 8:29,0h,-65.02h,0ed,0,NA,NA,"April 10, 2026 4:45","April 13, 2026 8:45",As Soon As Possible,NA,NA,NA,4/23/26 10:49,1h,1h,0h,0,0,0,0,0,1.2.2.2.17.5,500,No,No,No,,,Black,,,,,,,,0,0,0,0d,0d,0d,No,No,No,No,No,No,No,No,No,No,No,0,0,0,0,0,
738,1792,Yes,Auto Scheduled,Post Load Validation,2h,Fixed Units,6,0.25d,737,"May 28, 2026 9:30","May 28, 2026 11:30",5/28/26 9:30,5/28/26 11:30,5/18/26 8:29,5/18/26 10:29,0h,-65.02h,0ed,0,NA,NA,"April 13, 2026 8:45","April 13, 2026 10:45",As Soon As Possible,NA,NA,NA,4/23/26 10:49,2h,2h,0h,0,0,0,0,0,1.2.2.2.17.6,500,No,No,No,,Sam Houff,Black,,,,,,,,0,0,0,0d,0d,0d,No,No,No,No,No,No,No,No,No,No,No,0,0,0,0,0,
739,1793,Yes,Auto Scheduled,RTR_CM10_Credit_Management_Role,1.84d,Fixed Duration,5,1.13d,,"May 25, 2026 8:30","May 26, 2026 4:15",5/25/26 8:30,5/26/26 4:15,5/13/26 2:44,5/15/26 1:29,0d,-7.35d,0ed,0,NA,NA,"April 10, 2026 9:45","April 13, 2026 10:45",As Soon As Possible,NA,NA,NA,4/23/26 10:49,9h,9h,0h,0,0,0,0,0,1.2.2.2.18,500,No,Yes,Yes,,,Black,,,,,,,,0,0,0,0d,0d,0d,No,No,No,No,No,No,No,No,No,No,No,0,0,0,0,0,
740,1794,Yes,Auto Scheduled,"Load File Staged and Posted ""Ready""",30m,Fixed Units,6,0.06d,716,"May 25, 2026 8:30","May 25, 2026 9:00",5/25/26 8:30,5/25/26 9:00,5/13/26 2:44,5/13/26 3:14,0m,-3526m,0ed,0,NA,NA,"April 10, 2026 9:45","April 10, 2026 10:15",As Soon As Possible,NA,NA,NA,4/23/26 10:49,0.5h,0.5h,0h,0,0,0,0,0,1.2.2.2.18.1,500,No,No,No,,,Black,,,,,,,,0,0,0,0d,0d,0d,No,No,No,No,No,No,No,No,No,No,No,0,0,0,0,0,
741,1795,Yes,Auto Scheduled,Pre Load Validation,30m,Fixed Units,6,0.06d,740,"May 25, 2026 9:00","May 25, 2026 9:30",5/25/26 9:00,5/25/26 9:30,5/13/26 3:14,5/13/26 3:44,0m,-3526m,0ed,0,NA,NA,"April 10, 2026 10:15","April 10, 2026 10:45",As Soon As Possible,NA,NA,NA,4/23/26 10:49,0.5h,0.5h,0h,0,0,0,0,0,1.2.2.2.18.2,500,No,No,No,,Brian Wagner,Black,,,,,,,,0,0,0,0d,0d,0d,No,No,No,No,No,No,No,No,No,No,No,0,0,0,0,0,
742,1796,Yes,Auto Scheduled,Simulate Load,1h,Fixed Units,6,0.13d,741,"May 25, 2026 9:30","May 25, 2026 10:30",5/25/26 9:30,5/25/26 10:30,5/13/26 3:44,5/13/26 4:44,0h,-58.77h,0ed,0,NA,NA,"April 10, 2026 10:45","April 10, 2026 11:45",As Soon As Possible,NA,NA,NA,4/23/26 10:49,1h,1h,0h,0,0,0,0,0,1.2.2.2.18.3,500,No,No,No,,,Black,,,,,,,,0,0,0,0d,0d,0d,No,No,No,No,No,No,No,No,No,No,No,0,0,0,0,0,
743,1797,Yes,Auto Scheduled,Error and Defect Mitigation,2h,Fixed Units,6,0.25d,742,"May 25, 2026 10:30","May 25, 2026 2:00",5/25/26 10:30,5/25/26 2:00,5/13/26 4:44,5/14/26 10:14,0h,-58.77h,0ed,0,NA,NA,"April 10, 2026 11:45","April 10, 2026 2:45",As Soon As Possible,NA,NA,NA,4/23/26 10:49,2h,2h,0h,0,0,0,0,0,1.2.2.2.18.4,500,No,No,No,,Brian Wagner,Black,,,,,,,,0,0,0,0d,0d,0d,No,No,No,No,No,No,No,No,No,No,No,0,0,0,0,0,
744,1798,Yes,Auto Scheduled,Load,2h,Fixed Units,6,0.25d,743,"May 25, 2026 2:00","May 26, 2026 9:00",5/25/26 2:00,5/26/26 9:00,5/14/26 10:14,5/14/26 3:14,0h,-58.77h,0ed,0,NA,NA,"April 10, 2026 2:45","April 10, 2026 4:45",As Soon As Possible,NA,NA,NA,4/23/26 10:49,2h,2h,0h,0,0,0,0,0,1.2.2.2.18.5,500,No,No,No,,,Black,,,,,,,,0,0,0,0d,0d,0d,No,No,No,No,No,No,No,No,No,No,No,0,0,0,0,0,
745,1799,Yes,Auto Scheduled,Post Load Validation,3h,Fixed Units,6,0.38d,744,"May 26, 2026 9:00","May 26, 2026 4:15",5/26/26 9:00,5/26/26 4:15,5/14/26 3:14,5/15/26 1:29,0h,-58.77h,0ed,0,NA,NA,"April 10, 2026 4:45","April 13, 2026 10:45",As Soon As Possible,NA,NA,NA,4/23/26 10:49,3h,3h,0h,0,0,0,0,0,1.2.2.2.18.6,500,No,No,No,,Brian Wagner,Black,,,,,,,,0,0,0,0d,0d,0d,No,No,No,No,No,No,No,No,No,No,No,0,0,0,0,0,
746,1800,Yes,Auto Scheduled,PTP_CM27_Vendor Master,6.28d,Fixed Duration,5,2.91d,,"May 18, 2026 10:00","May 26, 2026 1:15",5/18/26 10:00,5/26/26 1:15,5/5/26 11:44,5/18/26 10:29,0d,-8.78d,0ed,0,NA,NA,"April 10, 2026 10:45","April 15, 2026 10:00",As Soon As Possible,NA,NA,NA,4/23/26 10:49,10.25h,9h,0h,0,0,0,0,0,1.2.2.2.19,500,No,Yes,Yes,,,Black,,,,,,,,0,0,0,0d,0d,0d,No,No,No,No,No,No,No,No,No,No,No,0,0,0,0,0,
747,1801,Yes,Auto Scheduled,Extract File,1h,Fixed Units,6,0.13d,733,"May 25, 2026 9:30","May 25, 2026 10:30",5/25/26 9:30,5/25/26 10:30,5/14/26 4:44,5/15/26 8:44,0h,-49.77h,0ed,0,NA,NA,"April 10, 2026 10:45","April 10, 2026 11:45",As Soon As Possible,NA,NA,NA,4/23/26 10:49,1h,1h,0h,0,0,0,0,0,1.2.2.2.19.1,500,No,No,No,,,Black,,,,,,,,0,0,0,0d,0d,0d,No,No,No,No,No,No,No,No,No,No,No,0,0,0,0,0,
748,1802,Yes,Auto Scheduled,Pre Load Validation,2h,Fixed Units,6,0.25d,747,"May 25, 2026 10:30","May 25, 2026 1:30",5/25/26 10:30,5/25/26 1:30,5/15/26 8:44,5/15/26 10:44,0h,-49.77h,0ed,0,NA,NA,"April 10, 2026 11:45","April 10, 2026 2:45",As Soon As Possible,NA,NA,NA,4/23/26 10:49,2h,2h,0h,0,0,0,0,0,1.2.2.2.19.2,500,No,No,No,,Sam Houff,Black,,,,,,,,0,0,0,0d,0d,0d,No,No,No,No,No,No,No,No,No,No,No,0,0,0,0,0,
749,1803,Yes,Auto Scheduled,Simulate Load,2.25h,Fixed Units,6,0.13d,748,"May 25, 2026 1:30","May 25, 2026 3:45",5/25/26 1:30,5/25/26 3:45,5/15/26 10:44,5/15/26 1:59,0h,-49.77h,0ed,0,NA,NA,"April 10, 2026 2:45","April 14, 2026 2:00",As Soon As Possible,NA,NA,NA,4/23/26 10:49,2.25h,1h,0h,0,0,0,0,0,1.2.2.2.19.3,500,No,No,No,,,Black,,,,,,,,0,0,0,0d,0d,0d,No,No,No,No,No,No,No,No,No,No,No,0,0,0,0,0,
750,1804,Yes,Auto Scheduled,Error and Defect Mitigation,2h,Fixed Units,6,0.25d,749,"May 25, 2026 3:45","May 26, 2026 1:15",5/25/26 3:45,5/26/26 1:15,5/15/26 1:59,5/18/26 10:29,0h,-49.77h,0ed,0,NA,NA,"April 14, 2026 2:00","April 14, 2026 4:00",As Soon As Possible,NA,NA,NA,4/23/26 10:49,2h,2h,0h,0,0,0,0,0,1.2.2.2.19.4,500,No,No,No,,Sam Houff,Black,,,,,,,,0,0,0,0d,0d,0d,No,No,No,No,No,No,No,No,No,No,No,0,0,0,0,0,
751,1805,Yes,Auto Scheduled,Load,1h,Fixed Units,6,0.13d,,"May 18, 2026 10:00","May 18, 2026 11:00",5/18/26 10:00,5/18/26 11:00,5/5/26 11:44,5/5/26 1:44,0h,-70.27h,0ed,0,NA,NA,"April 14, 2026 4:00","April 14, 2026 5:00",As Soon As Possible,NA,NA,NA,4/23/26 10:49,1h,1h,0h,0,0,0,0,0,1.2.2.2.19.5,500,No,No,No,,,Black,,,,,,,,0,0,0,0d,0d,0d,No,No,No,No,No,No,No,No,No,No,No,0,0,0,0,0,
752,1806,Yes,Auto Scheduled,Post Load Validation,2h,Fixed Units,6,0.25d,751,"May 18, 2026 11:00","May 18, 2026 2:00",5/18/26 11:00,5/18/26 2:00,5/5/26 1:44,5/5/26 3:44,0h,-70.27h,0ed,0,NA,NA,"April 15, 2026 8:00","April 15, 2026 10:00",As Soon As Possible,NA,NA,NA,4/23/26 10:49,2h,2h,0h,0,0,0,0,0,1.2.2.2.19.6,500,No,No,No,,Sam Houff,Black,,,,,,,,0,0,0,0d,0d,0d,No,No,No,No,No,No,No,No,No,No,No,0,0,0,0,0,
753,1807,Yes,Auto Scheduled,PTP_CM27_Vendor Master - Mass Maintenance - LFA1-WERKR,0.88d,Fixed Duration,5,3.16d,,"May 18, 2026 10:00","May 19, 2026 9:00",5/18/26 10:00,5/19/26 9:00,5/14/26 3:29,5/18/26 10:29,0d,-1.44d,0ed,0,NA,NA,"April 10, 2026 11:45","April 15, 2026 2:00",As Soon As Possible,NA,NA,NA,4/23/26 10:49,9h,9h,0h,0,0,0,0,0,1.2.2.2.20,500,No,Yes,Yes,,,Black,,,,,,,,0,0,0,0d,0d,0d,No,No,No,No,No,No,No,No,No,No,No,0,0,0,0,0,
754,1808,Yes,Auto Scheduled,Extract File(Will Extract from LFA1),1h,Fixed Units,6,0.13d,,"May 18, 2026 10:00","May 18, 2026 11:00",5/18/26 10:00,5/18/26 11:00,5/14/26 3:29,5/14/26 4:29,0h,-11.52h,0ed,0,NA,NA,"April 10, 2026 11:45","April 10, 2026 1:45",As Soon As Possible,NA,NA,NA,4/23/26 10:49,1h,1h,0h,0,0,0,0,0,1.2.2.2.20.1,500,No,No,No,,,Black,,,,,,,,0,0,0,0d,0d,0d,No,No,No,No,No,No,No,No,No,No,No,0,0,0,0,0,
755,1809,Yes,Auto Scheduled,Pre Load Validation,2h,Fixed Units,6,0.25d,754,"May 18, 2026 11:00","May 18, 2026 2:00",5/18/26 11:00,5/18/26 2:00,5/14/26 4:29,5/15/26 9:29,0h,-11.52h,0ed,0,NA,NA,"April 10, 2026 1:45","April 10, 2026 3:45",As Soon As Possible,NA,NA,NA,4/23/26 10:49,2h,2h,0h,0,0,0,0,0,1.2.2.2.20.2,500,No,No,No,,Sam Houff,Black,,,,,,,,0,0,0,0d,0d,0d,No,No,No,No,No,No,No,No,No,No,No,0,0,0,0,0,
756,1810,Yes,Auto Scheduled,Simulate Load/ Not Needed,1h,Fixed Units,6,0.13d,755,"May 18, 2026 2:00","May 18, 2026 3:00",5/18/26 2:00,5/18/26 3:00,5/15/26 9:29,5/15/26 10:29,0h,-11.52h,0ed,0,NA,NA,"April 10, 2026 3:45","April 10, 2026 4:45",As Soon As Possible,NA,NA,NA,4/23/26 10:49,1h,1h,0h,0,0,0,0,0,1.2.2.2.20.3,500,No,No,No,,,Black,,,,,,,,0,0,0,0d,0d,0d,No,No,No,No,No,No,No,No,No,No,No,0,0,0,0,0,
757,1811,Yes,Auto Scheduled,Error and Defect Mitigation,2h,Fixed Units,6,0.25d,756,"May 18, 2026 3:00","May 18, 2026 5:00",5/18/26 3:00,5/18/26 5:00,5/18/26 8:29,5/18/26 10:29,0h,-5.52h,0ed,0,NA,NA,"April 10, 2026 4:45","April 13, 2026 9:45",As Soon As Possible,NA,NA,NA,4/23/26 10:49,2h,2h,0h,0,0,0,0,0,1.2.2.2.20.4,500,No,No,No,,Sam Houff,Black,,,,,,,,0,0,0,0d,0d,0d,No,No,No,No,No,No,No,No,No,No,No,0,0,0,0,0,
758,1812,Yes,Auto Scheduled,Load,1h,Fixed Units,6,0.13d,756,"May 18, 2026 3:00","May 18, 2026 4:00",5/18/26 3:00,5/18/26 4:00,5/15/26 10:29,5/15/26 11:29,0h,-11.52h,0ed,0,NA,NA,"April 15, 2026 10:00","April 15, 2026 11:00",As Soon As Possible,NA,NA,NA,4/23/26 10:49,1h,1h,0h,0,0,0,0,0,1.2.2.2.20.5,500,No,No,No,,,Black,,,,,,,,0,0,0,0d,0d,0d,No,No,No,No,No,No,No,No,No,No,No,0,0,0,0,0,
759,1813,Yes,Auto Scheduled,Post Load Validation,2h,Fixed Units,6,0.25d,758,"May 18, 2026 4:00","May 19, 2026 9:00",5/18/26 4:00,5/19/26 9:00,5/15/26 11:29,5/15/26 2:29,0h,-11.52h,0ed,0,NA,NA,"April 15, 2026 11:00","April 15, 2026 2:00",As Soon As Possible,NA,NA,NA,4/23/26 10:49,2h,2h,0h,0,0,0,0,0,1.2.2.2.20.6,500,No,No,No,,Sam Houff,Black,,,,,,,,0,0,0,0d,0d,0d,No,No,No,No,No,No,No,No,No,No,No,0,0,0,0,0,
760,1814,Yes,Auto Scheduled,RTR_****_Credit Hierarchy,1.91d,Fixed Duration,5,1.25d,,"May 25, 2026 2:00","May 27, 2026 1:15",5/25/26 2:00,5/27/26 1:15,5/15/26 2:29,5/18/26 10:29,0d,-7.22d,0ed,0,NA,NA,"April 10, 2026 2:45","April 13, 2026 4:45",As Soon As Possible,NA,NA,NA,4/23/26 10:49,5.5h,5.5h,0h,0,0,0,0,0,1.2.2.2.21,500,No,Yes,Yes,,,Black,,,,,,,,0,0,0,0d,0d,0d,No,No,No,No,No,No,No,No,No,No,No,0,0,0,0,0,
761,1815,Yes,Auto Scheduled,"Manual File Staged and Posted ""Ready""",30m,Fixed Units,6,0.06d,743,"May 25, 2026 2:00","May 25, 2026 2:30",5/25/26 2:00,5/25/26 2:30,5/18/26 9:59,5/18/26 10:29,0m,-2581m,0ed,0,NA,NA,"April 10, 2026 2:45","April 10, 2026 3:15",As Soon As Possible,NA,NA,NA,4/23/26 10:49,0.5h,0.5h,0h,0,0,0,0,0,1.2.2.2.21.1,500,No,No,No,,Brian Wagner,Black,,,,,,,,0,0,0,0d,0d,0d,No,No,No,No,No,No,No,No,No,No,No,0,0,0,0,0,
762,1816,Yes,Auto Scheduled,Load,2h,Fixed Units,6,0.25d,745,"May 26, 2026 4:15","May 27, 2026 9:15",5/26/26 4:15,5/27/26 9:15,5/15/26 2:29,5/15/26 4:29,0h,-57.77h,0ed,0,NA,NA,"April 13, 2026 10:45","April 13, 2026 1:45",As Soon As Possible,NA,NA,NA,4/23/26 10:49,2h,2h,0h,0,0,0,0,0,1.2.2.2.21.2,500,No,No,No,,,Black,,,,,,,,0,0,0,0d,0d,0d,No,No,No,No,No,No,No,No,No,No,No,0,0,0,0,0,
763,1817,Yes,Auto Scheduled,Post Load Validation,3h,Fixed Units,6,0.38d,762,"May 27, 2026 9:15","May 27, 2026 1:15",5/27/26 9:15,5/27/26 1:15,5/15/26 4:29,5/18/26 10:29,0h,-57.77h,0ed,0,NA,NA,"April 13, 2026 1:45","April 13, 2026 4:45",As Soon As Possible,NA,NA,NA,4/23/26 10:49,3h,3h,0h,0,0,0,0,0,1.2.2.2.21.3,500,No,No,No,,Brian Wagner,Black,,,,,,,,0,0,0,0d,0d,0d,No,No,No,No,No,No,No,No,No,No,No,0,0,0,0,0,
764,1818,Yes,Auto Scheduled,PTP_CM27_BP_Intercompany Supplier,1.13d,Fixed Duration,5,1.13d,,"May 18, 2026 2:00","May 19, 2026 3:00",5/18/26 2:00,5/19/26 3:00,5/15/26 9:29,5/18/26 10:29,0d,-1.44d,0ed,0,NA,NA,"April 13, 2026 11:45","April 14, 2026 1:45",As Soon As Possible,NA,NA,NA,4/23/26 10:49,15h,15h,0h,0,0,0,0,0,1.2.2.2.22,500,No,Yes,Yes,,,Black,,,,,,,,0,0,0,0d,0d,0d,No,No,No,No,No,No,No,No,No,No,No,0,0,0,0,0,
765,1819,Yes,Auto Scheduled,"Load File Staged and Posted ""Ready""",30m,Fixed Units,6,0.06d,752,"May 18, 2026 2:00","May 18, 2026 2:30",5/18/26 2:00,5/18/26 2:30,5/15/26 9:29,5/15/26 9:59,0m,-691m,0ed,0,NA,NA,"April 13, 2026 11:45","April 13, 2026 1:15",As Soon As Possible,NA,NA,NA,4/23/26 10:49,1h,1h,0h,0,0,0,0,0,1.2.2.2.22.1,500,No,No,No,,,Black,,,,,,,,0,0,0,0d,0d,0d,No,No,No,No,No,No,No,No,No,No,No,0,0,0,0,0,
766,1820,Yes,Auto Scheduled,Pre Load Validation,30m,Fixed Units,6,0.06d,765,"May 18, 2026 2:30","May 18, 2026 3:00",5/18/26 2:30,5/18/26 3:00,5/15/26 9:59,5/15/26 10:29,0m,-691m,0ed,0,NA,NA,"April 13, 2026 1:15","April 13, 2026 1:45",As Soon As Possible,NA,NA,NA,4/23/26 10:49,1h,1h,0h,0,0,0,0,0,1.2.2.2.22.2,500,No,No,No,,"Sam Houff,Kim Kolesar",Black,,,,,,,,0,0,0,0d,0d,0d,No,No,No,No,No,No,No,No,No,No,No,0,0,0,0,0,
767,1821,Yes,Auto Scheduled,Simulate Load,1h,Fixed Units,6,0.13d,766,"May 18, 2026 3:00","May 18, 2026 4:00",5/18/26 3:00,5/18/26 4:00,5/15/26 10:29,5/15/26 11:29,0h,-11.52h,0ed,0,NA,NA,"April 13, 2026 1:45","April 13, 2026 2:45",As Soon As Possible,NA,NA,NA,4/23/26 10:49,1h,1h,0h,0,0,0,0,0,1.2.2.2.22.3,500,No,No,No,,,Black,,,,,,,,0,0,0,0d,0d,0d,No,No,No,No,No,No,No,No,No,No,No,0,0,0,0,0,
768,1822,Yes,Auto Scheduled,Error and Defect Mitigation,2h,Fixed Units,6,0.25d,767,"May 18, 2026 4:00","May 19, 2026 9:00",5/18/26 4:00,5/19/26 9:00,5/15/26 11:29,5/15/26 2:29,0h,-11.52h,0ed,0,NA,NA,"April 13, 2026 2:45","April 13, 2026 4:45",As Soon As Possible,NA,NA,NA,4/23/26 10:49,4h,4h,0h,0,0,0,0,0,1.2.2.2.22.4,500,No,No,No,,"Sam Houff,Kim Kolesar",Black,,,,,,,,0,0,0,0d,0d,0d,No,No,No,No,No,No,No,No,No,No,No,0,0,0,0,0,
769,1823,Yes,Auto Scheduled,Load,2h,Fixed Units,6,0.25d,768,"May 19, 2026 9:00","May 19, 2026 11:00",5/19/26 9:00,5/19/26 11:00,5/15/26 2:29,5/15/26 4:29,0h,-11.52h,0ed,0,NA,NA,"April 13, 2026 4:45","April 14, 2026 9:45",As Soon As Possible,NA,NA,NA,4/23/26 10:49,2h,2h,0h,0,0,0,0,0,1.2.2.2.22.5,500,No,No,No,,,Black,,,,,,,,0,0,0,0d,0d,0d,No,No,No,No,No,No,No,No,No,No,No,0,0,0,0,0,
770,1824,Yes,Auto Scheduled,Post Load Validation,3h,Fixed Units,6,0.38d,769,"May 19, 2026 11:00","May 19, 2026 3:00",5/19/26 11:00,5/19/26 3:00,5/15/26 4:29,5/18/26 10:29,0h,-11.52h,0ed,0,NA,NA,"April 14, 2026 9:45","April 14, 2026 1:45",As Soon As Possible,NA,NA,NA,4/23/26 10:49,6h,6h,0h,0,0,0,0,0,1.2.2.2.22.6,500,No,No,No,,"Sam Houff,Kim Kolesar",Black,,,,,,,,0,0,0,0d,0d,0d,No,No,No,No,No,No,No,No,No,No,No,0,0,0,0,0,
771,1825,Yes,Auto Scheduled,PTP_CM27_BP_Intercompany Customer,1.06d,Fixed Duration,5,1.13d,,"May 18, 2026 10:00","May 19, 2026 10:30",5/18/26 10:00,5/19/26 10:30,5/15/26 9:59,5/18/26 10:29,0d,-1d,0ed,0,NA,NA,"April 13, 2026 11:45","April 14, 2026 1:45",As Soon As Possible,NA,NA,NA,4/23/26 10:49,15h,15h,0h,0,0,0,0,0,1.2.2.2.23,500,No,Yes,Yes,,,Black,,,,,,,,0,0,0,0d,0d,0d,No,No,No,No,No,No,No,No,No,No,No,0,0,0,0,0,
772,1826,Yes,Auto Scheduled,"Load File Staged and Posted ""Ready""",30m,Fixed Units,6,0.06d,,"May 18, 2026 10:00","May 18, 2026 10:30",5/18/26 10:00,5/18/26 10:30,5/18/26 9:59,5/18/26 10:29,0m,-1m,0ed,0,NA,NA,"April 13, 2026 11:45","April 13, 2026 1:15",As Soon As Possible,NA,NA,NA,4/23/26 10:49,1h,1h,0h,0,0,0,0,0,1.2.2.2.23.1,500,No,No,No,,,Black,,,,,,,,0,0,0,0d,0d,0d,No,No,No,No,No,No,No,No,No,No,No,0,0,0,0,0,
773,1827,Yes,Auto Scheduled,Pre Load Validation,30m,Fixed Units,6,0.06d,,"May 18, 2026 10:00","May 18, 2026 10:30",5/18/26 10:00,5/18/26 10:30,5/15/26 9:59,5/15/26 10:29,0m,-481m,0ed,0,NA,NA,"April 13, 2026 1:15","April 13, 2026 1:45",As Soon As Possible,NA,NA,NA,4/23/26 10:49,1h,1h,0h,0,0,0,0,0,1.2.2.2.23.2,500,No,No,No,,"Sam Houff,Kim Kolesar",Black,,,,,,,,0,0,0,0d,0d,0d,No,No,No,No,No,No,No,No,No,No,No,0,0,0,0,0,
774,1828,Yes,Auto Scheduled,Simulate Load,1h,Fixed Units,6,0.13d,773,"May 18, 2026 10:30","May 18, 2026 11:30",5/18/26 10:30,5/18/26 11:30,5/15/26 10:29,5/15/26 11:29,0h,-8.02h,0ed,0,NA,NA,"April 13, 2026 1:45","April 13, 2026 2:45",As Soon As Possible,NA,NA,NA,4/23/26 10:49,1h,1h,0h,0,0,0,0,0,1.2.2.2.23.3,500,No,No,No,,,Black,,,,,,,,0,0,0,0d,0d,0d,No,No,No,No,No,No,No,No,No,No,No,0,0,0,0,0,
775,1829,Yes,Auto Scheduled,Error and Defect Mitigation,2h,Fixed Units,6,0.25d,774,"May 18, 2026 11:30","May 18, 2026 2:30",5/18/26 11:30,5/18/26 2:30,5/15/26 11:29,5/15/26 2:29,0h,-8.02h,0ed,0,NA,NA,"April 13, 2026 2:45","April 13, 2026 4:45",As Soon As Possible,NA,NA,NA,4/23/26 10:49,4h,4h,0h,0,0,0,0,0,1.2.2.2.23.4,500,No,No,No,,"Sam Houff,Kim Kolesar",Black,,,,,,,,0,0,0,0d,0d,0d,No,No,No,No,No,No,No,No,No,No,No,0,0,0,0,0,
776,1830,Yes,Auto Scheduled,Load,2h,Fixed Units,6,0.25d,775,"May 18, 2026 2:30","May 18, 2026 4:30",5/18/26 2:30,5/18/26 4:30,5/15/26 2:29,5/15/26 4:29,0h,-8.02h,0ed,0,NA,NA,"April 13, 2026 4:45","April 14, 2026 9:45",As Soon As Possible,NA,NA,NA,4/23/26 10:49,2h,2h,0h,0,0,0,0,0,1.2.2.2.23.5,500,No,No,No,,,Black,,,,,,,,0,0,0,0d,0d,0d,No,No,No,No,No,No,No,No,No,No,No,0,0,0,0,0,
777,1831,Yes,Auto Scheduled,Post Load Validation,3h,Fixed Units,6,0.38d,776,"May 18, 2026 4:30","May 19, 2026 10:30",5/18/26 4:30,5/19/26 10:30,5/15/26 4:29,5/18/26 10:29,0h,-8.02h,0ed,0,NA,NA,"April 14, 2026 9:45","April 14, 2026 1:45",As Soon As Possible,NA,NA,NA,4/23/26 10:49,6h,6h,0h,0,0,0,0,0,1.2.2.2.23.6,500,No,No,No,,"Sam Houff,Kim Kolesar",Black,,,,,,,,0,0,0,0d,0d,0d,No,No,No,No,No,No,No,No,No,No,No,0,0,0,0,0,
778,1832,Yes,Auto Scheduled,PTP_CM26_Material_Master - All Types,2.28d,Fixed Duration,5,3.16d,,"May 18, 2026 11:00","May 20, 2026 2:15",5/18/26 11:00,5/20/26 2:15,5/5/26 3:44,5/18/26 10:29,0d,-8.53d,0ed,0,NA,NA,"April 10, 2026 10:45","April 15, 2026 12:00",As Soon As Possible,NA,NA,NA,4/23/26 10:49,19h,19h,0h,0,0,0,0,0,1.2.2.2.24,500,No,Yes,Yes,,,Black,,,,,,,,0,0,0,0d,0d,0d,No,No,No,No,No,No,No,No,No,No,No,0,0,0,0,0,
779,1833,Yes,Auto Scheduled,Extract File,5h,Fixed Units,6,0.63d,754,"May 18, 2026 11:00","May 19, 2026 9:45",5/18/26 11:00,5/19/26 9:45,5/15/26 11:44,5/18/26 10:29,0h,-7.27h,0ed,0,NA,NA,"April 10, 2026 10:45","April 13, 2026 9:30",As Soon As Possible,NA,NA,NA,4/23/26 10:49,5h,5h,0h,0,0,0,0,0,1.2.2.2.24.1,500,No,No,No,,,Black,,,,,,,,0,0,0,0d,0d,0d,No,No,No,No,No,No,No,No,No,No,No,0,0,0,0,0,
780,1834,Yes,Auto Scheduled,Pre Load Validation,2h,Fixed Units,6,0.25d,752,"May 18, 2026 2:00","May 19, 2026 11:15",5/18/26 2:00,5/19/26 11:15,5/5/26 3:44,5/6/26 1:59,0h,-70.27h,0ed,0,NA,NA,"April 13, 2026 11:45","April 14, 2026 10:00",As Soon As Possible,NA,NA,NA,4/23/26 10:49,4h,4h,0h,0,0,0,0,0,1.2.2.2.24.2,500,No,No,No,,"Sam Houff,Kim Kolesar,Matt",Black,,,,,,,,0,0,0,0d,0d,0d,No,No,No,No,No,No,No,No,No,No,No,0,0,0,0,0,
781,1835,Yes,Auto Scheduled,Simulate Load,1h,Fixed Units,6,0.13d,780,"May 19, 2026 11:15","May 19, 2026 1:15",5/19/26 11:15,5/19/26 1:15,5/6/26 1:59,5/6/26 2:59,0h,-70.27h,0ed,0,NA,NA,"April 14, 2026 10:00","April 14, 2026 11:00",As Soon As Possible,NA,NA,NA,4/23/26 10:49,1h,1h,0h,0,0,0,0,0,1.2.2.2.24.3,500,No,No,No,,,Black,,,,,,,,0,0,0,0d,0d,0d,No,No,No,No,No,No,No,No,No,No,No,0,0,0,0,0,
782,1836,Yes,Auto Scheduled,Error and Defect Mitigation,4h,Fixed Units,6,0.5d,781,"May 19, 2026 1:15","May 20, 2026 8:15",5/19/26 1:15,5/20/26 8:15,5/6/26 2:59,5/7/26 9:59,0h,-70.27h,0ed,0,NA,NA,"April 14, 2026 11:00","April 14, 2026 4:00",As Soon As Possible,NA,NA,NA,4/23/26 10:49,4h,4h,0h,0,0,0,0,0,1.2.2.2.24.4,500,No,No,No,,"Sam Houff,Kim Kolesar,Matt",Black,,,,,,,,0,0,0,0d,0d,0d,No,No,No,No,No,No,No,No,No,No,No,0,0,0,0,0,
783,1837,Yes,Auto Scheduled,Load,3h,Fixed Units,6,0.38d,782,"May 20, 2026 8:15","May 20, 2026 11:15",5/20/26 8:15,5/20/26 11:15,5/7/26 9:59,5/7/26 1:59,0h,-70.27h,0ed,0,NA,NA,"April 14, 2026 4:00","April 15, 2026 10:00",As Soon As Possible,NA,NA,NA,4/23/26 10:49,3h,3h,0h,0,0,0,0,0,1.2.2.2.24.5,500,No,No,No,,,Black,,,,,,,,0,0,0,0d,0d,0d,No,No,No,No,No,No,No,No,No,No,No,0,0,0,0,0,
784,1838,Yes,Auto Scheduled,Post Load Validation,2h,Fixed Units,6,0.25d,783,"May 20, 2026 11:15","May 20, 2026 2:15",5/20/26 11:15,5/20/26 2:15,5/8/26 11:29,5/8/26 2:29,0h,-63.77h,0ed,0,NA,NA,"April 15, 2026 10:00","April 15, 2026 12:00",As Soon As Possible,NA,NA,NA,4/23/26 10:49,2h,2h,0h,0,0,0,0,0,1.2.2.2.24.6,500,No,No,No,,"Sam Houff,Kim Kolesar,Matt",Black,,,,,,,,0,0,0,0d,0d,0d,No,No,No,No,No,No,No,No,No,No,No,0,0,0,0,0,
785,1839,Yes,Auto Scheduled,PTP_CM26_Material_Master - SERV - Service Materials,1.34d,Fixed Duration,5,5.88d,,"May 20, 2026 9:00","May 21, 2026 11:45",5/20/26 9:00,5/21/26 11:45,5/15/26 9:59,5/18/26 10:29,0d,-3.16d,0ed,0,NA,NA,"April 7, 2026 4:15","April 15, 2026 3:15",As Soon As Possible,NA,NA,NA,4/23/26 10:49,15h,15h,0h,0,0,0,0,0,1.2.2.2.25,500,No,Yes,Yes,,,Black,,,,,,,,0,0,0,0d,0d,0d,No,No,No,No,No,No,No,No,No,No,No,0,0,0,0,0,
786,1840,Yes,Auto Scheduled,"Load File Staged and Posted ""Ready""",30m,Fixed Units,6,0.06d,655,"May 20, 2026 9:00","May 20, 2026 9:30",5/20/26 9:00,5/20/26 9:30,5/18/26 9:59,5/18/26 10:29,0m,-901m,0ed,0,NA,NA,"April 7, 2026 4:15","April 7, 2026 4:45",As Soon As Possible,NA,NA,NA,4/23/26 10:49,1h,1h,0h,0,0,0,0,0,1.2.2.2.25.1,500,No,No,No,,,Black,,,,,,,,0,0,0,0d,0d,0d,No,No,No,No,No,No,No,No,No,No,No,0,0,0,0,0,
787,1841,Yes,Auto Scheduled,Pre Load Validation,30m,Fixed Units,6,0.06d,783,"May 20, 2026 11:15","May 20, 2026 11:45",5/20/26 11:15,5/20/26 11:45,5/15/26 9:59,5/15/26 10:29,0m,-1516m,0ed,0,NA,NA,"April 14, 2026 2:45","April 14, 2026 3:15",As Soon As Possible,NA,NA,NA,4/23/26 10:49,1h,1h,0h,0,0,0,0,0,1.2.2.2.25.2,500,No,No,No,,"Sam Houff,Kim Kolesar",Black,,,,,,,,0,0,0,0d,0d,0d,No,No,No,No,No,No,No,No,No,No,No,0,0,0,0,0,
788,1842,Yes,Auto Scheduled,Simulate Load,1h,Fixed Units,6,0.13d,787,"May 20, 2026 11:45","May 20, 2026 1:45",5/20/26 11:45,5/20/26 1:45,5/15/26 10:29,5/15/26 11:29,0h,-25.27h,0ed,0,NA,NA,"April 14, 2026 3:15","April 14, 2026 4:15",As Soon As Possible,NA,NA,NA,4/23/26 10:49,1h,1h,0h,0,0,0,0,0,1.2.2.2.25.3,500,No,No,No,,,Black,,,,,,,,0,0,0,0d,0d,0d,No,No,No,No,No,No,No,No,No,No,No,0,0,0,0,0,
789,1843,Yes,Auto Scheduled,Error and Defect Mitigation,2h,Fixed Units,6,0.25d,788,"May 20, 2026 1:45","May 20, 2026 3:45",5/20/26 1:45,5/20/26 3:45,5/15/26 11:29,5/15/26 2:29,0h,-25.27h,0ed,0,NA,NA,"April 14, 2026 4:15","April 15, 2026 9:15",As Soon As Possible,NA,NA,NA,4/23/26 10:49,4h,4h,0h,0,0,0,0,0,1.2.2.2.25.4,500,No,No,No,,"Sam Houff,Kim Kolesar",Black,,,,,,,,0,0,0,0d,0d,0d,No,No,No,No,No,No,No,No,No,No,No,0,0,0,0,0,
790,1844,Yes,Auto Scheduled,Load,2h,Fixed Units,6,0.25d,789,"May 20, 2026 3:45","May 21, 2026 8:45",5/20/26 3:45,5/21/26 8:45,5/15/26 2:29,5/15/26 4:29,0h,-25.27h,0ed,0,NA,NA,"April 15, 2026 9:15","April 15, 2026 11:15",As Soon As Possible,NA,NA,NA,4/23/26 10:49,2h,2h,0h,0,0,0,0,0,1.2.2.2.25.5,500,No,No,No,,,Black,,,,,,,,0,0,0,0d,0d,0d,No,No,No,No,No,No,No,No,No,No,No,0,0,0,0,0,
791,1845,Yes,Auto Scheduled,Post Load Validation,3h,Fixed Units,6,0.38d,790,"May 21, 2026 8:45","May 21, 2026 11:45",5/21/26 8:45,5/21/26 11:45,5/15/26 4:29,5/18/26 10:29,0h,-25.27h,0ed,0,NA,NA,"April 15, 2026 11:15","April 15, 2026 3:15",As Soon As Possible,NA,NA,NA,4/23/26 10:49,6h,6h,0h,0,0,0,0,0,1.2.2.2.25.6,500,No,No,No,,"Sam Houff,Kim Kolesar",Black,,,,,,,,0,0,0,0d,0d,0d,No,No,No,No,No,No,No,No,No,No,No,0,0,0,0,0,
792,1846,Yes,Auto Scheduled,PTP_CM26_Material_Master - KMAT - Configurable Materials,1.34d,Fixed Duration,5,5.88d,,"May 20, 2026 9:00","May 21, 2026 11:45",5/20/26 9:00,5/21/26 11:45,5/7/26 1:59,5/13/26 2:44,0d,-8.5d,0ed,0,NA,NA,"April 7, 2026 4:15","April 15, 2026 3:15",As Soon As Possible,NA,NA,NA,4/23/26 10:49,9h,9h,0h,0,0,0,0,0,1.2.2.2.26,500,No,Yes,Yes,,,Black,,,,,,,,0,0,0,0d,0d,0d,No,No,No,No,No,No,No,No,No,No,No,0,0,0,0,0,
793,1847,Yes,Auto Scheduled,"Load File Staged and Posted ""Ready""",30m,Fixed Units,6,0.06d,655,"May 20, 2026 9:00","May 20, 2026 9:30",5/20/26 9:00,5/20/26 9:30,5/13/26 2:14,5/13/26 2:44,0m,-2146m,0ed,0,NA,NA,"April 7, 2026 4:15","April 7, 2026 4:45",As Soon As Possible,NA,NA,NA,4/23/26 10:49,0.5h,0.5h,0h,0,0,0,0,0,1.2.2.2.26.1,500,No,No,No,,,Black,,,,,,,,0,0,0,0d,0d,0d,No,No,No,No,No,No,No,No,No,No,No,0,0,0,0,0,
794,1848,Yes,Auto Scheduled,Pre Load Validation,30m,Fixed Units,6,0.06d,783,"May 20, 2026 11:15","May 20, 2026 11:45",5/20/26 11:15,5/20/26 11:45,5/7/26 1:59,5/7/26 2:29,0m,-4216m,0ed,0,NA,NA,"April 14, 2026 2:45","April 14, 2026 3:15",As Soon As Possible,NA,NA,NA,4/23/26 10:49,0.5h,0.5h,0h,0,0,0,0,0,1.2.2.2.26.2,500,No,No,No,,"Sam Houff,Kim Kolesar,Matt",Black,,,,,,,,0,0,0,0d,0d,0d,No,No,No,No,No,No,No,No,No,No,No,0,0,0,0,0,
795,1849,Yes,Auto Scheduled,Simulate Load,1h,Fixed Units,6,0.13d,794,"May 20, 2026 11:45","May 20, 2026 1:45",5/20/26 11:45,5/20/26 1:45,5/7/26 2:29,5/7/26 3:29,0h,-70.27h,0ed,0,NA,NA,"April 14, 2026 3:15","April 14, 2026 4:15",As Soon As Possible,NA,NA,NA,4/23/26 10:49,1h,1h,0h,0,0,0,0,0,1.2.2.2.26.3,500,No,No,No,,,Black,,,,,,,,0,0,0,0d,0d,0d,No,No,No,No,No,No,No,No,No,No,No,0,0,0,0,0,
796,1850,Yes,Auto Scheduled,Error and Defect Mitigation,2h,Fixed Units,6,0.25d,795,"May 20, 2026 1:45","May 20, 2026 3:45",5/20/26 1:45,5/20/26 3:45,5/7/26 3:29,5/8/26 8:29,0h,-70.27h,0ed,0,NA,NA,"April 14, 2026 4:15","April 15, 2026 9:15",As Soon As Possible,NA,NA,NA,4/23/26 10:49,2h,2h,0h,0,0,0,0,0,1.2.2.2.26.4,500,No,No,No,,"Sam Houff,Kim Kolesar,Matt",Black,,,,,,,,0,0,0,0d,0d,0d,No,No,No,No,No,No,No,No,No,No,No,0,0,0,0,0,
797,1851,Yes,Auto Scheduled,Load,2h,Fixed Units,6,0.25d,796,"May 20, 2026 3:45","May 21, 2026 8:45",5/20/26 3:45,5/21/26 8:45,5/8/26 8:29,5/8/26 10:29,0h,-70.27h,0ed,0,NA,NA,"April 15, 2026 9:15","April 15, 2026 11:15",As Soon As Possible,NA,NA,NA,4/23/26 10:49,2h,2h,0h,0,0,0,0,0,1.2.2.2.26.5,500,No,No,No,,,Black,,,,,,,,0,0,0,0d,0d,0d,No,No,No,No,No,No,No,No,No,No,No,0,0,0,0,0,
798,1852,Yes,Auto Scheduled,Post Load Validation,3h,Fixed Units,6,0.38d,797,"May 21, 2026 8:45","May 21, 2026 11:45",5/21/26 8:45,5/21/26 11:45,5/8/26 10:29,5/8/26 2:29,0h,-70.27h,0ed,0,NA,NA,"April 15, 2026 11:15","April 15, 2026 3:15",As Soon As Possible,NA,NA,NA,4/23/26 10:49,3h,3h,0h,0,0,0,0,0,1.2.2.2.26.6,500,No,No,No,,"Sam Houff,Kim Kolesar,Matt",Black,,,,,,,,0,0,0,0d,0d,0d,No,No,No,No,No,No,No,No,No,No,No,0,0,0,0,0,
799,1853,Yes,Auto Scheduled,PTP_CM28_Purchase_Info_Records,3.59d,Fixed Duration,5,1.28d,,"May 18, 2026 2:00","May 22, 2026 9:45",5/18/26 2:00,5/22/26 9:45,5/11/26 2:22,5/18/26 10:29,0d,-4.96d,0ed,0,NA,NA,"April 15, 2026 10:00","April 16, 2026 1:15",As Soon As Possible,NA,NA,NA,4/23/26 10:49,9h,9h,0h,0,0,0,0,0,1.2.2.2.27,500,No,Yes,Yes,,,Black,,,,,,,,0,0,0,0d,0d,0d,No,No,No,No,No,No,No,No,No,No,No,0,0,0,0,0,
800,1854,Yes,Auto Scheduled,Extract File,1h,Fixed Units,6,0.13d,"784,798","May 21, 2026 11:45","May 21, 2026 1:45",5/21/26 11:45,5/21/26 1:45,5/11/26 2:22,5/11/26 3:22,0h,-62.39h,0ed,0,NA,NA,"April 15, 2026 3:15","April 15, 2026 4:15",As Soon As Possible,NA,NA,NA,4/23/26 10:49,1h,1h,0h,0,0,0,0,0,1.2.2.2.27.1,500,No,No,No,,,Black,,,,,,,,0,0,0,0d,0d,0d,No,No,No,No,No,No,No,No,No,No,No,0,0,0,0,0,
801,1855,Yes,Auto Scheduled,Pre Load Validation,2h,Fixed Units,6,0.25d,800,"May 21, 2026 1:45","May 21, 2026 3:45",5/21/26 1:45,5/21/26 3:45,5/15/26 2:29,5/15/26 4:29,0h,-31.27h,0ed,0,NA,NA,"April 15, 2026 4:15","April 16, 2026 9:15",As Soon As Possible,NA,NA,NA,4/23/26 10:49,2h,2h,0h,0,0,0,0,0,1.2.2.2.27.2,500,No,No,No,,Sam Houff,Black,,,,,,,,0,0,0,0d,0d,0d,No,No,No,No,No,No,No,No,No,No,No,0,0,0,0,0,
802,1856,Yes,Auto Scheduled,Simulate Load,1h,Fixed Units,6,0.13d,801,"May 21, 2026 3:45","May 21, 2026 4:45",5/21/26 3:45,5/21/26 4:45,5/15/26 4:29,5/18/26 8:29,0h,-31.27h,0ed,0,NA,NA,"April 16, 2026 9:15","April 16, 2026 10:15",As Soon As Possible,NA,NA,NA,4/23/26 10:49,1h,1h,0h,0,0,0,0,0,1.2.2.2.27.3,500,No,No,No,,,Black,,,,,,,,0,0,0,0d,0d,0d,No,No,No,No,No,No,No,No,No,No,No,0,0,0,0,0,
803,1857,Yes,Auto Scheduled,Error and Defect Mitigation,2h,Fixed Units,6,0.25d,802,"May 21, 2026 4:45","May 22, 2026 9:45",5/21/26 4:45,5/22/26 9:45,5/18/26 8:29,5/18/26 10:29,0h,-31.27h,0ed,0,NA,NA,"April 16, 2026 10:15","April 16, 2026 1:15",As Soon As Possible,NA,NA,NA,4/23/26 10:49,2h,2h,0h,0,0,0,0,0,1.2.2.2.27.4,500,No,No,No,,Sam Houff,Black,,,,,,,,0,0,0,0d,0d,0d,No,No,No,No,No,No,No,No,No,No,No,0,0,0,0,0,
804,1858,Yes,Auto Scheduled,Load,1h,Fixed Units,6,0.13d,752,"May 18, 2026 2:00","May 18, 2026 3:00",5/18/26 2:00,5/18/26 3:00,5/15/26 4:29,5/18/26 8:29,0h,-5.52h,0ed,0,NA,NA,"April 15, 2026 10:00","April 15, 2026 11:00",As Soon As Possible,NA,NA,NA,4/23/26 10:49,1h,1h,0h,0,0,0,0,0,1.2.2.2.27.5,500,No,No,No,,,Black,,,,,,,,0,0,0,0d,0d,0d,No,No,No,No,No,No,No,No,No,No,No,0,0,0,0,0,
805,1859,Yes,Auto Scheduled,Post Load Validation,2h,Fixed Units,6,0.25d,804,"May 18, 2026 3:00","May 18, 2026 5:00",5/18/26 3:00,5/18/26 5:00,5/18/26 8:29,5/18/26 10:29,0h,-5.52h,0ed,0,NA,NA,"April 15, 2026 11:00","April 15, 2026 2:00",As Soon As Possible,NA,NA,NA,4/23/26 10:49,2h,2h,0h,0,0,0,0,0,1.2.2.2.27.6,500,No,No,No,,Sam Houff,Black,,,,,,,,0,0,0,0d,0d,0d,No,No,No,No,No,No,No,No,No,No,No,0,0,0,0,0,
806,1860,Yes,Auto Scheduled,PTP_CM28_Purchase_Info_Record External Processing,1.13d,Fixed Duration,5,1.13d,,"May 21, 2026 11:45","May 22, 2026 1:45",5/21/26 11:45,5/22/26 1:45,5/15/26 9:29,5/18/26 10:29,0d,-4.28d,0ed,0,NA,NA,"April 15, 2026 3:15","April 16, 2026 4:15",As Soon As Possible,NA,NA,NA,4/23/26 10:49,9h,9h,0h,0,0,0,0,0,1.2.2.2.28,500,No,Yes,Yes,,,Black,,,,,,,,0,0,0,0d,0d,0d,No,No,No,No,No,No,No,No,No,No,No,0,0,0,0,0,
807,1861,Yes,Auto Scheduled,"Load File Staged and Posted ""Ready""",30m,Fixed Units,6,0.06d,"784,798","May 21, 2026 11:45","May 21, 2026 1:15",5/21/26 11:45,5/21/26 1:15,5/15/26 9:29,5/15/26 9:59,0m,-2056m,0ed,0,NA,NA,"April 15, 2026 3:15","April 15, 2026 3:45",As Soon As Possible,NA,NA,NA,4/23/26 10:49,0.5h,0.5h,0h,0,0,0,0,0,1.2.2.2.28.1,500,No,No,No,,,Black,,,,,,,,0,0,0,0d,0d,0d,No,No,No,No,No,No,No,No,No,No,No,0,0,0,0,0,
808,1862,Yes,Auto Scheduled,Pre Load Validation,30m,Fixed Units,6,0.06d,807,"May 21, 2026 1:15","May 21, 2026 1:45",5/21/26 1:15,5/21/26 1:45,5/15/26 9:59,5/15/26 10:29,0m,-2056m,0ed,0,NA,NA,"April 15, 2026 3:45","April 15, 2026 4:15",As Soon As Possible,NA,NA,NA,4/23/26 10:49,0.5h,0.5h,0h,0,0,0,0,0,1.2.2.2.28.2,500,No,No,No,,Sam Houff,Black,,,,,,,,0,0,0,0d,0d,0d,No,No,No,No,No,No,No,No,No,No,No,0,0,0,0,0,
809,1863,Yes,Auto Scheduled,Simulate Load,1h,Fixed Units,6,0.13d,808,"May 21, 2026 1:45","May 21, 2026 2:45",5/21/26 1:45,5/21/26 2:45,5/15/26 10:29,5/15/26 11:29,0h,-34.27h,0ed,0,NA,NA,"April 15, 2026 4:15","April 16, 2026 8:15",As Soon As Possible,NA,NA,NA,4/23/26 10:49,1h,1h,0h,0,0,0,0,0,1.2.2.2.28.3,500,No,No,No,,,Black,,,,,,,,0,0,0,0d,0d,0d,No,No,No,No,No,No,No,No,No,No,No,0,0,0,0,0,
810,1864,Yes,Auto Scheduled,Error and Defect Mitigation,2h,Fixed Units,6,0.25d,809,"May 21, 2026 2:45","May 21, 2026 4:45",5/21/26 2:45,5/21/26 4:45,5/15/26 11:29,5/15/26 2:29,0h,-34.27h,0ed,0,NA,NA,"April 16, 2026 8:15","April 16, 2026 10:15",As Soon As Possible,NA,NA,NA,4/23/26 10:49,2h,2h,0h,0,0,0,0,0,1.2.2.2.28.4,500,No,No,No,,Sam Houff,Black,,,,,,,,0,0,0,0d,0d,0d,No,No,No,No,No,No,No,No,No,No,No,0,0,0,0,0,
811,1865,Yes,Auto Scheduled,Load,2h,Fixed Units,6,0.25d,810,"May 21, 2026 4:45","May 22, 2026 9:45",5/21/26 4:45,5/22/26 9:45,5/15/26 2:29,5/15/26 4:29,0h,-34.27h,0ed,0,NA,NA,"April 16, 2026 10:15","April 16, 2026 1:15",As Soon As Possible,NA,NA,NA,4/23/26 10:49,2h,2h,0h,0,0,0,0,0,1.2.2.2.28.5,500,No,No,No,,,Black,,,,,,,,0,0,0,0d,0d,0d,No,No,No,No,No,No,No,No,No,No,No,0,0,0,0,0,
812,1866,Yes,Auto Scheduled,Post Load Validation,3h,Fixed Units,6,0.38d,811,"May 22, 2026 9:45","May 22, 2026 1:45",5/22/26 9:45,5/22/26 1:45,5/15/26 4:29,5/18/26 10:29,0h,-34.27h,0ed,0,NA,NA,"April 16, 2026 1:15","April 16, 2026 4:15",As Soon As Possible,NA,NA,NA,4/23/26 10:49,3h,3h,0h,0,0,0,0,0,1.2.2.2.28.6,500,No,No,No,,Sam Houff,Black,,,,,,,,0,0,0,0d,0d,0d,No,No,No,No,No,No,No,No,No,No,No,0,0,0,0,0,
813,1867,Yes,Auto Scheduled,PTP_CM28_Purchase_Info_Record Subcontracting and Consignment,1.13d,Fixed Duration,5,1.13d,,"May 21, 2026 11:45","May 22, 2026 1:45",5/21/26 11:45,5/22/26 1:45,5/8/26 2:29,5/18/26 10:29,0d,-8.78d,0ed,0,NA,NA,"April 15, 2026 3:15","April 16, 2026 4:15",As Soon As Possible,NA,NA,NA,4/23/26 10:49,9h,9h,0h,0,0,0,0,0,1.2.2.2.29,500,No,Yes,Yes,,,Black,,,,,,,,0,0,0,0d,0d,0d,No,No,No,No,No,No,No,No,No,No,No,0,0,0,0,0,
814,1868,Yes,Auto Scheduled,"Load File Staged and Posted ""Ready""",30m,Fixed Units,6,0.06d,"784,798","May 21, 2026 11:45","May 21, 2026 1:15",5/21/26 11:45,5/21/26 1:15,5/8/26 2:29,5/8/26 2:59,0m,-4216m,0ed,0,NA,NA,"April 15, 2026 3:15","April 15, 2026 3:45",As Soon As Possible,NA,NA,NA,4/23/26 10:49,0.5h,0.5h,0h,0,0,0,0,0,1.2.2.2.29.1,500,No,No,No,,,Black,,,,,,,,0,0,0,0d,0d,0d,No,No,No,No,No,No,No,No,No,No,No,0,0,0,0,0,
815,1869,Yes,Auto Scheduled,Pre Load Validation,30m,Fixed Units,6,0.06d,814,"May 21, 2026 1:15","May 21, 2026 1:45",5/21/26 1:15,5/21/26 1:45,5/8/26 2:59,5/8/26 3:29,0m,-4216m,0ed,0,NA,NA,"April 15, 2026 3:45","April 15, 2026 4:15",As Soon As Possible,NA,NA,NA,4/23/26 10:49,0.5h,0.5h,0h,0,0,0,0,0,1.2.2.2.29.2,500,No,No,No,,Sam Houff,Black,,,,,,,,0,0,0,0d,0d,0d,No,No,No,No,No,No,No,No,No,No,No,0,0,0,0,0,
816,1870,Yes,Auto Scheduled,Simulate Load,1h,Fixed Units,6,0.13d,815,"May 21, 2026 1:45","May 21, 2026 2:45",5/21/26 1:45,5/21/26 2:45,5/8/26 3:29,5/8/26 4:29,0h,-70.27h,0ed,0,NA,NA,"April 15, 2026 4:15","April 16, 2026 8:15",As Soon As Possible,NA,NA,NA,4/23/26 10:49,1h,1h,0h,0,0,0,0,0,1.2.2.2.29.3,500,No,No,No,,,Black,,,,,,,,0,0,0,0d,0d,0d,No,No,No,No,No,No,No,No,No,No,No,0,0,0,0,0,
817,1871,Yes,Auto Scheduled,Error and Defect Mitigation,2h,Fixed Units,6,0.25d,816,"May 21, 2026 2:45","May 21, 2026 4:45",5/21/26 2:45,5/21/26 4:45,5/15/26 11:29,5/15/26 2:29,0h,-34.27h,0ed,0,NA,NA,"April 16, 2026 8:15","April 16, 2026 10:15",As Soon As Possible,NA,NA,NA,4/23/26 10:49,2h,2h,0h,0,0,0,0,0,1.2.2.2.29.4,500,No,No,No,,Sam Houff,Black,,,,,,,,0,0,0,0d,0d,0d,No,No,No,No,No,No,No,No,No,No,No,0,0,0,0,0,
818,1872,Yes,Auto Scheduled,Load,2h,Fixed Units,6,0.25d,817,"May 21, 2026 4:45","May 22, 2026 9:45",5/21/26 4:45,5/22/26 9:45,5/15/26 2:29,5/15/26 4:29,0h,-34.27h,0ed,0,NA,NA,"April 16, 2026 10:15","April 16, 2026 1:15",As Soon As Possible,NA,NA,NA,4/23/26 10:49,2h,2h,0h,0,0,0,0,0,1.2.2.2.29.5,500,No,No,No,,,Black,,,,,,,,0,0,0,0d,0d,0d,No,No,No,No,No,No,No,No,No,No,No,0,0,0,0,0,
819,1873,Yes,Auto Scheduled,Post Load Validation,3h,Fixed Units,6,0.38d,818,"May 22, 2026 9:45","May 22, 2026 1:45",5/22/26 9:45,5/22/26 1:45,5/15/26 4:29,5/18/26 10:29,0h,-34.27h,0ed,0,NA,NA,"April 16, 2026 1:15","April 16, 2026 4:15",As Soon As Possible,NA,NA,NA,4/23/26 10:49,3h,3h,0h,0,0,0,0,0,1.2.2.2.29.6,500,No,No,No,,Sam Houff,Black,,,,,,,,0,0,0,0d,0d,0d,No,No,No,No,No,No,No,No,No,No,No,0,0,0,0,0,
820,1874,Yes,Auto Scheduled,PTM_CM31_BOM Conversion,2.48d,Fixed Duration,5,1.13d,,"May 21, 2026 1:45","May 26, 2026 8:38",5/21/26 1:45,5/26/26 8:38,5/11/26 3:22,5/14/26 10:14,0d,-7.8d,0ed,0,NA,NA,"April 15, 2026 4:15","April 17, 2026 8:15",As Soon As Possible,NA,NA,NA,4/23/26 10:49,19h,9h,0h,0,0,0,0,0,1.2.2.2.30,500,No,Yes,Yes,,,Black,,,,,,,,0,0,0,0d,0d,0d,Yes,No,No,No,No,No,No,No,No,No,No,0,0,0,0,0,
821,1875,Yes,Auto Scheduled,Extract File,1h,Fixed Units,6,0.13d,800,"May 21, 2026 1:45","May 21, 2026 2:45",5/21/26 1:45,5/21/26 2:45,5/11/26 3:22,5/11/26 4:22,0h,-62.39h,0ed,0,NA,NA,"April 15, 2026 4:15","April 16, 2026 8:15",As Soon As Possible,NA,NA,NA,4/23/26 10:49,1h,1h,0h,0,0,0,0,0,1.2.2.2.30.1,500,No,No,No,,,Black,,,,,,,,0,0,0,0d,0d,0d,No,No,No,No,No,No,No,No,No,No,No,0,0,0,0,0,
822,1876,Yes,Auto Scheduled,Pre Load Validation,0.5h,Fixed Units,6,0.25d,821,"May 21, 2026 2:45","May 21, 2026 3:15",5/21/26 2:45,5/21/26 3:15,5/11/26 4:22,5/11/26 4:52,0h,-62.39h,0ed,0,NA,NA,"April 16, 2026 8:15","April 16, 2026 10:15",As Soon As Possible,NA,NA,NA,4/23/26 10:49,0.5h,2h,0h,0,0,0,0,0,1.2.2.2.30.2,500,No,No,No,,"Matt Palastro, Dave Duda",Black,,,,,,,,0,0,0,0d,0d,0d,No,No,No,No,No,No,No,No,No,No,No,0,0,0,0,0,
823,1877,Yes,Auto Scheduled,Simulate Load,15.5h,Fixed Units,6,0.13d,822,"May 21, 2026 3:15","May 25, 2026 3:15",5/21/26 3:15,5/25/26 3:15,5/11/26 4:52,5/13/26 4:52,0h,-62.39h,0ed,0,NA,NA,"April 16, 2026 10:15","April 16, 2026 11:15",As Soon As Possible,NA,NA,NA,4/23/26 10:49,15.5h,1h,0h,0,0,0,0,0,1.2.2.2.30.3,500,No,No,No,,,Black,,,,,,,,0,0,0,0d,0d,0d,No,No,No,No,No,No,No,No,No,No,No,0,0,0,0,0,
824,1878,Yes,Auto Scheduled,Error and Defect Mitigation,0.5h,Fixed Units,6,0.25d,823,"May 25, 2026 3:15","May 25, 2026 3:45",5/25/26 3:15,5/25/26 3:45,5/13/26 4:52,5/14/26 8:22,0h,-62.39h,0ed,0,NA,NA,"April 16, 2026 11:15","April 16, 2026 2:15",As Soon As Possible,NA,NA,NA,4/23/26 10:49,0.5h,2h,0h,0,0,0,0,0,1.2.2.2.30.4,500,No,No,No,,"Matt Palastro, Dave Duda",Black,,,,,,,,0,0,0,0d,0d,0d,No,No,No,No,No,No,No,No,No,No,No,0,0,0,0,0,
825,1879,Yes,Auto Scheduled,Load,1h,Fixed Units,6,0.13d,824,"May 25, 2026 3:45","May 25, 2026 5:00",5/25/26 3:45,5/25/26 5:00,5/14/26 8:22,5/14/26 9:37,0h,-62.39h,0ed,0,NA,NA,"April 16, 2026 2:15","April 16, 2026 3:15",As Soon As Possible,NA,NA,NA,4/23/26 10:49,1h,1h,0h,0,0,0,0,0,4/1,500,No,No,No,,,Black,,,,,,,,0,0,0,0d,0d,0d,No,No,No,No,No,No,No,No,No,No,No,0,0,0,0,0,
826,1880,Yes,Auto Scheduled,Post Load Validation,0.5h,Fixed Units,6,0.25d,825,"May 26, 2026 8:00","May 26, 2026 8:38",5/26/26 8:00,5/26/26 8:38,5/14/26 9:37,5/14/26 10:14,0h,-62.39h,0ed,0,NA,NA,"April 16, 2026 3:15","April 17, 2026 8:15",As Soon As Possible,NA,NA,NA,4/23/26 10:49,0.5h,2h,0h,0,0,0,0,0,1.2.2.2.30.6,500,No,No,No,,"Matt Palastro, Dave Duda",Black,,,,,,,,0,0,0,0d,0d,0d,No,No,No,No,No,No,No,No,No,No,No,0,0,0,0,0,
827,1881,Yes,Auto Scheduled,PTM_CM40_Work Center Conversion,3.08d,Fixed Duration,5,2d,,"May 21, 2026 2:45","May 26, 2026 3:23",5/21/26 2:45,5/26/26 3:23,5/12/26 4:59,5/14/26 4:59,0d,-7.8d,0ed,0,NA,NA,"April 16, 2026 8:15","April 20, 2026 8:15",As Soon As Possible,NA,NA,NA,4/23/26 10:49,6.75h,9h,0h,0,0,0,0,0,1.2.2.2.31,500,No,Yes,Yes,,,Black,,,,,,,,0,0,0,0d,0d,0d,No,No,No,No,No,No,No,No,No,No,No,0,0,0,0,0,
828,1882,Yes,Auto Scheduled,Extract File,1h,Fixed Units,6,0.13d,821,"May 21, 2026 2:45","May 21, 2026 3:45",5/21/26 2:45,5/21/26 3:45,5/12/26 4:59,5/13/26 8:59,0h,-53.77h,0ed,0,NA,NA,"April 16, 2026 8:15","April 16, 2026 9:15",As Soon As Possible,NA,NA,NA,4/23/26 10:49,1h,1h,0h,0,0,0,0,0,1.2.2.2.31.1,500,No,No,No,,,Black,,,,,,,,0,0,0,0d,0d,0d,No,No,No,No,No,No,No,No,No,No,No,0,0,0,0,0,
829,1883,Yes,Auto Scheduled,Pre Load Validation,2h,Fixed Units,6,0.25d,826,"May 26, 2026 8:38","May 26, 2026 10:38",5/26/26 8:38,5/26/26 10:38,5/14/26 10:14,5/14/26 1:14,0h,-62.39h,0ed,0,NA,NA,"April 17, 2026 8:15","April 17, 2026 10:15",As Soon As Possible,NA,NA,NA,4/23/26 10:49,2h,2h,0h,0,0,0,0,0,1.2.2.2.31.2,500,No,No,No,,"Matt Palastro, Dave Duda",Black,,,,,,,,0,0,0,0d,0d,0d,No,No,No,No,No,No,No,No,No,No,No,0,0,0,0,0,
830,1884,Yes,Auto Scheduled,Simulate Load,0.25h,Fixed Units,6,0.13d,829,"May 26, 2026 10:38","May 26, 2026 10:53",5/26/26 10:38,5/26/26 10:53,5/14/26 1:14,5/14/26 1:29,0h,-62.39h,0ed,0,NA,NA,"April 17, 2026 10:15","April 17, 2026 11:15",As Soon As Possible,NA,NA,NA,4/23/26 10:49,0.25h,1h,0h,0,0,0,0,0,1.2.2.2.31.3,500,No,No,No,,,Black,,,,,,,,0,0,0,0d,0d,0d,No,No,No,No,No,No,No,No,No,No,No,0,0,0,0,0,
831,1885,Yes,Auto Scheduled,Error and Defect Mitigation,0.5h,Fixed Units,6,0.25d,830,"May 26, 2026 10:53","May 26, 2026 11:23",5/26/26 10:53,5/26/26 11:23,5/14/26 1:29,5/14/26 1:59,0h,-62.39h,0ed,0,NA,NA,"April 17, 2026 11:15","April 17, 2026 2:15",As Soon As Possible,NA,NA,NA,4/23/26 10:49,0.5h,2h,0h,0,0,0,0,0,1.2.2.2.31.4,500,No,No,No,,"Matt Palastro, Dave Duda",Black,,,,,,,,0,0,0,0d,0d,0d,No,No,No,No,No,No,No,No,No,No,No,0,0,0,0,0,
832,1886,Yes,Auto Scheduled,Load,1h,Fixed Units,6,0.13d,831,"May 26, 2026 11:23","May 26, 2026 1:23",5/26/26 11:23,5/26/26 1:23,5/14/26 1:59,5/14/26 2:59,0h,-62.39h,0ed,0,NA,NA,"April 17, 2026 2:15","April 17, 2026 3:15",As Soon As Possible,NA,NA,NA,4/23/26 10:49,1h,1h,0h,0,0,0,0,0,1.2.2.2.31.5,500,No,No,No,,,Black,,,,,,,,0,0,0,0d,0d,0d,No,No,No,No,No,No,No,No,No,No,No,0,0,0,0,0,
833,1887,Yes,Auto Scheduled,Post Load Validation,2h,Fixed Units,6,0.25d,832,"May 26, 2026 1:23","May 26, 2026 3:23",5/26/26 1:23,5/26/26 3:23,5/14/26 2:59,5/14/26 4:59,0h,-62.39h,0ed,0,NA,NA,"April 17, 2026 3:15","April 20, 2026 8:15",As Soon As Possible,NA,NA,NA,4/23/26 10:49,2h,2h,0h,0,0,0,0,0,1.2.2.2.31.6,500,No,No,No,,"Matt Palastro, Dave Duda",Black,,,,,,,,0,0,0,0d,0d,0d,No,No,No,No,No,No,No,No,No,No,No,0,0,0,0,0,
834,1888,Yes,Auto Scheduled,PTM_CM38_Routing Conversion,4.27d,Fixed Duration,5,2.88d,,"May 21, 2026 3:45","May 28, 2026 8:53",5/21/26 3:45,5/28/26 8:53,5/13/26 8:59,5/18/26 10:29,0d,-7.8d,0ed,0,NA,NA,"April 16, 2026 9:15","April 21, 2026 8:15",As Soon As Possible,NA,NA,NA,4/23/26 10:49,11h,9h,0h,0,0,0,0,0,1.2.2.2.32,500,No,Yes,Yes,,,Black,,,,,,,,0,0,0,0d,0d,0d,Yes,No,No,No,No,No,No,No,No,No,No,0,0,0,0,0,
835,1889,Yes,Auto Scheduled,Extract File,1h,Fixed Units,6,0.13d,828,"May 21, 2026 3:45","May 21, 2026 4:45",5/21/26 3:45,5/21/26 4:45,5/13/26 8:59,5/13/26 9:59,0h,-53.77h,0ed,0,NA,NA,"April 16, 2026 9:15","April 16, 2026 10:15",As Soon As Possible,NA,NA,NA,4/23/26 10:49,1h,1h,0h,0,0,0,0,0,1.2.2.2.32.1,500,No,No,No,,,Black,,,,,,,,0,0,0,0d,0d,0d,No,No,No,No,No,No,No,No,No,No,No,0,0,0,0,0,
836,1890,Yes,Auto Scheduled,Pre Load Validation,2h,Fixed Units,6,0.25d,833,"May 26, 2026 3:23","May 27, 2026 10:53",5/26/26 3:23,5/27/26 10:53,5/14/26 4:59,5/15/26 1:29,0h,-62.39h,0ed,0,NA,NA,"April 20, 2026 8:15","April 20, 2026 10:15",As Soon As Possible,NA,NA,NA,4/23/26 10:49,2h,2h,0h,0,0,0,0,0,1.2.2.2.32.2,500,No,No,No,,"Matt Palastro, Dave Duda",Black,,,,,,,,0,0,0,0d,0d,0d,No,No,No,No,No,No,No,No,No,No,No,0,0,0,0,0,
837,1891,Yes,Auto Scheduled,Simulate Load,2h,Fixed Units,6,0.13d,836,"May 27, 2026 10:53","May 27, 2026 1:53",5/27/26 10:53,5/27/26 1:53,5/15/26 1:29,5/15/26 3:29,0h,-62.39h,0ed,0,NA,NA,"April 20, 2026 10:15","April 20, 2026 11:15",As Soon As Possible,NA,NA,NA,4/23/26 10:49,2h,1h,0h,0,0,0,0,0,1.2.2.2.32.3,500,No,No,No,,,Black,,,,,,,,0,0,0,0d,0d,0d,No,No,No,No,No,No,No,No,No,No,No,0,0,0,0,0,
838,1892,Yes,Auto Scheduled,Error and Defect Mitigation,3h,Fixed Units,6,0.25d,837SS,"May 27, 2026 10:53","May 27, 2026 2:53",5/27/26 10:53,5/27/26 2:53,5/15/26 1:29,5/15/26 4:29,0h,-62.39h,0ed,0,NA,NA,"April 20, 2026 11:15","April 20, 2026 2:15",As Soon As Possible,NA,NA,NA,4/23/26 10:49,3h,2h,0h,0,0,0,0,0,1.2.2.2.32.4,500,No,No,No,,"Matt Palastro, Dave Duda",Black,,,,,,,,0,0,0,0d,0d,0d,No,No,No,No,No,No,No,No,No,No,No,0,0,0,0,0,
839,1893,Yes,Auto Scheduled,Load,1h,Fixed Units,6,0.13d,838,"May 27, 2026 2:53","May 27, 2026 3:53",5/27/26 2:53,5/27/26 3:53,5/15/26 4:29,5/18/26 8:29,0h,-62.39h,0ed,0,NA,NA,"April 20, 2026 2:15","April 20, 2026 3:15",As Soon As Possible,NA,NA,NA,4/23/26 10:49,1h,1h,0h,0,0,0,0,0,1.2.2.2.32.5,500,No,No,No,,,Black,,,,,,,,0,0,0,0d,0d,0d,No,No,No,No,No,No,No,No,No,No,No,0,0,0,0,0,
840,1894,Yes,Auto Scheduled,Post Load Validation,2h,Fixed Units,6,0.25d,839,"May 27, 2026 3:53","May 28, 2026 8:53",5/27/26 3:53,5/28/26 8:53,5/18/26 8:29,5/18/26 10:29,0h,-62.39h,0ed,0,NA,NA,"April 20, 2026 3:15","April 21, 2026 8:15",As Soon As Possible,NA,NA,NA,4/23/26 10:49,2h,2h,0h,0,0,0,0,0,1.2.2.2.32.6,500,No,No,No,,"Matt Palastro, Dave Duda",Black,,,,,,,,0,0,0,0d,0d,0d,No,No,No,No,No,No,No,No,No,No,No,0,0,0,0,0,
841,1895,Yes,Auto Scheduled,PTM_CM36_Production Version Conversion,1.13d,Fixed Duration,5,1.13d,,"May 21, 2026 4:45","May 25, 2026 8:45",5/21/26 4:45,5/25/26 8:45,5/13/26 9:59,5/14/26 10:59,0d,-6.72d,0ed,0,NA,NA,"April 16, 2026 10:15","April 17, 2026 11:15",As Soon As Possible,NA,NA,NA,4/23/26 10:49,9h,9h,0h,0,0,0,0,0,1.2.2.2.33,500,No,Yes,Yes,,,Black,,,,,,,,0,0,0,0d,0d,0d,Yes,No,No,No,No,No,No,No,No,No,No,0,0,0,0,0,
842,1896,Yes,Auto Scheduled,"Load File Staged and Posted ""Ready""",30m,Fixed Units,6,0.06d,835,"May 21, 2026 4:45","May 22, 2026 8:15",5/21/26 4:45,5/22/26 8:15,5/13/26 9:59,5/13/26 10:29,0m,-3226m,0ed,0,NA,NA,"April 16, 2026 10:15","April 16, 2026 10:45",As Soon As Possible,NA,NA,NA,4/23/26 10:49,0.5h,0.5h,0h,0,0,0,0,0,1.2.2.2.33.1,500,No,No,No,,,Black,,,,,,,,0,0,0,0d,0d,0d,No,No,No,No,No,No,No,No,No,No,No,0,0,0,0,0,
843,1897,Yes,Auto Scheduled,Pre Load Validation,30m,Fixed Units,6,0.06d,842,"May 22, 2026 8:15","May 22, 2026 8:45",5/22/26 8:15,5/22/26 8:45,5/13/26 10:29,5/13/26 10:59,0m,-3226m,0ed,0,NA,NA,"April 16, 2026 10:45","April 16, 2026 11:15",As Soon As Possible,NA,NA,NA,4/23/26 10:49,0.5h,0.5h,0h,0,0,0,0,0,1.2.2.2.33.2,500,No,No,No,,"Matt Palastro, Dave Duda",Black,,,,,,,,0,0,0,0d,0d,0d,No,No,No,No,No,No,No,No,No,No,No,0,0,0,0,0,
844,1898,Yes,Auto Scheduled,Simulate Load,1h,Fixed Units,6,0.13d,843,"May 22, 2026 8:45","May 22, 2026 9:45",5/22/26 8:45,5/22/26 9:45,5/13/26 10:59,5/13/26 11:59,0h,-53.77h,0ed,0,NA,NA,"April 16, 2026 11:15","April 16, 2026 1:15",As Soon As Possible,NA,NA,NA,4/23/26 10:49,1h,1h,0h,0,0,0,0,0,1.2.2.2.33.3,500,No,No,No,,,Black,,,,,,,,0,0,0,0d,0d,0d,No,No,No,No,No,No,No,No,No,No,No,0,0,0,0,0,
845,1899,Yes,Auto Scheduled,Error and Defect Mitigation,2h,Fixed Units,6,0.25d,844,"May 22, 2026 9:45","May 22, 2026 11:45",5/22/26 9:45,5/22/26 11:45,5/13/26 11:59,5/13/26 2:59,0h,-53.77h,0ed,0,NA,NA,"April 16, 2026 1:15","April 16, 2026 3:15",As Soon As Possible,NA,NA,NA,4/23/26 10:49,2h,2h,0h,0,0,0,0,0,1.2.2.2.33.4,500,No,No,No,,"Matt Palastro, Dave Duda",Black,,,,,,,,0,0,0,0d,0d,0d,No,No,No,No,No,No,No,No,No,No,No,0,0,0,0,0,
846,1900,Yes,Auto Scheduled,Load,2h,Fixed Units,6,0.25d,845,"May 22, 2026 11:45","May 22, 2026 2:45",5/22/26 11:45,5/22/26 2:45,5/13/26 2:59,5/13/26 4:59,0h,-53.77h,0ed,0,NA,NA,"April 16, 2026 3:15","April 17, 2026 8:15",As Soon As Possible,NA,NA,NA,4/23/26 10:49,2h,2h,0h,0,0,0,0,0,1.2.2.2.33.5,500,No,No,No,,,Black,,,,,,,,0,0,0,0d,0d,0d,No,No,No,No,No,No,No,No,No,No,No,0,0,0,0,0,
847,1901,Yes,Auto Scheduled,Post Load Validation,3h,Fixed Units,6,0.38d,846,"May 22, 2026 2:45","May 25, 2026 8:45",5/22/26 2:45,5/25/26 8:45,5/13/26 4:59,5/14/26 10:59,0h,-53.77h,0ed,0,NA,NA,"April 17, 2026 8:15","April 17, 2026 11:15",As Soon As Possible,NA,NA,NA,4/23/26 10:49,3h,3h,0h,0,0,0,0,0,1.2.2.2.33.6,500,No,No,No,,"Matt Palastro, Dave Duda",Black,,,,,,,,0,0,0,0d,0d,0d,No,No,No,No,No,No,No,No,No,No,No,0,0,0,0,0,
848,1902,Yes,Auto Scheduled,PTM_CM35_Inspection Plan,1.13d,Fixed Duration,5,1.13d,,"May 25, 2026 8:45","May 26, 2026 9:45",5/25/26 8:45,5/26/26 9:45,5/14/26 10:59,5/18/26 10:29,0d,-6.72d,0ed,0,NA,NA,"April 17, 2026 11:15","April 20, 2026 1:15",As Soon As Possible,NA,NA,NA,4/23/26 10:49,9h,9h,0h,0,0,0,0,0,1.2.2.2.34,500,No,Yes,Yes,,,Black,,,,,,,,0,0,0,0d,0d,0d,No,No,No,No,No,No,No,No,No,No,No,0,0,0,0,0,
849,1903,Yes,Auto Scheduled,"Load File Staged and Posted ""Ready""",30m,Fixed Units,6,0.06d,847,"May 25, 2026 8:45","May 25, 2026 9:15",5/25/26 8:45,5/25/26 9:15,5/14/26 10:59,5/14/26 11:29,0m,-3226m,0ed,0,NA,NA,"April 17, 2026 11:15","April 17, 2026 11:45",As Soon As Possible,NA,NA,NA,4/23/26 10:49,0.5h,0.5h,0h,0,0,0,0,0,1.2.2.2.34.1,500,No,No,No,,,Black,,,,,,,,0,0,0,0d,0d,0d,No,No,No,No,No,No,No,No,No,No,No,0,0,0,0,0,
850,1904,Yes,Auto Scheduled,Pre Load Validation,30m,Fixed Units,6,0.06d,849,"May 25, 2026 9:15","May 25, 2026 9:45",5/25/26 9:15,5/25/26 9:45,5/15/26 9:59,5/15/26 10:29,0m,-2836m,0ed,0,NA,NA,"April 17, 2026 11:45","April 17, 2026 1:15",As Soon As Possible,NA,NA,NA,4/23/26 10:49,0.5h,0.5h,0h,0,0,0,0,0,1.2.2.2.34.2,500,No,No,No,,"Matt Palastro, Dave Duda",Black,,,,,,,,0,0,0,0d,0d,0d,No,No,No,No,No,No,No,No,No,No,No,0,0,0,0,0,
851,1905,Yes,Auto Scheduled,Simulate Load,1h,Fixed Units,6,0.13d,850,"May 25, 2026 9:45","May 25, 2026 10:45",5/25/26 9:45,5/25/26 10:45,5/15/26 10:29,5/15/26 11:29,0h,-47.27h,0ed,0,NA,NA,"April 17, 2026 1:15","April 17, 2026 2:15",As Soon As Possible,NA,NA,NA,4/23/26 10:49,1h,1h,0h,0,0,0,0,0,1.2.2.2.34.3,500,No,No,No,,,Black,,,,,,,,0,0,0,0d,0d,0d,No,No,No,No,No,No,No,No,No,No,No,0,0,0,0,0,
852,1906,Yes,Auto Scheduled,Error and Defect Mitigation,2h,Fixed Units,6,0.25d,851,"May 25, 2026 10:45","May 25, 2026 1:45",5/25/26 10:45,5/25/26 1:45,5/15/26 11:29,5/15/26 2:29,0h,-47.27h,0ed,0,NA,NA,"April 17, 2026 2:15","April 17, 2026 4:15",As Soon As Possible,NA,NA,NA,4/23/26 10:49,2h,2h,0h,0,0,0,0,0,1.2.2.2.34.4,500,No,No,No,,"Matt Palastro, Dave Duda",Black,,,,,,,,0,0,0,0d,0d,0d,No,No,No,No,No,No,No,No,No,No,No,0,0,0,0,0,
853,1907,Yes,Auto Scheduled,Load,2h,Fixed Units,6,0.25d,852,"May 25, 2026 1:45","May 25, 2026 3:45",5/25/26 1:45,5/25/26 3:45,5/15/26 2:29,5/15/26 4:29,0h,-47.27h,0ed,0,NA,NA,"April 17, 2026 4:15","April 20, 2026 9:15",As Soon As Possible,NA,NA,NA,4/23/26 10:49,2h,2h,0h,0,0,0,0,0,1.2.2.2.34.5,500,No,No,No,,,Black,,,,,,,,0,0,0,0d,0d,0d,No,No,No,No,No,No,No,No,No,No,No,0,0,0,0,0,
854,1908,Yes,Auto Scheduled,Post Load Validation,3h,Fixed Units,6,0.38d,853,"May 25, 2026 3:45","May 26, 2026 9:45",5/25/26 3:45,5/26/26 9:45,5/15/26 4:29,5/18/26 10:29,0h,-47.27h,0ed,0,NA,NA,"April 20, 2026 9:15","April 20, 2026 1:15",As Soon As Possible,NA,NA,NA,4/23/26 10:49,3h,3h,0h,0,0,0,0,0,1.2.2.2.34.6,500,No,No,No,,"Matt Palastro, Dave Duda",Black,,,,,,,,0,0,0,0d,0d,0d,No,No,No,No,No,No,No,No,No,No,No,0,0,0,0,0,
855,1909,Yes,Auto Scheduled,PTM_CM48_Equipment_Master_Serial Numbers,1.13d,Fixed Duration,5,1.13d,,"May 25, 2026 9:15","May 26, 2026 10:15",5/25/26 9:15,5/26/26 10:15,5/14/26 11:29,5/15/26 1:29,0d,-6.72d,0ed,0,NA,NA,"April 17, 2026 11:45","April 20, 2026 1:45",As Soon As Possible,NA,NA,NA,4/23/26 10:49,9h,9h,0h,0,0,0,0,0,1.2.2.2.35,500,No,Yes,Yes,,,Black,,,,,,,,0,0,0,0d,0d,0d,No,No,No,No,No,No,No,No,No,No,No,0,0,0,0,0,
856,1910,Yes,Auto Scheduled,"Load File Staged and Posted ""Ready""",30m,Fixed Units,6,0.06d,849,"May 25, 2026 9:15","May 25, 2026 9:45",5/25/26 9:15,5/25/26 9:45,5/14/26 11:29,5/14/26 11:59,0m,-3226m,0ed,0,NA,NA,"April 17, 2026 11:45","April 17, 2026 1:15",As Soon As Possible,NA,NA,NA,4/23/26 10:49,0.5h,0.5h,0h,0,0,0,0,0,1.2.2.2.35.1,500,No,No,No,,,Black,,,,,,,,0,0,0,0d,0d,0d,No,No,No,No,No,No,No,No,No,No,No,0,0,0,0,0,
857,1911,Yes,Auto Scheduled,Pre Load Validation,30m,Fixed Units,6,0.06d,856,"May 25, 2026 9:45","May 25, 2026 10:15",5/25/26 9:45,5/25/26 10:15,5/14/26 11:59,5/14/26 1:29,0m,-3226m,0ed,0,NA,NA,"April 17, 2026 1:15","April 17, 2026 1:45",As Soon As Possible,NA,NA,NA,4/23/26 10:49,0.5h,0.5h,0h,0,0,0,0,0,1.2.2.2.35.2,500,No,No,No,,"Matt Palastro, Dave Duda",Black,,,,,,,,0,0,0,0d,0d,0d,No,No,No,No,No,No,No,No,No,No,No,0,0,0,0,0,
858,1912,Yes,Auto Scheduled,Simulate Load,1h,Fixed Units,6,0.13d,857,"May 25, 2026 10:15","May 25, 2026 11:15",5/25/26 10:15,5/25/26 11:15,5/14/26 1:29,5/14/26 2:29,0h,-53.77h,0ed,0,NA,NA,"April 17, 2026 1:45","April 17, 2026 2:45",As Soon As Possible,NA,NA,NA,4/23/26 10:49,1h,1h,0h,0,0,0,0,0,1.2.2.2.35.3,500,No,No,No,,,Black,,,,,,,,0,0,0,0d,0d,0d,No,No,No,No,No,No,No,No,No,No,No,0,0,0,0,0,
859,1913,Yes,Auto Scheduled,Error and Defect Mitigation,2h,Fixed Units,6,0.25d,858,"May 25, 2026 11:15","May 25, 2026 2:15",5/25/26 11:15,5/25/26 2:15,5/14/26 2:29,5/14/26 4:29,0h,-53.77h,0ed,0,NA,NA,"April 17, 2026 2:45","April 17, 2026 4:45",As Soon As Possible,NA,NA,NA,4/23/26 10:49,2h,2h,0h,0,0,0,0,0,1.2.2.2.35.4,500,No,No,No,,"Matt Palastro, Dave Duda",Black,,,,,,,,0,0,0,0d,0d,0d,No,No,No,No,No,No,No,No,No,No,No,0,0,0,0,0,
860,1914,Yes,Auto Scheduled,Load,2h,Fixed Units,6,0.25d,859,"May 25, 2026 2:15","May 25, 2026 4:15",5/25/26 2:15,5/25/26 4:15,5/14/26 4:29,5/15/26 9:29,0h,-53.77h,0ed,0,NA,NA,"April 17, 2026 4:45","April 20, 2026 9:45",As Soon As Possible,NA,NA,NA,4/23/26 10:49,2h,2h,0h,0,0,0,0,0,1.2.2.2.35.5,500,No,No,No,,,Black,,,,,,,,0,0,0,0d,0d,0d,No,No,No,No,No,No,No,No,No,No,No,0,0,0,0,0,
861,1915,Yes,Auto Scheduled,Post Load Validation,3h,Fixed Units,6,0.38d,860,"May 25, 2026 4:15","May 26, 2026 10:15",5/25/26 4:15,5/26/26 10:15,5/15/26 9:29,5/15/26 1:29,0h,-53.77h,0ed,0,NA,NA,"April 20, 2026 9:45","April 20, 2026 1:45",As Soon As Possible,NA,NA,NA,4/23/26 10:49,3h,3h,0h,0,0,0,0,0,1.2.2.2.35.6,500,No,No,No,,"Matt Palastro, Dave Duda",Black,,,,,,,,0,0,0,0d,0d,0d,No,No,No,No,No,No,No,No,No,No,No,0,0,0,0,0,
862,1916,Yes,Auto Scheduled,PTM_CM48_Equipment_Master_Service,6.78d,Fixed Duration,5,1.13d,,"May 18, 2026 10:00","May 27, 2026 8:15",5/18/26 10:00,5/27/26 8:15,5/15/26 1:29,5/18/26 10:29,0d,-6.72d,0ed,0,NA,NA,"April 20, 2026 1:45","April 21, 2026 2:45",As Soon As Possible,NA,NA,NA,4/23/26 10:49,9h,9h,0h,0,0,0,0,0,1.2.2.2.36,500,No,Yes,Yes,,,Black,,,,,,,,0,0,0,0d,0d,0d,No,No,No,No,No,No,No,No,No,No,No,0,0,0,0,0,
863,1917,Yes,Auto Scheduled,"Load File Staged and Posted ""Ready""",30m,Fixed Units,6,0.06d,861,"May 26, 2026 10:15","May 26, 2026 10:45",5/26/26 10:15,5/26/26 10:45,5/15/26 1:29,5/15/26 1:59,0m,-3226m,0ed,0,NA,NA,"April 20, 2026 1:45","April 20, 2026 2:15",As Soon As Possible,NA,NA,NA,4/23/26 10:49,0.5h,0.5h,0h,0,0,0,0,0,1.2.2.2.36.1,500,No,No,No,,,Black,,,,,,,,0,0,0,0d,0d,0d,No,No,No,No,No,No,No,No,No,No,No,0,0,0,0,0,
864,1918,Yes,Auto Scheduled,Pre Load Validation,30m,Fixed Units,6,0.06d,863,"May 26, 2026 10:45","May 26, 2026 11:15",5/26/26 10:45,5/26/26 11:15,5/15/26 1:59,5/15/26 2:29,0m,-3226m,0ed,0,NA,NA,"April 20, 2026 2:15","April 20, 2026 2:45",As Soon As Possible,NA,NA,NA,4/23/26 10:49,0.5h,0.5h,0h,0,0,0,0,0,1.2.2.2.36.2,500,No,No,No,,"Matt Palastro, Dave Duda",Black,,,,,,,,0,0,0,0d,0d,0d,No,No,No,No,No,No,No,No,No,No,No,0,0,0,0,0,
865,1919,Yes,Auto Scheduled,Simulate Load,1h,Fixed Units,6,0.13d,864,"May 26, 2026 11:15","May 26, 2026 1:15",5/26/26 11:15,5/26/26 1:15,5/15/26 2:29,5/15/26 3:29,0h,-53.77h,0ed,0,NA,NA,"April 20, 2026 2:45","April 20, 2026 3:45",As Soon As Possible,NA,NA,NA,4/23/26 10:49,1h,1h,0h,0,0,0,0,0,1.2.2.2.36.3,500,No,No,No,,,Black,,,,,,,,0,0,0,0d,0d,0d,No,No,No,No,No,No,No,No,No,No,No,0,0,0,0,0,
866,1920,Yes,Auto Scheduled,Error and Defect Mitigation,2h,Fixed Units,6,0.25d,865,"May 26, 2026 1:15","May 26, 2026 3:15",5/26/26 1:15,5/26/26 3:15,5/15/26 3:29,5/18/26 8:29,0h,-53.77h,0ed,0,NA,NA,"April 20, 2026 3:45","April 21, 2026 8:45",As Soon As Possible,NA,NA,NA,4/23/26 10:49,2h,2h,0h,0,0,0,0,0,1.2.2.2.36.4,500,No,No,No,,"Matt Palastro, Dave Duda",Black,,,,,,,,0,0,0,0d,0d,0d,No,No,No,No,No,No,No,No,No,No,No,0,0,0,0,0,
867,1921,Yes,Auto Scheduled,Load,2h,Fixed Units,6,0.25d,866,"May 26, 2026 3:15","May 27, 2026 8:15",5/26/26 3:15,5/27/26 8:15,5/18/26 8:29,5/18/26 10:29,0h,-53.77h,0ed,0,NA,NA,"April 21, 2026 8:45","April 21, 2026 10:45",As Soon As Possible,NA,NA,NA,4/23/26 10:49,2h,2h,0h,0,0,0,0,0,1.2.2.2.36.5,500,No,No,No,,,Black,,,,,,,,0,0,0,0d,0d,0d,No,No,No,No,No,No,No,No,No,No,No,0,0,0,0,0,
868,1922,Yes,Auto Scheduled,Post Load Validation,3h,Fixed Units,6,0.38d,,"May 18, 2026 10:00","May 18, 2026 2:00",5/18/26 10:00,5/18/26 2:00,5/15/26 4:29,5/18/26 10:29,0h,-2.52h,0ed,0,NA,NA,"April 21, 2026 10:45","April 21, 2026 2:45",Start No Earlier Than,4/21/26 8:00,NA,NA,4/23/26 10:49,3h,3h,0h,0,0,0,0,0,1.2.2.2.36.6,500,No,No,No,,"Matt Palastro, Dave Duda",Black,,,,,,,,0,0,0,0d,0d,0d,No,No,No,No,No,No,No,No,No,No,No,0,0,0,0,0,
869,1923,Yes,Auto Scheduled,VC_Object Dependencies,0.63d,Fixed Duration,5,0.63d,,"May 18, 2026 10:00","May 18, 2026 4:00",5/18/26 10:00,5/18/26 4:00,5/13/26 3:29,5/14/26 11:29,0d,-2.44d,0ed,0,NA,NA,"April 6, 2026 8:15","April 6, 2026 2:15",As Soon As Possible,NA,NA,NA,4/23/26 10:49,5h,5h,0h,0,0,0,0,0,1.2.2.2.37,500,No,Yes,Yes,,,Black,,,,,,,,0,0,0,0d,0d,0d,No,No,No,No,No,No,No,No,No,No,No,0,0,0,0,0,
870,1924,Yes,Auto Scheduled,Run ALE Transaction to QS5 from DS4 130,2h,Fixed Units,6,0.25d,,"May 18, 2026 10:00","May 18, 2026 12:00",5/18/26 10:00,5/18/26 12:00,5/13/26 3:29,5/14/26 8:29,0h,-19.52h,0ed,0,NA,NA,"April 6, 2026 8:15","April 6, 2026 10:15",As Soon As Possible,NA,NA,NA,4/23/26 10:49,2h,2h,0h,0,0,0,0,0,1.2.2.2.37.1,500,No,No,No,,,Black,,,,,,,,0,0,0,0d,0d,0d,No,No,No,No,No,No,No,No,No,No,No,0,0,0,0,0,
871,1925,Yes,Auto Scheduled,Post Load Validation,3h,Fixed Units,6,0.38d,870,"May 18, 2026 1:00","May 18, 2026 4:00",5/18/26 1:00,5/18/26 4:00,5/14/26 8:29,5/14/26 11:29,0h,-19.52h,0ed,0,NA,NA,"April 6, 2026 10:15","April 6, 2026 2:15",As Soon As Possible,NA,NA,NA,4/23/26 10:49,3h,3h,0h,0,0,0,0,0,1.2.2.2.37.2,500,No,No,No,,"Matt Palastro, Dave Duda",Black,,,,,,,,0,0,0,0d,0d,0d,No,No,No,No,No,No,No,No,No,No,No,0,0,0,0,0,
872,1926,Yes,Auto Scheduled,VC_Characteristics,0.63d,Fixed Duration,5,0.63d,,"May 18, 2026 4:00","May 19, 2026 12:00",5/18/26 4:00,5/19/26 12:00,5/14/26 11:29,5/15/26 8:29,0d,-2.44d,0ed,0,NA,NA,"April 6, 2026 2:15","April 7, 2026 10:15",As Soon As Possible,NA,NA,NA,4/23/26 10:49,5h,5h,0h,0,0,0,0,0,1.2.2.2.38,500,No,Yes,Yes,,,Black,,,,,,,,0,0,0,0d,0d,0d,No,No,No,No,No,No,No,No,No,No,No,0,0,0,0,0,
873,1927,Yes,Auto Scheduled,Run ALE Transaction to QS5 from DS4 130,2h,Fixed Units,6,0.25d,871,"May 18, 2026 4:00","May 19, 2026 9:00",5/18/26 4:00,5/19/26 9:00,5/14/26 11:29,5/14/26 2:29,0h,-19.52h,0ed,0,NA,NA,"April 6, 2026 2:15","April 6, 2026 4:15",As Soon As Possible,NA,NA,NA,4/23/26 10:49,2h,2h,0h,0,0,0,0,0,1.2.2.2.38.1,500,No,No,No,,,Black,,,,,,,,0,0,0,0d,0d,0d,No,No,No,No,No,No,No,No,No,No,No,0,0,0,0,0,
874,1928,Yes,Auto Scheduled,Post Load Validation,3h,Fixed Units,6,0.38d,873,"May 19, 2026 9:00","May 19, 2026 12:00",5/19/26 9:00,5/19/26 12:00,5/14/26 2:29,5/15/26 8:29,0h,-19.52h,0ed,0,NA,NA,"April 6, 2026 4:15","April 7, 2026 10:15",As Soon As Possible,NA,NA,NA,4/23/26 10:49,3h,3h,0h,0,0,0,0,0,1.2.2.2.38.2,500,No,No,No,,"Matt Palastro, Dave Duda",Black,,,,,,,,0,0,0,0d,0d,0d,No,No,No,No,No,No,No,No,No,No,No,0,0,0,0,0,
875,1929,Yes,Auto Scheduled,VC_Classes,0.63d,Fixed Duration,5,0.63d,,"May 19, 2026 1:00","May 20, 2026 9:00",5/19/26 1:00,5/20/26 9:00,5/15/26 8:29,5/15/26 2:29,0d,-2.44d,0ed,0,NA,NA,"April 7, 2026 10:15","April 7, 2026 4:15",As Soon As Possible,NA,NA,NA,4/23/26 10:49,5h,5h,0h,0,0,0,0,0,1.2.2.2.39,500,No,Yes,Yes,,,Black,,,,,,,,0,0,0,0d,0d,0d,No,No,No,No,No,No,No,No,No,No,No,0,0,0,0,0,
876,1930,Yes,Auto Scheduled,Run ALE Transaction to QS5 from DS4 130,2h,Fixed Units,6,0.25d,874,"May 19, 2026 1:00","May 19, 2026 3:00",5/19/26 1:00,5/19/26 3:00,5/15/26 8:29,5/15/26 10:29,0h,-19.52h,0ed,0,NA,NA,"April 7, 2026 10:15","April 7, 2026 1:15",As Soon As Possible,NA,NA,NA,4/23/26 10:49,2h,2h,0h,0,0,0,0,0,1.2.2.2.39.1,500,No,No,No,,,Black,,,,,,,,0,0,0,0d,0d,0d,No,No,No,No,No,No,No,No,No,No,No,0,0,0,0,0,
877,1931,Yes,Auto Scheduled,Post Load Validation,3h,Fixed Units,6,0.38d,876,"May 19, 2026 3:00","May 20, 2026 9:00",5/19/26 3:00,5/20/26 9:00,5/15/26 10:29,5/15/26 2:29,0h,-19.52h,0ed,0,NA,NA,"April 7, 2026 1:15","April 7, 2026 4:15",As Soon As Possible,NA,NA,NA,4/23/26 10:49,3h,3h,0h,0,0,0,0,0,1.2.2.2.39.2,500,No,No,No,,"Matt Palastro, Dave Duda",Black,,,,,,,,0,0,0,0d,0d,0d,No,No,No,No,No,No,No,No,No,No,No,0,0,0,0,0,
878,1932,Yes,Auto Scheduled,VC_Classification (Class Type 200),0.63d,Fixed Duration,5,0.63d,,"May 21, 2026 11:45","May 22, 2026 8:45",5/21/26 11:45,5/22/26 8:45,5/15/26 2:29,5/18/26 10:29,0d,-3.78d,0ed,0,NA,NA,"April 15, 2026 3:15","April 16, 2026 11:15",As Soon As Possible,NA,NA,NA,4/23/26 10:49,5h,5h,0h,0,0,0,0,0,1.2.2.2.40,500,No,Yes,Yes,,,Black,,,,,,,,0,0,0,0d,0d,0d,No,No,No,No,No,No,No,No,No,No,No,0,0,0,0,0,
879,1933,Yes,Auto Scheduled,Run ALE Transaction to QS5 from DS4 130,2h,Fixed Units,6,0.25d,798,"May 21, 2026 11:45","May 21, 2026 2:45",5/21/26 11:45,5/21/26 2:45,5/15/26 2:29,5/15/26 4:29,0h,-30.27h,0ed,0,NA,NA,"April 15, 2026 3:15","April 16, 2026 8:15",As Soon As Possible,NA,NA,NA,4/23/26 10:49,2h,2h,0h,0,0,0,0,0,1.2.2.2.40.1,500,No,No,No,,,Black,,,,,,,,0,0,0,0d,0d,0d,No,No,No,No,No,No,No,No,No,No,No,0,0,0,0,0,
880,1934,Yes,Auto Scheduled,Post Load Validation,3h,Fixed Units,6,0.38d,879,"May 21, 2026 2:45","May 22, 2026 8:45",5/21/26 2:45,5/22/26 8:45,5/15/26 4:29,5/18/26 10:29,0h,-30.27h,0ed,0,NA,NA,"April 16, 2026 8:15","April 16, 2026 11:15",As Soon As Possible,NA,NA,NA,4/23/26 10:49,3h,3h,0h,0,0,0,0,0,1.2.2.2.40.2,500,No,No,No,,"Matt Palastro, Dave Duda",Black,,,,,,,,0,0,0,0d,0d,0d,No,No,No,No,No,No,No,No,No,No,No,0,0,0,0,0,
881,1935,Yes,Auto Scheduled,VC_Dependency Nets,0.63d,Fixed Duration,5,0.63d,,"May 21, 2026 11:45","May 22, 2026 8:45",5/21/26 11:45,5/22/26 8:45,5/15/26 2:29,5/18/26 10:29,0d,-3.78d,0ed,0,NA,NA,"April 15, 2026 3:15","April 16, 2026 11:15",As Soon As Possible,NA,NA,NA,4/23/26 10:49,5h,5h,0h,0,0,0,0,0,1.2.2.2.41,500,No,Yes,Yes,,,Black,,,,,,,,0,0,0,0d,0d,0d,No,No,No,No,No,No,No,No,No,No,No,0,0,0,0,0,
882,1936,Yes,Auto Scheduled,Run ALE Transaction to QS5 from DS4 130,2h,Fixed Units,6,0.25d,"792,877","May 21, 2026 11:45","May 21, 2026 2:45",5/21/26 11:45,5/21/26 2:45,5/15/26 2:29,5/15/26 4:29,0h,-30.27h,0ed,0,NA,NA,"April 15, 2026 3:15","April 16, 2026 8:15",As Soon As Possible,NA,NA,NA,4/23/26 10:49,2h,2h,0h,0,0,0,0,0,1.2.2.2.41.1,500,No,No,No,,,Black,,,,,,,,0,0,0,0d,0d,0d,No,No,No,No,No,No,No,No,No,No,No,0,0,0,0,0,
883,1937,Yes,Auto Scheduled,Post Load Validation,3h,Fixed Units,6,0.38d,882,"May 21, 2026 2:45","May 22, 2026 8:45",5/21/26 2:45,5/22/26 8:45,5/15/26 4:29,5/18/26 10:29,0h,-30.27h,0ed,0,NA,NA,"April 16, 2026 8:15","April 16, 2026 11:15",As Soon As Possible,NA,NA,NA,4/23/26 10:49,3h,3h,0h,0,0,0,0,0,1.2.2.2.41.2,500,No,No,No,,"Matt Palastro, Dave Duda",Black,,,,,,,,0,0,0,0d,0d,0d,No,No,No,No,No,No,No,No,No,No,No,0,0,0,0,0,
884,1938,Yes,Auto Scheduled,VC_Configuration Profiles,0.63d,Fixed Duration,5,0.63d,,"May 21, 2026 11:45","May 22, 2026 8:45",5/21/26 11:45,5/22/26 8:45,5/13/26 2:44,5/14/26 10:44,0d,-5.75d,0ed,0,NA,NA,"April 15, 2026 3:15","April 16, 2026 11:15",As Soon As Possible,NA,NA,NA,4/23/26 10:49,5h,5h,0h,0,0,0,0,0,1.2.2.2.42,500,No,Yes,Yes,,,Black,,,,,,,,0,0,0,0d,0d,0d,No,No,No,No,No,No,No,No,No,No,No,0,0,0,0,0,
885,1939,Yes,Auto Scheduled,Run ALE Transaction to QS5 from DS4 130,2h,Fixed Units,6,0.25d,792,"May 21, 2026 11:45","May 21, 2026 2:45",5/21/26 11:45,5/21/26 2:45,5/13/26 2:44,5/13/26 4:44,0h,-46.02h,0ed,0,NA,NA,"April 15, 2026 3:15","April 16, 2026 8:15",As Soon As Possible,NA,NA,NA,4/23/26 10:49,2h,2h,0h,0,0,0,0,0,1.2.2.2.42.1,500,No,No,No,,,Black,,,,,,,,0,0,0,0d,0d,0d,No,No,No,No,No,No,No,No,No,No,No,0,0,0,0,0,
886,1940,Yes,Auto Scheduled,Post Load Validation,3h,Fixed Units,6,0.38d,885,"May 21, 2026 2:45","May 22, 2026 8:45",5/21/26 2:45,5/22/26 8:45,5/13/26 4:44,5/14/26 10:44,0h,-46.02h,0ed,0,NA,NA,"April 16, 2026 8:15","April 16, 2026 11:15",As Soon As Possible,NA,NA,NA,4/23/26 10:49,3h,3h,0h,0,0,0,0,0,1.2.2.2.42.2,500,No,No,No,,"Matt Palastro, Dave Duda",Black,,,,,,,,0,0,0,0d,0d,0d,No,No,No,No,No,No,No,No,No,No,No,0,0,0,0,0,
887,1941,Yes,Auto Scheduled,VC_Variant Tables,0.63d,Fixed Duration,5,0.63d,,"May 22, 2026 8:45","May 22, 2026 2:45",5/22/26 8:45,5/22/26 2:45,5/15/26 8:29,5/15/26 2:29,0d,-5.03d,0ed,0,NA,NA,"April 16, 2026 11:15","April 17, 2026 8:15",As Soon As Possible,NA,NA,NA,4/23/26 10:49,5h,5h,0h,0,0,0,0,0,1.2.2.2.43,500,No,Yes,Yes,,,Black,,,,,,,,0,0,0,0d,0d,0d,No,No,No,No,No,No,No,No,No,No,No,0,0,0,0,0,
888,1942,Yes,Auto Scheduled,Run ALE Transaction to QS5 from DS4 130,2h,Fixed Units,6,0.25d,886,"May 22, 2026 8:45","May 22, 2026 10:45",5/22/26 8:45,5/22/26 10:45,5/15/26 8:29,5/15/26 10:29,0h,-40.27h,0ed,0,NA,NA,"April 16, 2026 11:15","April 16, 2026 2:15",As Soon As Possible,NA,NA,NA,4/23/26 10:49,2h,2h,0h,0,0,0,0,0,1.2.2.2.43.1,500,No,No,No,,,Black,,,,,,,,0,0,0,0d,0d,0d,No,No,No,No,No,No,No,No,No,No,No,0,0,0,0,0,
889,1943,Yes,Auto Scheduled,Post Load Validation,3h,Fixed Units,6,0.38d,888,"May 22, 2026 10:45","May 22, 2026 2:45",5/22/26 10:45,5/22/26 2:45,5/15/26 10:29,5/15/26 2:29,0h,-40.27h,0ed,0,NA,NA,"April 16, 2026 2:15","April 17, 2026 8:15",As Soon As Possible,NA,NA,NA,4/23/26 10:49,3h,3h,0h,0,0,0,0,0,1.2.2.2.43.2,500,No,No,No,,"Matt Palastro, Dave Duda",Black,,,,,,,,0,0,0,0d,0d,0d,No,No,No,No,No,No,No,No,No,No,No,0,0,0,0,0,
890,1944,Yes,Auto Scheduled,VC_Variant Tables Content,0.63d,Fixed Duration,5,0.63d,,"May 22, 2026 2:45","May 25, 2026 10:45",5/22/26 2:45,5/25/26 10:45,5/15/26 2:29,5/18/26 10:29,0d,-5.03d,0ed,0,NA,NA,"April 17, 2026 8:15","April 17, 2026 2:15",As Soon As Possible,NA,NA,NA,4/23/26 10:49,5h,5h,0h,0,0,0,0,0,1.2.2.2.44,500,No,Yes,Yes,,,Black,,,,,,,,0,0,0,0d,0d,0d,No,No,No,No,No,No,No,No,No,No,No,0,0,0,0,0,
891,1945,Yes,Auto Scheduled,Run ALE Transaction to QS5 from DS4 130,2h,Fixed Units,6,0.25d,889,"May 22, 2026 2:45","May 22, 2026 4:45",5/22/26 2:45,5/22/26 4:45,5/15/26 2:29,5/15/26 4:29,0h,-40.27h,0ed,0,NA,NA,"April 17, 2026 8:15","April 17, 2026 10:15",As Soon As Possible,NA,NA,NA,4/23/26 10:49,2h,2h,0h,0,0,0,0,0,1.2.2.2.44.1,500,No,No,No,,,Black,,,,,,,,0,0,0,0d,0d,0d,No,No,No,No,No,No,No,No,No,No,No,0,0,0,0,0,
892,1946,Yes,Auto Scheduled,Post Load Validation,3h,Fixed Units,6,0.38d,891,"May 22, 2026 4:45","May 25, 2026 10:45",5/22/26 4:45,5/25/26 10:45,5/15/26 4:29,5/18/26 10:29,0h,-40.27h,0ed,0,NA,NA,"April 17, 2026 10:15","April 17, 2026 2:15",As Soon As Possible,NA,NA,NA,4/23/26 10:49,3h,3h,0h,0,0,0,0,0,1.2.2.2.44.2,500,No,No,No,,"Matt Palastro, Dave Duda",Black,,,,,,,,0,0,0,0d,0d,0d,No,No,No,No,No,No,No,No,No,No,No,0,0,0,0,0,
893,1947,Yes,Auto Scheduled,VC_Characteristic Groups,1.97d,Fixed Duration,5,0.63d,,"May 22, 2026 8:45","May 26, 2026 8:30",5/22/26 8:45,5/26/26 8:30,5/14/26 10:44,5/18/26 10:29,0d,-5.75d,0ed,0,NA,NA,"April 16, 2026 11:15","April 17, 2026 8:15",As Soon As Possible,NA,NA,NA,4/23/26 10:49,15.75h,5h,0h,0,0,0,0,0,1.2.2.2.45,500,No,Yes,Yes,,,Black,,,,,,,,0,0,0,0d,0d,0d,No,No,No,No,No,No,No,No,No,No,No,0,0,0,0,0,
894,1948,Yes,Auto Scheduled,Run ALE Transaction to QS5 from DS4 130,12.75h,Fixed Units,6,0.25d,886,"May 22, 2026 8:45","May 25, 2026 2:30",5/22/26 8:45,5/25/26 2:30,5/14/26 10:44,5/15/26 4:29,0h,-46.02h,0ed,0,NA,NA,"April 16, 2026 11:15","April 16, 2026 2:15",As Soon As Possible,NA,NA,NA,4/23/26 10:49,12.75h,2h,0h,0,0,0,0,0,1.2.2.2.45.1,500,No,No,No,,,Black,,,,,,,,0,0,0,0d,0d,0d,No,No,No,No,No,No,No,No,No,No,No,0,0,0,0,0,
895,1949,Yes,Auto Scheduled,Post Load Validation,3h,Fixed Units,6,0.38d,894,"May 25, 2026 2:30","May 26, 2026 8:30",5/25/26 2:30,5/26/26 8:30,5/15/26 4:29,5/18/26 10:29,0h,-46.02h,0ed,0,NA,NA,"April 16, 2026 2:15","April 17, 2026 8:15",As Soon As Possible,NA,NA,NA,4/23/26 10:49,3h,3h,0h,0,0,0,0,0,1.2.2.2.45.2,500,No,No,No,,"Matt Palastro, Dave Duda",Black,,,,,,,,0,0,0,0d,0d,0d,No,No,No,No,No,No,No,No,No,No,No,0,0,0,0,0,
896,1950,Yes,Auto Scheduled,PTM_CM52_Super_BOM,2d,Fixed Duration,5,1.13d,,"May 21, 2026 11:45","May 25, 2026 11:45",5/21/26 11:45,5/25/26 11:45,5/11/26 8:29,5/13/26 8:29,0d,-8.41d,0ed,0,NA,NA,"April 15, 2026 3:15","April 16, 2026 4:15",As Soon As Possible,NA,NA,NA,4/23/26 10:49,16h,9h,0h,0,0,0,0,0,1.2.2.2.46,500,No,Yes,Yes,,,Black,,,,,,,,0,0,0,0d,0d,0d,Yes,No,No,No,No,No,No,No,No,No,No,0,0,0,0,0,
897,1951,Yes,Auto Scheduled,"Load File Staged and Posted ""Ready""",30m,Fixed Units,6,0.06d,798,"May 21, 2026 11:45","May 21, 2026 1:15",5/21/26 11:45,5/21/26 1:15,5/11/26 8:29,5/11/26 8:59,0m,-4036m,0ed,0,NA,NA,"April 15, 2026 3:15","April 15, 2026 3:45",As Soon As Possible,NA,NA,NA,4/23/26 10:49,0.5h,0.5h,0h,0,0,0,0,0,1.2.2.2.46.1,500,No,No,No,,,Black,,,,,,,,0,0,0,0d,0d,0d,No,No,No,No,No,No,No,No,No,No,No,0,0,0,0,0,
898,1952,Yes,Auto Scheduled,Pre Load Validation,30m,Fixed Units,6,0.06d,897,"May 21, 2026 1:15","May 21, 2026 1:45",5/21/26 1:15,5/21/26 1:45,5/11/26 8:59,5/11/26 9:29,0m,-4036m,0ed,0,NA,NA,"April 15, 2026 3:45","April 15, 2026 4:15",As Soon As Possible,NA,NA,NA,4/23/26 10:49,0.5h,0.5h,0h,0,0,0,0,0,1.2.2.2.46.2,500,No,No,No,,"Matt Palastro, Dave Duda",Black,,,,,,,,0,0,0,0d,0d,0d,No,No,No,No,No,No,No,No,No,No,No,0,0,0,0,0,
899,1953,Yes,Auto Scheduled,Simulate Load,8h,Fixed Units,6,0.13d,898,"May 21, 2026 1:45","May 22, 2026 1:45",5/21/26 1:45,5/22/26 1:45,5/11/26 9:29,5/12/26 9:29,0h,-67.27h,0ed,0,NA,NA,"April 15, 2026 4:15","April 16, 2026 8:15",As Soon As Possible,NA,NA,NA,4/23/26 10:49,8h,1h,0h,0,0,0,0,0,1.2.2.2.46.3,500,No,No,No,,"Matt Palastro, Dave Duda",Black,,,,,,,,0,0,0,0d,0d,0d,No,No,No,No,No,No,No,No,No,No,No,0,0,0,0,0,
900,1954,Yes,Auto Scheduled,Error and Defect Mitigation,2h,Fixed Units,6,0.25d,899,"May 22, 2026 1:45","May 22, 2026 3:45",5/22/26 1:45,5/22/26 3:45,5/12/26 9:29,5/12/26 11:29,0h,-67.27h,0ed,0,NA,NA,"April 16, 2026 8:15","April 16, 2026 10:15",As Soon As Possible,NA,NA,NA,4/23/26 10:49,2h,2h,0h,0,0,0,0,0,1.2.2.2.46.4,500,No,No,No,,"Matt Palastro, Dave Duda",Black,,,,,,,,0,0,0,0d,0d,0d,No,No,No,No,No,No,No,No,No,No,No,0,0,0,0,0,
901,1955,Yes,Auto Scheduled,Load,2h,Fixed Units,6,0.25d,900,"May 22, 2026 3:45","May 25, 2026 8:45",5/22/26 3:45,5/25/26 8:45,5/12/26 11:29,5/12/26 2:29,0h,-67.27h,0ed,0,NA,NA,"April 16, 2026 10:15","April 16, 2026 1:15",As Soon As Possible,NA,NA,NA,4/23/26 10:49,2h,2h,0h,0,0,0,0,0,1.2.2.2.46.5,500,No,No,No,,,Black,,,,,,,,0,0,0,0d,0d,0d,No,No,No,No,No,No,No,No,No,No,No,0,0,0,0,0,
902,1956,Yes,Auto Scheduled,Post Load Validation,3h,Fixed Units,6,0.38d,901,"May 25, 2026 8:45","May 25, 2026 11:45",5/25/26 8:45,5/25/26 11:45,5/12/26 2:29,5/13/26 8:29,0h,-67.27h,0ed,0,NA,NA,"April 16, 2026 1:15","April 16, 2026 4:15",As Soon As Possible,NA,NA,NA,4/23/26 10:49,3h,3h,0h,0,0,0,0,0,1.2.2.2.46.6,500,No,No,No,,"Matt Palastro, Dave Duda",Black,,,,,,,,0,0,0,0d,0d,0d,No,No,No,No,No,No,No,No,No,No,No,0,0,0,0,0,
903,1957,Yes,Auto Scheduled,PTM_CM53_Super_Routing,2.13d,Fixed Duration,5,1.13d,,"May 25, 2026 11:45","May 27, 2026 1:45",5/25/26 11:45,5/27/26 1:45,5/13/26 8:29,5/18/26 10:29,0d,-8.41d,0ed,0,NA,NA,"April 16, 2026 4:15","April 20, 2026 8:15",As Soon As Possible,NA,NA,NA,4/23/26 10:49,9h,9h,0h,0,0,0,0,0,1.2.2.2.47,500,No,Yes,Yes,,,Black,,,,,,,,0,0,0,0d,0d,0d,Yes,No,No,No,No,No,No,No,No,No,No,0,0,0,0,0,
904,1958,Yes,Auto Scheduled,"Load File Staged and Posted ""Ready""",30m,Fixed Units,6,0.06d,902,"May 25, 2026 11:45","May 25, 2026 1:15",5/25/26 11:45,5/25/26 1:15,5/13/26 8:29,5/13/26 8:59,0m,-4036m,0ed,0,NA,NA,"April 16, 2026 4:15","April 16, 2026 4:45",As Soon As Possible,NA,NA,NA,4/23/26 10:49,0.5h,0.5h,0h,0,0,0,0,0,1.2.2.2.47.1,500,No,No,No,,,Black,,,,,,,,0,0,0,0d,0d,0d,No,No,No,No,No,No,No,No,No,No,No,0,0,0,0,0,
905,1959,Yes,Auto Scheduled,Pre Load Validation,30m,Fixed Units,6,0.06d,904,"May 25, 2026 1:15","May 25, 2026 1:45",5/25/26 1:15,5/25/26 1:45,5/13/26 8:59,5/13/26 9:29,0m,-4036m,0ed,0,NA,NA,"April 16, 2026 4:45","April 17, 2026 8:15",As Soon As Possible,NA,NA,NA,4/23/26 10:49,0.5h,0.5h,0h,0,0,0,0,0,1.2.2.2.47.2,500,No,No,No,,"Matt Palastro, Dave Duda",Black,,,,,,,,0,0,0,0d,0d,0d,No,No,No,No,No,No,No,No,No,No,No,0,0,0,0,0,
906,1960,Yes,Auto Scheduled,Simulate Load,1h,Fixed Units,6,0.13d,905,"May 25, 2026 1:45","May 26, 2026 2:45",5/25/26 1:45,5/26/26 2:45,5/13/26 9:29,5/14/26 10:29,0h,-67.27h,0ed,0,NA,NA,"April 17, 2026 8:15","April 17, 2026 9:15",As Soon As Possible,NA,NA,NA,4/23/26 10:49,1h,1h,0h,0,0,0,0,0,1.2.2.2.47.3,500,No,No,No,,,Black,,,,,,,,0,0,0,0d,0d,0d,No,No,No,No,No,No,No,No,No,No,No,0,0,0,0,0,
907,1961,Yes,Auto Scheduled,Error and Defect Mitigation,2h,Fixed Units,6,0.25d,906,"May 26, 2026 2:45","May 26, 2026 4:45",5/26/26 2:45,5/26/26 4:45,5/14/26 10:29,5/14/26 1:29,0h,-67.27h,0ed,0,NA,NA,"April 17, 2026 9:15","April 17, 2026 11:15",As Soon As Possible,NA,NA,NA,4/23/26 10:49,2h,2h,0h,0,0,0,0,0,1.2.2.2.47.4,500,No,No,No,,"Matt Palastro, Dave Duda",Black,,,,,,,,0,0,0,0d,0d,0d,No,No,No,No,No,No,No,No,No,No,No,0,0,0,0,0,
908,1962,Yes,Auto Scheduled,Load,2h,Fixed Units,6,0.25d,907,"May 26, 2026 4:45","May 27, 2026 9:45",5/26/26 4:45,5/27/26 9:45,5/14/26 1:29,5/14/26 3:29,0h,-67.27h,0ed,0,NA,NA,"April 17, 2026 11:15","April 17, 2026 2:15",As Soon As Possible,NA,NA,NA,4/23/26 10:49,2h,2h,0h,0,0,0,0,0,1.2.2.2.47.5,500,No,No,No,,,Black,,,,,,,,0,0,0,0d,0d,0d,No,No,No,No,No,No,No,No,No,No,No,0,0,0,0,0,
909,1963,Yes,Auto Scheduled,Post Load Validation,3h,Fixed Units,6,0.38d,908,"May 27, 2026 9:45","May 27, 2026 1:45",5/27/26 9:45,5/27/26 1:45,5/15/26 4:29,5/18/26 10:29,0h,-58.27h,0ed,0,NA,NA,"April 17, 2026 2:15","April 20, 2026 8:15",As Soon As Possible,NA,NA,NA,4/23/26 10:49,3h,3h,0h,0,0,0,0,0,1.2.2.2.47.6,500,No,No,No,,"Matt Palastro, Dave Duda",Black,,,,,,,,0,0,0,0d,0d,0d,No,No,No,No,No,No,No,No,No,No,No,0,0,0,0,0,
910,1964,Yes,Auto Scheduled,VC_VK30 Pricing Variant,0.69d,Fixed Duration,5,0.69d,,"May 27, 2026 9:45","May 27, 2026 4:15",5/27/26 9:45,5/27/26 4:15,5/14/26 3:29,5/15/26 11:59,0d,-8.41d,0ed,0,NA,NA,"April 17, 2026 2:15","April 20, 2026 10:45",As Soon As Possible,NA,NA,NA,4/23/26 10:49,5.5h,5.5h,0h,0,0,0,0,0,1.2.2.2.48,500,No,Yes,Yes,,,Black,,,,,,,,0,0,0,0d,0d,0d,No,No,No,No,No,No,No,No,No,No,No,0,0,0,0,0,
911,1965,Yes,Auto Scheduled,"Manual File Staged and Posted ""Ready""",30m,Fixed Units,6,0.06d,908,"May 27, 2026 9:45","May 27, 2026 10:15",5/27/26 9:45,5/27/26 10:15,5/14/26 3:29,5/14/26 3:59,0m,-4036m,0ed,0,NA,NA,"April 17, 2026 2:15","April 17, 2026 2:45",As Soon As Possible,NA,NA,NA,4/23/26 10:49,0.5h,0.5h,0h,0,0,0,0,0,1.2.2.2.48.1,500,No,No,No,,"Matt Palastro, Dave Duda",Black,,,,,,,,0,0,0,0d,0d,0d,No,No,No,No,No,No,No,No,No,No,No,0,0,0,0,0,
912,1966,Yes,Auto Scheduled,Load,2h,Fixed Units,6,0.25d,911,"May 27, 2026 10:15","May 27, 2026 1:15",5/27/26 10:15,5/27/26 1:15,5/14/26 3:59,5/15/26 8:59,0h,-67.27h,0ed,0,NA,NA,"April 17, 2026 2:45","April 17, 2026 4:45",As Soon As Possible,NA,NA,NA,4/23/26 10:49,2h,2h,0h,0,0,0,0,0,1.2.2.2.48.2,500,No,No,No,,,Black,,,,,,,,0,0,0,0d,0d,0d,No,No,No,No,No,No,No,No,No,No,No,0,0,0,0,0,
913,1967,Yes,Auto Scheduled,Post Load Validation,3h,Fixed Units,6,0.38d,912,"May 27, 2026 1:15","May 27, 2026 4:15",5/27/26 1:15,5/27/26 4:15,5/15/26 8:59,5/15/26 11:59,0h,-67.27h,0ed,0,NA,NA,"April 17, 2026 4:45","April 20, 2026 10:45",As Soon As Possible,NA,NA,NA,4/23/26 10:49,3h,3h,0h,0,0,0,0,0,1.2.2.2.48.3,500,No,No,No,,"Matt Palastro, Dave Duda",Black,,,,,,,,0,0,0,0d,0d,0d,No,No,No,No,No,No,No,No,No,No,No,0,0,0,0,0,
914,1968,Yes,Auto Scheduled,OTC_CM22_Pricing_Condition,0.69d,Fixed Duration,5,0.69d,,"May 27, 2026 4:15","May 28, 2026 1:45",5/27/26 4:15,5/28/26 1:45,5/15/26 11:59,5/18/26 10:29,0d,-8.41d,0ed,0,NA,NA,"April 20, 2026 10:45","April 21, 2026 8:15",As Soon As Possible,NA,NA,NA,4/23/26 10:49,8.5h,5.5h,0h,0,0,0,0,0,1.2.2.2.49,500,No,Yes,Yes,,,Black,,,,,,,,0,0,0,0d,0d,0d,No,No,No,No,No,No,No,No,No,No,No,0,0,0,0,0,
915,1969,Yes,Auto Scheduled,"Manual File Staged and Posted ""Ready""",30m,Fixed Units,6,0.06d,913,"May 27, 2026 4:15","May 27, 2026 4:45",5/27/26 4:15,5/27/26 4:45,5/15/26 11:59,5/15/26 1:29,0m,-4036m,0ed,0,NA,NA,"April 20, 2026 10:45","April 20, 2026 11:15",As Soon As Possible,NA,NA,NA,4/23/26 10:49,0.5h,0.5h,0h,0,0,0,0,0,1.2.2.2.49.1,500,No,No,No,,"Matt Palastro, Dave Duda",Black,,,,,,,,0,0,0,0d,0d,0d,No,No,No,No,No,No,No,No,No,No,No,0,0,0,0,0,
916,1970,Yes,Auto Scheduled,Load,2h,Fixed Units,6,0.25d,915,"May 27, 2026 4:45","May 28, 2026 9:45",5/27/26 4:45,5/28/26 9:45,5/15/26 1:29,5/15/26 3:29,0h,-67.27h,0ed,0,NA,NA,"April 20, 2026 11:15","April 20, 2026 2:15",As Soon As Possible,NA,NA,NA,4/23/26 10:49,2h,2h,0h,0,0,0,0,0,1.2.2.2.49.2,500,No,No,No,,,Black,,,,,,,,0,0,0,0d,0d,0d,No,No,No,No,No,No,No,No,No,No,No,0,0,0,0,0,
917,1971,Yes,Auto Scheduled,Post Load Validation,3h,Fixed Units,6,0.38d,916,"May 28, 2026 9:45","May 28, 2026 1:45",5/28/26 9:45,5/28/26 1:45,5/15/26 4:29,5/18/26 10:29,0h,-66.27h,0ed,0,NA,NA,"April 20, 2026 2:15","April 21, 2026 8:15",As Soon As Possible,NA,NA,NA,4/23/26 10:49,6h,3h,0h,0,0,0,0,0,1.2.2.2.49.3,500,No,No,No,,"Matt Palastro, Dave Duda,kim",Black,,,,,,,,0,0,0,0d,0d,0d,No,No,No,No,No,No,No,No,No,No,No,0,0,0,0,0,
918,1972,Yes,Auto Scheduled,OTC_CM21_CMIR,0.5d,Fixed Duration,5,1.13d,,"May 28, 2026 9:45","May 28, 2026 2:45",5/28/26 9:45,5/28/26 2:45,5/15/26 3:29,5/18/26 10:29,0d,-8.41d,0ed,0,NA,NA,"April 20, 2026 2:15","April 21, 2026 3:15",As Soon As Possible,NA,NA,NA,4/23/26 10:49,4h,9h,0h,0,0,0,0,0,1.2.2.2.50,500,No,Yes,Yes,,,Black,,,,,,,,0,0,0,0d,0d,0d,No,No,No,No,No,No,No,No,No,No,No,0,0,0,0,0,
919,1973,Yes,Auto Scheduled,"Load File Staged and Posted ""Ready""",30m,Fixed Units,6,0.06d,"916,927","May 28, 2026 9:45","May 28, 2026 10:15",5/28/26 9:45,5/28/26 10:15,5/15/26 3:29,5/15/26 3:59,0m,-4036m,0ed,0,NA,NA,"April 20, 2026 2:15","April 20, 2026 2:45",As Soon As Possible,NA,NA,NA,4/23/26 10:49,0.5h,0.5h,0h,0,0,0,0,0,1.2.2.2.50.1,500,No,No,No,,,Black,,,,,,,,0,0,0,0d,0d,0d,No,No,No,No,No,No,No,No,No,No,No,0,0,0,0,0,
920,1974,Yes,Auto Scheduled,Pre Load Validation,30m,Fixed Units,6,0.06d,919,"May 28, 2026 10:15","May 28, 2026 10:45",5/28/26 10:15,5/28/26 10:45,5/15/26 3:59,5/15/26 4:29,0m,-4036m,0ed,0,NA,NA,"April 20, 2026 2:45","April 20, 2026 3:15",As Soon As Possible,NA,NA,NA,4/23/26 10:49,0.5h,0.5h,0h,0,0,0,0,0,1.2.2.2.50.2,500,No,No,No,,Kim,Black,,,,,,,,0,0,0,0d,0d,0d,No,No,No,No,No,No,No,No,No,No,No,0,0,0,0,0,
921,1975,Yes,Auto Scheduled,Simulate Load,0h,Fixed Units,6,0.13d,920,"May 28, 2026 10:45","May 28, 2026 10:45",5/28/26 10:45,5/28/26 10:45,5/15/26 4:29,5/15/26 4:29,0h,-67.27h,0ed,0,NA,NA,"April 20, 2026 3:15","April 20, 2026 4:15",As Soon As Possible,NA,NA,NA,4/23/26 10:49,0h,1h,0h,0,0,0,0,0,1.2.2.2.50.3,500,Yes,No,No,,,Black,,,,,,,,0,0,0,0d,0d,0d,No,No,No,No,No,No,No,No,No,No,No,0,0,0,0,0,
922,1976,Yes,Auto Scheduled,Error and Defect Mitigation,0h,Fixed Units,6,0.25d,921,"May 28, 2026 10:45","May 28, 2026 10:45",5/28/26 10:45,5/28/26 10:45,5/15/26 4:29,5/15/26 4:29,0h,-67.27h,0ed,0,NA,NA,"April 20, 2026 4:15","April 21, 2026 9:15",As Soon As Possible,NA,NA,NA,4/23/26 10:49,0h,2h,0h,0,0,0,0,0,1.2.2.2.50.4,500,Yes,No,No,,Kim,Black,,,,,,,,0,0,0,0d,0d,0d,No,No,No,No,No,No,No,No,No,No,No,0,0,0,0,0,
923,1977,Yes,Auto Scheduled,Load,0h,Fixed Units,6,0.25d,922,"May 28, 2026 10:45","May 28, 2026 10:45",5/28/26 10:45,5/28/26 10:45,5/15/26 4:29,5/15/26 4:29,0h,-67.27h,0ed,0,NA,NA,"April 21, 2026 9:15","April 21, 2026 11:15",As Soon As Possible,NA,NA,NA,4/23/26 10:49,0h,2h,0h,0,0,0,0,0,1.2.2.2.50.5,500,Yes,No,No,,,Black,,,,,,,,0,0,0,0d,0d,0d,No,No,No,No,No,No,No,No,No,No,No,0,0,0,0,0,
924,1978,Yes,Auto Scheduled,Post Load Validation,3h,Fixed Units,6,0.38d,923,"May 28, 2026 10:45","May 28, 2026 2:45",5/28/26 10:45,5/28/26 2:45,5/15/26 4:29,5/18/26 10:29,0h,-67.27h,0ed,0,NA,NA,"April 21, 2026 11:15","April 21, 2026 3:15",As Soon As Possible,NA,NA,NA,4/23/26 10:49,3h,3h,0h,0,0,0,0,0,1.2.2.2.50.6,500,No,No,No,,Kim,Black,,,,,,,,0,0,0,0d,0d,0d,No,No,No,No,No,No,No,No,No,No,No,0,0,0,0,0,
925,1979,Yes,Auto Scheduled,PTP_CM29_Source_List,6.16d,Fixed Duration,5,0.94d,,"May 19, 2026 11:00","May 27, 2026 1:15",5/19/26 11:00,5/27/26 1:15,5/15/26 1:29,5/18/26 10:29,0d,-7.22d,0ed,0,NA,NA,"April 13, 2026 10:45","April 14, 2026 10:15",As Soon As Possible,NA,NA,NA,4/23/26 10:49,5.5h,5.5h,0h,0,0,0,0,0,1.2.2.2.51,500,No,Yes,Yes,,,Black,,,,,,,,0,0,0,0d,0d,0d,No,No,No,No,No,No,No,No,No,No,No,0,0,0,0,0,
926,1980,Yes,Auto Scheduled,"Manual File Staged and Posted ""Ready""",30m,Fixed Units,6,0.06d,"769,776","May 19, 2026 11:00","May 19, 2026 11:30",5/19/26 11:00,5/19/26 11:30,5/18/26 9:59,5/18/26 10:29,0m,-541m,0ed,0,NA,NA,"April 14, 2026 9:45","April 14, 2026 10:15",As Soon As Possible,NA,NA,NA,4/23/26 10:49,0.5h,0.5h,0h,0,0,0,0,0,1.2.2.2.51.1,500,No,No,No,,Sam,Black,,,,,,,,0,0,0,0d,0d,0d,No,No,No,No,No,No,No,No,No,No,No,0,0,0,0,0,
927,1981,Yes,Auto Scheduled,Load,2h,Fixed Units,6,0.25d,745,"May 26, 2026 4:15","May 27, 2026 9:15",5/26/26 4:15,5/27/26 9:15,5/15/26 1:29,5/15/26 3:29,0h,-58.77h,0ed,0,NA,NA,"April 13, 2026 10:45","April 13, 2026 1:45",As Soon As Possible,NA,NA,NA,4/23/26 10:49,2h,2h,0h,0,0,0,0,0,1.2.2.2.51.2,500,No,No,No,,,Black,,,,,,,,0,0,0,0d,0d,0d,No,No,No,No,No,No,No,No,No,No,No,0,0,0,0,0,
928,1982,Yes,Auto Scheduled,Post Load Validation,3h,Fixed Units,6,0.38d,927,"May 27, 2026 9:15","May 27, 2026 1:15",5/27/26 9:15,5/27/26 1:15,5/15/26 4:29,5/18/26 10:29,0h,-57.77h,0ed,0,NA,NA,"April 13, 2026 1:45","April 13, 2026 4:45",As Soon As Possible,NA,NA,NA,4/23/26 10:49,3h,3h,0h,0,0,0,0,0,1.2.2.2.51.3,500,No,No,No,,Sam,Black,,,,,,,,0,0,0,0d,0d,0d,No,No,No,No,No,No,No,No,No,No,No,0,0,0,0,0,
929,1983,Yes,Auto Scheduled,RTR_CM11_Asset_Master,3.75d,Fixed Duration,5,1.13d,,"May 18, 2026 10:00","May 21, 2026 5:00",5/18/26 10:00,5/21/26 5:00,5/12/26 1:29,5/18/26 10:29,0d,-3.69d,0ed,0,NA,NA,"April 10, 2026 9:45","April 13, 2026 10:45",As Soon As Possible,NA,NA,NA,4/23/26 10:49,30.5h,9h,0h,0,0,0,0,0,1.2.2.2.52,500,No,Yes,Yes,,,Black,,,,,,,,0,0,0,0d,0d,0d,No,No,No,No,No,No,No,No,No,No,No,0,0,0,0,0,
930,1984,Yes,Auto Scheduled,"Load File Staged and Posted ""Ready""",30m,Fixed Units,6,0.06d,,"May 18, 2026 10:00","May 18, 2026 10:30",5/18/26 10:00,5/18/26 10:30,5/12/26 1:29,5/12/26 1:59,0m,-1771m,0ed,0,NA,NA,"April 10, 2026 9:45","April 10, 2026 10:15",As Soon As Possible,NA,NA,NA,4/23/26 10:49,0.5h,0.5h,0h,0,0,0,0,0,1.2.2.2.52.1,500,No,No,No,,,Black,,,,,,,,0,0,0,0d,0d,0d,No,No,No,No,No,No,No,No,No,No,No,0,0,0,0,0,
931,1985,Yes,Auto Scheduled,Pre Load Validation,30m,Fixed Units,6,0.06d,930,"May 18, 2026 10:30","May 18, 2026 11:00",5/18/26 10:30,5/18/26 11:00,5/12/26 1:59,5/12/26 2:29,0m,-1771m,0ed,0,NA,NA,"April 10, 2026 10:15","April 10, 2026 10:45",As Soon As Possible,NA,NA,NA,4/23/26 10:49,1h,0.5h,0h,0,0,0,0,0,1.2.2.2.52.2,500,No,No,No,,Brian Wagner,Black,,,,,,,,0,0,0,0d,0d,0d,No,No,No,No,No,No,No,No,No,No,No,0,0,0,0,0,
932,1986,Yes,Auto Scheduled,Simulate Load,8h,Fixed Units,6,0.13d,931,"May 18, 2026 11:00","May 19, 2026 11:00",5/18/26 11:00,5/19/26 11:00,5/12/26 2:29,5/13/26 2:29,0h,-29.52h,0ed,0,NA,NA,"April 10, 2026 10:45","April 10, 2026 11:45",As Soon As Possible,NA,NA,NA,4/23/26 10:49,8h,1h,0h,0,0,0,0,0,1.2.2.2.52.3,500,No,No,No,,,Black,,,,,,,,0,0,0,0d,0d,0d,No,No,No,No,No,No,No,No,No,No,No,0,0,0,0,0,
933,1987,Yes,Auto Scheduled,Error and Defect Mitigation,16h,Fixed Units,6,0.25d,932,"May 19, 2026 11:00","May 21, 2026 11:00",5/19/26 11:00,5/21/26 11:00,5/13/26 2:29,5/15/26 2:29,0h,-29.52h,0ed,0,NA,NA,"April 10, 2026 11:45","April 10, 2026 2:45",As Soon As Possible,NA,NA,NA,4/23/26 10:49,16h,2h,0h,0,0,0,0,0,1.2.2.2.52.4,500,No,No,No,,Brian Wagner,Black,,,,,,,,0,0,0,0d,0d,0d,No,No,No,No,No,No,No,No,No,No,No,0,0,0,0,0,
934,1988,Yes,Auto Scheduled,Load,2h,Fixed Units,6,0.25d,933,"May 21, 2026 11:00","May 21, 2026 2:00",5/21/26 11:00,5/21/26 2:00,5/15/26 2:29,5/15/26 4:29,0h,-29.52h,0ed,0,NA,NA,"April 10, 2026 2:45","April 10, 2026 4:45",As Soon As Possible,NA,NA,NA,4/23/26 10:49,2h,2h,0h,0,0,0,0,0,1.2.2.2.52.5,500,No,No,No,,,Black,,,,,,,,0,0,0,0d,0d,0d,No,No,No,No,No,No,No,No,No,No,No,0,0,0,0,0,
935,1989,Yes,Auto Scheduled,Post Load Validation,3h,Fixed Units,6,0.38d,934,"May 21, 2026 2:00","May 21, 2026 5:00",5/21/26 2:00,5/21/26 5:00,5/15/26 4:29,5/18/26 10:29,0h,-29.52h,0ed,0,NA,NA,"April 10, 2026 4:45","April 13, 2026 10:45",As Soon As Possible,NA,NA,NA,4/23/26 10:49,3h,3h,0h,0,0,0,0,0,1.2.2.2.52.6,500,No,No,No,,Brian Wagner,Black,,,,,,,,0,0,0,0d,0d,0d,No,No,No,No,No,No,No,No,No,No,No,0,0,0,0,0,
936,1990,Yes,Auto Scheduled,PTM_CM50_Material Class,2.13d,Fixed Duration,5,0.25d,,"May 22, 2026 8:15","May 26, 2026 9:15",5/22/26 8:15,5/26/26 9:15,5/14/26 9:29,5/18/26 10:29,0d,-5.85d,0ed,0,NA,NA,"April 16, 2026 10:45","April 16, 2026 1:45",As Soon As Possible,NA,NA,NA,4/23/26 10:49,17h,2h,0h,0,0,0,0,0,1.2.2.2.53,500,No,Yes,Yes,,,Black,,,,,,,,0,0,0,0d,0d,0d,No,No,No,No,No,No,No,No,No,No,No,0,0,0,0,0,
937,1991,Yes,Auto Scheduled,"Manual File Staged and Posted ""Ready""",30m,Fixed Units,6,0.06d,842,"May 22, 2026 8:15","May 22, 2026 8:45",5/22/26 8:15,5/22/26 8:45,5/14/26 9:29,5/14/26 9:59,0m,-2806m,0ed,0,NA,NA,"April 16, 2026 10:45","April 16, 2026 11:15",As Soon As Possible,NA,NA,NA,4/23/26 10:49,0.5h,0.5h,0h,0,0,0,0,0,1.2.2.2.53.1,500,No,No,No,,,Black,,,,,,,,0,0,0,0d,0d,0d,No,No,No,No,No,No,No,No,No,No,No,0,0,0,0,0,
938,1992,Yes,Auto Scheduled,Load,30m,Fixed Units,6,0.06d,937,"May 22, 2026 8:45","May 22, 2026 9:15",5/22/26 8:45,5/22/26 9:15,5/14/26 9:59,5/14/26 10:29,0m,-2806m,0ed,0,NA,NA,"April 16, 2026 11:15","April 16, 2026 11:45",As Soon As Possible,NA,NA,NA,4/23/26 10:49,0.5h,0.5h,0h,0,0,0,0,0,1.2.2.2.53.2,500,No,No,No,,"Matt Palastro, Dave Duda",Black,,,,,,,,0,0,0,0d,0d,0d,No,No,No,No,No,No,No,No,No,No,No,0,0,0,0,0,
939,1993,Yes,Auto Scheduled,Post Load Validation,16h,Fixed Units,6,0.13d,938,"May 22, 2026 9:15","May 26, 2026 9:15",5/22/26 9:15,5/26/26 9:15,5/14/26 10:29,5/18/26 10:29,0h,-46.77h,0ed,0,NA,NA,"April 16, 2026 11:45","April 16, 2026 1:45",As Soon As Possible,NA,NA,NA,4/23/26 10:49,16h,1h,0h,0,0,0,0,0,1.2.2.2.53.3,500,No,No,No,,brad,Black,,,,,,,,0,0,0,0d,0d,0d,No,No,No,No,No,No,No,No,No,No,No,0,0,0,0,0,
940,1994,Yes,Auto Scheduled,PTM_CM55_Class assignment to materials,1.13d,Fixed Duration,5,1.13d,,"May 22, 2026 8:45","May 25, 2026 9:45",5/22/26 8:45,5/25/26 9:45,5/15/26 9:29,5/18/26 10:29,0d,-4.91d,0ed,0,NA,NA,"April 16, 2026 11:15","April 17, 2026 1:15",As Soon As Possible,NA,NA,NA,4/23/26 10:49,9h,9h,0h,0,0,0,0,0,1.2.2.2.54,500,No,Yes,Yes,,,Black,,,,,,,,0,0,0,0d,0d,0d,No,No,No,No,No,No,No,No,No,No,No,0,0,0,0,0,
941,1995,Yes,Auto Scheduled,"Load File Staged and Posted ""Ready""",30m,Fixed Units,6,0.06d,937,"May 22, 2026 8:45","May 22, 2026 9:15",5/22/26 8:45,5/22/26 9:15,5/15/26 9:29,5/15/26 9:59,0m,-2356m,0ed,0,NA,NA,"April 16, 2026 11:15","April 16, 2026 11:45",As Soon As Possible,NA,NA,NA,4/23/26 10:49,0.5h,0.5h,0h,0,0,0,0,0,1.2.2.2.54.1,500,No,No,No,,,Black,,,,,,,,0,0,0,0d,0d,0d,No,No,No,No,No,No,No,No,No,No,No,0,0,0,0,0,
942,1996,Yes,Auto Scheduled,Pre Load Validation,30m,Fixed Units,6,0.06d,941,"May 22, 2026 9:15","May 22, 2026 9:45",5/22/26 9:15,5/22/26 9:45,5/15/26 9:59,5/15/26 10:29,0m,-2356m,0ed,0,NA,NA,"April 16, 2026 11:45","April 16, 2026 1:15",As Soon As Possible,NA,NA,NA,4/23/26 10:49,0.5h,0.5h,0h,0,0,0,0,0,1.2.2.2.54.2,500,No,No,No,,"Matt Palastro, Dave Duda",Black,,,,,,,,0,0,0,0d,0d,0d,No,No,No,No,No,No,No,No,No,No,No,0,0,0,0,0,
943,1997,Yes,Auto Scheduled,Simulate Load,1h,Fixed Units,6,0.13d,942,"May 22, 2026 9:45","May 22, 2026 10:45",5/22/26 9:45,5/22/26 10:45,5/15/26 10:29,5/15/26 11:29,0h,-39.27h,0ed,0,NA,NA,"April 16, 2026 1:15","April 16, 2026 2:15",As Soon As Possible,NA,NA,NA,4/23/26 10:49,1h,1h,0h,0,0,0,0,0,1.2.2.2.54.3,500,No,No,No,,,Black,,,,,,,,0,0,0,0d,0d,0d,No,No,No,No,No,No,No,No,No,No,No,0,0,0,0,0,
944,1998,Yes,Auto Scheduled,Error and Defect Mitigation,2h,Fixed Units,6,0.25d,943,"May 22, 2026 10:45","May 22, 2026 1:45",5/22/26 10:45,5/22/26 1:45,5/15/26 11:29,5/15/26 2:29,0h,-39.27h,0ed,0,NA,NA,"April 16, 2026 2:15","April 16, 2026 4:15",As Soon As Possible,NA,NA,NA,4/23/26 10:49,2h,2h,0h,0,0,0,0,0,1.2.2.2.54.4,500,No,No,No,,"Matt Palastro, Dave Duda",Black,,,,,,,,0,0,0,0d,0d,0d,No,No,No,No,No,No,No,No,No,No,No,0,0,0,0,0,
945,1999,Yes,Auto Scheduled,Load,2h,Fixed Units,6,0.25d,944,"May 22, 2026 1:45","May 22, 2026 3:45",5/22/26 1:45,5/22/26 3:45,5/15/26 2:29,5/15/26 4:29,0h,-39.27h,0ed,0,NA,NA,"April 16, 2026 4:15","April 17, 2026 9:15",As Soon As Possible,NA,NA,NA,4/23/26 10:49,2h,2h,0h,0,0,0,0,0,1.2.2.2.54.5,500,No,No,No,,,Black,,,,,,,,0,0,0,0d,0d,0d,No,No,No,No,No,No,No,No,No,No,No,0,0,0,0,0,
946,2000,Yes,Auto Scheduled,Post Load Validation,3h,Fixed Units,6,0.38d,945,"May 22, 2026 3:45","May 25, 2026 9:45",5/22/26 3:45,5/25/26 9:45,5/15/26 4:29,5/18/26 10:29,0h,-39.27h,0ed,0,NA,NA,"April 17, 2026 9:15","April 17, 2026 1:15",As Soon As Possible,NA,NA,NA,4/23/26 10:49,3h,3h,0h,0,0,0,0,0,1.2.2.2.54.6,500,No,No,No,,"Matt Palastro, Dave Duda",Black,,,,,,,,0,0,0,0d,0d,0d,No,No,No,No,No,No,No,No,No,No,No,0,0,0,0,0,
947,2001,Yes,Auto Scheduled,GTS - Material initial load from S4 (Run Interface),2.09d,Fixed Duration,5,0.25d,,"May 21, 2026 2:45","May 25, 2026 3:30",5/21/26 2:45,5/25/26 3:30,5/8/26 4:29,5/13/26 8:14,0d,-8.78d,0ed,0,NA,NA,"April 16, 2026 8:15","April 16, 2026 10:15",As Soon As Possible,NA,NA,NA,4/23/26 10:49,16.75h,2h,0h,0,0,0,0,0,1.2.2.2.55,500,No,Yes,Yes,,,Black,,,,,,,,0,0,0,0d,0d,0d,No,No,No,No,No,No,No,No,No,No,No,0,0,0,0,0,
948,2002,Yes,Auto Scheduled,Run material interface to GTS,15.75h,Fixed Units,6,0.13d,816,"May 21, 2026 2:45","May 25, 2026 2:30",5/21/26 2:45,5/25/26 2:30,5/8/26 4:29,5/12/26 4:14,0h,-70.27h,0ed,0,NA,NA,"April 16, 2026 8:15","April 16, 2026 9:15",As Soon As Possible,NA,NA,NA,4/23/26 10:49,15.75h,1h,0h,0,0,0,0,0,1.2.2.2.55.1,500,No,No,No,,,Black,,,,,,,,0,0,0,0d,0d,0d,No,No,No,No,No,No,No,No,No,No,No,0,0,0,0,0,
949,2003,Yes,Auto Scheduled,Post Load Validation,1h,Fixed Units,6,0.13d,948,"May 25, 2026 2:30","May 25, 2026 3:30",5/25/26 2:30,5/25/26 3:30,5/12/26 4:14,5/13/26 8:14,0h,-70.27h,0ed,0,NA,NA,"April 16, 2026 9:15","April 16, 2026 10:15",As Soon As Possible,NA,NA,NA,4/23/26 10:49,1h,1h,0h,0,0,0,0,0,1.2.2.2.55.2,500,No,No,No,,Kim Kolesar,Black,,,,,,,,0,0,0,0d,0d,0d,No,No,No,No,No,No,No,No,No,No,No,0,0,0,0,0,
950,2004,Yes,Auto Scheduled,GTS - Customers  initial load from S4 (Run Interface),0.25d,Fixed Duration,5,0.25d,,"May 18, 2026 10:00","May 18, 2026 12:00",5/18/26 10:00,5/18/26 12:00,5/18/26 8:29,5/18/26 10:29,0d,-0.19d,0ed,0,NA,NA,"April 10, 2026 1:45","April 10, 2026 3:45",As Soon As Possible,NA,NA,NA,4/23/26 10:49,2h,2h,0h,0,0,0,0,0,1.2.2.2.56,500,No,Yes,Yes,,,Black,,,,,,,,0,0,0,0d,0d,0d,No,No,No,No,No,No,No,No,No,No,No,0,0,0,0,0,
951,2005,Yes,Auto Scheduled,Run material interface to GTS,1h,Fixed Units,6,0.13d,,"May 18, 2026 10:00","May 18, 2026 11:00",5/18/26 10:00,5/18/26 11:00,5/18/26 8:29,5/18/26 9:29,0h,-1.52h,0ed,0,NA,NA,"April 10, 2026 1:45","April 10, 2026 2:45",As Soon As Possible,NA,NA,NA,4/23/26 10:49,1h,1h,0h,0,0,0,0,0,1.2.2.2.56.1,500,No,No,No,,,Black,,,,,,,,0,0,0,0d,0d,0d,No,No,No,No,No,No,No,No,No,No,No,0,0,0,0,0,
952,2006,Yes,Auto Scheduled,Post Load Validation,1h,Fixed Units,6,0.13d,951,"May 18, 2026 11:00","May 18, 2026 12:00",5/18/26 11:00,5/18/26 12:00,5/18/26 9:29,5/18/26 10:29,0h,-1.52h,0ed,0,NA,NA,"April 10, 2026 2:45","April 10, 2026 3:45",As Soon As Possible,NA,NA,NA,4/23/26 10:49,1h,1h,0h,0,0,0,0,0,1.2.2.2.56.2,500,No,No,No,,Kim Kolesar,Black,,,,,,,,0,0,0,0d,0d,0d,No,No,No,No,No,No,No,No,No,No,No,0,0,0,0,0,
953,2007,Yes,Auto Scheduled,GTS - Vendors  initial load from S4 (Run Interface),0.25d,Fixed Duration,5,0.25d,,"May 19, 2026 9:00","May 19, 2026 11:00",5/19/26 9:00,5/19/26 11:00,5/15/26 2:29,5/18/26 10:29,0d,-1.44d,0ed,0,NA,NA,"April 15, 2026 2:00","April 15, 2026 4:00",As Soon As Possible,NA,NA,NA,4/23/26 10:49,2h,2h,0h,0,0,0,0,0,1.2.2.2.57,500,No,Yes,Yes,,,Black,,,,,,,,0,0,0,0d,0d,0d,No,No,No,No,No,No,No,No,No,No,No,0,0,0,0,0,
954,2008,Yes,Auto Scheduled,Run material interface to GTS,1h,Fixed Units,6,0.13d,759,"May 19, 2026 9:00","May 19, 2026 10:00",5/19/26 9:00,5/19/26 10:00,5/15/26 2:29,5/15/26 3:29,0h,-11.52h,0ed,0,NA,NA,"April 15, 2026 2:00","April 15, 2026 3:00",As Soon As Possible,NA,NA,NA,4/23/26 10:49,1h,1h,0h,0,0,0,0,0,1.2.2.2.57.1,500,No,No,No,,,Black,,,,,,,,0,0,0,0d,0d,0d,No,No,No,No,No,No,No,No,No,No,No,0,0,0,0,0,
955,2009,Yes,Auto Scheduled,Post Load Validation,1h,Fixed Units,6,0.13d,954,"May 19, 2026 10:00","May 19, 2026 11:00",5/19/26 10:00,5/19/26 11:00,5/18/26 9:29,5/18/26 10:29,0h,-8.52h,0ed,0,NA,NA,"April 15, 2026 3:00","April 15, 2026 4:00",As Soon As Possible,NA,NA,NA,4/23/26 10:49,1h,1h,0h,0,0,0,0,0,1.2.2.2.57.2,500,No,No,No,,Kim Kolesar,Black,,,,,,,,0,0,0,0d,0d,0d,No,No,No,No,No,No,No,No,No,No,No,0,0,0,0,0,
956,2010,Yes,Auto Scheduled,GTS - ECCN - Create,1.13d,Fixed Duration,5,5.63d,,"May 18, 2026 10:00","May 19, 2026 11:00",5/18/26 10:00,5/19/26 11:00,5/15/26 3:29,5/18/26 10:29,0d,-1.06d,0ed,0,NA,NA,"April 6, 2026 8:15","April 13, 2026 2:15",As Soon As Possible,NA,NA,NA,4/23/26 10:49,2h,2h,0h,0,0,0,0,0,1.2.2.2.58,500,No,Yes,Yes,,,Black,,,,,,,,0,0,0,0d,0d,0d,No,No,No,No,No,No,No,No,No,No,No,0,0,0,0,0,
957,2011,Yes,Auto Scheduled,Load Descartes XML File,1h,Fixed Units,6,0.13d,,"May 18, 2026 10:00","May 18, 2026 11:00",5/18/26 10:00,5/18/26 11:00,5/18/26 9:29,5/18/26 10:29,0h,-0.52h,0ed,0,NA,NA,"April 6, 2026 8:15","April 6, 2026 9:15",As Soon As Possible,NA,NA,NA,4/23/26 10:49,1h,1h,0h,0,0,0,0,0,1.2.2.2.58.1,500,No,No,No,,,Black,,,,,,,,0,0,0,0d,0d,0d,No,No,No,No,No,No,No,No,No,No,No,0,0,0,0,0,
958,2012,Yes,Auto Scheduled,Post Load Validation,1h,Fixed Units,6,0.13d,954,"May 19, 2026 10:00","May 19, 2026 11:00",5/19/26 10:00,5/19/26 11:00,5/15/26 3:29,5/15/26 4:29,0h,-11.52h,0ed,0,NA,NA,"April 13, 2026 1:15","April 13, 2026 2:15",As Soon As Possible,NA,NA,NA,4/23/26 10:49,1h,1h,0h,0,0,0,0,0,1.2.2.2.58.2,500,No,No,No,,Kim Kolesar,Black,,,,,,,,0,0,0,0d,0d,0d,No,No,No,No,No,No,No,No,No,No,No,0,0,0,0,0,
959,2013,Yes,Auto Scheduled,GTS - ECCN - Assign,0.25d,Fixed Duration,5,0.25d,,"May 25, 2026 3:30","May 26, 2026 8:30",5/25/26 3:30,5/26/26 8:30,5/13/26 8:14,5/13/26 10:14,0d,-8.78d,0ed,0,NA,NA,"April 16, 2026 10:15","April 16, 2026 1:15",As Soon As Possible,NA,NA,NA,4/23/26 10:49,2h,2h,0h,0,0,0,0,0,1.2.2.2.59,500,No,Yes,Yes,,,Black,,,,,,,,0,0,0,0d,0d,0d,No,No,No,No,No,No,No,No,No,No,No,0,0,0,0,0,
960,2014,Yes,Auto Scheduled,Load Descartes XML File,1h,Fixed Units,6,0.13d,949,"May 25, 2026 3:30","May 25, 2026 4:30",5/25/26 3:30,5/25/26 4:30,5/13/26 8:14,5/13/26 9:14,0h,-70.27h,0ed,0,NA,NA,"April 16, 2026 10:15","April 16, 2026 11:15",As Soon As Possible,NA,NA,NA,4/23/26 10:49,1h,1h,0h,0,0,0,0,0,1.2.2.2.59.1,500,No,No,No,,,Black,,,,,,,,0,0,0,0d,0d,0d,No,No,No,No,No,No,No,No,No,No,No,0,0,0,0,0,
961,2015,Yes,Auto Scheduled,Post Load Validation,1h,Fixed Units,6,0.13d,960,"May 25, 2026 4:30","May 26, 2026 8:30",5/25/26 4:30,5/26/26 8:30,5/13/26 9:14,5/13/26 10:14,0h,-70.27h,0ed,0,NA,NA,"April 16, 2026 11:15","April 16, 2026 1:15",As Soon As Possible,NA,NA,NA,4/23/26 10:49,1h,1h,0h,0,0,0,0,0,1.2.2.2.59.2,500,No,No,No,,Kim Kolesar,Black,,,,,,,,0,0,0,0d,0d,0d,No,No,No,No,No,No,No,No,No,No,No,0,0,0,0,0,
962,2016,Yes,Auto Scheduled,GTS - HTS - Create,0.25d,Fixed Duration,5,0.25d,,"May 18, 2026 10:00","May 18, 2026 12:00",5/18/26 10:00,5/18/26 12:00,5/18/26 8:29,5/18/26 10:29,0d,-0.19d,0ed,0,NA,NA,"April 6, 2026 8:15","April 6, 2026 10:15",As Soon As Possible,NA,NA,NA,4/23/26 10:49,2h,2h,0h,0,0,0,0,0,1.2.2.2.60,500,No,Yes,Yes,,,Black,,,,,,,,0,0,0,0d,0d,0d,No,No,No,No,No,No,No,No,No,No,No,0,0,0,0,0,
963,2017,Yes,Auto Scheduled,Load Descartes XML File,1h,Fixed Units,6,0.13d,,"May 18, 2026 10:00","May 18, 2026 11:00",5/18/26 10:00,5/18/26 11:00,5/18/26 8:29,5/18/26 9:29,0h,-1.52h,0ed,0,NA,NA,"April 6, 2026 8:15","April 6, 2026 9:15",As Soon As Possible,NA,NA,NA,4/23/26 10:49,1h,1h,0h,0,0,0,0,0,1.2.2.2.60.1,500,No,No,No,,,Black,,,,,,,,0,0,0,0d,0d,0d,No,No,No,No,No,No,No,No,No,No,No,0,0,0,0,0,
964,2018,Yes,Auto Scheduled,Post Load Validation,1h,Fixed Units,6,0.13d,963,"May 18, 2026 11:00","May 18, 2026 12:00",5/18/26 11:00,5/18/26 12:00,5/18/26 9:29,5/18/26 10:29,0h,-1.52h,0ed,0,NA,NA,"April 6, 2026 9:15","April 6, 2026 10:15",As Soon As Possible,NA,NA,NA,4/23/26 10:49,1h,1h,0h,0,0,0,0,0,1.2.2.2.60.2,500,No,No,No,,Kim Kolesar,Black,,,,,,,,0,0,0,0d,0d,0d,No,No,No,No,No,No,No,No,No,No,No,0,0,0,0,0,
965,2019,Yes,Auto Scheduled,GTS - HTS - Assign,0.25d,Fixed Duration,5,0.25d,,"May 26, 2026 8:30","May 26, 2026 10:30",5/26/26 8:30,5/26/26 10:30,5/13/26 10:14,5/13/26 1:14,0d,-8.78d,0ed,0,NA,NA,"April 16, 2026 8:45","April 16, 2026 10:45",As Soon As Possible,NA,NA,NA,4/23/26 10:49,2h,2h,0h,0,0,0,0,0,1.2.2.2.61,500,No,Yes,Yes,,,Black,,,,,,,,0,0,0,0d,0d,0d,No,No,No,No,No,No,No,No,No,No,No,0,0,0,0,0,
966,2020,Yes,Auto Scheduled,Load Descartes XML File,1h,Fixed Units,6,0.13d,961,"May 26, 2026 8:30","May 26, 2026 9:30",5/26/26 8:30,5/26/26 9:30,5/13/26 10:14,5/13/26 11:14,0h,-70.27h,0ed,0,NA,NA,"April 16, 2026 8:45","April 16, 2026 9:45",As Soon As Possible,NA,NA,NA,4/23/26 10:49,1h,1h,0h,0,0,0,0,0,1.2.2.2.61.1,500,No,No,No,,,Black,,,,,,,,0,0,0,0d,0d,0d,No,No,No,No,No,No,No,No,No,No,No,0,0,0,0,0,
967,2021,Yes,Auto Scheduled,Post Load Validation,1h,Fixed Units,6,0.13d,966,"May 26, 2026 9:30","May 26, 2026 10:30",5/26/26 9:30,5/26/26 10:30,5/13/26 11:14,5/13/26 1:14,0h,-70.27h,0ed,0,NA,NA,"April 16, 2026 9:45","April 16, 2026 10:45",As Soon As Possible,NA,NA,NA,4/23/26 10:49,1h,1h,0h,0,0,0,0,0,1.2.2.2.61.2,500,No,No,No,,Kim Kolesar,Black,,,,,,,,0,0,0,0d,0d,0d,No,No,No,No,No,No,No,No,No,No,No,0,0,0,0,0,
968,2022,Yes,Auto Scheduled,GTS - License - Create,0.25d,Fixed Duration,5,0.25d,,"May 26, 2026 11:30","May 26, 2026 2:30",5/26/26 11:30,5/26/26 2:30,5/18/26 8:29,5/18/26 10:29,0d,-6.38d,0ed,0,NA,NA,"April 16, 2026 11:45","April 16, 2026 2:45",As Soon As Possible,NA,NA,NA,4/23/26 10:49,2h,2h,0h,0,0,0,0,0,1.2.2.2.62,500,No,Yes,Yes,,,Black,,,,,,,,0,0,0,0d,0d,0d,No,No,No,No,No,No,No,No,No,No,No,0,0,0,0,0,
969,2023,Yes,Auto Scheduled,Load Descartes XML File,1h,Fixed Units,6,0.13d,"966,982","May 26, 2026 11:30","May 26, 2026 1:30",5/26/26 11:30,5/26/26 1:30,5/18/26 8:29,5/18/26 9:29,0h,-51.02h,0ed,0,NA,NA,"April 16, 2026 11:45","April 16, 2026 1:45",As Soon As Possible,NA,NA,NA,4/23/26 10:49,1h,1h,0h,0,0,0,0,0,1.2.2.2.62.1,500,No,No,No,,,Black,,,,,,,,0,0,0,0d,0d,0d,No,No,No,No,No,No,No,No,No,No,No,0,0,0,0,0,
970,2024,Yes,Auto Scheduled,Post Load Validation,1h,Fixed Units,6,0.13d,969,"May 26, 2026 1:30","May 26, 2026 2:30",5/26/26 1:30,5/26/26 2:30,5/18/26 9:29,5/18/26 10:29,0h,-51.02h,0ed,0,NA,NA,"April 16, 2026 1:45","April 16, 2026 2:45",As Soon As Possible,NA,NA,NA,4/23/26 10:49,1h,1h,0h,0,0,0,0,0,1.2.2.2.62.2,500,No,No,No,,Kim Kolesar,Black,,,,,,,,0,0,0,0d,0d,0d,No,No,No,No,No,No,No,No,No,No,No,0,0,0,0,0,
971,2025,Yes,Auto Scheduled,Commodity Code/Tarif,2.78d,Fixed Duration,5,0.25d,,"May 26, 2026 10:30","May 29, 2026 8:45",5/26/26 10:30,5/29/26 8:45,5/13/26 1:14,5/18/26 10:29,0d,-8.78d,0ed,0,NA,NA,"April 16, 2026 10:45","April 16, 2026 1:45",As Soon As Possible,NA,NA,NA,4/23/26 10:49,22.25h,2h,0h,0,0,0,0,0,1.2.2.2.63,500,No,Yes,Yes,,,Black,,,,,,,,0,0,0,0d,0d,0d,No,No,No,No,No,No,No,No,No,No,No,0,0,0,0,0,
972,2026,Yes,Auto Scheduled,Load,21.25h,Fixed Units,6,0.13d,967,"May 26, 2026 10:30","May 28, 2026 4:45",5/26/26 10:30,5/28/26 4:45,5/13/26 1:14,5/18/26 9:29,0h,-70.27h,0ed,0,NA,NA,"April 16, 2026 10:45","April 16, 2026 11:45",As Soon As Possible,NA,NA,NA,4/23/26 10:49,21.25h,1h,0h,0,0,0,0,0,1.2.2.2.63.1,500,No,No,No,,,Black,,,,,,,,0,0,0,0d,0d,0d,No,No,No,No,No,No,No,No,No,No,No,0,0,0,0,0,
973,2027,Yes,Auto Scheduled,Post Load Validation,1h,Fixed Units,6,0.13d,972,"May 28, 2026 4:45","May 29, 2026 8:45",5/28/26 4:45,5/29/26 8:45,5/18/26 9:29,5/18/26 10:29,0h,-70.27h,0ed,0,NA,NA,"April 16, 2026 11:45","April 16, 2026 1:45",As Soon As Possible,NA,NA,NA,4/23/26 10:49,1h,1h,0h,0,0,0,0,0,1.2.2.2.63.2,500,No,No,No,,Kim Kolesar,Black,,,,,,,,0,0,0,0d,0d,0d,No,No,No,No,No,No,No,No,No,No,No,0,0,0,0,0,
974,2028,Yes,Auto Scheduled,SPL Master File,0.25d,Fixed Duration,5,0.25d,,"May 26, 2026 9:30","May 26, 2026 11:30",5/26/26 9:30,5/26/26 11:30,5/18/26 8:29,5/18/26 10:29,0d,-6.13d,0ed,0,NA,NA,"March 13, 2025 8:00","March 13, 2025 10:00",As Soon As Possible,NA,NA,NA,4/23/26 10:49,2h,2h,0h,0,0,0,0,0,1.2.2.2.64,500,No,Yes,Yes,,,Black,,,,,,,,0,0,0,0d,0d,0d,No,No,No,No,No,No,No,No,No,No,No,0,0,0,0,0,
975,2029,Yes,Auto Scheduled,Load,1h,Fixed Units,6,0.13d,966,"May 26, 2026 9:30","May 26, 2026 10:30",5/26/26 9:30,5/26/26 10:30,5/18/26 8:29,5/18/26 9:29,0h,-49.02h,0ed,0,NA,NA,"March 13, 2025 8:00","March 13, 2025 9:00",As Soon As Possible,NA,NA,NA,4/23/26 10:49,1h,1h,0h,0,0,0,0,0,1.2.2.2.64.1,500,No,No,No,,,Black,,,,,,,,0,0,0,0d,0d,0d,No,No,No,No,No,No,No,No,No,No,No,0,0,0,0,0,
976,2030,Yes,Auto Scheduled,Post Load Validation,1h,Fixed Units,6,0.13d,975,"May 26, 2026 10:30","May 26, 2026 11:30",5/26/26 10:30,5/26/26 11:30,5/18/26 9:29,5/18/26 10:29,0h,-49.02h,0ed,0,NA,NA,"March 13, 2025 9:00","March 13, 2025 10:00",As Soon As Possible,NA,NA,NA,4/23/26 10:49,1h,1h,0h,0,0,0,0,0,1.2.2.2.64.2,500,No,No,No,,Kim Kolesar,Black,,,,,,,,0,0,0,0d,0d,0d,No,No,No,No,No,No,No,No,No,No,No,0,0,0,0,0,
977,2031,Yes,Auto Scheduled,Initialize Embargo situation,0.38d,Fixed Duration,5,0.38d,,"May 19, 2026 11:00","May 19, 2026 3:00",5/19/26 11:00,5/19/26 3:00,5/15/26 4:29,5/18/26 10:29,0d,-1.44d,0ed,0,NA,NA,"April 13, 2026 2:15","April 14, 2026 8:15",As Soon As Possible,NA,NA,NA,4/23/26 10:49,3h,3h,0h,0,0,0,0,0,1.2.2.2.65,500,No,Yes,Yes,,,Black,,,,,,,,0,0,0,0d,0d,0d,No,No,No,No,No,No,No,No,No,No,No,0,0,0,0,0,
978,2032,Yes,Auto Scheduled,Run report /SAPSLL/EMB_CNTRY_INIT,1h,Fixed Units,6,0.13d,958,"May 19, 2026 11:00","May 19, 2026 12:00",5/19/26 11:00,5/19/26 12:00,5/15/26 4:29,5/18/26 8:29,0h,-11.52h,0ed,0,NA,NA,"April 13, 2026 2:15","April 13, 2026 3:15",As Soon As Possible,NA,NA,NA,4/23/26 10:49,1h,1h,0h,0,0,0,0,0,1.2.2.2.65.1,500,No,No,No,,,Black,,,,,,,,0,0,0,0d,0d,0d,No,No,No,No,No,No,No,No,No,No,No,0,0,0,0,0,
979,2033,Yes,Auto Scheduled,Set Embargo situations,1h,Fixed Units,6,0.13d,978,"May 19, 2026 1:00","May 19, 2026 2:00",5/19/26 1:00,5/19/26 2:00,5/18/26 8:29,5/18/26 9:29,0h,-11.52h,0ed,0,NA,NA,"April 13, 2026 3:15","April 13, 2026 4:15",As Soon As Possible,NA,NA,NA,4/23/26 10:49,1h,1h,0h,0,0,0,0,0,1.2.2.2.65.2,500,No,No,No,,,Black,,,,,,,,0,0,0,0d,0d,0d,No,No,No,No,No,No,No,No,No,No,No,0,0,0,0,0,
980,2034,Yes,Auto Scheduled,Post Load Validation,1h,Fixed Units,6,0.13d,979,"May 19, 2026 2:00","May 19, 2026 3:00",5/19/26 2:00,5/19/26 3:00,5/18/26 9:29,5/18/26 10:29,0h,-11.52h,0ed,0,NA,NA,"April 13, 2026 4:15","April 14, 2026 8:15",As Soon As Possible,NA,NA,NA,4/23/26 10:49,1h,1h,0h,0,0,0,0,0,1.2.2.2.65.3,500,No,No,No,,Kim Kolesar,Black,,,,,,,,0,0,0,0d,0d,0d,No,No,No,No,No,No,No,No,No,No,No,0,0,0,0,0,
981,2035,Yes,Auto Scheduled,GTS - SPL (Sanctioned party list),0.25d,Fixed Duration,5,0.25d,,"May 26, 2026 10:30","May 26, 2026 1:30",5/26/26 10:30,5/26/26 1:30,5/15/26 4:29,5/18/26 10:29,0d,-6.38d,0ed,0,NA,NA,"April 16, 2026 10:45","April 16, 2026 1:45",As Soon As Possible,NA,NA,NA,4/23/26 10:49,2h,2h,0h,0,0,0,0,0,1.2.2.2.66,500,No,Yes,Yes,,,Black,,,,,,,,0,0,0,0d,0d,0d,No,No,No,No,No,No,No,No,No,No,No,0,0,0,0,0,
982,2036,Yes,Auto Scheduled,Load Descartes XML File,1h,Fixed Units,6,0.13d,967,"May 26, 2026 10:30","May 26, 2026 11:30",5/26/26 10:30,5/26/26 11:30,5/15/26 4:29,5/18/26 8:29,0h,-51.02h,0ed,0,NA,NA,"April 16, 2026 10:45","April 16, 2026 11:45",As Soon As Possible,NA,NA,NA,4/23/26 10:49,1h,1h,0h,0,0,0,0,0,1.2.2.2.66.1,500,No,No,No,,,Black,,,,,,,,0,0,0,0d,0d,0d,No,No,No,No,No,No,No,No,No,No,No,0,0,0,0,0,
983,2037,Yes,Auto Scheduled,Post Load Validation,1h,Fixed Units,6,0.13d,982,"May 26, 2026 11:30","May 26, 2026 1:30",5/26/26 11:30,5/26/26 1:30,5/18/26 9:29,5/18/26 10:29,0h,-50.02h,0ed,0,NA,NA,"April 16, 2026 11:45","April 16, 2026 1:45",As Soon As Possible,NA,NA,NA,4/23/26 10:49,1h,1h,0h,0,0,0,0,0,1.2.2.2.66.2,500,No,No,No,,Kim Kolesar,Black,,,,,,,,0,0,0,0d,0d,0d,No,No,No,No,No,No,No,No,No,No,No,0,0,0,0,0,
984,2038,Yes,Auto Scheduled,RTR_CM17_Project Definition / Builder,1.13d,Fixed Duration,5,5.38d,,"May 18, 2026 10:30","May 19, 2026 11:30",5/18/26 10:30,5/19/26 11:30,5/15/26 8:59,5/18/26 10:29,0d,-1.19d,0ed,0,NA,NA,"April 10, 2026 10:15","April 17, 2026 2:15",As Soon As Possible,NA,NA,NA,4/23/26 10:49,9h,9h,0h,0,0,0,0,0,1.2.2.2.67,500,No,Yes,Yes,,,Black,,,,,,,,0,0,0,0d,0d,0d,No,No,No,No,No,No,No,No,No,No,No,0,0,0,0,0,
985,2039,Yes,Auto Scheduled,"Load File Staged and Posted ""Ready""",30m,Fixed Units,6,0.06d,930,"May 18, 2026 10:30","May 18, 2026 11:00",5/18/26 10:30,5/18/26 11:00,5/15/26 8:59,5/15/26 9:29,0m,-571m,0ed,0,NA,NA,"April 10, 2026 10:15","April 10, 2026 10:45",As Soon As Possible,NA,NA,NA,4/23/26 10:49,0.5h,0.5h,0h,0,0,0,0,0,1.2.2.2.67.1,500,No,No,No,,,Black,,,,,,,,0,0,0,0d,0d,0d,No,No,No,No,No,No,No,No,No,No,No,0,0,0,0,0,
986,2040,Yes,Auto Scheduled,Pre Load Validation,30m,Fixed Units,6,0.06d,985,"May 18, 2026 11:00","May 18, 2026 11:30",5/18/26 11:00,5/18/26 11:30,5/15/26 9:59,5/15/26 10:29,0m,-541m,0ed,0,NA,NA,"April 10, 2026 10:45","April 10, 2026 11:15",As Soon As Possible,NA,NA,NA,4/23/26 10:49,0.5h,0.5h,0h,0,0,0,0,0,1.2.2.2.67.2,500,No,No,No,,Brian Wagner,Black,,,,,,,,0,0,0,0d,0d,0d,No,No,No,No,No,No,No,No,No,No,No,0,0,0,0,0,
987,2041,Yes,Auto Scheduled,Simulate Load,1h,Fixed Units,6,0.13d,986,"May 18, 2026 11:30","May 18, 2026 1:30",5/18/26 11:30,5/18/26 1:30,5/15/26 10:29,5/15/26 11:29,0h,-9.02h,0ed,0,NA,NA,"April 16, 2026 2:15","April 16, 2026 3:15",As Soon As Possible,NA,NA,NA,4/23/26 10:49,1h,1h,0h,0,0,0,0,0,1.2.2.2.67.3,500,No,No,No,,,Black,,,,,,,,0,0,0,0d,0d,0d,No,No,No,No,No,No,No,No,No,No,No,0,0,0,0,0,
988,2042,Yes,Auto Scheduled,Error and Defect Mitigation,2h,Fixed Units,6,0.25d,987,"May 18, 2026 1:30","May 18, 2026 3:30",5/18/26 1:30,5/18/26 3:30,5/15/26 11:29,5/15/26 2:29,0h,-9.02h,0ed,0,NA,NA,"April 16, 2026 3:15","April 17, 2026 8:15",As Soon As Possible,NA,NA,NA,4/23/26 10:49,2h,2h,0h,0,0,0,0,0,1.2.2.2.67.4,500,No,No,No,,Brian Wagner,Black,,,,,,,,0,0,0,0d,0d,0d,No,No,No,No,No,No,No,No,No,No,No,0,0,0,0,0,
989,2043,Yes,Auto Scheduled,Load,2h,Fixed Units,6,0.25d,988,"May 18, 2026 3:30","May 19, 2026 8:30",5/18/26 3:30,5/19/26 8:30,5/15/26 2:29,5/15/26 4:29,0h,-9.02h,0ed,0,NA,NA,"April 17, 2026 8:15","April 17, 2026 10:15",As Soon As Possible,NA,NA,NA,4/23/26 10:49,2h,2h,0h,0,0,0,0,0,1.2.2.2.67.5,500,No,No,No,,,Black,,,,,,,,0,0,0,0d,0d,0d,No,No,No,No,No,No,No,No,No,No,No,0,0,0,0,0,
990,2044,Yes,Auto Scheduled,Post Load Validation,3h,Fixed Units,6,0.38d,989,"May 19, 2026 8:30","May 19, 2026 11:30",5/19/26 8:30,5/19/26 11:30,5/15/26 4:29,5/18/26 10:29,0h,-9.02h,0ed,0,NA,NA,"April 17, 2026 10:15","April 17, 2026 2:15",As Soon As Possible,NA,NA,NA,4/23/26 10:49,3h,3h,0h,0,0,0,0,0,1.2.2.2.67.6,500,No,No,No,,Brian Wagner,Black,,,,,,,,0,0,0,0d,0d,0d,No,No,No,No,No,No,No,No,No,No,No,0,0,0,0,0,
991,2045,Yes,Auto Scheduled,RTR_CM18_WBS Element,1.13d,Fixed Duration,5,5.44d,,"May 18, 2026 11:00","May 19, 2026 12:00",5/18/26 11:00,5/19/26 12:00,5/15/26 9:29,5/18/26 10:29,0d,-1.19d,0ed,0,NA,NA,"April 10, 2026 10:45","April 17, 2026 3:15",As Soon As Possible,NA,NA,NA,4/23/26 10:49,9h,9h,0h,0,0,0,0,0,1.2.2.2.68,500,No,Yes,Yes,,,Black,,,,,,,,0,0,0,0d,0d,0d,No,No,No,No,No,No,No,No,No,No,No,0,0,0,0,0,
992,2046,Yes,Auto Scheduled,"Load File Staged and Posted ""Ready""",30m,Fixed Units,6,0.06d,985,"May 18, 2026 11:00","May 18, 2026 11:30",5/18/26 11:00,5/18/26 11:30,5/15/26 9:29,5/15/26 9:59,0m,-571m,0ed,0,NA,NA,"April 10, 2026 10:45","April 10, 2026 11:15",As Soon As Possible,NA,NA,NA,4/23/26 10:49,0.5h,0.5h,0h,0,0,0,0,0,1.2.2.2.68.1,500,No,No,No,,,Black,,,,,,,,0,0,0,0d,0d,0d,No,No,No,No,No,No,No,No,No,No,No,0,0,0,0,0,
993,2047,Yes,Auto Scheduled,Pre Load Validation,30m,Fixed Units,6,0.06d,992,"May 18, 2026 11:30","May 18, 2026 12:00",5/18/26 11:30,5/18/26 12:00,5/15/26 9:59,5/15/26 10:29,0m,-571m,0ed,0,NA,NA,"April 10, 2026 11:15","April 10, 2026 11:45",As Soon As Possible,NA,NA,NA,4/23/26 10:49,0.5h,0.5h,0h,0,0,0,0,0,1.2.2.2.68.2,500,No,No,No,,Brian Wagner,Black,,,,,,,,0,0,0,0d,0d,0d,No,No,No,No,No,No,No,No,No,No,No,0,0,0,0,0,
994,2048,Yes,Auto Scheduled,Simulate Load,1h,Fixed Units,6,0.13d,993,"May 18, 2026 1:00","May 18, 2026 2:00",5/18/26 1:00,5/18/26 2:00,5/15/26 10:29,5/15/26 11:29,0h,-9.52h,0ed,0,NA,NA,"April 16, 2026 3:15","April 16, 2026 4:15",As Soon As Possible,NA,NA,NA,4/23/26 10:49,1h,1h,0h,0,0,0,0,0,1.2.2.2.68.3,500,No,No,No,,,Black,,,,,,,,0,0,0,0d,0d,0d,No,No,No,No,No,No,No,No,No,No,No,0,0,0,0,0,
995,2049,Yes,Auto Scheduled,Error and Defect Mitigation,2h,Fixed Units,6,0.25d,994,"May 18, 2026 2:00","May 18, 2026 4:00",5/18/26 2:00,5/18/26 4:00,5/15/26 11:29,5/15/26 2:29,0h,-9.52h,0ed,0,NA,NA,"April 16, 2026 4:15","April 17, 2026 9:15",As Soon As Possible,NA,NA,NA,4/23/26 10:49,2h,2h,0h,0,0,0,0,0,1.2.2.2.68.4,500,No,No,No,,Brian Wagner,Black,,,,,,,,0,0,0,0d,0d,0d,No,No,No,No,No,No,No,No,No,No,No,0,0,0,0,0,
996,2050,Yes,Auto Scheduled,Load,2h,Fixed Units,6,0.25d,995,"May 18, 2026 4:00","May 19, 2026 9:00",5/18/26 4:00,5/19/26 9:00,5/15/26 2:29,5/15/26 4:29,0h,-9.52h,0ed,0,NA,NA,"April 17, 2026 9:15","April 17, 2026 11:15",As Soon As Possible,NA,NA,NA,4/23/26 10:49,2h,2h,0h,0,0,0,0,0,1.2.2.2.68.5,500,No,No,No,,,Black,,,,,,,,0,0,0,0d,0d,0d,No,No,No,No,No,No,No,No,No,No,No,0,0,0,0,0,
997,2051,Yes,Auto Scheduled,Post Load Validation,3h,Fixed Units,6,0.38d,996,"May 19, 2026 9:00","May 19, 2026 12:00",5/19/26 9:00,5/19/26 12:00,5/15/26 4:29,5/18/26 10:29,0h,-9.52h,0ed,0,NA,NA,"April 17, 2026 11:15","April 17, 2026 3:15",As Soon As Possible,NA,NA,NA,4/23/26 10:49,3h,3h,0h,0,0,0,0,0,1.2.2.2.68.6,500,No,No,No,,Brian Wagner,Black,,,,,,,,0,0,0,0d,0d,0d,No,No,No,No,No,No,No,No,No,No,No,0,0,0,0,0,
998,2947,Yes,Auto Scheduled,ITC2 Master Data Loads Complete,0m,Fixed Units,4,0d,631,"May 29, 2026 4:00","May 29, 2026 4:00",5/29/26 4:00,5/29/26 4:00,5/18/26 10:29,5/18/26 10:29,0m,-4591m,0ed,0,NA,NA,NA,NA,As Soon As Possible,NA,NA,NA,4/28/26 2:10,0h,0h,0h,0,0,0,0,0,1.2.2.3,500,Yes,No,No,,,Black,,,,,,,,0,0,0,0d,0d,0d,No,No,No,No,No,No,No,No,No,No,No,0,0,0,0,0,
999,2801,Yes,Auto Scheduled,Mock Transactional Data,2d,Fixed Duration,4,0d,"998,1759,2140","October 8, 2026 2:00","October 12, 2026 2:00",10/8/26 2:00,10/12/26 2:00,6/3/26 4:00,6/5/26 4:00,0d,-90.75d,0ed,0,NA,NA,NA,NA,As Soon As Possible,NA,NA,NA,4/23/26 11:43,0h,0h,0h,0,0,0,0,0,1.2.2.4,500,No,Yes,Yes,,,Black,,,,,,,,0,0,0,0d,0d,0d,No,No,No,No,No,No,No,No,No,No,No,0,0,0,0,0,
1000,2945,Yes,Auto Scheduled,Inventory,4h,Fixed Units,5,0d,"998SS,1759SS,2140SS","October 8, 2026 2:00","October 9, 2026 9:00",10/8/26 2:00,10/9/26 9:00,6/3/26 4:00,6/4/26 11:00,0h,-726h,0ed,0,NA,NA,NA,NA,As Soon As Possible,NA,NA,NA,4/28/26 1:04,0h,0h,0h,0,0,0,0,0,1.2.2.4.1,500,No,No,No,,,Black,,,,,,,,0,0,0,0d,0d,0d,No,No,No,No,No,No,No,No,No,No,No,0,0,0,0,0,
1001,2829,Yes,Auto Scheduled,Open AR,4h,Fixed Units,5,0d,1000,"October 9, 2026 9:00","October 9, 2026 2:00",10/9/26 9:00,10/9/26 2:00,6/4/26 11:00,6/4/26 4:00,0h,-726h,0ed,0,NA,NA,NA,NA,As Soon As Possible,NA,NA,NA,4/24/26 12:27,0h,0h,0h,0,0,0,0,0,1.2.2.4.2,500,No,No,No,,,Black,,,,,,,,0,0,0,0d,0d,0d,No,No,No,No,No,No,No,No,No,No,No,0,0,0,0,0,
1002,2824,Yes,Auto Scheduled,Open AP,4h,Fixed Units,5,0d,1001,"October 9, 2026 2:00","October 12, 2026 9:00",10/9/26 2:00,10/12/26 9:00,6/4/26 4:00,6/5/26 11:00,0h,-726h,0ed,0,NA,NA,NA,NA,As Soon As Possible,NA,NA,NA,4/24/26 12:25,0h,0h,0h,0,0,0,0,0,1.2.2.4.3,500,No,No,No,,,Black,,,,,,,,0,0,0,0d,0d,0d,No,No,No,No,No,No,No,No,No,No,No,0,0,0,0,0,
1003,2821,Yes,Auto Scheduled,Bank and Cash,4h,Fixed Units,5,0d,1002,"October 12, 2026 9:00","October 12, 2026 2:00",10/12/26 9:00,10/12/26 2:00,6/5/26 11:00,6/5/26 4:00,0h,-726h,0ed,0,NA,NA,NA,NA,As Soon As Possible,NA,NA,NA,4/24/26 12:25,0h,0h,0h,0,0,0,0,0,1.2.2.4.4,500,No,No,No,,,Black,,,,,,,,0,0,0,0d,0d,0d,No,No,No,No,No,No,No,No,No,No,No,0,0,0,0,0,
1004,2944,Yes,Auto Scheduled,Open Purchase Orders(Manual),1d,Fixed Units,5,0d,1000,"October 9, 2026 9:00","October 12, 2026 9:00",10/9/26 9:00,10/12/26 9:00,6/4/26 4:00,6/5/26 4:00,0d,-90.25d,0ed,0,NA,NA,NA,NA,As Soon As Possible,NA,NA,NA,4/28/26 1:02,0h,0h,0h,0,0,0,0,0,1.2.2.4.5,500,No,No,No,,,Black,,,,,,,,0,0,0,0d,0d,0d,No,No,No,No,No,No,No,No,No,No,No,0,0,0,0,0,
1005,2838,Yes,Auto Scheduled,Open Sales Orders(Manual),1d,Fixed Units,5,0d,1000,"October 9, 2026 9:00","October 12, 2026 9:00",10/9/26 9:00,10/12/26 9:00,6/4/26 4:00,6/5/26 4:00,0d,-90.25d,0ed,0,NA,NA,NA,NA,As Soon As Possible,NA,NA,NA,4/24/26 12:41,0h,0h,0h,0,0,0,0,0,1.2.2.4.6,500,No,No,No,,,Black,,,,,,,,0,0,0,0d,0d,0d,No,No,No,No,No,No,No,No,No,No,No,0,0,0,0,0,
1006,2860,Yes,Auto Scheduled,Service Orders(Manual),0.5d,Fixed Units,5,0d,1000,"October 9, 2026 9:00","October 9, 2026 2:00",10/9/26 9:00,10/9/26 2:00,6/5/26 11:00,6/5/26 4:00,0d,-89.75d,0ed,0,NA,NA,NA,NA,As Soon As Possible,NA,NA,NA,4/24/26 12:50,0h,0h,0h,0,0,0,0,0,1.2.2.4.7,500,No,No,No,,,Black,,,,,,,,0,0,0,0d,0d,0d,No,No,No,No,No,No,No,No,No,No,No,0,0,0,0,0,
1007,2858,Yes,Auto Scheduled,Open Production Orders(Manual),1d,Fixed Units,5,0d,1000,"October 9, 2026 9:00","October 12, 2026 9:00",10/9/26 9:00,10/12/26 9:00,6/4/26 4:00,6/5/26 4:00,0d,-90.25d,0ed,0,NA,NA,NA,NA,As Soon As Possible,NA,NA,NA,4/24/26 12:48,0h,0h,0h,0,0,0,0,0,1.2.2.4.8,500,No,No,No,,,Black,,,,,,,,0,0,0,0d,0d,0d,No,No,No,No,No,No,No,No,No,No,No,0,0,0,0,0,
1008,2052,Yes,Auto Scheduled,ITC2 Mock Data Loads Complete,0m,Fixed Units,4,0.03d,999,"October 12, 2026 2:00","October 12, 2026 2:00",10/12/26 2:00,10/12/26 2:00,6/5/26 4:00,6/5/26 4:00,0m,-43560m,0ed,0,NA,NA,"April 21, 2026 3:15","April 21, 2026 3:30",As Soon As Possible,NA,NA,NA,4/23/26 10:49,0h,0.25h,0h,0,0,0,0,0,1.2.2.5,500,Yes,No,No,,,Black,,,,,,,,0,0,0,0d,0d,0d,No,No,No,No,No,No,No,No,No,No,No,0,0,0,0,0,
1009,2053,Yes,Auto Scheduled,ITC3 Data Load Tasks QS5,11.88d,Fixed Duration,3,288.78d,,"June 8, 2026 8:00","June 23, 2026 4:00",6/8/26 8:00,6/23/26 4:00,5/4/26 2:29,6/8/26 10:00,0d,-24.31d,0ed,0,NA,NA,"March 13, 2025 8:00","April 21, 2026 3:15",As Soon As Possible,NA,NA,NA,4/23/26 10:50,657.5h,592h,0h,0,0,0,0,0,1.2.3,500,No,Yes,Yes,,,Black,,,,,,,,0,0,0,0d,0d,0d,No,No,No,No,No,No,No,No,No,No,No,0,0,0,0,0,
1010,2054,Yes,Auto Scheduled,PMO Authorization to Start Data Loads,2h,Fixed Units,4,0.03d,72,"June 8, 2026 8:00","June 8, 2026 10:00",6/8/26 8:00,6/8/26 10:00,6/8/26 8:00,6/8/26 10:00,0h,0h,0ed,0,NA,NA,"April 6, 2026 8:00","April 6, 2026 8:15",Must Start On,6/8/26 8:00,NA,NA,4/23/26 10:50,2h,0.25h,0h,0,0,0,0,0,1.2.3.1,500,No,No,No,,,Black,,,,,,,,0,0,0,0d,0d,0d,No,No,No,No,No,No,No,No,No,No,No,0,0,0,0,0,
1011,2959,Yes,Auto Scheduled,Master Data Loads,9.63d,Fixed Duration,4,0d,1010,"June 8, 2026 10:00","June 19, 2026 4:00",6/8/26 10:00,6/19/26 4:00,5/4/26 2:29,5/18/26 10:29,0d,-24.56d,0ed,0,NA,NA,NA,NA,As Soon As Possible,NA,NA,NA,4/29/26 1:17,655.5h,0h,0h,0,0,0,0,0,1.2.3.2,500,No,Yes,Yes,,,Black,,,,,,,,0,0,0,0d,0d,0d,No,No,No,No,No,No,No,No,No,No,No,0,0,0,0,0,
1012,2960,Yes,Auto Scheduled,RTR_CM02_Profit Center Hierarchy,0.75d,Fixed Duration,5,0.75d,,"June 8, 2026 10:00","June 8, 2026 5:00",6/8/26 10:00,6/8/26 5:00,5/4/26 2:29,5/5/26 11:29,0d,-24.56d,0ed,0,NA,NA,"April 6, 2026 8:15","April 6, 2026 3:15",As Soon As Possible,NA,NA,NA,4/29/26 1:17,6h,6h,0h,0,0,0,0,0,1.2.3.2.1,500,No,Yes,Yes,,,Black,,,,,,,,0,0,0,0d,0d,0d,No,No,No,No,No,No,No,No,No,No,No,0,0,0,0,0,
1013,2961,Yes,Auto Scheduled,"Manual File Staged and Posted ""Ready""",1h,Fixed Units,6,0.13d,,"June 8, 2026 10:00","June 8, 2026 11:00",6/8/26 10:00,6/8/26 11:00,5/4/26 2:29,5/4/26 3:29,0h,-196.52h,0ed,0,NA,NA,"April 6, 2026 8:15","April 6, 2026 9:15",As Soon As Possible,NA,NA,NA,4/29/26 1:17,1h,1h,0h,0,0,0,0,0,1.2.3.2.1.1,500,No,No,No,,,Black,,,,,,,,0,0,0,0d,0d,0d,No,No,No,No,No,No,No,No,No,No,No,0,0,0,0,0,
1014,2962,Yes,Auto Scheduled,Load,2h,Fixed Units,6,0.25d,1013,"June 8, 2026 11:00","June 8, 2026 2:00",6/8/26 11:00,6/8/26 2:00,5/4/26 3:29,5/5/26 8:29,0h,-196.52h,0ed,0,NA,NA,"April 6, 2026 9:15","April 6, 2026 11:15",As Soon As Possible,NA,NA,NA,4/29/26 1:17,2h,2h,0h,0,0,0,0,0,1.2.3.2.1.2,500,No,No,No,,,Black,,,,,,,,0,0,0,0d,0d,0d,No,No,No,No,No,No,No,No,No,No,No,0,0,0,0,0,
1015,2963,Yes,Auto Scheduled,Post Load Validation,3h,Fixed Units,6,0.38d,1014,"June 8, 2026 2:00","June 8, 2026 5:00",6/8/26 2:00,6/8/26 5:00,5/5/26 8:29,5/5/26 11:29,0h,-196.52h,0ed,0,NA,NA,"April 6, 2026 11:15","April 6, 2026 3:15",As Soon As Possible,NA,NA,NA,4/29/26 1:17,3h,3h,0h,0,0,0,0,0,1.2.3.2.1.3,500,No,No,No,,Brian Wagner,Black,,,,,,,,0,0,0,0d,0d,0d,No,No,No,No,No,No,No,No,No,No,No,0,0,0,0,0,
1016,2964,Yes,Auto Scheduled,RTR_CM03_Cost Center Hierarchy,0.75d,Fixed Duration,5,0.75d,,"June 9, 2026 8:00","June 9, 2026 3:00",6/9/26 8:00,6/9/26 3:00,5/5/26 11:29,5/6/26 9:29,0d,-24.56d,0ed,0,NA,NA,"April 6, 2026 3:15","April 7, 2026 1:15",As Soon As Possible,NA,NA,NA,4/29/26 1:17,6h,6h,0h,0,0,0,0,0,1.2.3.2.2,500,No,Yes,Yes,,,Black,,,,,,,,0,0,0,0d,0d,0d,No,No,No,No,No,No,No,No,No,No,No,0,0,0,0,0,
1017,2965,Yes,Auto Scheduled,"Manual File Staged and Posted ""Ready""",1h,Fixed Units,6,0.13d,1015,"June 9, 2026 8:00","June 9, 2026 9:00",6/9/26 8:00,6/9/26 9:00,5/5/26 11:29,5/5/26 1:29,0h,-196.52h,0ed,0,NA,NA,"April 6, 2026 3:15","April 6, 2026 4:15",As Soon As Possible,NA,NA,NA,4/29/26 1:17,1h,1h,0h,0,0,0,0,0,1.2.3.2.2.1,500,No,No,No,,,Black,,,,,,,,0,0,0,0d,0d,0d,No,No,No,No,No,No,No,No,No,No,No,0,0,0,0,0,
1018,2966,Yes,Auto Scheduled,Load,2h,Fixed Units,6,0.25d,1017,"June 9, 2026 9:00","June 9, 2026 11:00",6/9/26 9:00,6/9/26 11:00,5/5/26 1:29,5/5/26 3:29,0h,-196.52h,0ed,0,NA,NA,"April 6, 2026 4:15","April 7, 2026 9:15",As Soon As Possible,NA,NA,NA,4/29/26 1:17,2h,2h,0h,0,0,0,0,0,1.2.3.2.2.2,500,No,No,No,,,Black,,,,,,,,0,0,0,0d,0d,0d,No,No,No,No,No,No,No,No,No,No,No,0,0,0,0,0,
1019,2967,Yes,Auto Scheduled,Post Load Validation,3h,Fixed Units,6,0.38d,1018,"June 9, 2026 11:00","June 9, 2026 3:00",6/9/26 11:00,6/9/26 3:00,5/5/26 3:29,5/6/26 9:29,0h,-196.52h,0ed,0,NA,NA,"April 7, 2026 9:15","April 7, 2026 1:15",As Soon As Possible,NA,NA,NA,4/29/26 1:17,3h,3h,0h,0,0,0,0,0,1.2.3.2.2.3,500,No,No,No,,Brian Wagner,Black,,,,,,,,0,0,0,0d,0d,0d,No,No,No,No,No,No,No,No,No,No,No,0,0,0,0,0,
1020,2968,Yes,Auto Scheduled,RTR_CM01_GL_Account_Master to CC 1000,2.44d,Fixed Duration,5,1.81d,,"June 9, 2026 3:00","June 12, 2026 9:30",6/9/26 3:00,6/12/26 9:30,5/6/26 9:29,5/8/26 1:59,0d,-24.56d,0ed,0,NA,NA,"April 7, 2026 1:15","April 9, 2026 10:45",As Soon As Possible,NA,NA,NA,4/29/26 1:17,16h,16h,0h,0,0,0,0,0,1.2.3.2.3,500,No,Yes,Yes,,,Black,,,,,,,,0,0,0,0d,0d,0d,No,No,No,No,No,No,No,No,No,No,No,0,0,0,0,0,
1021,2969,Yes,Auto Scheduled,"Load File Staged and Posted ""Ready""",1h,Fixed Units,6,0.13d,1019,"June 9, 2026 3:00","June 9, 2026 4:00",6/9/26 3:00,6/9/26 4:00,5/6/26 9:29,5/6/26 10:29,0h,-196.52h,0ed,0,NA,NA,"April 7, 2026 1:15","April 7, 2026 2:15",As Soon As Possible,NA,NA,NA,4/29/26 1:17,1h,1h,0h,0,0,0,0,0,1.2.3.2.3.1,500,No,No,No,,,Black,,,,,,,,0,0,0,0d,0d,0d,No,No,No,No,No,No,No,No,No,No,No,0,0,0,0,0,
1022,2970,Yes,Auto Scheduled,Pre Load Validation,2h,Fixed Units,6,0.25d,1021,"June 9, 2026 4:00","June 10, 2026 9:00",6/9/26 4:00,6/10/26 9:00,5/6/26 10:29,5/6/26 1:29,0h,-196.52h,0ed,0,NA,NA,"April 7, 2026 2:15","April 7, 2026 4:15",As Soon As Possible,NA,NA,NA,4/29/26 1:17,2h,2h,0h,0,0,0,0,0,1.2.3.2.3.2,500,No,No,No,,Brian Wagner,Black,,,,,,,,0,0,0,0d,0d,0d,No,No,No,No,No,No,No,No,No,No,No,0,0,0,0,0,
1023,2971,Yes,Auto Scheduled,Simulate Load,6h,Fixed Units,6,0.75d,1022,"June 10, 2026 9:00","June 10, 2026 4:00",6/10/26 9:00,6/10/26 4:00,5/6/26 1:29,5/7/26 10:29,0h,-196.52h,0ed,0,NA,NA,"April 7, 2026 4:15","April 8, 2026 2:15",As Soon As Possible,NA,NA,NA,4/29/26 1:17,6h,6h,0h,0,0,0,0,0,1.2.3.2.3.3,500,No,No,No,,,Black,,,,,,,,0,0,0,0d,0d,0d,No,No,No,No,No,No,No,No,No,No,No,0,0,0,0,0,
1024,2972,Yes,Auto Scheduled,Error and Defect Mitigation,2h,Fixed Units,6,0.25d,1023,"June 10, 2026 4:00","June 11, 2026 10:30",6/10/26 4:00,6/11/26 10:30,5/7/26 10:29,5/7/26 2:59,0h,-196.52h,0ed,0,NA,NA,"April 8, 2026 8:15","April 8, 2026 11:45",As Soon As Possible,NA,NA,NA,4/29/26 1:17,2h,2h,0h,0,0,0,0,0,1.2.3.2.3.4,500,No,No,No,,Brian Wagner,Black,,,,,,,,0,0,0,0d,0d,0d,No,No,No,No,No,No,No,No,No,No,No,0,0,0,0,0,
1025,2973,Yes,Auto Scheduled,Load,1h,Fixed Units,6,0.13d,1024,"June 11, 2026 10:30","June 11, 2026 11:30",6/11/26 10:30,6/11/26 11:30,5/7/26 2:59,5/7/26 3:59,0h,-196.52h,0ed,0,NA,NA,"April 8, 2026 11:45","April 8, 2026 1:45",As Soon As Possible,NA,NA,NA,4/29/26 1:17,1h,1h,0h,0,0,0,0,0,1.2.3.2.3.5,500,No,No,No,,,Black,,,,,,,,0,0,0,0d,0d,0d,No,No,No,No,No,No,No,No,No,No,No,0,0,0,0,0,
1026,2974,Yes,Auto Scheduled,Post Load Validation,2h,Fixed Units,6,0.25d,1025,"June 11, 2026 11:30","June 11, 2026 2:30",6/11/26 11:30,6/11/26 2:30,5/7/26 3:59,5/8/26 8:59,0h,-196.52h,0ed,0,NA,NA,"April 8, 2026 1:45","April 8, 2026 3:45",As Soon As Possible,NA,NA,NA,4/29/26 1:17,2h,2h,0h,0,0,0,0,0,1.2.3.2.3.6,500,No,No,No,,Brian Wagner,Black,,,,,,,,0,0,0,0d,0d,0d,No,No,No,No,No,No,No,No,No,No,No,0,0,0,0,0,
1027,2975,Yes,Auto Scheduled,Extend GL to all Company Codes,2h,Fixed Units,6,0.25d,1026,"June 11, 2026 2:30","June 11, 2026 4:30",6/11/26 2:30,6/11/26 4:30,5/8/26 8:59,5/8/26 10:59,0h,-196.52h,0ed,0,NA,NA,"April 8, 2026 3:45","April 9, 2026 8:45",As Soon As Possible,NA,NA,NA,4/29/26 1:17,2h,2h,0h,0,0,0,0,0,1.2.3.2.3.7,500,No,No,No,,,Black,,,,,,,,0,0,0,0d,0d,0d,No,No,No,No,No,No,No,No,No,No,No,0,0,0,0,0,
1028,2976,Yes,Auto Scheduled,Post GL Extention Validation,2h,Fixed Units,6,0.25d,1027,"June 11, 2026 4:30","June 12, 2026 9:30",6/11/26 4:30,6/12/26 9:30,5/8/26 10:59,5/8/26 1:59,0h,-196.52h,0ed,0,NA,NA,"April 9, 2026 8:45","April 9, 2026 10:45",As Soon As Possible,NA,NA,NA,4/29/26 1:17,0h,0h,0h,0,0,0,0,0,1.2.3.2.3.8,500,No,No,No,,,Black,,,,,,,,0,0,0,0d,0d,0d,No,No,No,No,No,No,No,No,No,No,No,0,0,0,0,0,
1029,2977,Yes,Auto Scheduled,RTR_CM05_Profit_Center,1.13d,Fixed Duration,5,1.13d,,"June 9, 2026 8:00","June 10, 2026 9:00",6/9/26 8:00,6/10/26 9:00,5/7/26 8:29,5/8/26 9:29,0d,-22.94d,0ed,0,NA,NA,"April 6, 2026 3:15","April 7, 2026 4:15",As Soon As Possible,NA,NA,NA,4/29/26 1:17,9h,9h,0h,0,0,0,0,0,1.2.3.2.4,500,No,Yes,Yes,,,Black,,,,,,,,0,0,0,0d,0d,0d,No,No,No,No,No,No,No,No,No,No,No,0,0,0,0,0,
1030,2978,Yes,Auto Scheduled,"Load File Staged and Posted ""Ready""",1h,Fixed Units,6,0.13d,1015,"June 9, 2026 8:00","June 9, 2026 9:00",6/9/26 8:00,6/9/26 9:00,5/7/26 8:29,5/7/26 9:29,0h,-183.52h,0ed,0,NA,NA,"April 6, 2026 3:15","April 6, 2026 4:15",As Soon As Possible,NA,NA,NA,4/29/26 1:17,1h,1h,0h,0,0,0,0,0,1.2.3.2.4.1,500,No,No,No,,,Black,,,,,,,,0,0,0,0d,0d,0d,No,No,No,No,No,No,No,No,No,No,No,0,0,0,0,0,
1031,2979,Yes,Auto Scheduled,Pre Load Validation,2h,Fixed Units,6,0.25d,1030,"June 9, 2026 9:00","June 9, 2026 11:00",6/9/26 9:00,6/9/26 11:00,5/7/26 9:29,5/7/26 11:29,0h,-183.52h,0ed,0,NA,NA,"April 6, 2026 4:15","April 7, 2026 9:15",As Soon As Possible,NA,NA,NA,4/29/26 1:17,2h,2h,0h,0,0,0,0,0,1.2.3.2.4.2,500,No,No,No,,Brian Wagner,Black,,,,,,,,0,0,0,0d,0d,0d,No,No,No,No,No,No,No,No,No,No,No,0,0,0,0,0,
1032,2980,Yes,Auto Scheduled,Simulate Load,1h,Fixed Units,6,0.13d,1031,"June 9, 2026 11:00","June 9, 2026 12:00",6/9/26 11:00,6/9/26 12:00,5/7/26 11:29,5/7/26 1:29,0h,-183.52h,0ed,0,NA,NA,"April 7, 2026 9:15","April 7, 2026 10:15",As Soon As Possible,NA,NA,NA,4/29/26 1:17,1h,1h,0h,0,0,0,0,0,1.2.3.2.4.3,500,No,No,No,,,Black,,,,,,,,0,0,0,0d,0d,0d,No,No,No,No,No,No,No,No,No,No,No,0,0,0,0,0,
1033,2981,Yes,Auto Scheduled,Error and Defect Mitigation,2h,Fixed Units,6,0.25d,1032,"June 9, 2026 1:00","June 9, 2026 3:00",6/9/26 1:00,6/9/26 3:00,5/7/26 1:29,5/7/26 3:29,0h,-183.52h,0ed,0,NA,NA,"April 7, 2026 10:15","April 7, 2026 1:15",As Soon As Possible,NA,NA,NA,4/29/26 1:17,2h,2h,0h,0,0,0,0,0,1.2.3.2.4.4,500,No,No,No,,Brian Wagner,Black,,,,,,,,0,0,0,0d,0d,0d,No,No,No,No,No,No,No,No,No,No,No,0,0,0,0,0,
1034,2982,Yes,Auto Scheduled,Load,1h,Fixed Units,6,0.13d,1033,"June 9, 2026 3:00","June 9, 2026 4:00",6/9/26 3:00,6/9/26 4:00,5/7/26 3:29,5/7/26 4:29,0h,-183.52h,0ed,0,NA,NA,"April 7, 2026 1:15","April 7, 2026 2:15",As Soon As Possible,NA,NA,NA,4/29/26 1:17,1h,1h,0h,0,0,0,0,0,1.2.3.2.4.5,500,No,No,No,,,Black,,,,,,,,0,0,0,0d,0d,0d,No,No,No,No,No,No,No,No,No,No,No,0,0,0,0,0,
1035,2983,Yes,Auto Scheduled,Post Load Validation,2h,Fixed Units,6,0.25d,1034,"June 9, 2026 4:00","June 10, 2026 9:00",6/9/26 4:00,6/10/26 9:00,5/7/26 4:29,5/8/26 9:29,0h,-183.52h,0ed,0,NA,NA,"April 7, 2026 2:15","April 7, 2026 4:15",As Soon As Possible,NA,NA,NA,4/29/26 1:17,2h,2h,0h,0,0,0,0,0,1.2.3.2.4.6,500,No,No,No,,Brian Wagner,Black,,,,,,,,0,0,0,0d,0d,0d,No,No,No,No,No,No,No,No,No,No,No,0,0,0,0,0,
1036,2984,Yes,Auto Scheduled,RTR_CM04_Cost_Center,1.13d,Fixed Duration,5,1.13d,,"June 10, 2026 9:00","June 11, 2026 10:00",6/10/26 9:00,6/11/26 10:00,5/8/26 9:29,5/11/26 10:29,0d,-22.94d,0ed,0,NA,NA,"April 7, 2026 4:15","April 9, 2026 8:15",As Soon As Possible,NA,NA,NA,4/29/26 1:17,9h,9h,0h,0,0,0,0,0,1.2.3.2.5,500,No,Yes,Yes,,,Black,,,,,,,,0,0,0,0d,0d,0d,No,No,No,No,No,No,No,No,No,No,No,0,0,0,0,0,
1037,2985,Yes,Auto Scheduled,"Load File Staged and Posted ""Ready""",1h,Fixed Units,6,0.13d,1035,"June 10, 2026 9:00","June 10, 2026 10:00",6/10/26 9:00,6/10/26 10:00,5/8/26 9:29,5/8/26 10:29,0h,-183.52h,0ed,0,NA,NA,"April 7, 2026 4:15","April 8, 2026 8:15",As Soon As Possible,NA,NA,NA,4/29/26 1:17,1h,1h,0h,0,0,0,0,0,1.2.3.2.5.1,500,No,No,No,,,Black,,,,,,,,0,0,0,0d,0d,0d,No,No,No,No,No,No,No,No,No,No,No,0,0,0,0,0,
1038,2986,Yes,Auto Scheduled,Pre Load Validation,2h,Fixed Units,6,0.25d,1037,"June 10, 2026 10:00","June 10, 2026 12:00",6/10/26 10:00,6/10/26 12:00,5/8/26 10:29,5/8/26 1:29,0h,-183.52h,0ed,0,NA,NA,"April 8, 2026 8:15","April 8, 2026 10:15",As Soon As Possible,NA,NA,NA,4/29/26 1:17,2h,2h,0h,0,0,0,0,0,1.2.3.2.5.2,500,No,No,No,,Brian Wagner,Black,,,,,,,,0,0,0,0d,0d,0d,No,No,No,No,No,No,No,No,No,No,No,0,0,0,0,0,
1039,2987,Yes,Auto Scheduled,Simulate Load,1h,Fixed Units,6,0.13d,1038,"June 10, 2026 1:00","June 10, 2026 2:00",6/10/26 1:00,6/10/26 2:00,5/8/26 1:29,5/8/26 2:29,0h,-183.52h,0ed,0,NA,NA,"April 8, 2026 10:15","April 8, 2026 11:15",As Soon As Possible,NA,NA,NA,4/29/26 1:17,1h,1h,0h,0,0,0,0,0,1.2.3.2.5.3,500,No,No,No,,,Black,,,,,,,,0,0,0,0d,0d,0d,No,No,No,No,No,No,No,No,No,No,No,0,0,0,0,0,
1040,2988,Yes,Auto Scheduled,Error and Defect Mitigation,2h,Fixed Units,6,0.25d,1039,"June 10, 2026 2:00","June 10, 2026 4:00",6/10/26 2:00,6/10/26 4:00,5/8/26 2:29,5/8/26 4:29,0h,-183.52h,0ed,0,NA,NA,"April 8, 2026 11:15","April 8, 2026 2:15",As Soon As Possible,NA,NA,NA,4/29/26 1:17,2h,2h,0h,0,0,0,0,0,1.2.3.2.5.4,500,No,No,No,,Brian Wagner,Black,,,,,,,,0,0,0,0d,0d,0d,No,No,No,No,No,No,No,No,No,No,No,0,0,0,0,0,
1041,2989,Yes,Auto Scheduled,Load,1h,Fixed Units,6,0.13d,1040,"June 10, 2026 4:00","June 10, 2026 5:00",6/10/26 4:00,6/10/26 5:00,5/8/26 4:29,5/11/26 8:29,0h,-183.52h,0ed,0,NA,NA,"April 8, 2026 2:15","April 8, 2026 3:15",As Soon As Possible,NA,NA,NA,4/29/26 1:17,1h,1h,0h,0,0,0,0,0,1.2.3.2.5.5,500,No,No,No,,,Black,,,,,,,,0,0,0,0d,0d,0d,No,No,No,No,No,No,No,No,No,No,No,0,0,0,0,0,
1042,2990,Yes,Auto Scheduled,Post Load Validation,2h,Fixed Units,6,0.25d,1041,"June 11, 2026 8:00","June 11, 2026 10:00",6/11/26 8:00,6/11/26 10:00,5/11/26 8:29,5/11/26 10:29,0h,-183.52h,0ed,0,NA,NA,"April 8, 2026 3:15","April 9, 2026 8:15",As Soon As Possible,NA,NA,NA,4/29/26 1:17,2h,2h,0h,0,0,0,0,0,1.2.3.2.5.6,500,No,No,No,,Brian Wagner,Black,,,,,,,,0,0,0,0d,0d,0d,No,No,No,No,No,No,No,No,No,No,No,0,0,0,0,0,
1043,2991,Yes,Auto Scheduled,Manual Configuration Activities in QS5,5.94d,Fixed Duration,5,7.16d,1036,"June 11, 2026 10:00","June 19, 2026 9:30",6/11/26 10:00,6/19/26 9:30,5/11/26 10:29,5/18/26 10:29,0d,-23.88d,0ed,0,NA,NA,"April 6, 2026 1:00","April 15, 2026 2:15",As Soon As Possible,NA,NA,NA,4/29/26 1:17,43h,43h,0h,0,0,0,0,0,1.2.3.2.6,500,No,Yes,Yes,,,Black,,,,,,,,0,0,0,0d,0d,0d,No,No,No,No,No,No,No,No,No,No,No,0,0,0,0,0,
1044,2992,Yes,Auto Scheduled,Open Client,30m,Fixed Units,6,0.06d,,"June 11, 2026 10:00","June 11, 2026 10:30",6/11/26 10:00,6/11/26 10:30,5/18/26 9:59,5/18/26 10:29,0m,-8641m,0ed,0,NA,NA,"April 6, 2026 1:00","April 6, 2026 1:30",As Soon As Possible,NA,NA,NA,4/29/26 1:17,0.5h,0.5h,0h,0,0,0,0,0,1.2.3.2.6.1,500,No,No,No,,,Black,,,,,,,,0,0,0,0d,0d,0d,No,No,No,No,No,No,No,No,No,No,No,0,0,0,0,0,
1045,2993,Yes,Auto Scheduled,Service Enterprise Setup,5d,Fixed Units,6,5d,"1012,1016,1020","June 12, 2026 9:30","June 19, 2026 9:30",6/12/26 9:30,6/19/26 9:30,5/11/26 10:29,5/18/26 10:29,0d,-23.88d,0ed,0,NA,NA,"April 8, 2026 2:15","April 15, 2026 2:15",As Soon As Possible,NA,NA,NA,4/29/26 1:17,40h,40h,0h,0,0,0,0,0,1.2.3.2.6.2,500,No,No,No,,,Black,,,,,,,,0,0,0,0d,0d,0d,No,No,No,No,No,No,No,No,No,No,No,0,0,0,0,0,
1046,2994,Yes,Auto Scheduled,Close Client,30m,Fixed Units,6,0.06d,,"June 11, 2026 10:00","June 11, 2026 10:30",6/11/26 10:00,6/11/26 10:30,5/18/26 9:59,5/18/26 10:29,0m,-8641m,0ed,0,NA,NA,"April 6, 2026 1:00","April 6, 2026 1:30",As Soon As Possible,NA,NA,NA,4/29/26 1:17,0.5h,0.5h,0h,0,0,0,0,0,1.2.3.2.6.3,500,No,No,No,,,Black,,,,,,,,0,0,0,0d,0d,0d,No,No,No,No,No,No,No,No,No,No,No,0,0,0,0,0,
1047,2995,Yes,Auto Scheduled,Intercompany Business Partner Setup,2h,Fixed Units,6,0.25d,"1012,1016,1028","June 12, 2026 9:30","June 12, 2026 11:30",6/12/26 9:30,6/12/26 11:30,5/18/26 8:29,5/18/26 10:29,0h,-153.02h,0ed,0,NA,NA,"April 8, 2026 3:45","April 9, 2026 8:45",As Soon As Possible,NA,NA,NA,4/29/26 1:17,2h,2h,0h,0,0,0,0,0,1.2.3.2.6.4,500,No,No,No,,,Black,,,,,,,,0,0,0,0d,0d,0d,No,No,No,No,No,No,No,No,No,No,No,0,0,0,0,0,
1048,2996,Yes,Auto Scheduled,RTR_CM09_Activity_Type,1.38d,Fixed Duration,5,1.22d,,"June 11, 2026 2:30","June 15, 2026 8:30",6/11/26 2:30,6/15/26 8:30,5/14/26 4:29,5/18/26 10:29,0d,-19.75d,0ed,0,NA,NA,"April 8, 2026 2:15","April 9, 2026 4:00",As Soon As Possible,NA,NA,NA,4/29/26 1:17,9h,9h,0h,0,0,0,0,0,1.2.3.2.7,500,No,Yes,Yes,,,Black,,,,,,,,0,0,0,0d,0d,0d,No,No,No,No,No,No,No,No,No,No,No,0,0,0,0,0,
1049,2997,Yes,Auto Scheduled,"Load File Staged and Posted ""Ready""",1h,Fixed Units,6,0.13d,1026,"June 11, 2026 2:30","June 11, 2026 4:45",6/11/26 2:30,6/11/26 4:45,5/14/26 4:29,5/15/26 9:44,0h,-158.02h,0ed,0,NA,NA,"April 8, 2026 2:15","April 8, 2026 4:30",As Soon As Possible,NA,NA,NA,4/29/26 1:17,1h,1h,0h,0,0,0,0,0,1.2.3.2.7.1,500,No,No,No,,,Black,,,,,,,,0,0,0,0d,0d,0d,No,No,No,No,No,No,No,No,No,No,No,0,0,0,0,0,
1050,2998,Yes,Auto Scheduled,Pre Load Validation,2h,Fixed Units,6,0.25d,1049,"June 11, 2026 4:45","June 12, 2026 10:30",6/11/26 4:45,6/12/26 10:30,5/15/26 9:44,5/15/26 1:29,0h,-158.02h,0ed,0,NA,NA,"April 8, 2026 3:15","April 9, 2026 9:00",As Soon As Possible,NA,NA,NA,4/29/26 1:17,2h,2h,0h,0,0,0,0,0,1.2.3.2.7.2,500,No,No,No,,Brian Wagner,Black,,,,,,,,0,0,0,0d,0d,0d,No,No,No,No,No,No,No,No,No,No,No,0,0,0,0,0,
1051,2999,Yes,Auto Scheduled,Simulate Load,1h,Fixed Units,6,0.13d,1050,"June 12, 2026 10:30","June 12, 2026 11:30",6/12/26 10:30,6/12/26 11:30,5/15/26 1:29,5/15/26 2:29,0h,-158.02h,0ed,0,NA,NA,"April 9, 2026 9:00","April 9, 2026 10:00",As Soon As Possible,NA,NA,NA,4/29/26 1:17,1h,1h,0h,0,0,0,0,0,1.2.3.2.7.3,500,No,No,No,,,Black,,,,,,,,0,0,0,0d,0d,0d,No,No,No,No,No,No,No,No,No,No,No,0,0,0,0,0,
1052,3000,Yes,Auto Scheduled,Error and Defect Mitigation,2h,Fixed Units,6,0.25d,1051,"June 12, 2026 11:30","June 12, 2026 2:30",6/12/26 11:30,6/12/26 2:30,5/15/26 2:29,5/15/26 4:29,0h,-158.02h,0ed,0,NA,NA,"April 9, 2026 10:00","April 9, 2026 12:00",As Soon As Possible,NA,NA,NA,4/29/26 1:17,2h,2h,0h,0,0,0,0,0,1.2.3.2.7.4,500,No,No,No,,Brian Wagner,Black,,,,,,,,0,0,0,0d,0d,0d,No,No,No,No,No,No,No,No,No,No,No,0,0,0,0,0,
1053,3001,Yes,Auto Scheduled,Load,1h,Fixed Units,6,0.13d,1052,"June 12, 2026 2:30","June 12, 2026 3:30",6/12/26 2:30,6/12/26 3:30,5/15/26 4:29,5/18/26 8:29,0h,-158.02h,0ed,0,NA,NA,"April 9, 2026 1:00","April 9, 2026 2:00",As Soon As Possible,NA,NA,NA,4/29/26 1:17,1h,1h,0h,0,0,0,0,0,1.2.3.2.7.5,500,No,No,No,,,Black,,,,,,,,0,0,0,0d,0d,0d,No,No,No,No,No,No,No,No,No,No,No,0,0,0,0,0,
1054,3002,Yes,Auto Scheduled,Post Load Validation,2h,Fixed Units,6,0.25d,1053,"June 12, 2026 3:30","June 15, 2026 8:30",6/12/26 3:30,6/15/26 8:30,5/18/26 8:29,5/18/26 10:29,0h,-158.02h,0ed,0,NA,NA,"April 9, 2026 2:00","April 9, 2026 4:00",As Soon As Possible,NA,NA,NA,4/29/26 1:17,2h,2h,0h,0,0,0,0,0,1.2.3.2.7.6,500,No,No,No,,Brian Wagner,Black,,,,,,,,0,0,0,0d,0d,0d,No,No,No,No,No,No,No,No,No,No,No,0,0,0,0,0,
1055,3003,Yes,Auto Scheduled,RTR_CM12_Activity Rates,1.13d,Fixed Duration,5,1.13d,,"June 9, 2026 3:00","June 10, 2026 4:00",6/9/26 3:00,6/10/26 4:00,5/15/26 9:29,5/18/26 10:29,0d,-17.56d,0ed,0,NA,NA,"April 7, 2026 1:15","April 8, 2026 2:15",As Soon As Possible,NA,NA,NA,4/29/26 1:17,9h,9h,0h,0,0,0,0,0,1.2.3.2.8,500,No,Yes,Yes,,,Black,,,,,,,,0,0,0,0d,0d,0d,No,No,No,No,No,No,No,No,No,No,No,0,0,0,0,0,
1056,3004,Yes,Auto Scheduled,"Load File Staged and Posted ""Ready""",1h,Fixed Units,6,0.13d,1019,"June 9, 2026 3:00","June 9, 2026 4:00",6/9/26 3:00,6/9/26 4:00,5/15/26 9:29,5/15/26 10:29,0h,-140.52h,0ed,0,NA,NA,"April 7, 2026 1:15","April 7, 2026 2:15",As Soon As Possible,NA,NA,NA,4/29/26 1:17,1h,1h,0h,0,0,0,0,0,1.2.3.2.8.1,500,No,No,No,,,Black,,,,,,,,0,0,0,0d,0d,0d,No,No,No,No,No,No,No,No,No,No,No,0,0,0,0,0,
1057,3005,Yes,Auto Scheduled,Pre Load Validation,2h,Fixed Units,6,0.25d,1056,"June 9, 2026 4:00","June 10, 2026 9:00",6/9/26 4:00,6/10/26 9:00,5/15/26 10:29,5/15/26 1:29,0h,-140.52h,0ed,0,NA,NA,"April 7, 2026 2:15","April 7, 2026 4:15",As Soon As Possible,NA,NA,NA,4/29/26 1:17,2h,2h,0h,0,0,0,0,0,1.2.3.2.8.2,500,No,No,No,,Brian Wagner,Black,,,,,,,,0,0,0,0d,0d,0d,No,No,No,No,No,No,No,No,No,No,No,0,0,0,0,0,
1058,3006,Yes,Auto Scheduled,Simulate Load,1h,Fixed Units,6,0.13d,1057,"June 10, 2026 9:00","June 10, 2026 10:00",6/10/26 9:00,6/10/26 10:00,5/15/26 1:29,5/15/26 2:29,0h,-140.52h,0ed,0,NA,NA,"April 7, 2026 4:15","April 8, 2026 8:15",As Soon As Possible,NA,NA,NA,4/29/26 1:17,1h,1h,0h,0,0,0,0,0,1.2.3.2.8.3,500,No,No,No,,,Black,,,,,,,,0,0,0,0d,0d,0d,No,No,No,No,No,No,No,No,No,No,No,0,0,0,0,0,
1059,3007,Yes,Auto Scheduled,Error and Defect Mitigation,2h,Fixed Units,6,0.25d,1058,"June 10, 2026 10:00","June 10, 2026 12:00",6/10/26 10:00,6/10/26 12:00,5/15/26 2:29,5/15/26 4:29,0h,-140.52h,0ed,0,NA,NA,"April 8, 2026 8:15","April 8, 2026 10:15",As Soon As Possible,NA,NA,NA,4/29/26 1:17,2h,2h,0h,0,0,0,0,0,1.2.3.2.8.4,500,No,No,No,,Brian Wagner,Black,,,,,,,,0,0,0,0d,0d,0d,No,No,No,No,No,No,No,No,No,No,No,0,0,0,0,0,
1060,3008,Yes,Auto Scheduled,Load,1h,Fixed Units,6,0.13d,1059,"June 10, 2026 1:00","June 10, 2026 2:00",6/10/26 1:00,6/10/26 2:00,5/15/26 4:29,5/18/26 8:29,0h,-140.52h,0ed,0,NA,NA,"April 8, 2026 10:15","April 8, 2026 11:15",As Soon As Possible,NA,NA,NA,4/29/26 1:17,1h,1h,0h,0,0,0,0,0,1.2.3.2.8.5,500,No,No,No,,,Black,,,,,,,,0,0,0,0d,0d,0d,No,No,No,No,No,No,No,No,No,No,No,0,0,0,0,0,
1061,3009,Yes,Auto Scheduled,Post Load Validation,2h,Fixed Units,6,0.25d,1060,"June 10, 2026 2:00","June 10, 2026 4:00",6/10/26 2:00,6/10/26 4:00,5/18/26 8:29,5/18/26 10:29,0h,-140.52h,0ed,0,NA,NA,"April 8, 2026 11:15","April 8, 2026 2:15",As Soon As Possible,NA,NA,NA,4/29/26 1:17,2h,2h,0h,0,0,0,0,0,1.2.3.2.8.6,500,No,No,No,,Brian Wagner,Black,,,,,,,,0,0,0,0d,0d,0d,No,No,No,No,No,No,No,No,No,No,No,0,0,0,0,0,
1062,3010,Yes,Auto Scheduled,RTR_CM06_Bank_master,3.81d,Fixed Duration,5,1.22d,,"June 8, 2026 10:00","June 12, 2026 8:30",6/8/26 10:00,6/12/26 8:30,5/8/26 9:29,5/18/26 10:29,0d,-21.06d,0ed,0,NA,NA,"April 8, 2026 2:15","April 9, 2026 4:00",As Soon As Possible,NA,NA,NA,4/29/26 1:17,13h,9h,0h,0,0,0,0,0,1.2.3.2.9,500,No,Yes,Yes,,,Black,,,,,,,,0,0,0,0d,0d,0d,No,No,No,No,No,No,No,No,No,No,No,0,0,0,0,0,
1063,3011,Yes,Auto Scheduled,"Load File Staged and Posted ""Ready""",1h,Fixed Units,6,0.13d,1026,"June 11, 2026 2:30","June 11, 2026 3:30",6/11/26 2:30,6/11/26 3:30,5/15/26 4:29,5/18/26 8:29,0h,-150.02h,0ed,0,NA,NA,"April 8, 2026 2:15","April 8, 2026 4:30",As Soon As Possible,NA,NA,NA,4/29/26 1:17,1h,1h,0h,0,0,0,0,0,1.2.3.2.9.1,500,No,No,No,,,Black,,,,,,,,0,0,0,0d,0d,0d,No,No,No,No,No,No,No,No,No,No,No,0,0,0,0,0,
1064,3012,Yes,Auto Scheduled,Pre Load Validation,2h,Fixed Units,6,0.25d,1063,"June 11, 2026 3:30","June 12, 2026 8:30",6/11/26 3:30,6/12/26 8:30,5/18/26 8:29,5/18/26 10:29,0h,-150.02h,0ed,0,NA,NA,"April 8, 2026 4:30","April 9, 2026 9:30",As Soon As Possible,NA,NA,NA,4/29/26 1:17,2h,2h,0h,0,0,0,0,0,1.2.3.2.9.2,500,No,No,No,,Brian Wagner,Black,,,,,,,,0,0,0,0d,0d,0d,No,No,No,No,No,No,No,No,No,No,No,0,0,0,0,0,
1065,3013,Yes,Auto Scheduled,Simulate Load,1h,Fixed Units,6,0.13d,,"June 8, 2026 10:00","June 8, 2026 11:00",6/8/26 10:00,6/8/26 11:00,5/8/26 9:29,5/8/26 10:29,0h,-168.52h,0ed,0,NA,NA,"April 9, 2026 9:30","April 9, 2026 10:30",As Soon As Possible,NA,NA,NA,4/29/26 1:17,1h,1h,0h,0,0,0,0,0,1.2.3.2.9.3,500,No,No,No,,,Black,,,,,,,,0,0,0,0d,0d,0d,No,No,No,No,No,No,No,No,No,No,No,0,0,0,0,0,
1066,3014,Yes,Auto Scheduled,Error and Defect Mitigation,2h,Fixed Units,6,0.25d,1065,"June 8, 2026 11:00","June 8, 2026 2:00",6/8/26 11:00,6/8/26 2:00,5/8/26 10:29,5/8/26 1:29,0h,-168.52h,0ed,0,NA,NA,"April 9, 2026 10:30","April 9, 2026 1:30",As Soon As Possible,NA,NA,NA,4/29/26 1:17,2h,2h,0h,0,0,0,0,0,1.2.3.2.9.4,500,No,No,No,,Brian Wagner,Black,,,,,,,,0,0,0,0d,0d,0d,No,No,No,No,No,No,No,No,No,No,No,0,0,0,0,0,
1067,3015,Yes,Auto Scheduled,Load,5h,Fixed Units,6,0.13d,1066,"June 8, 2026 2:00","June 9, 2026 10:00",6/8/26 2:00,6/9/26 10:00,5/8/26 1:29,5/11/26 9:29,0h,-168.52h,0ed,0,NA,NA,"April 9, 2026 1:30","April 9, 2026 2:30",As Soon As Possible,NA,NA,NA,4/29/26 1:17,5h,1h,0h,0,0,0,0,0,1.2.3.2.9.5,500,No,No,No,,,Black,,,,,,,,0,0,0,0d,0d,0d,No,No,No,No,No,No,No,No,No,No,No,0,0,0,0,0,
1068,3016,Yes,Auto Scheduled,Post Load Validation,2h,Fixed Units,6,0.25d,1067,"June 9, 2026 10:00","June 9, 2026 4:30",6/9/26 10:00,6/9/26 4:30,5/11/26 9:29,5/11/26 3:59,0h,-168.52h,0ed,0,NA,NA,"April 9, 2026 8:00","April 9, 2026 4:00",As Soon As Possible,NA,NA,NA,4/29/26 1:17,2h,2h,0h,0,0,0,0,0,1.2.3.2.9.6,500,No,No,No,,Brian Wagner,Black,,,,,,,,0,0,0,0d,0d,0d,No,No,No,No,No,No,No,No,No,No,No,0,0,0,0,0,
1069,3017,Yes,Auto Scheduled,RTR_CM08_Exchange_Rates,1.13d,Fixed Duration,5,1.13d,,"June 9, 2026 10:00","June 10, 2026 11:00",6/9/26 10:00,6/10/26 11:00,5/15/26 9:29,5/18/26 10:29,0d,-17.06d,0ed,0,NA,NA,"April 9, 2026 2:30","April 10, 2026 3:30",As Soon As Possible,NA,NA,NA,4/29/26 1:17,9h,9h,0h,0,0,0,0,0,1.2.3.2.10,500,No,Yes,Yes,,,Black,,,,,,,,0,0,0,0d,0d,0d,No,No,No,No,No,No,No,No,No,No,No,0,0,0,0,0,
1070,3018,Yes,Auto Scheduled,"Load File Staged and Posted ""Ready""",1h,Fixed Units,6,0.13d,1067,"June 9, 2026 10:00","June 9, 2026 11:00",6/9/26 10:00,6/9/26 11:00,5/15/26 9:29,5/15/26 10:29,0h,-136.52h,0ed,0,NA,NA,"April 9, 2026 2:30","April 9, 2026 3:30",As Soon As Possible,NA,NA,NA,4/29/26 1:17,1h,1h,0h,0,0,0,0,0,1.2.3.2.10.1,500,No,No,No,,,Black,,,,,,,,0,0,0,0d,0d,0d,No,No,No,No,No,No,No,No,No,No,No,0,0,0,0,0,
1071,3019,Yes,Auto Scheduled,Pre Load Validation,2h,Fixed Units,6,0.25d,1070,"June 9, 2026 11:00","June 9, 2026 2:00",6/9/26 11:00,6/9/26 2:00,5/15/26 10:29,5/15/26 1:29,0h,-136.52h,0ed,0,NA,NA,"April 9, 2026 3:30","April 10, 2026 8:30",As Soon As Possible,NA,NA,NA,4/29/26 1:17,2h,2h,0h,0,0,0,0,0,1.2.3.2.10.2,500,No,No,No,,Brian Wagner,Black,,,,,,,,0,0,0,0d,0d,0d,No,No,No,No,No,No,No,No,No,No,No,0,0,0,0,0,
1072,3020,Yes,Auto Scheduled,Simulate Load,1h,Fixed Units,6,0.13d,1071,"June 9, 2026 2:00","June 9, 2026 3:00",6/9/26 2:00,6/9/26 3:00,5/15/26 1:29,5/15/26 2:29,0h,-136.52h,0ed,0,NA,NA,"April 10, 2026 8:30","April 10, 2026 9:30",As Soon As Possible,NA,NA,NA,4/29/26 1:17,1h,1h,0h,0,0,0,0,0,1.2.3.2.10.3,500,No,No,No,,,Black,,,,,,,,0,0,0,0d,0d,0d,No,No,No,No,No,No,No,No,No,No,No,0,0,0,0,0,
1073,3021,Yes,Auto Scheduled,Error and Defect Mitigation,2h,Fixed Units,6,0.25d,1072,"June 9, 2026 3:00","June 9, 2026 5:00",6/9/26 3:00,6/9/26 5:00,5/15/26 2:29,5/15/26 4:29,0h,-136.52h,0ed,0,NA,NA,"April 10, 2026 9:30","April 10, 2026 11:30",As Soon As Possible,NA,NA,NA,4/29/26 1:17,2h,2h,0h,0,0,0,0,0,1.2.3.2.10.4,500,No,No,No,,Brian Wagner,Black,,,,,,,,0,0,0,0d,0d,0d,No,No,No,No,No,No,No,No,No,No,No,0,0,0,0,0,
1074,3022,Yes,Auto Scheduled,Load,1h,Fixed Units,6,0.13d,1073,"June 10, 2026 8:00","June 10, 2026 9:00",6/10/26 8:00,6/10/26 9:00,5/15/26 4:29,5/18/26 8:29,0h,-136.52h,0ed,0,NA,NA,"April 10, 2026 11:30","April 10, 2026 1:30",As Soon As Possible,NA,NA,NA,4/29/26 1:17,1h,1h,0h,0,0,0,0,0,1.2.3.2.10.5,500,No,No,No,,,Black,,,,,,,,0,0,0,0d,0d,0d,No,No,No,No,No,No,No,No,No,No,No,0,0,0,0,0,
1075,3023,Yes,Auto Scheduled,Post Load Validation,2h,Fixed Units,6,0.25d,1074,"June 10, 2026 9:00","June 10, 2026 11:00",6/10/26 9:00,6/10/26 11:00,5/18/26 8:29,5/18/26 10:29,0h,-136.52h,0ed,0,NA,NA,"April 10, 2026 1:30","April 10, 2026 3:30",As Soon As Possible,NA,NA,NA,4/29/26 1:17,2h,2h,0h,0,0,0,0,0,1.2.3.2.10.6,500,No,No,No,,Brian Wagner,Black,,,,,,,,0,0,0,0d,0d,0d,No,No,No,No,No,No,No,No,No,No,No,0,0,0,0,0,
1076,3024,Yes,Auto Scheduled,RTR_CM14_Cost Element_Group,1.44d,Fixed Duration,5,4.78d,,"June 11, 2026 2:30","June 15, 2026 9:00",6/11/26 2:30,6/15/26 9:00,5/14/26 3:59,5/18/26 10:29,0d,-19.81d,0ed,0,NA,NA,"April 8, 2026 3:45","April 15, 2026 2:00",As Soon As Possible,NA,NA,NA,4/29/26 1:17,22.5h,38.25h,0h,0,0,0,0,0,1.2.3.2.11,500,No,Yes,Yes,,Brian Wagner,Black,,,,,,,,0,0,0,0d,0d,0d,No,No,No,No,No,No,No,No,No,No,No,0,0,0,0,0,
1077,3025,Yes,Auto Scheduled,"Manual File Staged and Posted ""Ready""",30m,Fixed Units,6,4.16d,1026,"June 11, 2026 2:30","June 11, 2026 3:00",6/11/26 2:30,6/11/26 3:00,5/14/26 3:59,5/14/26 4:29,0m,-9511m,0ed,0,NA,NA,"April 8, 2026 3:45","April 14, 2026 5:00",As Soon As Possible,NA,NA,NA,4/29/26 1:17,0.5h,33.25h,0h,0,0,0,0,0,1.2.3.2.11.1,500,No,No,No,,,Black,,,,,,,,0,0,0,0d,0d,0d,No,No,No,No,No,No,No,No,No,No,No,0,0,0,0,0,
1078,3026,Yes,Auto Scheduled,Load,8h,Fixed Units,6,0.25d,1077,"June 11, 2026 3:00","June 12, 2026 3:00",6/11/26 3:00,6/12/26 3:00,5/14/26 4:29,5/15/26 4:29,0h,-158.52h,0ed,0,NA,NA,"April 15, 2026 8:00","April 15, 2026 10:00",As Soon As Possible,NA,NA,NA,4/29/26 1:17,8h,2h,0h,0,0,0,0,0,1.2.3.2.11.2,500,No,No,No,,,Black,2026-04-20 15:36 - jsw73 - Start ignored — already in progress,,,,,,,0,0,0,0d,0d,0d,No,No,No,No,No,No,No,No,No,No,No,0,0,0,0,0,
1079,3027,Yes,Auto Scheduled,Post Load Validation,3h,Fixed Units,6,0.38d,1078,"June 12, 2026 3:00","June 15, 2026 9:00",6/12/26 3:00,6/15/26 9:00,5/15/26 4:29,5/18/26 10:29,0h,-158.52h,0ed,0,NA,NA,"April 15, 2026 10:00","April 15, 2026 2:00",As Soon As Possible,NA,NA,NA,4/29/26 1:17,3h,3h,0h,0,0,0,0,0,1.2.3.2.11.3,500,No,No,No,,Brian Wagner,Black,,,,,,,,0,0,0,0d,0d,0d,No,No,No,No,No,No,No,No,No,No,No,0,0,0,0,0,
1080,3028,Yes,Auto Scheduled,OTC_CM19_Customer_Master - Bill-To,2h,Fixed Units,5,0d,,"June 8, 2026 10:00","June 8, 2026 12:00",6/8/26 10:00,6/8/26 12:00,5/18/26 8:29,5/18/26 10:29,0h,-121.52h,0ed,0,NA,NA,"April 16, 2025 8:00","April 16, 2025 8:00",As Soon As Possible,NA,NA,NA,4/29/26 1:17,0h,0h,0h,0,0,0,0,0,1.2.3.2.12,500,No,No,No,,,Black,,,,,,,,0,0,0,0d,0d,0d,No,No,No,No,No,No,No,No,No,No,No,0,0,0,0,0,
1081,3029,Yes,Auto Scheduled,OTC_CM19_Customer_Master - Ship-To,1.5d,Fixed Duration,5,3.13d,,"June 11, 2026 2:30","June 15, 2026 9:30",6/11/26 2:30,6/15/26 9:30,5/8/26 10:59,5/18/26 10:29,0d,-24.31d,0ed,0,NA,NA,"April 8, 2026 3:45","April 13, 2026 4:45",As Soon As Possible,NA,NA,NA,4/29/26 1:17,13.25h,36h,0h,0,0,0,0,0,1.2.3.2.13,500,No,Yes,Yes,,,Black,,,,,,,,0,0,0,0d,0d,0d,No,No,No,No,No,No,No,No,No,No,No,0,0,0,0,0,
1082,3030,Yes,Auto Scheduled,"Load File Staged and Posted ""Ready""",30m,Fixed Units,6,0.06d,1026,"June 11, 2026 2:30","June 11, 2026 3:00",6/11/26 2:30,6/11/26 3:00,5/8/26 10:59,5/8/26 11:29,0m,-11671m,0ed,0,NA,NA,"April 8, 2026 3:45","April 8, 2026 4:15",As Soon As Possible,NA,NA,NA,4/29/26 1:17,0.5h,0.5h,0h,0,0,0,0,0,1.2.3.2.13.1,500,No,No,No,,,Black,,,,,,,,0,0,0,0d,0d,0d,No,No,No,No,No,No,No,No,No,No,No,0,0,0,0,0,
1083,3031,Yes,Auto Scheduled,Pre Load Validation,30m,Fixed Units,6,0.06d,1082,"June 11, 2026 3:00","June 11, 2026 3:30",6/11/26 3:00,6/11/26 3:30,5/8/26 11:29,5/8/26 11:59,0m,-11671m,0ed,0,NA,NA,"April 8, 2026 4:15","April 8, 2026 4:45",As Soon As Possible,NA,NA,NA,4/29/26 1:17,0.5h,0.5h,0h,0,0,0,0,0,1.2.3.2.13.2,500,No,No,No,,Kim Kolesar,Black,,,,,,,,0,0,0,0d,0d,0d,No,No,No,No,No,No,No,No,No,No,No,0,0,0,0,0,
1084,3032,Yes,Auto Scheduled,Open client for BP number range update,30m,Fixed Units,6,1d,1083,"June 11, 2026 3:30","June 11, 2026 4:00",6/11/26 3:30,6/11/26 4:00,5/18/26 9:14,5/18/26 9:44,0m,-8956m,0ed,0,NA,NA,"April 8, 2026 4:45","April 9, 2026 4:45",As Soon As Possible,NA,NA,NA,4/29/26 1:17,0.5h,8h,0h,0,0,0,0,0,1.2.3.2.13.3,500,No,No,No,,,Black,,,,,,,,0,0,0,0d,0d,0d,No,No,No,No,No,No,No,No,No,No,No,0,0,0,0,0,
1085,3033,Yes,Auto Scheduled,Update number range BP02 from Internal to External,30m,Fixed Units,6,1d,1084,"June 11, 2026 4:00","June 11, 2026 4:30",6/11/26 4:00,6/11/26 4:30,5/18/26 9:44,5/18/26 10:14,0m,-8956m,0ed,0,NA,NA,"April 9, 2026 4:45","April 10, 2026 4:45",As Soon As Possible,NA,NA,NA,4/29/26 1:17,0.5h,8h,0h,0,0,0,0,0,1.2.3.2.13.4,500,No,No,No,,,Black,,,,,,,,0,0,0,0d,0d,0d,No,No,No,No,No,No,No,No,No,No,No,0,0,0,0,0,
1086,3034,Yes,Auto Scheduled,Close Client,15m,Fixed Units,6,1d,1085,"June 11, 2026 4:30","June 11, 2026 4:45",6/11/26 4:30,6/11/26 4:45,5/18/26 10:14,5/18/26 10:29,0m,-8956m,0ed,0,NA,NA,"April 10, 2026 4:45","April 13, 2026 4:45",As Soon As Possible,NA,NA,NA,4/29/26 1:17,0.25h,8h,0h,0,0,0,0,0,1.2.3.2.13.5,500,No,No,No,,,Black,,,,,,,,0,0,0,0d,0d,0d,No,No,No,No,No,No,No,No,No,No,No,0,0,0,0,0,
1087,3035,Yes,Auto Scheduled,Simulate Load,1h,Fixed Units,6,0.13d,1083,"June 11, 2026 3:30","June 11, 2026 4:30",6/11/26 3:30,6/11/26 4:30,5/8/26 11:59,5/8/26 1:59,0h,-194.52h,0ed,0,NA,NA,"April 8, 2026 4:45","April 9, 2026 8:45",As Soon As Possible,NA,NA,NA,4/29/26 1:17,1h,1h,0h,0,0,0,0,0,1.2.3.2.13.6,500,No,No,No,,,Black,,,,,,,,0,0,0,0d,0d,0d,No,No,No,No,No,No,No,No,No,No,No,0,0,0,0,0,
1088,3036,Yes,Auto Scheduled,Error and Defect Mitigation,4h,Fixed Units,6,0.5d,1087,"June 11, 2026 4:30","June 12, 2026 11:30",6/11/26 4:30,6/12/26 11:30,5/15/26 8:29,5/15/26 1:29,0h,-159.02h,0ed,0,NA,NA,"April 9, 2026 8:45","April 9, 2026 1:45",As Soon As Possible,NA,NA,NA,4/29/26 1:17,4h,4h,0h,0,0,0,0,0,1.2.3.2.13.7,500,No,No,No,,Kim Kolesar,Black,,,,,,,,0,0,0,0d,0d,0d,No,No,No,No,No,No,No,No,No,No,No,0,0,0,0,0,
1089,3037,Yes,Auto Scheduled,Load,3h,Fixed Units,6,0.38d,1088,"June 12, 2026 11:30","June 12, 2026 3:30",6/12/26 11:30,6/12/26 3:30,5/15/26 1:29,5/15/26 4:29,0h,-159.02h,0ed,0,NA,NA,"April 9, 2026 1:45","April 9, 2026 4:45",As Soon As Possible,NA,NA,NA,4/29/26 1:17,3h,3h,0h,0,0,0,0,0,1.2.3.2.13.8,500,No,No,No,,,Black,,,,,,,,0,0,0,0d,0d,0d,No,No,No,No,No,No,No,No,No,No,No,0,0,0,0,0,
1090,3038,Yes,Auto Scheduled,Post Load Validation,3h,Fixed Units,6,0.38d,1089,"June 12, 2026 3:30","June 15, 2026 9:30",6/12/26 3:30,6/15/26 9:30,5/15/26 4:29,5/18/26 10:29,0h,-159.02h,0ed,0,NA,NA,"April 9, 2026 4:45","April 10, 2026 10:45",As Soon As Possible,NA,NA,NA,4/29/26 1:17,3h,3h,0h,0,0,0,0,0,1.2.3.2.13.9,500,No,No,No,,Kim Kolesar,Black,,,,,,,,0,0,0,0d,0d,0d,No,No,No,No,No,No,No,No,No,No,No,0,0,0,0,0,
1091,3039,Yes,Auto Scheduled,OTC_CM19_Customer_Master - Sold-To,1.63d,Fixed Duration,5,1.63d,,"June 11, 2026 3:30","June 15, 2026 11:30",6/11/26 3:30,6/15/26 11:30,5/8/26 1:59,5/18/26 10:29,0d,-24.19d,0ed,0,NA,NA,"April 8, 2026 4:45","April 10, 2026 1:45",As Soon As Possible,NA,NA,NA,4/29/26 1:17,11.75h,11.75h,0h,0,0,0,0,0,1.2.3.2.14,500,No,Yes,Yes,,,Black,,,,,,,,0,0,0,0d,0d,0d,No,No,No,No,No,No,No,No,No,No,No,0,0,0,0,0,
1092,3040,Yes,Auto Scheduled,"Load File Staged and Posted ""Ready""",30m,Fixed Units,6,0.06d,1083,"June 11, 2026 3:30","June 11, 2026 4:00",6/11/26 3:30,6/11/26 4:00,5/18/26 9:29,5/18/26 9:59,0m,-8941m,0ed,0,NA,NA,"April 8, 2026 4:45","April 9, 2026 8:15",As Soon As Possible,NA,NA,NA,4/29/26 1:17,0.5h,0.5h,0h,0,0,0,0,0,1.2.3.2.14.1,500,No,No,No,,,Black,,,,,,,,0,0,0,0d,0d,0d,No,No,No,No,No,No,No,No,No,No,No,0,0,0,0,0,
1093,3041,Yes,Auto Scheduled,Pre Load Validation,30m,Fixed Units,6,0.06d,1092,"June 11, 2026 4:00","June 11, 2026 4:30",6/11/26 4:00,6/11/26 4:30,5/18/26 9:59,5/18/26 10:29,0m,-8941m,0ed,0,NA,NA,"April 9, 2026 8:15","April 9, 2026 8:45",As Soon As Possible,NA,NA,NA,4/29/26 1:17,0.5h,0.5h,0h,0,0,0,0,0,1.2.3.2.14.2,500,No,No,No,,Kim Kolesar,Black,,,,,,,,0,0,0,0d,0d,0d,No,No,No,No,No,No,No,No,No,No,No,0,0,0,0,0,
1094,3042,Yes,Auto Scheduled,Simulate Load,1h,Fixed Units,6,0.13d,"1028,1087","June 12, 2026 9:30","June 12, 2026 10:30",6/12/26 9:30,6/12/26 10:30,5/8/26 1:59,5/8/26 2:59,0h,-196.52h,0ed,0,NA,NA,"April 9, 2026 10:45","April 9, 2026 11:45",As Soon As Possible,NA,NA,NA,4/29/26 1:17,1h,1h,0h,0,0,0,0,0,1.2.3.2.14.3,500,No,No,No,,,Black,,,,,,,,0,0,0,0d,0d,0d,No,No,No,No,No,No,No,No,No,No,No,0,0,0,0,0,
1095,3043,Yes,Auto Scheduled,Error and Defect Mitigation,3h,Fixed Units,6,0.38d,1094,"June 12, 2026 10:30","June 12, 2026 2:30",6/12/26 10:30,6/12/26 2:30,5/8/26 2:59,5/11/26 8:59,0h,-196.52h,0ed,0,NA,NA,"April 9, 2026 11:45","April 9, 2026 3:45",As Soon As Possible,NA,NA,NA,4/29/26 1:17,3h,3h,0h,0,0,0,0,0,1.2.3.2.14.4,500,No,No,No,,Kim Kolesar,Black,,,,,,,,0,0,0,0d,0d,0d,No,No,No,No,No,No,No,No,No,No,No,0,0,0,0,0,
1096,3044,Yes,Auto Scheduled,Load,3h,Fixed Units,6,0.38d,1095,"June 12, 2026 2:30","June 15, 2026 8:30",6/12/26 2:30,6/15/26 8:30,5/11/26 8:59,5/11/26 11:59,0h,-196.52h,0ed,0,NA,NA,"April 9, 2026 3:45","April 10, 2026 9:45",As Soon As Possible,NA,NA,NA,4/29/26 1:17,3h,3h,0h,0,0,0,0,0,1.2.3.2.14.5,500,No,No,No,,,Black,,,,,,,,0,0,0,0d,0d,0d,No,No,No,No,No,No,No,No,No,No,No,0,0,0,0,0,
1097,3045,Yes,Auto Scheduled,Post Load Validation,3h,Fixed Units,6,0.38d,1096,"June 15, 2026 8:30","June 15, 2026 11:30",6/15/26 8:30,6/15/26 11:30,5/15/26 4:29,5/18/26 10:29,0h,-161.02h,0ed,0,NA,NA,"April 10, 2026 9:45","April 10, 2026 1:45",As Soon As Possible,NA,NA,NA,4/29/26 1:17,3h,3h,0h,0,0,0,0,0,1.2.3.2.14.6,500,No,No,No,,Kim Kolesar,Black,,,,,,,,0,0,0,0d,0d,0d,No,No,No,No,No,No,No,No,No,No,No,0,0,0,0,0,
1098,3046,Yes,Auto Scheduled,Open client for BP number range update,15m,Fixed Units,6,0.03d,1087,"June 11, 2026 4:30","June 11, 2026 4:45",6/11/26 4:30,6/11/26 4:45,5/18/26 9:44,5/18/26 9:59,0m,-8986m,0ed,0,NA,NA,"April 9, 2026 8:45","April 9, 2026 9:00",As Soon As Possible,NA,NA,NA,4/29/26 1:17,0.25h,0.25h,0h,0,0,0,0,0,1.2.3.2.14.7,500,No,No,No,,,Black,,,,,,,,0,0,0,0d,0d,0d,No,No,No,No,No,No,No,No,No,No,No,0,0,0,0,0,
1099,3047,Yes,Auto Scheduled,Update number range BP02 from Internal to External,15m,Fixed Units,6,0.03d,1098,"June 11, 2026 4:45","June 11, 2026 5:00",6/11/26 4:45,6/11/26 5:00,5/18/26 9:59,5/18/26 10:14,0m,-8986m,0ed,0,NA,NA,"April 9, 2026 9:00","April 9, 2026 9:15",As Soon As Possible,NA,NA,NA,4/29/26 1:17,0.25h,0.25h,0h,0,0,0,0,0,1.2.3.2.14.8,500,No,No,No,,,Black,,,,,,,,0,0,0,0d,0d,0d,No,No,No,No,No,No,No,No,No,No,No,0,0,0,0,0,
1100,3048,Yes,Auto Scheduled,Close Client,15m,Fixed Units,6,0.03d,1099,"June 12, 2026 8:00","June 12, 2026 8:15",6/12/26 8:00,6/12/26 8:15,5/18/26 10:14,5/18/26 10:29,0m,-8986m,0ed,0,NA,NA,"April 9, 2026 9:15","April 9, 2026 9:30",As Soon As Possible,NA,NA,NA,4/29/26 1:17,0.25h,0.25h,0h,0,0,0,0,0,1.2.3.2.14.9,500,No,No,No,,,Black,,,,,,,,0,0,0,0d,0d,0d,No,No,No,No,No,No,No,No,No,No,No,0,0,0,0,0,
1101,3049,Yes,Auto Scheduled,PTP_CM27_Vendor Master as Customer - FLCU01,4.81d,Fixed Duration,5,2.31d,,"June 15, 2026 8:30","June 19, 2026 4:00",6/15/26 8:30,6/19/26 4:00,5/11/26 11:59,5/18/26 10:29,0d,-24.56d,0ed,0,NA,NA,"April 10, 2026 9:45","April 14, 2026 1:15",As Soon As Possible,NA,NA,NA,4/29/26 1:17,19.25h,19.25h,0h,0,0,0,0,0,1.2.3.2.15,500,No,Yes,Yes,,,Black,,,,,,,,0,0,0,0d,0d,0d,No,No,No,No,No,No,No,No,No,No,No,0,0,0,0,0,
1102,3050,Yes,Auto Scheduled,Extract File,1h,Fixed Units,6,0.13d,1096,"June 15, 2026 8:30","June 15, 2026 9:30",6/15/26 8:30,6/15/26 9:30,5/11/26 11:59,5/11/26 1:59,0h,-196.52h,0ed,0,NA,NA,"April 10, 2026 9:45","April 10, 2026 10:45",As Soon As Possible,NA,NA,NA,4/29/26 1:17,1h,1h,0h,0,0,0,0,0,1.2.3.2.15.1,500,No,No,No,,,Black,,,,,,,,0,0,0,0d,0d,0d,No,No,No,No,No,No,No,No,No,No,No,0,0,0,0,0,
1103,3051,Yes,Auto Scheduled,Pre Load Validation,2h,Fixed Units,6,0.25d,1102,"June 15, 2026 9:30","June 15, 2026 11:30",6/15/26 9:30,6/15/26 11:30,5/11/26 1:59,5/11/26 3:59,0h,-196.52h,0ed,0,NA,NA,"April 10, 2026 10:45","April 10, 2026 1:45",As Soon As Possible,NA,NA,NA,4/29/26 1:17,2h,2h,0h,0,0,0,0,0,1.2.3.2.15.2,500,No,No,No,,Sam Houff,Black,,,,,,,,0,0,0,0d,0d,0d,No,No,No,No,No,No,No,No,No,No,No,0,0,0,0,0,
1104,3052,Yes,Auto Scheduled,Simulate Load,11.25h,Fixed Units,6,1.41d,"1068,1103","June 15, 2026 11:30","June 16, 2026 3:45",6/15/26 11:30,6/16/26 3:45,5/11/26 3:59,5/13/26 10:14,0h,-196.52h,0ed,0,NA,NA,"April 10, 2026 1:45","April 13, 2026 5:00",As Soon As Possible,NA,NA,NA,4/29/26 1:17,11.25h,11.25h,0h,0,0,0,0,0,1.2.3.2.15.3,500,No,No,No,,,Black,,,,,,,,0,0,0,0d,0d,0d,No,No,No,No,No,No,No,No,No,No,No,0,0,0,0,0,
1105,3053,Yes,Auto Scheduled,Error and Defect Mitigation,2h,Fixed Units,6,0.25d,1104,"June 16, 2026 3:45","June 18, 2026 10:30",6/16/26 3:45,6/18/26 10:30,5/13/26 10:14,5/14/26 2:59,0h,-196.52h,0ed,0,NA,NA,"April 10, 2026 2:45","April 14, 2026 9:30",As Soon As Possible,NA,NA,NA,4/29/26 1:17,2h,2h,0h,0,0,0,0,0,1.2.3.2.15.4,500,No,No,No,,Sam Houff,Black,,,,,,,,0,0,0,0d,0d,0d,No,No,No,No,No,No,No,No,No,No,No,0,0,0,0,0,
1106,3054,Yes,Auto Scheduled,Load,1h,Fixed Units,6,0.13d,1105,"June 18, 2026 10:30","June 19, 2026 2:00",6/18/26 10:30,6/19/26 2:00,5/14/26 2:59,5/18/26 8:29,0h,-196.52h,0ed,0,NA,NA,"April 10, 2026 4:45","April 14, 2026 10:15",As Soon As Possible,NA,NA,NA,4/29/26 1:17,1h,1h,0h,0,0,0,0,0,1.2.3.2.15.5,500,No,No,No,,,Black,,,,,,,,0,0,0,0d,0d,0d,No,No,No,No,No,No,No,No,No,No,No,0,0,0,0,0,
1107,3055,Yes,Auto Scheduled,Post Load Validation,2h,Fixed Units,6,0.25d,1106,"June 19, 2026 2:00","June 19, 2026 4:00",6/19/26 2:00,6/19/26 4:00,5/18/26 8:29,5/18/26 10:29,0h,-196.52h,0ed,0,NA,NA,"April 14, 2026 10:15","April 14, 2026 1:15",As Soon As Possible,NA,NA,NA,4/29/26 1:17,2h,2h,0h,0,0,0,0,0,1.2.3.2.15.6,500,No,No,No,,Sam Houff,Black,,,,,,,,0,0,0,0d,0d,0d,No,No,No,No,No,No,No,No,No,No,No,0,0,0,0,0,
1108,3056,Yes,Auto Scheduled,OTC_CM23_Customer_Hierarchy,0.69d,Fixed Duration,5,0.69d,,"June 15, 2026 8:30","June 15, 2026 3:00",6/15/26 8:30,6/15/26 3:00,5/15/26 1:59,5/18/26 10:29,0d,-20.44d,0ed,0,NA,NA,"April 10, 2026 9:45","April 10, 2026 4:15",As Soon As Possible,NA,NA,NA,4/29/26 1:17,5.5h,5.5h,0h,0,0,0,0,0,1.2.3.2.16,500,No,Yes,Yes,,,Black,,,,,,,,0,0,0,0d,0d,0d,No,No,No,No,No,No,No,No,No,No,No,0,0,0,0,0,
1109,3057,Yes,Auto Scheduled,"Manual File Staged and Posted ""Ready""",30m,Fixed Units,6,0.06d,1096,"June 15, 2026 8:30","June 15, 2026 9:00",6/15/26 8:30,6/15/26 9:00,5/15/26 1:59,5/15/26 2:29,0m,-9811m,0ed,0,NA,NA,"April 10, 2026 9:45","April 10, 2026 10:15",As Soon As Possible,NA,NA,NA,4/29/26 1:17,0.5h,0.5h,0h,0,0,0,0,0,1.2.3.2.16.1,500,No,No,No,,Kim Kolesar,Black,,,,,,,,0,0,0,0d,0d,0d,No,No,No,No,No,No,No,No,No,No,No,0,0,0,0,0,
1110,3058,Yes,Auto Scheduled,Load,2h,Fixed Units,6,0.25d,1109,"June 15, 2026 9:00","June 15, 2026 11:00",6/15/26 9:00,6/15/26 11:00,5/15/26 2:29,5/15/26 4:29,0h,-163.52h,0ed,0,NA,NA,"April 10, 2026 10:15","April 10, 2026 1:15",As Soon As Possible,NA,NA,NA,4/29/26 1:17,2h,2h,0h,0,0,0,0,0,1.2.3.2.16.2,500,No,No,No,,,Black,,,,,,,,0,0,0,0d,0d,0d,No,No,No,No,No,No,No,No,No,No,No,0,0,0,0,0,
1111,3059,Yes,Auto Scheduled,Post Load Validation,3h,Fixed Units,6,0.38d,1110,"June 15, 2026 11:00","June 15, 2026 3:00",6/15/26 11:00,6/15/26 3:00,5/15/26 4:29,5/18/26 10:29,0h,-163.52h,0ed,0,NA,NA,"April 10, 2026 1:15","April 10, 2026 4:15",As Soon As Possible,NA,NA,NA,4/29/26 1:17,3h,3h,0h,0,0,0,0,0,1.2.3.2.16.3,500,No,No,No,,Kim Kolesar,Black,,,,,,,,0,0,0,0d,0d,0d,No,No,No,No,No,No,No,No,No,No,No,0,0,0,0,0,
1112,3060,Yes,Auto Scheduled,PTP_CM27_Vendor Master - Z001 - External Sales Rep,3.38d,Fixed Duration,5,1.13d,,"June 15, 2026 8:30","June 18, 2026 11:30",6/15/26 8:30,6/18/26 11:30,5/12/26 4:29,5/18/26 10:29,0d,-23.13d,0ed,0,NA,NA,"April 10, 2026 9:45","April 13, 2026 10:45",As Soon As Possible,NA,NA,NA,4/29/26 1:17,9h,9h,0h,0,0,0,0,0,1.2.3.2.17,500,No,Yes,Yes,,,Black,,,,,,,,0,0,0,0d,0d,0d,No,No,No,No,No,No,No,No,No,No,No,0,0,0,0,0,
1113,3061,Yes,Auto Scheduled,Extract File,1h,Fixed Units,6,0.13d,1096,"June 15, 2026 8:30","June 15, 2026 9:30",6/15/26 8:30,6/15/26 9:30,5/12/26 4:29,5/13/26 8:29,0h,-185.02h,0ed,0,NA,NA,"April 10, 2026 9:45","April 10, 2026 10:45",As Soon As Possible,NA,NA,NA,4/29/26 1:17,1h,1h,0h,0,0,0,0,0,1.2.3.2.17.1,500,No,No,No,,,Black,,,,,,,,0,0,0,0d,0d,0d,No,No,No,No,No,No,No,No,No,No,No,0,0,0,0,0,
1114,3062,Yes,Auto Scheduled,Pre Load Validation,2h,Fixed Units,6,0.25d,1113,"June 15, 2026 9:30","June 15, 2026 11:30",6/15/26 9:30,6/15/26 11:30,5/13/26 8:29,5/13/26 10:29,0h,-185.02h,0ed,0,NA,NA,"April 10, 2026 10:45","April 10, 2026 1:45",As Soon As Possible,NA,NA,NA,4/29/26 1:17,2h,2h,0h,0,0,0,0,0,1.2.3.2.17.2,500,No,No,No,,Sam Houff,Black,,,,,,,,0,0,0,0d,0d,0d,No,No,No,No,No,No,No,No,No,No,No,0,0,0,0,0,
1115,3063,Yes,Auto Scheduled,Simulate Load,1h,Fixed Units,6,0.13d,"1068,1114","June 15, 2026 11:30","June 15, 2026 1:30",6/15/26 11:30,6/15/26 1:30,5/13/26 10:29,5/13/26 11:29,0h,-185.02h,0ed,0,NA,NA,"April 10, 2026 1:45","April 10, 2026 2:45",As Soon As Possible,NA,NA,NA,4/29/26 1:17,1h,1h,0h,0,0,0,0,0,1.2.3.2.17.3,500,No,No,No,,,Black,,,,,,,,0,0,0,0d,0d,0d,No,No,No,No,No,No,No,No,No,No,No,0,0,0,0,0,
1116,3064,Yes,Auto Scheduled,Error and Defect Mitigation,2h,Fixed Units,6,0.25d,1115,"June 15, 2026 1:30","June 15, 2026 3:30",6/15/26 1:30,6/15/26 3:30,5/13/26 11:29,5/13/26 2:29,0h,-185.02h,0ed,0,NA,NA,"April 10, 2026 2:45","April 10, 2026 4:45",As Soon As Possible,NA,NA,NA,4/29/26 1:17,2h,2h,0h,0,0,0,0,0,1.2.3.2.17.4,500,No,No,No,,Sam Houff,Black,,,,,,,,0,0,0,0d,0d,0d,No,No,No,No,No,No,No,No,No,No,No,0,0,0,0,0,
1117,3065,Yes,Auto Scheduled,Load,1h,Fixed Units,6,0.13d,1116,"June 15, 2026 3:30","June 18, 2026 9:30",6/15/26 3:30,6/18/26 9:30,5/13/26 2:29,5/18/26 8:29,0h,-185.02h,0ed,0,NA,NA,"April 10, 2026 4:45","April 13, 2026 8:45",As Soon As Possible,NA,NA,NA,4/29/26 1:17,1h,1h,0h,0,0,0,0,0,1.2.3.2.17.5,500,No,No,No,,,Black,,,,,,,,0,0,0,0d,0d,0d,No,No,No,No,No,No,No,No,No,No,No,0,0,0,0,0,
1118,3066,Yes,Auto Scheduled,Post Load Validation,2h,Fixed Units,6,0.25d,1117,"June 18, 2026 9:30","June 18, 2026 11:30",6/18/26 9:30,6/18/26 11:30,5/18/26 8:29,5/18/26 10:29,0h,-185.02h,0ed,0,NA,NA,"April 13, 2026 8:45","April 13, 2026 10:45",As Soon As Possible,NA,NA,NA,4/29/26 1:17,2h,2h,0h,0,0,0,0,0,1.2.3.2.17.6,500,No,No,No,,Sam Houff,Black,,,,,,,,0,0,0,0d,0d,0d,No,No,No,No,No,No,No,No,No,No,No,0,0,0,0,0,
1119,3067,Yes,Auto Scheduled,RTR_CM10_Credit_Management_Role,1.84d,Fixed Duration,5,1.13d,,"June 15, 2026 8:30","June 16, 2026 4:15",6/15/26 8:30,6/16/26 4:15,5/13/26 2:44,5/15/26 1:29,0d,-22.35d,0ed,0,NA,NA,"April 10, 2026 9:45","April 13, 2026 10:45",As Soon As Possible,NA,NA,NA,4/29/26 1:17,9h,9h,0h,0,0,0,0,0,1.2.3.2.18,500,No,Yes,Yes,,,Black,,,,,,,,0,0,0,0d,0d,0d,No,No,No,No,No,No,No,No,No,No,No,0,0,0,0,0,
1120,3068,Yes,Auto Scheduled,"Load File Staged and Posted ""Ready""",30m,Fixed Units,6,0.06d,1096,"June 15, 2026 8:30","June 15, 2026 9:00",6/15/26 8:30,6/15/26 9:00,5/13/26 2:44,5/13/26 3:14,0m,-10726m,0ed,0,NA,NA,"April 10, 2026 9:45","April 10, 2026 10:15",As Soon As Possible,NA,NA,NA,4/29/26 1:17,0.5h,0.5h,0h,0,0,0,0,0,1.2.3.2.18.1,500,No,No,No,,,Black,,,,,,,,0,0,0,0d,0d,0d,No,No,No,No,No,No,No,No,No,No,No,0,0,0,0,0,
1121,3069,Yes,Auto Scheduled,Pre Load Validation,30m,Fixed Units,6,0.06d,1120,"June 15, 2026 9:00","June 15, 2026 9:30",6/15/26 9:00,6/15/26 9:30,5/13/26 3:14,5/13/26 3:44,0m,-10726m,0ed,0,NA,NA,"April 10, 2026 10:15","April 10, 2026 10:45",As Soon As Possible,NA,NA,NA,4/29/26 1:17,0.5h,0.5h,0h,0,0,0,0,0,1.2.3.2.18.2,500,No,No,No,,Brian Wagner,Black,,,,,,,,0,0,0,0d,0d,0d,No,No,No,No,No,No,No,No,No,No,No,0,0,0,0,0,
1122,3070,Yes,Auto Scheduled,Simulate Load,1h,Fixed Units,6,0.13d,1121,"June 15, 2026 9:30","June 15, 2026 10:30",6/15/26 9:30,6/15/26 10:30,5/13/26 3:44,5/13/26 4:44,0h,-178.77h,0ed,0,NA,NA,"April 10, 2026 10:45","April 10, 2026 11:45",As Soon As Possible,NA,NA,NA,4/29/26 1:17,1h,1h,0h,0,0,0,0,0,1.2.3.2.18.3,500,No,No,No,,,Black,,,,,,,,0,0,0,0d,0d,0d,No,No,No,No,No,No,No,No,No,No,No,0,0,0,0,0,
1123,3071,Yes,Auto Scheduled,Error and Defect Mitigation,2h,Fixed Units,6,0.25d,1122,"June 15, 2026 10:30","June 15, 2026 2:00",6/15/26 10:30,6/15/26 2:00,5/13/26 4:44,5/14/26 10:14,0h,-178.77h,0ed,0,NA,NA,"April 10, 2026 11:45","April 10, 2026 2:45",As Soon As Possible,NA,NA,NA,4/29/26 1:17,2h,2h,0h,0,0,0,0,0,1.2.3.2.18.4,500,No,No,No,,Brian Wagner,Black,,,,,,,,0,0,0,0d,0d,0d,No,No,No,No,No,No,No,No,No,No,No,0,0,0,0,0,
1124,3072,Yes,Auto Scheduled,Load,2h,Fixed Units,6,0.25d,1123,"June 15, 2026 2:00","June 16, 2026 9:00",6/15/26 2:00,6/16/26 9:00,5/14/26 10:14,5/14/26 3:14,0h,-178.77h,0ed,0,NA,NA,"April 10, 2026 2:45","April 10, 2026 4:45",As Soon As Possible,NA,NA,NA,4/29/26 1:17,2h,2h,0h,0,0,0,0,0,1.2.3.2.18.5,500,No,No,No,,,Black,,,,,,,,0,0,0,0d,0d,0d,No,No,No,No,No,No,No,No,No,No,No,0,0,0,0,0,
1125,3073,Yes,Auto Scheduled,Post Load Validation,3h,Fixed Units,6,0.38d,1124,"June 16, 2026 9:00","June 16, 2026 4:15",6/16/26 9:00,6/16/26 4:15,5/14/26 3:14,5/15/26 1:29,0h,-178.77h,0ed,0,NA,NA,"April 10, 2026 4:45","April 13, 2026 10:45",As Soon As Possible,NA,NA,NA,4/29/26 1:17,3h,3h,0h,0,0,0,0,0,1.2.3.2.18.6,500,No,No,No,,Brian Wagner,Black,,,,,,,,0,0,0,0d,0d,0d,No,No,No,No,No,No,No,No,No,No,No,0,0,0,0,0,
1126,3074,Yes,Auto Scheduled,PTP_CM27_Vendor Master,6.28d,Fixed Duration,5,2.91d,,"June 8, 2026 10:00","June 16, 2026 1:15",6/8/26 10:00,6/16/26 1:15,5/5/26 11:44,5/18/26 10:29,0d,-23.78d,0ed,0,NA,NA,"April 10, 2026 10:45","April 15, 2026 10:00",As Soon As Possible,NA,NA,NA,4/29/26 1:17,10.25h,9h,0h,0,0,0,0,0,1.2.3.2.19,500,No,Yes,Yes,,,Black,,,,,,,,0,0,0,0d,0d,0d,No,No,No,No,No,No,No,No,No,No,No,0,0,0,0,0,
1127,3075,Yes,Auto Scheduled,Extract File,1h,Fixed Units,6,0.13d,1113,"June 15, 2026 9:30","June 15, 2026 10:30",6/15/26 9:30,6/15/26 10:30,5/14/26 4:44,5/15/26 8:44,0h,-169.77h,0ed,0,NA,NA,"April 10, 2026 10:45","April 10, 2026 11:45",As Soon As Possible,NA,NA,NA,4/29/26 1:17,1h,1h,0h,0,0,0,0,0,1.2.3.2.19.1,500,No,No,No,,,Black,,,,,,,,0,0,0,0d,0d,0d,No,No,No,No,No,No,No,No,No,No,No,0,0,0,0,0,
1128,3076,Yes,Auto Scheduled,Pre Load Validation,2h,Fixed Units,6,0.25d,1127,"June 15, 2026 10:30","June 15, 2026 1:30",6/15/26 10:30,6/15/26 1:30,5/15/26 8:44,5/15/26 10:44,0h,-169.77h,0ed,0,NA,NA,"April 10, 2026 11:45","April 10, 2026 2:45",As Soon As Possible,NA,NA,NA,4/29/26 1:17,2h,2h,0h,0,0,0,0,0,1.2.3.2.19.2,500,No,No,No,,Sam Houff,Black,,,,,,,,0,0,0,0d,0d,0d,No,No,No,No,No,No,No,No,No,No,No,0,0,0,0,0,
1129,3077,Yes,Auto Scheduled,Simulate Load,2.25h,Fixed Units,6,0.13d,1128,"June 15, 2026 1:30","June 15, 2026 3:45",6/15/26 1:30,6/15/26 3:45,5/15/26 10:44,5/15/26 1:59,0h,-169.77h,0ed,0,NA,NA,"April 10, 2026 2:45","April 14, 2026 2:00",As Soon As Possible,NA,NA,NA,4/29/26 1:17,2.25h,1h,0h,0,0,0,0,0,1.2.3.2.19.3,500,No,No,No,,,Black,,,,,,,,0,0,0,0d,0d,0d,No,No,No,No,No,No,No,No,No,No,No,0,0,0,0,0,
1130,3078,Yes,Auto Scheduled,Error and Defect Mitigation,2h,Fixed Units,6,0.25d,1129,"June 15, 2026 3:45","June 16, 2026 1:15",6/15/26 3:45,6/16/26 1:15,5/15/26 1:59,5/18/26 10:29,0h,-169.77h,0ed,0,NA,NA,"April 14, 2026 2:00","April 14, 2026 4:00",As Soon As Possible,NA,NA,NA,4/29/26 1:17,2h,2h,0h,0,0,0,0,0,1.2.3.2.19.4,500,No,No,No,,Sam Houff,Black,,,,,,,,0,0,0,0d,0d,0d,No,No,No,No,No,No,No,No,No,No,No,0,0,0,0,0,
1131,3079,Yes,Auto Scheduled,Load,1h,Fixed Units,6,0.13d,,"June 8, 2026 10:00","June 8, 2026 11:00",6/8/26 10:00,6/8/26 11:00,5/5/26 11:44,5/5/26 1:44,0h,-190.27h,0ed,0,NA,NA,"April 14, 2026 4:00","April 14, 2026 5:00",As Soon As Possible,NA,NA,NA,4/29/26 1:17,1h,1h,0h,0,0,0,0,0,1.2.3.2.19.5,500,No,No,No,,,Black,,,,,,,,0,0,0,0d,0d,0d,No,No,No,No,No,No,No,No,No,No,No,0,0,0,0,0,
1132,3080,Yes,Auto Scheduled,Post Load Validation,2h,Fixed Units,6,0.25d,1131,"June 8, 2026 11:00","June 8, 2026 2:00",6/8/26 11:00,6/8/26 2:00,5/5/26 1:44,5/5/26 3:44,0h,-190.27h,0ed,0,NA,NA,"April 15, 2026 8:00","April 15, 2026 10:00",As Soon As Possible,NA,NA,NA,4/29/26 1:17,2h,2h,0h,0,0,0,0,0,1.2.3.2.19.6,500,No,No,No,,Sam Houff,Black,,,,,,,,0,0,0,0d,0d,0d,No,No,No,No,No,No,No,No,No,No,No,0,0,0,0,0,
1133,3081,Yes,Auto Scheduled,PTP_CM27_Vendor Master - Mass Maintenance - LFA1-WERKR,0.88d,Fixed Duration,5,3.16d,,"June 8, 2026 10:00","June 9, 2026 9:00",6/8/26 10:00,6/9/26 9:00,5/14/26 3:29,5/18/26 10:29,0d,-16.44d,0ed,0,NA,NA,"April 10, 2026 11:45","April 15, 2026 2:00",As Soon As Possible,NA,NA,NA,4/29/26 1:17,9h,9h,0h,0,0,0,0,0,1.2.3.2.20,500,No,Yes,Yes,,,Black,,,,,,,,0,0,0,0d,0d,0d,No,No,No,No,No,No,No,No,No,No,No,0,0,0,0,0,
1134,3082,Yes,Auto Scheduled,Extract File(Will Extract from LFA1),1h,Fixed Units,6,0.13d,,"June 8, 2026 10:00","June 8, 2026 11:00",6/8/26 10:00,6/8/26 11:00,5/14/26 3:29,5/14/26 4:29,0h,-131.52h,0ed,0,NA,NA,"April 10, 2026 11:45","April 10, 2026 1:45",As Soon As Possible,NA,NA,NA,4/29/26 1:17,1h,1h,0h,0,0,0,0,0,1.2.3.2.20.1,500,No,No,No,,,Black,,,,,,,,0,0,0,0d,0d,0d,No,No,No,No,No,No,No,No,No,No,No,0,0,0,0,0,
1135,3083,Yes,Auto Scheduled,Pre Load Validation,2h,Fixed Units,6,0.25d,1134,"June 8, 2026 11:00","June 8, 2026 2:00",6/8/26 11:00,6/8/26 2:00,5/14/26 4:29,5/15/26 9:29,0h,-131.52h,0ed,0,NA,NA,"April 10, 2026 1:45","April 10, 2026 3:45",As Soon As Possible,NA,NA,NA,4/29/26 1:17,2h,2h,0h,0,0,0,0,0,1.2.3.2.20.2,500,No,No,No,,Sam Houff,Black,,,,,,,,0,0,0,0d,0d,0d,No,No,No,No,No,No,No,No,No,No,No,0,0,0,0,0,
1136,3084,Yes,Auto Scheduled,Simulate Load/ Not Needed,1h,Fixed Units,6,0.13d,1135,"June 8, 2026 2:00","June 8, 2026 3:00",6/8/26 2:00,6/8/26 3:00,5/15/26 9:29,5/15/26 10:29,0h,-131.52h,0ed,0,NA,NA,"April 10, 2026 3:45","April 10, 2026 4:45",As Soon As Possible,NA,NA,NA,4/29/26 1:17,1h,1h,0h,0,0,0,0,0,1.2.3.2.20.3,500,No,No,No,,,Black,,,,,,,,0,0,0,0d,0d,0d,No,No,No,No,No,No,No,No,No,No,No,0,0,0,0,0,
1137,3085,Yes,Auto Scheduled,Error and Defect Mitigation,2h,Fixed Units,6,0.25d,1136,"June 8, 2026 3:00","June 8, 2026 5:00",6/8/26 3:00,6/8/26 5:00,5/18/26 8:29,5/18/26 10:29,0h,-125.52h,0ed,0,NA,NA,"April 10, 2026 4:45","April 13, 2026 9:45",As Soon As Possible,NA,NA,NA,4/29/26 1:17,2h,2h,0h,0,0,0,0,0,1.2.3.2.20.4,500,No,No,No,,Sam Houff,Black,,,,,,,,0,0,0,0d,0d,0d,No,No,No,No,No,No,No,No,No,No,No,0,0,0,0,0,
1138,3086,Yes,Auto Scheduled,Load,1h,Fixed Units,6,0.13d,1136,"June 8, 2026 3:00","June 8, 2026 4:00",6/8/26 3:00,6/8/26 4:00,5/15/26 10:29,5/15/26 11:29,0h,-131.52h,0ed,0,NA,NA,"April 15, 2026 10:00","April 15, 2026 11:00",As Soon As Possible,NA,NA,NA,4/29/26 1:17,1h,1h,0h,0,0,0,0,0,1.2.3.2.20.5,500,No,No,No,,,Black,,,,,,,,0,0,0,0d,0d,0d,No,No,No,No,No,No,No,No,No,No,No,0,0,0,0,0,
1139,3087,Yes,Auto Scheduled,Post Load Validation,2h,Fixed Units,6,0.25d,1138,"June 8, 2026 4:00","June 9, 2026 9:00",6/8/26 4:00,6/9/26 9:00,5/15/26 11:29,5/15/26 2:29,0h,-131.52h,0ed,0,NA,NA,"April 15, 2026 11:00","April 15, 2026 2:00",As Soon As Possible,NA,NA,NA,4/29/26 1:17,2h,2h,0h,0,0,0,0,0,1.2.3.2.20.6,500,No,No,No,,Sam Houff,Black,,,,,,,,0,0,0,0d,0d,0d,No,No,No,No,No,No,No,No,No,No,No,0,0,0,0,0,
1140,3088,Yes,Auto Scheduled,RTR_****_Credit Hierarchy,1.91d,Fixed Duration,5,1.25d,,"June 15, 2026 2:00","June 17, 2026 1:15",6/15/26 2:00,6/17/26 1:15,5/15/26 2:29,5/18/26 10:29,0d,-22.22d,0ed,0,NA,NA,"April 10, 2026 2:45","April 13, 2026 4:45",As Soon As Possible,NA,NA,NA,4/29/26 1:17,5.5h,5.5h,0h,0,0,0,0,0,1.2.3.2.21,500,No,Yes,Yes,,,Black,,,,,,,,0,0,0,0d,0d,0d,No,No,No,No,No,No,No,No,No,No,No,0,0,0,0,0,
1141,3089,Yes,Auto Scheduled,"Manual File Staged and Posted ""Ready""",30m,Fixed Units,6,0.06d,1123,"June 15, 2026 2:00","June 15, 2026 2:30",6/15/26 2:00,6/15/26 2:30,5/18/26 9:59,5/18/26 10:29,0m,-9781m,0ed,0,NA,NA,"April 10, 2026 2:45","April 10, 2026 3:15",As Soon As Possible,NA,NA,NA,4/29/26 1:17,0.5h,0.5h,0h,0,0,0,0,0,1.2.3.2.21.1,500,No,No,No,,Brian Wagner,Black,,,,,,,,0,0,0,0d,0d,0d,No,No,No,No,No,No,No,No,No,No,No,0,0,0,0,0,
1142,3090,Yes,Auto Scheduled,Load,2h,Fixed Units,6,0.25d,1125,"June 16, 2026 4:15","June 17, 2026 9:15",6/16/26 4:15,6/17/26 9:15,5/15/26 2:29,5/15/26 4:29,0h,-177.77h,0ed,0,NA,NA,"April 13, 2026 10:45","April 13, 2026 1:45",As Soon As Possible,NA,NA,NA,4/29/26 1:17,2h,2h,0h,0,0,0,0,0,1.2.3.2.21.2,500,No,No,No,,,Black,,,,,,,,0,0,0,0d,0d,0d,No,No,No,No,No,No,No,No,No,No,No,0,0,0,0,0,
1143,3091,Yes,Auto Scheduled,Post Load Validation,3h,Fixed Units,6,0.38d,1142,"June 17, 2026 9:15","June 17, 2026 1:15",6/17/26 9:15,6/17/26 1:15,5/15/26 4:29,5/18/26 10:29,0h,-177.77h,0ed,0,NA,NA,"April 13, 2026 1:45","April 13, 2026 4:45",As Soon As Possible,NA,NA,NA,4/29/26 1:17,3h,3h,0h,0,0,0,0,0,1.2.3.2.21.3,500,No,No,No,,Brian Wagner,Black,,,,,,,,0,0,0,0d,0d,0d,No,No,No,No,No,No,No,No,No,No,No,0,0,0,0,0,
1144,3092,Yes,Auto Scheduled,PTP_CM27_BP_Intercompany Supplier,1.13d,Fixed Duration,5,1.13d,,"June 8, 2026 2:00","June 9, 2026 3:00",6/8/26 2:00,6/9/26 3:00,5/15/26 9:29,5/18/26 10:29,0d,-16.44d,0ed,0,NA,NA,"April 13, 2026 11:45","April 14, 2026 1:45",As Soon As Possible,NA,NA,NA,4/29/26 1:17,15h,15h,0h,0,0,0,0,0,1.2.3.2.22,500,No,Yes,Yes,,,Black,,,,,,,,0,0,0,0d,0d,0d,No,No,No,No,No,No,No,No,No,No,No,0,0,0,0,0,
1145,3093,Yes,Auto Scheduled,"Load File Staged and Posted ""Ready""",30m,Fixed Units,6,0.06d,1132,"June 8, 2026 2:00","June 8, 2026 2:30",6/8/26 2:00,6/8/26 2:30,5/15/26 9:29,5/15/26 9:59,0m,-7891m,0ed,0,NA,NA,"April 13, 2026 11:45","April 13, 2026 1:15",As Soon As Possible,NA,NA,NA,4/29/26 1:17,1h,1h,0h,0,0,0,0,0,1.2.3.2.22.1,500,No,No,No,,,Black,,,,,,,,0,0,0,0d,0d,0d,No,No,No,No,No,No,No,No,No,No,No,0,0,0,0,0,
1146,3094,Yes,Auto Scheduled,Pre Load Validation,30m,Fixed Units,6,0.06d,1145,"June 8, 2026 2:30","June 8, 2026 3:00",6/8/26 2:30,6/8/26 3:00,5/15/26 9:59,5/15/26 10:29,0m,-7891m,0ed,0,NA,NA,"April 13, 2026 1:15","April 13, 2026 1:45",As Soon As Possible,NA,NA,NA,4/29/26 1:17,1h,1h,0h,0,0,0,0,0,1.2.3.2.22.2,500,No,No,No,,"Sam Houff,Kim Kolesar",Black,,,,,,,,0,0,0,0d,0d,0d,No,No,No,No,No,No,No,No,No,No,No,0,0,0,0,0,
1147,3095,Yes,Auto Scheduled,Simulate Load,1h,Fixed Units,6,0.13d,1146,"June 8, 2026 3:00","June 8, 2026 4:00",6/8/26 3:00,6/8/26 4:00,5/15/26 10:29,5/15/26 11:29,0h,-131.52h,0ed,0,NA,NA,"April 13, 2026 1:45","April 13, 2026 2:45",As Soon As Possible,NA,NA,NA,4/29/26 1:17,1h,1h,0h,0,0,0,0,0,1.2.3.2.22.3,500,No,No,No,,,Black,,,,,,,,0,0,0,0d,0d,0d,No,No,No,No,No,No,No,No,No,No,No,0,0,0,0,0,
1148,3096,Yes,Auto Scheduled,Error and Defect Mitigation,2h,Fixed Units,6,0.25d,1147,"June 8, 2026 4:00","June 9, 2026 9:00",6/8/26 4:00,6/9/26 9:00,5/15/26 11:29,5/15/26 2:29,0h,-131.52h,0ed,0,NA,NA,"April 13, 2026 2:45","April 13, 2026 4:45",As Soon As Possible,NA,NA,NA,4/29/26 1:17,4h,4h,0h,0,0,0,0,0,1.2.3.2.22.4,500,No,No,No,,"Sam Houff,Kim Kolesar",Black,,,,,,,,0,0,0,0d,0d,0d,No,No,No,No,No,No,No,No,No,No,No,0,0,0,0,0,
1149,3097,Yes,Auto Scheduled,Load,2h,Fixed Units,6,0.25d,1148,"June 9, 2026 9:00","June 9, 2026 11:00",6/9/26 9:00,6/9/26 11:00,5/15/26 2:29,5/15/26 4:29,0h,-131.52h,0ed,0,NA,NA,"April 13, 2026 4:45","April 14, 2026 9:45",As Soon As Possible,NA,NA,NA,4/29/26 1:17,2h,2h,0h,0,0,0,0,0,1.2.3.2.22.5,500,No,No,No,,,Black,,,,,,,,0,0,0,0d,0d,0d,No,No,No,No,No,No,No,No,No,No,No,0,0,0,0,0,
1150,3098,Yes,Auto Scheduled,Post Load Validation,3h,Fixed Units,6,0.38d,1149,"June 9, 2026 11:00","June 9, 2026 3:00",6/9/26 11:00,6/9/26 3:00,5/15/26 4:29,5/18/26 10:29,0h,-131.52h,0ed,0,NA,NA,"April 14, 2026 9:45","April 14, 2026 1:45",As Soon As Possible,NA,NA,NA,4/29/26 1:17,6h,6h,0h,0,0,0,0,0,1.2.3.2.22.6,500,No,No,No,,"Sam Houff,Kim Kolesar",Black,,,,,,,,0,0,0,0d,0d,0d,No,No,No,No,No,No,No,No,No,No,No,0,0,0,0,0,
1151,3099,Yes,Auto Scheduled,PTP_CM27_BP_Intercompany Customer,1.06d,Fixed Duration,5,1.13d,,"June 8, 2026 10:00","June 9, 2026 10:30",6/8/26 10:00,6/9/26 10:30,5/15/26 9:59,5/18/26 10:29,0d,-16d,0ed,0,NA,NA,"April 13, 2026 11:45","April 14, 2026 1:45",As Soon As Possible,NA,NA,NA,4/29/26 1:17,15h,15h,0h,0,0,0,0,0,1.2.3.2.23,500,No,Yes,Yes,,,Black,,,,,,,,0,0,0,0d,0d,0d,No,No,No,No,No,No,No,No,No,No,No,0,0,0,0,0,
1152,3100,Yes,Auto Scheduled,"Load File Staged and Posted ""Ready""",30m,Fixed Units,6,0.06d,,"June 8, 2026 10:00","June 8, 2026 10:30",6/8/26 10:00,6/8/26 10:30,5/18/26 9:59,5/18/26 10:29,0m,-7201m,0ed,0,NA,NA,"April 13, 2026 11:45","April 13, 2026 1:15",As Soon As Possible,NA,NA,NA,4/29/26 1:17,1h,1h,0h,0,0,0,0,0,1.2.3.2.23.1,500,No,No,No,,,Black,,,,,,,,0,0,0,0d,0d,0d,No,No,No,No,No,No,No,No,No,No,No,0,0,0,0,0,
1153,3101,Yes,Auto Scheduled,Pre Load Validation,30m,Fixed Units,6,0.06d,,"June 8, 2026 10:00","June 8, 2026 10:30",6/8/26 10:00,6/8/26 10:30,5/15/26 9:59,5/15/26 10:29,0m,-7681m,0ed,0,NA,NA,"April 13, 2026 1:15","April 13, 2026 1:45",As Soon As Possible,NA,NA,NA,4/29/26 1:17,1h,1h,0h,0,0,0,0,0,1.2.3.2.23.2,500,No,No,No,,"Sam Houff,Kim Kolesar",Black,,,,,,,,0,0,0,0d,0d,0d,No,No,No,No,No,No,No,No,No,No,No,0,0,0,0,0,
1154,3102,Yes,Auto Scheduled,Simulate Load,1h,Fixed Units,6,0.13d,1153,"June 8, 2026 10:30","June 8, 2026 11:30",6/8/26 10:30,6/8/26 11:30,5/15/26 10:29,5/15/26 11:29,0h,-128.02h,0ed,0,NA,NA,"April 13, 2026 1:45","April 13, 2026 2:45",As Soon As Possible,NA,NA,NA,4/29/26 1:17,1h,1h,0h,0,0,0,0,0,1.2.3.2.23.3,500,No,No,No,,,Black,,,,,,,,0,0,0,0d,0d,0d,No,No,No,No,No,No,No,No,No,No,No,0,0,0,0,0,
1155,3103,Yes,Auto Scheduled,Error and Defect Mitigation,2h,Fixed Units,6,0.25d,1154,"June 8, 2026 11:30","June 8, 2026 2:30",6/8/26 11:30,6/8/26 2:30,5/15/26 11:29,5/15/26 2:29,0h,-128.02h,0ed,0,NA,NA,"April 13, 2026 2:45","April 13, 2026 4:45",As Soon As Possible,NA,NA,NA,4/29/26 1:17,4h,4h,0h,0,0,0,0,0,1.2.3.2.23.4,500,No,No,No,,"Sam Houff,Kim Kolesar",Black,,,,,,,,0,0,0,0d,0d,0d,No,No,No,No,No,No,No,No,No,No,No,0,0,0,0,0,
1156,3104,Yes,Auto Scheduled,Load,2h,Fixed Units,6,0.25d,1155,"June 8, 2026 2:30","June 8, 2026 4:30",6/8/26 2:30,6/8/26 4:30,5/15/26 2:29,5/15/26 4:29,0h,-128.02h,0ed,0,NA,NA,"April 13, 2026 4:45","April 14, 2026 9:45",As Soon As Possible,NA,NA,NA,4/29/26 1:17,2h,2h,0h,0,0,0,0,0,1.2.3.2.23.5,500,No,No,No,,,Black,,,,,,,,0,0,0,0d,0d,0d,No,No,No,No,No,No,No,No,No,No,No,0,0,0,0,0,
1157,3105,Yes,Auto Scheduled,Post Load Validation,3h,Fixed Units,6,0.38d,1156,"June 8, 2026 4:30","June 9, 2026 10:30",6/8/26 4:30,6/9/26 10:30,5/15/26 4:29,5/18/26 10:29,0h,-128.02h,0ed,0,NA,NA,"April 14, 2026 9:45","April 14, 2026 1:45",As Soon As Possible,NA,NA,NA,4/29/26 1:17,6h,6h,0h,0,0,0,0,0,1.2.3.2.23.6,500,No,No,No,,"Sam Houff,Kim Kolesar",Black,,,,,,,,0,0,0,0d,0d,0d,No,No,No,No,No,No,No,No,No,No,No,0,0,0,0,0,
1158,3106,Yes,Auto Scheduled,PTP_CM26_Material_Master - All Types,2.28d,Fixed Duration,5,3.16d,,"June 8, 2026 11:00","June 10, 2026 2:15",6/8/26 11:00,6/10/26 2:15,5/5/26 3:44,5/18/26 10:29,0d,-23.53d,0ed,0,NA,NA,"April 10, 2026 10:45","April 15, 2026 12:00",As Soon As Possible,NA,NA,NA,4/29/26 1:17,19h,19h,0h,0,0,0,0,0,1.2.3.2.24,500,No,Yes,Yes,,,Black,,,,,,,,0,0,0,0d,0d,0d,No,No,No,No,No,No,No,No,No,No,No,0,0,0,0,0,
1159,3107,Yes,Auto Scheduled,Extract File,5h,Fixed Units,6,0.63d,1134,"June 8, 2026 11:00","June 9, 2026 9:45",6/8/26 11:00,6/9/26 9:45,5/15/26 11:44,5/18/26 10:29,0h,-127.27h,0ed,0,NA,NA,"April 10, 2026 10:45","April 13, 2026 9:30",As Soon As Possible,NA,NA,NA,4/29/26 1:17,5h,5h,0h,0,0,0,0,0,1.2.3.2.24.1,500,No,No,No,,,Black,,,,,,,,0,0,0,0d,0d,0d,No,No,No,No,No,No,No,No,No,No,No,0,0,0,0,0,
1160,3108,Yes,Auto Scheduled,Pre Load Validation,2h,Fixed Units,6,0.25d,1132,"June 8, 2026 2:00","June 9, 2026 11:15",6/8/26 2:00,6/9/26 11:15,5/5/26 3:44,5/6/26 1:59,0h,-190.27h,0ed,0,NA,NA,"April 13, 2026 11:45","April 14, 2026 10:00",As Soon As Possible,NA,NA,NA,4/29/26 1:17,4h,4h,0h,0,0,0,0,0,1.2.3.2.24.2,500,No,No,No,,"Sam Houff,Kim Kolesar,Matt",Black,,,,,,,,0,0,0,0d,0d,0d,No,No,No,No,No,No,No,No,No,No,No,0,0,0,0,0,
1161,3109,Yes,Auto Scheduled,Simulate Load,1h,Fixed Units,6,0.13d,1160,"June 9, 2026 11:15","June 9, 2026 1:15",6/9/26 11:15,6/9/26 1:15,5/6/26 1:59,5/6/26 2:59,0h,-190.27h,0ed,0,NA,NA,"April 14, 2026 10:00","April 14, 2026 11:00",As Soon As Possible,NA,NA,NA,4/29/26 1:17,1h,1h,0h,0,0,0,0,0,1.2.3.2.24.3,500,No,No,No,,,Black,,,,,,,,0,0,0,0d,0d,0d,No,No,No,No,No,No,No,No,No,No,No,0,0,0,0,0,
1162,3110,Yes,Auto Scheduled,Error and Defect Mitigation,4h,Fixed Units,6,0.5d,1161,"June 9, 2026 1:15","June 10, 2026 8:15",6/9/26 1:15,6/10/26 8:15,5/6/26 2:59,5/7/26 9:59,0h,-190.27h,0ed,0,NA,NA,"April 14, 2026 11:00","April 14, 2026 4:00",As Soon As Possible,NA,NA,NA,4/29/26 1:17,4h,4h,0h,0,0,0,0,0,1.2.3.2.24.4,500,No,No,No,,"Sam Houff,Kim Kolesar,Matt",Black,,,,,,,,0,0,0,0d,0d,0d,No,No,No,No,No,No,No,No,No,No,No,0,0,0,0,0,
1163,3111,Yes,Auto Scheduled,Load,3h,Fixed Units,6,0.38d,1162,"June 10, 2026 8:15","June 10, 2026 11:15",6/10/26 8:15,6/10/26 11:15,5/7/26 9:59,5/7/26 1:59,0h,-190.27h,0ed,0,NA,NA,"April 14, 2026 4:00","April 15, 2026 10:00",As Soon As Possible,NA,NA,NA,4/29/26 1:17,3h,3h,0h,0,0,0,0,0,1.2.3.2.24.5,500,No,No,No,,,Black,,,,,,,,0,0,0,0d,0d,0d,No,No,No,No,No,No,No,No,No,No,No,0,0,0,0,0,
1164,3112,Yes,Auto Scheduled,Post Load Validation,2h,Fixed Units,6,0.25d,1163,"June 10, 2026 11:15","June 10, 2026 2:15",6/10/26 11:15,6/10/26 2:15,5/8/26 11:29,5/8/26 2:29,0h,-183.77h,0ed,0,NA,NA,"April 15, 2026 10:00","April 15, 2026 12:00",As Soon As Possible,NA,NA,NA,4/29/26 1:17,2h,2h,0h,0,0,0,0,0,1.2.3.2.24.6,500,No,No,No,,"Sam Houff,Kim Kolesar,Matt",Black,,,,,,,,0,0,0,0d,0d,0d,No,No,No,No,No,No,No,No,No,No,No,0,0,0,0,0,
1165,3113,Yes,Auto Scheduled,PTP_CM26_Material_Master - SERV - Service Materials,1.34d,Fixed Duration,5,5.88d,,"June 10, 2026 9:00","June 11, 2026 11:45",6/10/26 9:00,6/11/26 11:45,5/15/26 9:59,5/18/26 10:29,0d,-18.16d,0ed,0,NA,NA,"April 7, 2026 4:15","April 15, 2026 3:15",As Soon As Possible,NA,NA,NA,4/29/26 1:17,15h,15h,0h,0,0,0,0,0,1.2.3.2.25,500,No,Yes,Yes,,,Black,,,,,,,,0,0,0,0d,0d,0d,No,No,No,No,No,No,No,No,No,No,No,0,0,0,0,0,
1166,3114,Yes,Auto Scheduled,"Load File Staged and Posted ""Ready""",30m,Fixed Units,6,0.06d,1035,"June 10, 2026 9:00","June 10, 2026 9:30",6/10/26 9:00,6/10/26 9:30,5/18/26 9:59,5/18/26 10:29,0m,-8101m,0ed,0,NA,NA,"April 7, 2026 4:15","April 7, 2026 4:45",As Soon As Possible,NA,NA,NA,4/29/26 1:17,1h,1h,0h,0,0,0,0,0,1.2.3.2.25.1,500,No,No,No,,,Black,,,,,,,,0,0,0,0d,0d,0d,No,No,No,No,No,No,No,No,No,No,No,0,0,0,0,0,
1167,3115,Yes,Auto Scheduled,Pre Load Validation,30m,Fixed Units,6,0.06d,1163,"June 10, 2026 11:15","June 10, 2026 11:45",6/10/26 11:15,6/10/26 11:45,5/15/26 9:59,5/15/26 10:29,0m,-8716m,0ed,0,NA,NA,"April 14, 2026 2:45","April 14, 2026 3:15",As Soon As Possible,NA,NA,NA,4/29/26 1:17,1h,1h,0h,0,0,0,0,0,1.2.3.2.25.2,500,No,No,No,,"Sam Houff,Kim Kolesar",Black,,,,,,,,0,0,0,0d,0d,0d,No,No,No,No,No,No,No,No,No,No,No,0,0,0,0,0,
1168,3116,Yes,Auto Scheduled,Simulate Load,1h,Fixed Units,6,0.13d,1167,"June 10, 2026 11:45","June 10, 2026 1:45",6/10/26 11:45,6/10/26 1:45,5/15/26 10:29,5/15/26 11:29,0h,-145.27h,0ed,0,NA,NA,"April 14, 2026 3:15","April 14, 2026 4:15",As Soon As Possible,NA,NA,NA,4/29/26 1:17,1h,1h,0h,0,0,0,0,0,1.2.3.2.25.3,500,No,No,No,,,Black,,,,,,,,0,0,0,0d,0d,0d,No,No,No,No,No,No,No,No,No,No,No,0,0,0,0,0,
1169,3117,Yes,Auto Scheduled,Error and Defect Mitigation,2h,Fixed Units,6,0.25d,1168,"June 10, 2026 1:45","June 10, 2026 3:45",6/10/26 1:45,6/10/26 3:45,5/15/26 11:29,5/15/26 2:29,0h,-145.27h,0ed,0,NA,NA,"April 14, 2026 4:15","April 15, 2026 9:15",As Soon As Possible,NA,NA,NA,4/29/26 1:17,4h,4h,0h,0,0,0,0,0,1.2.3.2.25.4,500,No,No,No,,"Sam Houff,Kim Kolesar",Black,,,,,,,,0,0,0,0d,0d,0d,No,No,No,No,No,No,No,No,No,No,No,0,0,0,0,0,
1170,3118,Yes,Auto Scheduled,Load,2h,Fixed Units,6,0.25d,1169,"June 10, 2026 3:45","June 11, 2026 8:45",6/10/26 3:45,6/11/26 8:45,5/15/26 2:29,5/15/26 4:29,0h,-145.27h,0ed,0,NA,NA,"April 15, 2026 9:15","April 15, 2026 11:15",As Soon As Possible,NA,NA,NA,4/29/26 1:17,2h,2h,0h,0,0,0,0,0,1.2.3.2.25.5,500,No,No,No,,,Black,,,,,,,,0,0,0,0d,0d,0d,No,No,No,No,No,No,No,No,No,No,No,0,0,0,0,0,
1171,3119,Yes,Auto Scheduled,Post Load Validation,3h,Fixed Units,6,0.38d,1170,"June 11, 2026 8:45","June 11, 2026 11:45",6/11/26 8:45,6/11/26 11:45,5/15/26 4:29,5/18/26 10:29,0h,-145.27h,0ed,0,NA,NA,"April 15, 2026 11:15","April 15, 2026 3:15",As Soon As Possible,NA,NA,NA,4/29/26 1:17,6h,6h,0h,0,0,0,0,0,1.2.3.2.25.6,500,No,No,No,,"Sam Houff,Kim Kolesar",Black,,,,,,,,0,0,0,0d,0d,0d,No,No,No,No,No,No,No,No,No,No,No,0,0,0,0,0,
1172,3120,Yes,Auto Scheduled,PTP_CM26_Material_Master - KMAT - Configurable Materials,1.34d,Fixed Duration,5,5.88d,,"June 10, 2026 9:00","June 11, 2026 11:45",6/10/26 9:00,6/11/26 11:45,5/7/26 1:59,5/13/26 2:44,0d,-23.5d,0ed,0,NA,NA,"April 7, 2026 4:15","April 15, 2026 3:15",As Soon As Possible,NA,NA,NA,4/29/26 1:17,9h,9h,0h,0,0,0,0,0,1.2.3.2.26,500,No,Yes,Yes,,,Black,,,,,,,,0,0,0,0d,0d,0d,No,No,No,No,No,No,No,No,No,No,No,0,0,0,0,0,
1173,3121,Yes,Auto Scheduled,"Load File Staged and Posted ""Ready""",30m,Fixed Units,6,0.06d,1035,"June 10, 2026 9:00","June 10, 2026 9:30",6/10/26 9:00,6/10/26 9:30,5/13/26 2:14,5/13/26 2:44,0m,-9346m,0ed,0,NA,NA,"April 7, 2026 4:15","April 7, 2026 4:45",As Soon As Possible,NA,NA,NA,4/29/26 1:17,0.5h,0.5h,0h,0,0,0,0,0,1.2.3.2.26.1,500,No,No,No,,,Black,,,,,,,,0,0,0,0d,0d,0d,No,No,No,No,No,No,No,No,No,No,No,0,0,0,0,0,
1174,3122,Yes,Auto Scheduled,Pre Load Validation,30m,Fixed Units,6,0.06d,1163,"June 10, 2026 11:15","June 10, 2026 11:45",6/10/26 11:15,6/10/26 11:45,5/7/26 1:59,5/7/26 2:29,0m,-11416m,0ed,0,NA,NA,"April 14, 2026 2:45","April 14, 2026 3:15",As Soon As Possible,NA,NA,NA,4/29/26 1:17,0.5h,0.5h,0h,0,0,0,0,0,1.2.3.2.26.2,500,No,No,No,,"Sam Houff,Kim Kolesar,Matt",Black,,,,,,,,0,0,0,0d,0d,0d,No,No,No,No,No,No,No,No,No,No,No,0,0,0,0,0,
1175,3123,Yes,Auto Scheduled,Simulate Load,1h,Fixed Units,6,0.13d,1174,"June 10, 2026 11:45","June 10, 2026 1:45",6/10/26 11:45,6/10/26 1:45,5/7/26 2:29,5/7/26 3:29,0h,-190.27h,0ed,0,NA,NA,"April 14, 2026 3:15","April 14, 2026 4:15",As Soon As Possible,NA,NA,NA,4/29/26 1:17,1h,1h,0h,0,0,0,0,0,1.2.3.2.26.3,500,No,No,No,,,Black,,,,,,,,0,0,0,0d,0d,0d,No,No,No,No,No,No,No,No,No,No,No,0,0,0,0,0,
1176,3124,Yes,Auto Scheduled,Error and Defect Mitigation,2h,Fixed Units,6,0.25d,1175,"June 10, 2026 1:45","June 10, 2026 3:45",6/10/26 1:45,6/10/26 3:45,5/7/26 3:29,5/8/26 8:29,0h,-190.27h,0ed,0,NA,NA,"April 14, 2026 4:15","April 15, 2026 9:15",As Soon As Possible,NA,NA,NA,4/29/26 1:17,2h,2h,0h,0,0,0,0,0,1.2.3.2.26.4,500,No,No,No,,"Sam Houff,Kim Kolesar,Matt",Black,,,,,,,,0,0,0,0d,0d,0d,No,No,No,No,No,No,No,No,No,No,No,0,0,0,0,0,
1177,3125,Yes,Auto Scheduled,Load,2h,Fixed Units,6,0.25d,1176,"June 10, 2026 3:45","June 11, 2026 8:45",6/10/26 3:45,6/11/26 8:45,5/8/26 8:29,5/8/26 10:29,0h,-190.27h,0ed,0,NA,NA,"April 15, 2026 9:15","April 15, 2026 11:15",As Soon As Possible,NA,NA,NA,4/29/26 1:17,2h,2h,0h,0,0,0,0,0,1.2.3.2.26.5,500,No,No,No,,,Black,,,,,,,,0,0,0,0d,0d,0d,No,No,No,No,No,No,No,No,No,No,No,0,0,0,0,0,
1178,3126,Yes,Auto Scheduled,Post Load Validation,3h,Fixed Units,6,0.38d,1177,"June 11, 2026 8:45","June 11, 2026 11:45",6/11/26 8:45,6/11/26 11:45,5/8/26 10:29,5/8/26 2:29,0h,-190.27h,0ed,0,NA,NA,"April 15, 2026 11:15","April 15, 2026 3:15",As Soon As Possible,NA,NA,NA,4/29/26 1:17,3h,3h,0h,0,0,0,0,0,1.2.3.2.26.6,500,No,No,No,,"Sam Houff,Kim Kolesar,Matt",Black,,,,,,,,0,0,0,0d,0d,0d,No,No,No,No,No,No,No,No,No,No,No,0,0,0,0,0,
1179,3127,Yes,Auto Scheduled,PTP_CM28_Purchase_Info_Records,3.59d,Fixed Duration,5,1.28d,,"June 8, 2026 2:00","June 12, 2026 9:45",6/8/26 2:00,6/12/26 9:45,5/11/26 2:22,5/18/26 10:29,0d,-19.96d,0ed,0,NA,NA,"April 15, 2026 10:00","April 16, 2026 1:15",As Soon As Possible,NA,NA,NA,4/29/26 1:17,9h,9h,0h,0,0,0,0,0,1.2.3.2.27,500,No,Yes,Yes,,,Black,,,,,,,,0,0,0,0d,0d,0d,No,No,No,No,No,No,No,No,No,No,No,0,0,0,0,0,
1180,3128,Yes,Auto Scheduled,Extract File,1h,Fixed Units,6,0.13d,"1164,1178","June 11, 2026 11:45","June 11, 2026 1:45",6/11/26 11:45,6/11/26 1:45,5/11/26 2:22,5/11/26 3:22,0h,-182.39h,0ed,0,NA,NA,"April 15, 2026 3:15","April 15, 2026 4:15",As Soon As Possible,NA,NA,NA,4/29/26 1:17,1h,1h,0h,0,0,0,0,0,1.2.3.2.27.1,500,No,No,No,,,Black,,,,,,,,0,0,0,0d,0d,0d,No,No,No,No,No,No,No,No,No,No,No,0,0,0,0,0,
1181,3129,Yes,Auto Scheduled,Pre Load Validation,2h,Fixed Units,6,0.25d,1180,"June 11, 2026 1:45","June 11, 2026 3:45",6/11/26 1:45,6/11/26 3:45,5/15/26 2:29,5/15/26 4:29,0h,-151.27h,0ed,0,NA,NA,"April 15, 2026 4:15","April 16, 2026 9:15",As Soon As Possible,NA,NA,NA,4/29/26 1:17,2h,2h,0h,0,0,0,0,0,1.2.3.2.27.2,500,No,No,No,,Sam Houff,Black,,,,,,,,0,0,0,0d,0d,0d,No,No,No,No,No,No,No,No,No,No,No,0,0,0,0,0,
1182,3130,Yes,Auto Scheduled,Simulate Load,1h,Fixed Units,6,0.13d,1181,"June 11, 2026 3:45","June 11, 2026 4:45",6/11/26 3:45,6/11/26 4:45,5/15/26 4:29,5/18/26 8:29,0h,-151.27h,0ed,0,NA,NA,"April 16, 2026 9:15","April 16, 2026 10:15",As Soon As Possible,NA,NA,NA,4/29/26 1:17,1h,1h,0h,0,0,0,0,0,1.2.3.2.27.3,500,No,No,No,,,Black,,,,,,,,0,0,0,0d,0d,0d,No,No,No,No,No,No,No,No,No,No,No,0,0,0,0,0,
1183,3131,Yes,Auto Scheduled,Error and Defect Mitigation,2h,Fixed Units,6,0.25d,1182,"June 11, 2026 4:45","June 12, 2026 9:45",6/11/26 4:45,6/12/26 9:45,5/18/26 8:29,5/18/26 10:29,0h,-151.27h,0ed,0,NA,NA,"April 16, 2026 10:15","April 16, 2026 1:15",As Soon As Possible,NA,NA,NA,4/29/26 1:17,2h,2h,0h,0,0,0,0,0,1.2.3.2.27.4,500,No,No,No,,Sam Houff,Black,,,,,,,,0,0,0,0d,0d,0d,No,No,No,No,No,No,No,No,No,No,No,0,0,0,0,0,
1184,3132,Yes,Auto Scheduled,Load,1h,Fixed Units,6,0.13d,1132,"June 8, 2026 2:00","June 8, 2026 3:00",6/8/26 2:00,6/8/26 3:00,5/15/26 4:29,5/18/26 8:29,0h,-125.52h,0ed,0,NA,NA,"April 15, 2026 10:00","April 15, 2026 11:00",As Soon As Possible,NA,NA,NA,4/29/26 1:17,1h,1h,0h,0,0,0,0,0,1.2.3.2.27.5,500,No,No,No,,,Black,,,,,,,,0,0,0,0d,0d,0d,No,No,No,No,No,No,No,No,No,No,No,0,0,0,0,0,
1185,3133,Yes,Auto Scheduled,Post Load Validation,2h,Fixed Units,6,0.25d,1184,"June 8, 2026 3:00","June 8, 2026 5:00",6/8/26 3:00,6/8/26 5:00,5/18/26 8:29,5/18/26 10:29,0h,-125.52h,0ed,0,NA,NA,"April 15, 2026 11:00","April 15, 2026 2:00",As Soon As Possible,NA,NA,NA,4/29/26 1:17,2h,2h,0h,0,0,0,0,0,1.2.3.2.27.6,500,No,No,No,,Sam Houff,Black,,,,,,,,0,0,0,0d,0d,0d,No,No,No,No,No,No,No,No,No,No,No,0,0,0,0,0,
1186,3134,Yes,Auto Scheduled,PTP_CM28_Purchase_Info_Record External Processing,1.13d,Fixed Duration,5,1.13d,,"June 11, 2026 11:45","June 12, 2026 1:45",6/11/26 11:45,6/12/26 1:45,5/15/26 9:29,5/18/26 10:29,0d,-19.28d,0ed,0,NA,NA,"April 15, 2026 3:15","April 16, 2026 4:15",As Soon As Possible,NA,NA,NA,4/29/26 1:17,9h,9h,0h,0,0,0,0,0,1.2.3.2.28,500,No,Yes,Yes,,,Black,,,,,,,,0,0,0,0d,0d,0d,No,No,No,No,No,No,No,No,No,No,No,0,0,0,0,0,
1187,3135,Yes,Auto Scheduled,"Load File Staged and Posted ""Ready""",30m,Fixed Units,6,0.06d,"1164,1178","June 11, 2026 11:45","June 11, 2026 1:15",6/11/26 11:45,6/11/26 1:15,5/15/26 9:29,5/15/26 9:59,0m,-9256m,0ed,0,NA,NA,"April 15, 2026 3:15","April 15, 2026 3:45",As Soon As Possible,NA,NA,NA,4/29/26 1:17,0.5h,0.5h,0h,0,0,0,0,0,1.2.3.2.28.1,500,No,No,No,,,Black,,,,,,,,0,0,0,0d,0d,0d,No,No,No,No,No,No,No,No,No,No,No,0,0,0,0,0,
1188,3136,Yes,Auto Scheduled,Pre Load Validation,30m,Fixed Units,6,0.06d,1187,"June 11, 2026 1:15","June 11, 2026 1:45",6/11/26 1:15,6/11/26 1:45,5/15/26 9:59,5/15/26 10:29,0m,-9256m,0ed,0,NA,NA,"April 15, 2026 3:45","April 15, 2026 4:15",As Soon As Possible,NA,NA,NA,4/29/26 1:17,0.5h,0.5h,0h,0,0,0,0,0,1.2.3.2.28.2,500,No,No,No,,Sam Houff,Black,,,,,,,,0,0,0,0d,0d,0d,No,No,No,No,No,No,No,No,No,No,No,0,0,0,0,0,
1189,3137,Yes,Auto Scheduled,Simulate Load,1h,Fixed Units,6,0.13d,1188,"June 11, 2026 1:45","June 11, 2026 2:45",6/11/26 1:45,6/11/26 2:45,5/15/26 10:29,5/15/26 11:29,0h,-154.27h,0ed,0,NA,NA,"April 15, 2026 4:15","April 16, 2026 8:15",As Soon As Possible,NA,NA,NA,4/29/26 1:17,1h,1h,0h,0,0,0,0,0,1.2.3.2.28.3,500,No,No,No,,,Black,,,,,,,,0,0,0,0d,0d,0d,No,No,No,No,No,No,No,No,No,No,No,0,0,0,0,0,
1190,3138,Yes,Auto Scheduled,Error and Defect Mitigation,2h,Fixed Units,6,0.25d,1189,"June 11, 2026 2:45","June 11, 2026 4:45",6/11/26 2:45,6/11/26 4:45,5/15/26 11:29,5/15/26 2:29,0h,-154.27h,0ed,0,NA,NA,"April 16, 2026 8:15","April 16, 2026 10:15",As Soon As Possible,NA,NA,NA,4/29/26 1:17,2h,2h,0h,0,0,0,0,0,1.2.3.2.28.4,500,No,No,No,,Sam Houff,Black,,,,,,,,0,0,0,0d,0d,0d,No,No,No,No,No,No,No,No,No,No,No,0,0,0,0,0,
1191,3139,Yes,Auto Scheduled,Load,2h,Fixed Units,6,0.25d,1190,"June 11, 2026 4:45","June 12, 2026 9:45",6/11/26 4:45,6/12/26 9:45,5/15/26 2:29,5/15/26 4:29,0h,-154.27h,0ed,0,NA,NA,"April 16, 2026 10:15","April 16, 2026 1:15",As Soon As Possible,NA,NA,NA,4/29/26 1:17,2h,2h,0h,0,0,0,0,0,1.2.3.2.28.5,500,No,No,No,,,Black,,,,,,,,0,0,0,0d,0d,0d,No,No,No,No,No,No,No,No,No,No,No,0,0,0,0,0,
1192,3140,Yes,Auto Scheduled,Post Load Validation,3h,Fixed Units,6,0.38d,1191,"June 12, 2026 9:45","June 12, 2026 1:45",6/12/26 9:45,6/12/26 1:45,5/15/26 4:29,5/18/26 10:29,0h,-154.27h,0ed,0,NA,NA,"April 16, 2026 1:15","April 16, 2026 4:15",As Soon As Possible,NA,NA,NA,4/29/26 1:17,3h,3h,0h,0,0,0,0,0,1.2.3.2.28.6,500,No,No,No,,Sam Houff,Black,,,,,,,,0,0,0,0d,0d,0d,No,No,No,No,No,No,No,No,No,No,No,0,0,0,0,0,
1193,3141,Yes,Auto Scheduled,PTP_CM28_Purchase_Info_Record Subcontracting and Consignment,1.13d,Fixed Duration,5,1.13d,,"June 11, 2026 11:45","June 12, 2026 1:45",6/11/26 11:45,6/12/26 1:45,5/8/26 2:29,5/18/26 10:29,0d,-23.78d,0ed,0,NA,NA,"April 15, 2026 3:15","April 16, 2026 4:15",As Soon As Possible,NA,NA,NA,4/29/26 1:17,9h,9h,0h,0,0,0,0,0,1.2.3.2.29,500,No,Yes,Yes,,,Black,,,,,,,,0,0,0,0d,0d,0d,No,No,No,No,No,No,No,No,No,No,No,0,0,0,0,0,
1194,3142,Yes,Auto Scheduled,"Load File Staged and Posted ""Ready""",30m,Fixed Units,6,0.06d,"1164,1178","June 11, 2026 11:45","June 11, 2026 1:15",6/11/26 11:45,6/11/26 1:15,5/8/26 2:29,5/8/26 2:59,0m,-11416m,0ed,0,NA,NA,"April 15, 2026 3:15","April 15, 2026 3:45",As Soon As Possible,NA,NA,NA,4/29/26 1:17,0.5h,0.5h,0h,0,0,0,0,0,1.2.3.2.29.1,500,No,No,No,,,Black,,,,,,,,0,0,0,0d,0d,0d,No,No,No,No,No,No,No,No,No,No,No,0,0,0,0,0,
1195,3143,Yes,Auto Scheduled,Pre Load Validation,30m,Fixed Units,6,0.06d,1194,"June 11, 2026 1:15","June 11, 2026 1:45",6/11/26 1:15,6/11/26 1:45,5/8/26 2:59,5/8/26 3:29,0m,-11416m,0ed,0,NA,NA,"April 15, 2026 3:45","April 15, 2026 4:15",As Soon As Possible,NA,NA,NA,4/29/26 1:17,0.5h,0.5h,0h,0,0,0,0,0,1.2.3.2.29.2,500,No,No,No,,Sam Houff,Black,,,,,,,,0,0,0,0d,0d,0d,No,No,No,No,No,No,No,No,No,No,No,0,0,0,0,0,
1196,3144,Yes,Auto Scheduled,Simulate Load,1h,Fixed Units,6,0.13d,1195,"June 11, 2026 1:45","June 11, 2026 2:45",6/11/26 1:45,6/11/26 2:45,5/8/26 3:29,5/8/26 4:29,0h,-190.27h,0ed,0,NA,NA,"April 15, 2026 4:15","April 16, 2026 8:15",As Soon As Possible,NA,NA,NA,4/29/26 1:17,1h,1h,0h,0,0,0,0,0,1.2.3.2.29.3,500,No,No,No,,,Black,,,,,,,,0,0,0,0d,0d,0d,No,No,No,No,No,No,No,No,No,No,No,0,0,0,0,0,
1197,3145,Yes,Auto Scheduled,Error and Defect Mitigation,2h,Fixed Units,6,0.25d,1196,"June 11, 2026 2:45","June 11, 2026 4:45",6/11/26 2:45,6/11/26 4:45,5/15/26 11:29,5/15/26 2:29,0h,-154.27h,0ed,0,NA,NA,"April 16, 2026 8:15","April 16, 2026 10:15",As Soon As Possible,NA,NA,NA,4/29/26 1:17,2h,2h,0h,0,0,0,0,0,1.2.3.2.29.4,500,No,No,No,,Sam Houff,Black,,,,,,,,0,0,0,0d,0d,0d,No,No,No,No,No,No,No,No,No,No,No,0,0,0,0,0,
1198,3146,Yes,Auto Scheduled,Load,2h,Fixed Units,6,0.25d,1197,"June 11, 2026 4:45","June 12, 2026 9:45",6/11/26 4:45,6/12/26 9:45,5/15/26 2:29,5/15/26 4:29,0h,-154.27h,0ed,0,NA,NA,"April 16, 2026 10:15","April 16, 2026 1:15",As Soon As Possible,NA,NA,NA,4/29/26 1:17,2h,2h,0h,0,0,0,0,0,1.2.3.2.29.5,500,No,No,No,,,Black,,,,,,,,0,0,0,0d,0d,0d,No,No,No,No,No,No,No,No,No,No,No,0,0,0,0,0,
1199,3147,Yes,Auto Scheduled,Post Load Validation,3h,Fixed Units,6,0.38d,1198,"June 12, 2026 9:45","June 12, 2026 1:45",6/12/26 9:45,6/12/26 1:45,5/15/26 4:29,5/18/26 10:29,0h,-154.27h,0ed,0,NA,NA,"April 16, 2026 1:15","April 16, 2026 4:15",As Soon As Possible,NA,NA,NA,4/29/26 1:17,3h,3h,0h,0,0,0,0,0,1.2.3.2.29.6,500,No,No,No,,Sam Houff,Black,,,,,,,,0,0,0,0d,0d,0d,No,No,No,No,No,No,No,No,No,No,No,0,0,0,0,0,
1200,3148,Yes,Auto Scheduled,PTM_CM31_BOM Conversion,2.48d,Fixed Duration,5,1.13d,,"June 11, 2026 1:45","June 16, 2026 8:38",6/11/26 1:45,6/16/26 8:38,5/11/26 3:22,5/14/26 10:14,0d,-22.8d,0ed,0,NA,NA,"April 15, 2026 4:15","April 17, 2026 8:15",As Soon As Possible,NA,NA,NA,4/29/26 1:17,19h,9h,0h,0,0,0,0,0,1.2.3.2.30,500,No,Yes,Yes,,,Black,,,,,,,,0,0,0,0d,0d,0d,Yes,No,No,No,No,No,No,No,No,No,No,0,0,0,0,0,
1201,3149,Yes,Auto Scheduled,Extract File,1h,Fixed Units,6,0.13d,1180,"June 11, 2026 1:45","June 11, 2026 2:45",6/11/26 1:45,6/11/26 2:45,5/11/26 3:22,5/11/26 4:22,0h,-182.39h,0ed,0,NA,NA,"April 15, 2026 4:15","April 16, 2026 8:15",As Soon As Possible,NA,NA,NA,4/29/26 1:17,1h,1h,0h,0,0,0,0,0,1.2.3.2.30.1,500,No,No,No,,,Black,,,,,,,,0,0,0,0d,0d,0d,No,No,No,No,No,No,No,No,No,No,No,0,0,0,0,0,
1202,3150,Yes,Auto Scheduled,Pre Load Validation,0.5h,Fixed Units,6,0.25d,1201,"June 11, 2026 2:45","June 11, 2026 3:15",6/11/26 2:45,6/11/26 3:15,5/11/26 4:22,5/11/26 4:52,0h,-182.39h,0ed,0,NA,NA,"April 16, 2026 8:15","April 16, 2026 10:15",As Soon As Possible,NA,NA,NA,4/29/26 1:17,0.5h,2h,0h,0,0,0,0,0,1.2.3.2.30.2,500,No,No,No,,"Matt Palastro, Dave Duda",Black,,,,,,,,0,0,0,0d,0d,0d,No,No,No,No,No,No,No,No,No,No,No,0,0,0,0,0,
1203,3151,Yes,Auto Scheduled,Simulate Load,15.5h,Fixed Units,6,0.13d,1202,"June 11, 2026 3:15","June 15, 2026 3:15",6/11/26 3:15,6/15/26 3:15,5/11/26 4:52,5/13/26 4:52,0h,-182.39h,0ed,0,NA,NA,"April 16, 2026 10:15","April 16, 2026 11:15",As Soon As Possible,NA,NA,NA,4/29/26 1:17,15.5h,1h,0h,0,0,0,0,0,1.2.3.2.30.3,500,No,No,No,,,Black,,,,,,,,0,0,0,0d,0d,0d,No,No,No,No,No,No,No,No,No,No,No,0,0,0,0,0,
1204,3152,Yes,Auto Scheduled,Error and Defect Mitigation,0.5h,Fixed Units,6,0.25d,1203,"June 15, 2026 3:15","June 15, 2026 3:45",6/15/26 3:15,6/15/26 3:45,5/13/26 4:52,5/14/26 8:22,0h,-182.39h,0ed,0,NA,NA,"April 16, 2026 11:15","April 16, 2026 2:15",As Soon As Possible,NA,NA,NA,4/29/26 1:17,0.5h,2h,0h,0,0,0,0,0,1.2.3.2.30.4,500,No,No,No,,"Matt Palastro, Dave Duda",Black,,,,,,,,0,0,0,0d,0d,0d,No,No,No,No,No,No,No,No,No,No,No,0,0,0,0,0,
1205,3153,Yes,Auto Scheduled,Load,1h,Fixed Units,6,0.13d,1204,"June 15, 2026 3:45","June 15, 2026 5:00",6/15/26 3:45,6/15/26 5:00,5/14/26 8:22,5/14/26 9:37,0h,-182.39h,0ed,0,NA,NA,"April 16, 2026 2:15","April 16, 2026 3:15",As Soon As Possible,NA,NA,NA,4/29/26 1:17,1h,1h,0h,0,0,0,0,0,4/1,500,No,No,No,,,Black,,,,,,,,0,0,0,0d,0d,0d,No,No,No,No,No,No,No,No,No,No,No,0,0,0,0,0,
1206,3154,Yes,Auto Scheduled,Post Load Validation,0.5h,Fixed Units,6,0.25d,1205,"June 16, 2026 8:00","June 16, 2026 8:38",6/16/26 8:00,6/16/26 8:38,5/14/26 9:37,5/14/26 10:14,0h,-182.39h,0ed,0,NA,NA,"April 16, 2026 3:15","April 17, 2026 8:15",As Soon As Possible,NA,NA,NA,4/29/26 1:17,0.5h,2h,0h,0,0,0,0,0,1.2.3.2.30.6,500,No,No,No,,"Matt Palastro, Dave Duda",Black,,,,,,,,0,0,0,0d,0d,0d,No,No,No,No,No,No,No,No,No,No,No,0,0,0,0,0,
1207,3155,Yes,Auto Scheduled,PTM_CM40_Work Center Conversion,3.08d,Fixed Duration,5,2d,,"June 11, 2026 2:45","June 16, 2026 3:23",6/11/26 2:45,6/16/26 3:23,5/12/26 4:59,5/14/26 4:59,0d,-22.8d,0ed,0,NA,NA,"April 16, 2026 8:15","April 20, 2026 8:15",As Soon As Possible,NA,NA,NA,4/29/26 1:17,6.75h,9h,0h,0,0,0,0,0,1.2.3.2.31,500,No,Yes,Yes,,,Black,,,,,,,,0,0,0,0d,0d,0d,No,No,No,No,No,No,No,No,No,No,No,0,0,0,0,0,
1208,3156,Yes,Auto Scheduled,Extract File,1h,Fixed Units,6,0.13d,1201,"June 11, 2026 2:45","June 11, 2026 3:45",6/11/26 2:45,6/11/26 3:45,5/12/26 4:59,5/13/26 8:59,0h,-173.77h,0ed,0,NA,NA,"April 16, 2026 8:15","April 16, 2026 9:15",As Soon As Possible,NA,NA,NA,4/29/26 1:17,1h,1h,0h,0,0,0,0,0,1.2.3.2.31.1,500,No,No,No,,,Black,,,,,,,,0,0,0,0d,0d,0d,No,No,No,No,No,No,No,No,No,No,No,0,0,0,0,0,
1209,3157,Yes,Auto Scheduled,Pre Load Validation,2h,Fixed Units,6,0.25d,1206,"June 16, 2026 8:38","June 16, 2026 10:38",6/16/26 8:38,6/16/26 10:38,5/14/26 10:14,5/14/26 1:14,0h,-182.39h,0ed,0,NA,NA,"April 17, 2026 8:15","April 17, 2026 10:15",As Soon As Possible,NA,NA,NA,4/29/26 1:17,2h,2h,0h,0,0,0,0,0,1.2.3.2.31.2,500,No,No,No,,"Matt Palastro, Dave Duda",Black,,,,,,,,0,0,0,0d,0d,0d,No,No,No,No,No,No,No,No,No,No,No,0,0,0,0,0,
1210,3158,Yes,Auto Scheduled,Simulate Load,0.25h,Fixed Units,6,0.13d,1209,"June 16, 2026 10:38","June 16, 2026 10:53",6/16/26 10:38,6/16/26 10:53,5/14/26 1:14,5/14/26 1:29,0h,-182.39h,0ed,0,NA,NA,"April 17, 2026 10:15","April 17, 2026 11:15",As Soon As Possible,NA,NA,NA,4/29/26 1:17,0.25h,1h,0h,0,0,0,0,0,1.2.3.2.31.3,500,No,No,No,,,Black,,,,,,,,0,0,0,0d,0d,0d,No,No,No,No,No,No,No,No,No,No,No,0,0,0,0,0,
1211,3159,Yes,Auto Scheduled,Error and Defect Mitigation,0.5h,Fixed Units,6,0.25d,1210,"June 16, 2026 10:53","June 16, 2026 11:23",6/16/26 10:53,6/16/26 11:23,5/14/26 1:29,5/14/26 1:59,0h,-182.39h,0ed,0,NA,NA,"April 17, 2026 11:15","April 17, 2026 2:15",As Soon As Possible,NA,NA,NA,4/29/26 1:17,0.5h,2h,0h,0,0,0,0,0,1.2.3.2.31.4,500,No,No,No,,"Matt Palastro, Dave Duda",Black,,,,,,,,0,0,0,0d,0d,0d,No,No,No,No,No,No,No,No,No,No,No,0,0,0,0,0,
1212,3160,Yes,Auto Scheduled,Load,1h,Fixed Units,6,0.13d,1211,"June 16, 2026 11:23","June 16, 2026 1:23",6/16/26 11:23,6/16/26 1:23,5/14/26 1:59,5/14/26 2:59,0h,-182.39h,0ed,0,NA,NA,"April 17, 2026 2:15","April 17, 2026 3:15",As Soon As Possible,NA,NA,NA,4/29/26 1:17,1h,1h,0h,0,0,0,0,0,1.2.3.2.31.5,500,No,No,No,,,Black,,,,,,,,0,0,0,0d,0d,0d,No,No,No,No,No,No,No,No,No,No,No,0,0,0,0,0,
1213,3161,Yes,Auto Scheduled,Post Load Validation,2h,Fixed Units,6,0.25d,1212,"June 16, 2026 1:23","June 16, 2026 3:23",6/16/26 1:23,6/16/26 3:23,5/14/26 2:59,5/14/26 4:59,0h,-182.39h,0ed,0,NA,NA,"April 17, 2026 3:15","April 20, 2026 8:15",As Soon As Possible,NA,NA,NA,4/29/26 1:17,2h,2h,0h,0,0,0,0,0,1.2.3.2.31.6,500,No,No,No,,"Matt Palastro, Dave Duda",Black,,,,,,,,0,0,0,0d,0d,0d,No,No,No,No,No,No,No,No,No,No,No,0,0,0,0,0,
1214,3162,Yes,Auto Scheduled,PTM_CM38_Routing Conversion,4.27d,Fixed Duration,5,2.88d,,"June 11, 2026 3:45","June 18, 2026 8:53",6/11/26 3:45,6/18/26 8:53,5/13/26 8:59,5/18/26 10:29,0d,-22.8d,0ed,0,NA,NA,"April 16, 2026 9:15","April 21, 2026 8:15",As Soon As Possible,NA,NA,NA,4/29/26 1:17,11h,9h,0h,0,0,0,0,0,1.2.3.2.32,500,No,Yes,Yes,,,Black,,,,,,,,0,0,0,0d,0d,0d,Yes,No,No,No,No,No,No,No,No,No,No,0,0,0,0,0,
1215,3163,Yes,Auto Scheduled,Extract File,1h,Fixed Units,6,0.13d,1208,"June 11, 2026 3:45","June 11, 2026 4:45",6/11/26 3:45,6/11/26 4:45,5/13/26 8:59,5/13/26 9:59,0h,-173.77h,0ed,0,NA,NA,"April 16, 2026 9:15","April 16, 2026 10:15",As Soon As Possible,NA,NA,NA,4/29/26 1:17,1h,1h,0h,0,0,0,0,0,1.2.3.2.32.1,500,No,No,No,,,Black,,,,,,,,0,0,0,0d,0d,0d,No,No,No,No,No,No,No,No,No,No,No,0,0,0,0,0,
1216,3164,Yes,Auto Scheduled,Pre Load Validation,2h,Fixed Units,6,0.25d,1213,"June 16, 2026 3:23","June 17, 2026 10:53",6/16/26 3:23,6/17/26 10:53,5/14/26 4:59,5/15/26 1:29,0h,-182.39h,0ed,0,NA,NA,"April 20, 2026 8:15","April 20, 2026 10:15",As Soon As Possible,NA,NA,NA,4/29/26 1:17,2h,2h,0h,0,0,0,0,0,1.2.3.2.32.2,500,No,No,No,,"Matt Palastro, Dave Duda",Black,,,,,,,,0,0,0,0d,0d,0d,No,No,No,No,No,No,No,No,No,No,No,0,0,0,0,0,
1217,3165,Yes,Auto Scheduled,Simulate Load,2h,Fixed Units,6,0.13d,1216,"June 17, 2026 10:53","June 17, 2026 1:53",6/17/26 10:53,6/17/26 1:53,5/15/26 1:29,5/15/26 3:29,0h,-182.39h,0ed,0,NA,NA,"April 20, 2026 10:15","April 20, 2026 11:15",As Soon As Possible,NA,NA,NA,4/29/26 1:17,2h,1h,0h,0,0,0,0,0,1.2.3.2.32.3,500,No,No,No,,,Black,,,,,,,,0,0,0,0d,0d,0d,No,No,No,No,No,No,No,No,No,No,No,0,0,0,0,0,
1218,3166,Yes,Auto Scheduled,Error and Defect Mitigation,3h,Fixed Units,6,0.25d,1217SS,"June 17, 2026 10:53","June 17, 2026 2:53",6/17/26 10:53,6/17/26 2:53,5/15/26 1:29,5/15/26 4:29,0h,-182.39h,0ed,0,NA,NA,"April 20, 2026 11:15","April 20, 2026 2:15",As Soon As Possible,NA,NA,NA,4/29/26 1:17,3h,2h,0h,0,0,0,0,0,1.2.3.2.32.4,500,No,No,No,,"Matt Palastro, Dave Duda",Black,,,,,,,,0,0,0,0d,0d,0d,No,No,No,No,No,No,No,No,No,No,No,0,0,0,0,0,
1219,3167,Yes,Auto Scheduled,Load,1h,Fixed Units,6,0.13d,1218,"June 17, 2026 2:53","June 17, 2026 3:53",6/17/26 2:53,6/17/26 3:53,5/15/26 4:29,5/18/26 8:29,0h,-182.39h,0ed,0,NA,NA,"April 20, 2026 2:15","April 20, 2026 3:15",As Soon As Possible,NA,NA,NA,4/29/26 1:17,1h,1h,0h,0,0,0,0,0,1.2.3.2.32.5,500,No,No,No,,,Black,,,,,,,,0,0,0,0d,0d,0d,No,No,No,No,No,No,No,No,No,No,No,0,0,0,0,0,
1220,3168,Yes,Auto Scheduled,Post Load Validation,2h,Fixed Units,6,0.25d,1219,"June 17, 2026 3:53","June 18, 2026 8:53",6/17/26 3:53,6/18/26 8:53,5/18/26 8:29,5/18/26 10:29,0h,-182.39h,0ed,0,NA,NA,"April 20, 2026 3:15","April 21, 2026 8:15",As Soon As Possible,NA,NA,NA,4/29/26 1:17,2h,2h,0h,0,0,0,0,0,1.2.3.2.32.6,500,No,No,No,,"Matt Palastro, Dave Duda",Black,,,,,,,,0,0,0,0d,0d,0d,No,No,No,No,No,No,No,No,No,No,No,0,0,0,0,0,
1221,3169,Yes,Auto Scheduled,PTM_CM36_Production Version Conversion,1.13d,Fixed Duration,5,1.13d,,"June 11, 2026 4:45","June 15, 2026 8:45",6/11/26 4:45,6/15/26 8:45,5/13/26 9:59,5/14/26 10:59,0d,-21.72d,0ed,0,NA,NA,"April 16, 2026 10:15","April 17, 2026 11:15",As Soon As Possible,NA,NA,NA,4/29/26 1:17,9h,9h,0h,0,0,0,0,0,1.2.3.2.33,500,No,Yes,Yes,,,Black,,,,,,,,0,0,0,0d,0d,0d,Yes,No,No,No,No,No,No,No,No,No,No,0,0,0,0,0,
1222,3170,Yes,Auto Scheduled,"Load File Staged and Posted ""Ready""",30m,Fixed Units,6,0.06d,1215,"June 11, 2026 4:45","June 12, 2026 8:15",6/11/26 4:45,6/12/26 8:15,5/13/26 9:59,5/13/26 10:29,0m,-10426m,0ed,0,NA,NA,"April 16, 2026 10:15","April 16, 2026 10:45",Start No Earlier Than,4/20/26 8:00,NA,NA,4/29/26 1:17,0.5h,0.5h,0h,0,0,0,0,0,1.2.3.2.33.1,500,No,No,No,,,Black,,,,,,,,0,0,0,0d,0d,0d,No,No,No,No,No,No,No,No,No,No,No,0,0,0,0,0,
1223,3171,Yes,Auto Scheduled,Pre Load Validation,30m,Fixed Units,6,0.06d,1222,"June 12, 2026 8:15","June 12, 2026 8:45",6/12/26 8:15,6/12/26 8:45,5/13/26 10:29,5/13/26 10:59,0m,-10426m,0ed,0,NA,NA,"April 16, 2026 10:45","April 16, 2026 11:15",As Soon As Possible,NA,NA,NA,4/29/26 1:17,0.5h,0.5h,0h,0,0,0,0,0,1.2.3.2.33.2,500,No,No,No,,"Matt Palastro, Dave Duda",Black,,,,,,,,0,0,0,0d,0d,0d,No,No,No,No,No,No,No,No,No,No,No,0,0,0,0,0,
1224,3172,Yes,Auto Scheduled,Simulate Load,1h,Fixed Units,6,0.13d,1223,"June 12, 2026 8:45","June 12, 2026 9:45",6/12/26 8:45,6/12/26 9:45,5/13/26 10:59,5/13/26 11:59,0h,-173.77h,0ed,0,NA,NA,"April 16, 2026 11:15","April 16, 2026 1:15",As Soon As Possible,NA,NA,NA,4/29/26 1:17,1h,1h,0h,0,0,0,0,0,1.2.3.2.33.3,500,No,No,No,,,Black,,,,,,,,0,0,0,0d,0d,0d,No,No,No,No,No,No,No,No,No,No,No,0,0,0,0,0,
1225,3173,Yes,Auto Scheduled,Error and Defect Mitigation,2h,Fixed Units,6,0.25d,1224,"June 12, 2026 9:45","June 12, 2026 11:45",6/12/26 9:45,6/12/26 11:45,5/13/26 11:59,5/13/26 2:59,0h,-173.77h,0ed,0,NA,NA,"April 16, 2026 1:15","April 16, 2026 3:15",As Soon As Possible,NA,NA,NA,4/29/26 1:17,2h,2h,0h,0,0,0,0,0,1.2.3.2.33.4,500,No,No,No,,"Matt Palastro, Dave Duda",Black,,,,,,,,0,0,0,0d,0d,0d,No,No,No,No,No,No,No,No,No,No,No,0,0,0,0,0,
1226,3174,Yes,Auto Scheduled,Load,2h,Fixed Units,6,0.25d,1225,"June 12, 2026 11:45","June 12, 2026 2:45",6/12/26 11:45,6/12/26 2:45,5/13/26 2:59,5/13/26 4:59,0h,-173.77h,0ed,0,NA,NA,"April 16, 2026 3:15","April 17, 2026 8:15",As Soon As Possible,NA,NA,NA,4/29/26 1:17,2h,2h,0h,0,0,0,0,0,1.2.3.2.33.5,500,No,No,No,,,Black,,,,,,,,0,0,0,0d,0d,0d,No,No,No,No,No,No,No,No,No,No,No,0,0,0,0,0,
1227,3175,Yes,Auto Scheduled,Post Load Validation,3h,Fixed Units,6,0.38d,1226,"June 12, 2026 2:45","June 15, 2026 8:45",6/12/26 2:45,6/15/26 8:45,5/13/26 4:59,5/14/26 10:59,0h,-173.77h,0ed,0,NA,NA,"April 17, 2026 8:15","April 17, 2026 11:15",As Soon As Possible,NA,NA,NA,4/29/26 1:17,3h,3h,0h,0,0,0,0,0,1.2.3.2.33.6,500,No,No,No,,"Matt Palastro, Dave Duda",Black,,,,,,,,0,0,0,0d,0d,0d,No,No,No,No,No,No,No,No,No,No,No,0,0,0,0,0,
1228,3176,Yes,Auto Scheduled,PTM_CM35_Inspection Plan,1.13d,Fixed Duration,5,1.13d,,"June 15, 2026 8:45","June 16, 2026 9:45",6/15/26 8:45,6/16/26 9:45,5/14/26 10:59,5/18/26 10:29,0d,-21.72d,0ed,0,NA,NA,"April 17, 2026 11:15","April 20, 2026 1:15",As Soon As Possible,NA,NA,NA,4/29/26 1:17,9h,9h,0h,0,0,0,0,0,1.2.3.2.34,500,No,Yes,Yes,,,Black,,,,,,,,0,0,0,0d,0d,0d,No,No,No,No,No,No,No,No,No,No,No,0,0,0,0,0,
1229,3177,Yes,Auto Scheduled,"Load File Staged and Posted ""Ready""",30m,Fixed Units,6,0.06d,1227,"June 15, 2026 8:45","June 15, 2026 9:15",6/15/26 8:45,6/15/26 9:15,5/14/26 10:59,5/14/26 11:29,0m,-10426m,0ed,0,NA,NA,"April 17, 2026 11:15","April 17, 2026 11:45",As Soon As Possible,NA,NA,NA,4/29/26 1:17,0.5h,0.5h,0h,0,0,0,0,0,1.2.3.2.34.1,500,No,No,No,,,Black,,,,,,,,0,0,0,0d,0d,0d,No,No,No,No,No,No,No,No,No,No,No,0,0,0,0,0,
1230,3178,Yes,Auto Scheduled,Pre Load Validation,30m,Fixed Units,6,0.06d,1229,"June 15, 2026 9:15","June 15, 2026 9:45",6/15/26 9:15,6/15/26 9:45,5/15/26 9:59,5/15/26 10:29,0m,-10036m,0ed,0,NA,NA,"April 17, 2026 11:45","April 17, 2026 1:15",As Soon As Possible,NA,NA,NA,4/29/26 1:17,0.5h,0.5h,0h,0,0,0,0,0,1.2.3.2.34.2,500,No,No,No,,"Matt Palastro, Dave Duda",Black,,,,,,,,0,0,0,0d,0d,0d,No,No,No,No,No,No,No,No,No,No,No,0,0,0,0,0,
1231,3179,Yes,Auto Scheduled,Simulate Load,1h,Fixed Units,6,0.13d,1230,"June 15, 2026 9:45","June 15, 2026 10:45",6/15/26 9:45,6/15/26 10:45,5/15/26 10:29,5/15/26 11:29,0h,-167.27h,0ed,0,NA,NA,"April 17, 2026 1:15","April 17, 2026 2:15",As Soon As Possible,NA,NA,NA,4/29/26 1:17,1h,1h,0h,0,0,0,0,0,1.2.3.2.34.3,500,No,No,No,,,Black,,,,,,,,0,0,0,0d,0d,0d,No,No,No,No,No,No,No,No,No,No,No,0,0,0,0,0,
1232,3180,Yes,Auto Scheduled,Error and Defect Mitigation,2h,Fixed Units,6,0.25d,1231,"June 15, 2026 10:45","June 15, 2026 1:45",6/15/26 10:45,6/15/26 1:45,5/15/26 11:29,5/15/26 2:29,0h,-167.27h,0ed,0,NA,NA,"April 17, 2026 2:15","April 17, 2026 4:15",As Soon As Possible,NA,NA,NA,4/29/26 1:17,2h,2h,0h,0,0,0,0,0,1.2.3.2.34.4,500,No,No,No,,"Matt Palastro, Dave Duda",Black,,,,,,,,0,0,0,0d,0d,0d,No,No,No,No,No,No,No,No,No,No,No,0,0,0,0,0,
1233,3181,Yes,Auto Scheduled,Load,2h,Fixed Units,6,0.25d,1232,"June 15, 2026 1:45","June 15, 2026 3:45",6/15/26 1:45,6/15/26 3:45,5/15/26 2:29,5/15/26 4:29,0h,-167.27h,0ed,0,NA,NA,"April 17, 2026 4:15","April 20, 2026 9:15",As Soon As Possible,NA,NA,NA,4/29/26 1:17,2h,2h,0h,0,0,0,0,0,1.2.3.2.34.5,500,No,No,No,,,Black,,,,,,,,0,0,0,0d,0d,0d,No,No,No,No,No,No,No,No,No,No,No,0,0,0,0,0,
1234,3182,Yes,Auto Scheduled,Post Load Validation,3h,Fixed Units,6,0.38d,1233,"June 15, 2026 3:45","June 16, 2026 9:45",6/15/26 3:45,6/16/26 9:45,5/15/26 4:29,5/18/26 10:29,0h,-167.27h,0ed,0,NA,NA,"April 20, 2026 9:15","April 20, 2026 1:15",As Soon As Possible,NA,NA,NA,4/29/26 1:17,3h,3h,0h,0,0,0,0,0,1.2.3.2.34.6,500,No,No,No,,"Matt Palastro, Dave Duda",Black,,,,,,,,0,0,0,0d,0d,0d,No,No,No,No,No,No,No,No,No,No,No,0,0,0,0,0,
1235,3183,Yes,Auto Scheduled,PTM_CM48_Equipment_Master_Serial Numbers,1.13d,Fixed Duration,5,1.13d,,"June 15, 2026 9:15","June 16, 2026 10:15",6/15/26 9:15,6/16/26 10:15,5/14/26 11:29,5/15/26 1:29,0d,-21.72d,0ed,0,NA,NA,"April 17, 2026 11:45","April 20, 2026 1:45",As Soon As Possible,NA,NA,NA,4/29/26 1:17,9h,9h,0h,0,0,0,0,0,1.2.3.2.35,500,No,Yes,Yes,,,Black,,,,,,,,0,0,0,0d,0d,0d,No,No,No,No,No,No,No,No,No,No,No,0,0,0,0,0,
1236,3184,Yes,Auto Scheduled,"Load File Staged and Posted ""Ready""",30m,Fixed Units,6,0.06d,1229,"June 15, 2026 9:15","June 15, 2026 9:45",6/15/26 9:15,6/15/26 9:45,5/14/26 11:29,5/14/26 11:59,0m,-10426m,0ed,0,NA,NA,"April 17, 2026 11:45","April 17, 2026 1:15",As Soon As Possible,NA,NA,NA,4/29/26 1:17,0.5h,0.5h,0h,0,0,0,0,0,1.2.3.2.35.1,500,No,No,No,,,Black,,,,,,,,0,0,0,0d,0d,0d,No,No,No,No,No,No,No,No,No,No,No,0,0,0,0,0,
1237,3185,Yes,Auto Scheduled,Pre Load Validation,30m,Fixed Units,6,0.06d,1236,"June 15, 2026 9:45","June 15, 2026 10:15",6/15/26 9:45,6/15/26 10:15,5/14/26 11:59,5/14/26 1:29,0m,-10426m,0ed,0,NA,NA,"April 17, 2026 1:15","April 17, 2026 1:45",As Soon As Possible,NA,NA,NA,4/29/26 1:17,0.5h,0.5h,0h,0,0,0,0,0,1.2.3.2.35.2,500,No,No,No,,"Matt Palastro, Dave Duda",Black,,,,,,,,0,0,0,0d,0d,0d,No,No,No,No,No,No,No,No,No,No,No,0,0,0,0,0,
1238,3186,Yes,Auto Scheduled,Simulate Load,1h,Fixed Units,6,0.13d,1237,"June 15, 2026 10:15","June 15, 2026 11:15",6/15/26 10:15,6/15/26 11:15,5/14/26 1:29,5/14/26 2:29,0h,-173.77h,0ed,0,NA,NA,"April 17, 2026 1:45","April 17, 2026 2:45",As Soon As Possible,NA,NA,NA,4/29/26 1:17,1h,1h,0h,0,0,0,0,0,1.2.3.2.35.3,500,No,No,No,,,Black,,,,,,,,0,0,0,0d,0d,0d,No,No,No,No,No,No,No,No,No,No,No,0,0,0,0,0,
1239,3187,Yes,Auto Scheduled,Error and Defect Mitigation,2h,Fixed Units,6,0.25d,1238,"June 15, 2026 11:15","June 15, 2026 2:15",6/15/26 11:15,6/15/26 2:15,5/14/26 2:29,5/14/26 4:29,0h,-173.77h,0ed,0,NA,NA,"April 17, 2026 2:45","April 17, 2026 4:45",As Soon As Possible,NA,NA,NA,4/29/26 1:17,2h,2h,0h,0,0,0,0,0,1.2.3.2.35.4,500,No,No,No,,"Matt Palastro, Dave Duda",Black,,,,,,,,0,0,0,0d,0d,0d,No,No,No,No,No,No,No,No,No,No,No,0,0,0,0,0,
1240,3188,Yes,Auto Scheduled,Load,2h,Fixed Units,6,0.25d,1239,"June 15, 2026 2:15","June 15, 2026 4:15",6/15/26 2:15,6/15/26 4:15,5/14/26 4:29,5/15/26 9:29,0h,-173.77h,0ed,0,NA,NA,"April 17, 2026 4:45","April 20, 2026 9:45",As Soon As Possible,NA,NA,NA,4/29/26 1:17,2h,2h,0h,0,0,0,0,0,1.2.3.2.35.5,500,No,No,No,,,Black,,,,,,,,0,0,0,0d,0d,0d,No,No,No,No,No,No,No,No,No,No,No,0,0,0,0,0,
1241,3189,Yes,Auto Scheduled,Post Load Validation,3h,Fixed Units,6,0.38d,1240,"June 15, 2026 4:15","June 16, 2026 10:15",6/15/26 4:15,6/16/26 10:15,5/15/26 9:29,5/15/26 1:29,0h,-173.77h,0ed,0,NA,NA,"April 20, 2026 9:45","April 20, 2026 1:45",As Soon As Possible,NA,NA,NA,4/29/26 1:17,3h,3h,0h,0,0,0,0,0,1.2.3.2.35.6,500,No,No,No,,"Matt Palastro, Dave Duda",Black,,,,,,,,0,0,0,0d,0d,0d,No,No,No,No,No,No,No,No,No,No,No,0,0,0,0,0,
1242,3190,Yes,Auto Scheduled,PTM_CM48_Equipment_Master_Service,6.78d,Fixed Duration,5,1.13d,,"June 8, 2026 10:00","June 17, 2026 8:15",6/8/26 10:00,6/17/26 8:15,5/15/26 1:29,5/18/26 10:29,0d,-21.72d,0ed,0,NA,NA,"April 20, 2026 1:45","April 21, 2026 2:45",As Soon As Possible,NA,NA,NA,4/29/26 1:17,9h,9h,0h,0,0,0,0,0,1.2.3.2.36,500,No,Yes,Yes,,,Black,,,,,,,,0,0,0,0d,0d,0d,No,No,No,No,No,No,No,No,No,No,No,0,0,0,0,0,
1243,3191,Yes,Auto Scheduled,"Load File Staged and Posted ""Ready""",30m,Fixed Units,6,0.06d,1241,"June 16, 2026 10:15","June 16, 2026 10:45",6/16/26 10:15,6/16/26 10:45,5/15/26 1:29,5/15/26 1:59,0m,-10426m,0ed,0,NA,NA,"April 20, 2026 1:45","April 20, 2026 2:15",As Soon As Possible,NA,NA,NA,4/29/26 1:17,0.5h,0.5h,0h,0,0,0,0,0,1.2.3.2.36.1,500,No,No,No,,,Black,,,,,,,,0,0,0,0d,0d,0d,No,No,No,No,No,No,No,No,No,No,No,0,0,0,0,0,
1244,3192,Yes,Auto Scheduled,Pre Load Validation,30m,Fixed Units,6,0.06d,1243,"June 16, 2026 10:45","June 16, 2026 11:15",6/16/26 10:45,6/16/26 11:15,5/15/26 1:59,5/15/26 2:29,0m,-10426m,0ed,0,NA,NA,"April 20, 2026 2:15","April 20, 2026 2:45",As Soon As Possible,NA,NA,NA,4/29/26 1:17,0.5h,0.5h,0h,0,0,0,0,0,1.2.3.2.36.2,500,No,No,No,,"Matt Palastro, Dave Duda",Black,,,,,,,,0,0,0,0d,0d,0d,No,No,No,No,No,No,No,No,No,No,No,0,0,0,0,0,
1245,3193,Yes,Auto Scheduled,Simulate Load,1h,Fixed Units,6,0.13d,1244,"June 16, 2026 11:15","June 16, 2026 1:15",6/16/26 11:15,6/16/26 1:15,5/15/26 2:29,5/15/26 3:29,0h,-173.77h,0ed,0,NA,NA,"April 20, 2026 2:45","April 20, 2026 3:45",As Soon As Possible,NA,NA,NA,4/29/26 1:17,1h,1h,0h,0,0,0,0,0,1.2.3.2.36.3,500,No,No,No,,,Black,,,,,,,,0,0,0,0d,0d,0d,No,No,No,No,No,No,No,No,No,No,No,0,0,0,0,0,
1246,3194,Yes,Auto Scheduled,Error and Defect Mitigation,2h,Fixed Units,6,0.25d,1245,"June 16, 2026 1:15","June 16, 2026 3:15",6/16/26 1:15,6/16/26 3:15,5/15/26 3:29,5/18/26 8:29,0h,-173.77h,0ed,0,NA,NA,"April 20, 2026 3:45","April 21, 2026 8:45",As Soon As Possible,NA,NA,NA,4/29/26 1:17,2h,2h,0h,0,0,0,0,0,1.2.3.2.36.4,500,No,No,No,,"Matt Palastro, Dave Duda",Black,,,,,,,,0,0,0,0d,0d,0d,No,No,No,No,No,No,No,No,No,No,No,0,0,0,0,0,
1247,3195,Yes,Auto Scheduled,Load,2h,Fixed Units,6,0.25d,1246,"June 16, 2026 3:15","June 17, 2026 8:15",6/16/26 3:15,6/17/26 8:15,5/18/26 8:29,5/18/26 10:29,0h,-173.77h,0ed,0,NA,NA,"April 21, 2026 8:45","April 21, 2026 10:45",As Soon As Possible,NA,NA,NA,4/29/26 1:17,2h,2h,0h,0,0,0,0,0,1.2.3.2.36.5,500,No,No,No,,,Black,,,,,,,,0,0,0,0d,0d,0d,No,No,No,No,No,No,No,No,No,No,No,0,0,0,0,0,
1248,3196,Yes,Auto Scheduled,Post Load Validation,3h,Fixed Units,6,0.38d,,"June 8, 2026 10:00","June 8, 2026 2:00",6/8/26 10:00,6/8/26 2:00,5/15/26 4:29,5/18/26 10:29,0h,-122.52h,0ed,0,NA,NA,"April 21, 2026 10:45","April 21, 2026 2:45",As Soon As Possible,NA,NA,NA,4/29/26 1:17,3h,3h,0h,0,0,0,0,0,1.2.3.2.36.6,500,No,No,No,,"Matt Palastro, Dave Duda",Black,,,,,,,,0,0,0,0d,0d,0d,No,No,No,No,No,No,No,No,No,No,No,0,0,0,0,0,
1249,3197,Yes,Auto Scheduled,VC_Object Dependencies,0.63d,Fixed Duration,5,0.63d,,"June 8, 2026 10:00","June 8, 2026 4:00",6/8/26 10:00,6/8/26 4:00,5/13/26 3:29,5/14/26 11:29,0d,-17.44d,0ed,0,NA,NA,"April 6, 2026 8:15","April 6, 2026 2:15",As Soon As Possible,NA,NA,NA,4/29/26 1:17,5h,5h,0h,0,0,0,0,0,1.2.3.2.37,500,No,Yes,Yes,,,Black,,,,,,,,0,0,0,0d,0d,0d,No,No,No,No,No,No,No,No,No,No,No,0,0,0,0,0,
1250,3198,Yes,Auto Scheduled,Run ALE Transaction to QS5 from DS4 130,2h,Fixed Units,6,0.25d,,"June 8, 2026 10:00","June 8, 2026 12:00",6/8/26 10:00,6/8/26 12:00,5/13/26 3:29,5/14/26 8:29,0h,-139.52h,0ed,0,NA,NA,"April 6, 2026 8:15","April 6, 2026 10:15",As Soon As Possible,NA,NA,NA,4/29/26 1:17,2h,2h,0h,0,0,0,0,0,1.2.3.2.37.1,500,No,No,No,,,Black,,,,,,,,0,0,0,0d,0d,0d,No,No,No,No,No,No,No,No,No,No,No,0,0,0,0,0,
1251,3199,Yes,Auto Scheduled,Post Load Validation,3h,Fixed Units,6,0.38d,1250,"June 8, 2026 1:00","June 8, 2026 4:00",6/8/26 1:00,6/8/26 4:00,5/14/26 8:29,5/14/26 11:29,0h,-139.52h,0ed,0,NA,NA,"April 6, 2026 10:15","April 6, 2026 2:15",As Soon As Possible,NA,NA,NA,4/29/26 1:17,3h,3h,0h,0,0,0,0,0,1.2.3.2.37.2,500,No,No,No,,"Matt Palastro, Dave Duda",Black,,,,,,,,0,0,0,0d,0d,0d,No,No,No,No,No,No,No,No,No,No,No,0,0,0,0,0,
1252,3200,Yes,Auto Scheduled,VC_Characteristics,0.63d,Fixed Duration,5,0.63d,,"June 8, 2026 4:00","June 9, 2026 12:00",6/8/26 4:00,6/9/26 12:00,5/14/26 11:29,5/15/26 8:29,0d,-17.44d,0ed,0,NA,NA,"April 6, 2026 2:15","April 7, 2026 10:15",As Soon As Possible,NA,NA,NA,4/29/26 1:17,5h,5h,0h,0,0,0,0,0,1.2.3.2.38,500,No,Yes,Yes,,,Black,,,,,,,,0,0,0,0d,0d,0d,No,No,No,No,No,No,No,No,No,No,No,0,0,0,0,0,
1253,3201,Yes,Auto Scheduled,Run ALE Transaction to QS5 from DS4 130,2h,Fixed Units,6,0.25d,1251,"June 8, 2026 4:00","June 9, 2026 9:00",6/8/26 4:00,6/9/26 9:00,5/14/26 11:29,5/14/26 2:29,0h,-139.52h,0ed,0,NA,NA,"April 6, 2026 2:15","April 6, 2026 4:15",As Soon As Possible,NA,NA,NA,4/29/26 1:17,2h,2h,0h,0,0,0,0,0,1.2.3.2.38.1,500,No,No,No,,,Black,,,,,,,,0,0,0,0d,0d,0d,No,No,No,No,No,No,No,No,No,No,No,0,0,0,0,0,
1254,3202,Yes,Auto Scheduled,Post Load Validation,3h,Fixed Units,6,0.38d,1253,"June 9, 2026 9:00","June 9, 2026 12:00",6/9/26 9:00,6/9/26 12:00,5/14/26 2:29,5/15/26 8:29,0h,-139.52h,0ed,0,NA,NA,"April 6, 2026 4:15","April 7, 2026 10:15",As Soon As Possible,NA,NA,NA,4/29/26 1:17,3h,3h,0h,0,0,0,0,0,1.2.3.2.38.2,500,No,No,No,,"Matt Palastro, Dave Duda",Black,,,,,,,,0,0,0,0d,0d,0d,No,No,No,No,No,No,No,No,No,No,No,0,0,0,0,0,
1255,3203,Yes,Auto Scheduled,VC_Classes,0.63d,Fixed Duration,5,0.63d,,"June 9, 2026 1:00","June 10, 2026 9:00",6/9/26 1:00,6/10/26 9:00,5/15/26 8:29,5/15/26 2:29,0d,-17.44d,0ed,0,NA,NA,"April 7, 2026 10:15","April 7, 2026 4:15",As Soon As Possible,NA,NA,NA,4/29/26 1:17,5h,5h,0h,0,0,0,0,0,1.2.3.2.39,500,No,Yes,Yes,,,Black,,,,,,,,0,0,0,0d,0d,0d,No,No,No,No,No,No,No,No,No,No,No,0,0,0,0,0,
1256,3204,Yes,Auto Scheduled,Run ALE Transaction to QS5 from DS4 130,2h,Fixed Units,6,0.25d,1254,"June 9, 2026 1:00","June 9, 2026 3:00",6/9/26 1:00,6/9/26 3:00,5/15/26 8:29,5/15/26 10:29,0h,-139.52h,0ed,0,NA,NA,"April 7, 2026 10:15","April 7, 2026 1:15",As Soon As Possible,NA,NA,NA,4/29/26 1:17,2h,2h,0h,0,0,0,0,0,1.2.3.2.39.1,500,No,No,No,,,Black,,,,,,,,0,0,0,0d,0d,0d,No,No,No,No,No,No,No,No,No,No,No,0,0,0,0,0,
1257,3205,Yes,Auto Scheduled,Post Load Validation,3h,Fixed Units,6,0.38d,1256,"June 9, 2026 3:00","June 10, 2026 9:00",6/9/26 3:00,6/10/26 9:00,5/15/26 10:29,5/15/26 2:29,0h,-139.52h,0ed,0,NA,NA,"April 7, 2026 1:15","April 7, 2026 4:15",As Soon As Possible,NA,NA,NA,4/29/26 1:17,3h,3h,0h,0,0,0,0,0,1.2.3.2.39.2,500,No,No,No,,"Matt Palastro, Dave Duda",Black,,,,,,,,0,0,0,0d,0d,0d,No,No,No,No,No,No,No,No,No,No,No,0,0,0,0,0,
1258,3206,Yes,Auto Scheduled,VC_Classification (Class Type 200),0.63d,Fixed Duration,5,0.63d,,"June 11, 2026 11:45","June 12, 2026 8:45",6/11/26 11:45,6/12/26 8:45,5/15/26 2:29,5/18/26 10:29,0d,-18.78d,0ed,0,NA,NA,"April 15, 2026 3:15","April 16, 2026 11:15",As Soon As Possible,NA,NA,NA,4/29/26 1:17,5h,5h,0h,0,0,0,0,0,1.2.3.2.40,500,No,Yes,Yes,,,Black,,,,,,,,0,0,0,0d,0d,0d,No,No,No,No,No,No,No,No,No,No,No,0,0,0,0,0,
1259,3207,Yes,Auto Scheduled,Run ALE Transaction to QS5 from DS4 130,2h,Fixed Units,6,0.25d,1178,"June 11, 2026 11:45","June 11, 2026 2:45",6/11/26 11:45,6/11/26 2:45,5/15/26 2:29,5/15/26 4:29,0h,-150.27h,0ed,0,NA,NA,"April 15, 2026 3:15","April 16, 2026 8:15",As Soon As Possible,NA,NA,NA,4/29/26 1:17,2h,2h,0h,0,0,0,0,0,1.2.3.2.40.1,500,No,No,No,,,Black,,,,,,,,0,0,0,0d,0d,0d,No,No,No,No,No,No,No,No,No,No,No,0,0,0,0,0,
1260,3208,Yes,Auto Scheduled,Post Load Validation,3h,Fixed Units,6,0.38d,1259,"June 11, 2026 2:45","June 12, 2026 8:45",6/11/26 2:45,6/12/26 8:45,5/15/26 4:29,5/18/26 10:29,0h,-150.27h,0ed,0,NA,NA,"April 16, 2026 8:15","April 16, 2026 11:15",As Soon As Possible,NA,NA,NA,4/29/26 1:17,3h,3h,0h,0,0,0,0,0,1.2.3.2.40.2,500,No,No,No,,"Matt Palastro, Dave Duda",Black,,,,,,,,0,0,0,0d,0d,0d,No,No,No,No,No,No,No,No,No,No,No,0,0,0,0,0,
1261,3209,Yes,Auto Scheduled,VC_Dependency Nets,0.63d,Fixed Duration,5,0.63d,,"June 11, 2026 11:45","June 12, 2026 8:45",6/11/26 11:45,6/12/26 8:45,5/15/26 2:29,5/18/26 10:29,0d,-18.78d,0ed,0,NA,NA,"April 15, 2026 3:15","April 16, 2026 11:15",As Soon As Possible,NA,NA,NA,4/29/26 1:17,5h,5h,0h,0,0,0,0,0,1.2.3.2.41,500,No,Yes,Yes,,,Black,,,,,,,,0,0,0,0d,0d,0d,No,No,No,No,No,No,No,No,No,No,No,0,0,0,0,0,
1262,3210,Yes,Auto Scheduled,Run ALE Transaction to QS5 from DS4 130,2h,Fixed Units,6,0.25d,"1172,1257","June 11, 2026 11:45","June 11, 2026 2:45",6/11/26 11:45,6/11/26 2:45,5/15/26 2:29,5/15/26 4:29,0h,-150.27h,0ed,0,NA,NA,"April 15, 2026 3:15","April 16, 2026 8:15",As Soon As Possible,NA,NA,NA,4/29/26 1:17,2h,2h,0h,0,0,0,0,0,1.2.3.2.41.1,500,No,No,No,,,Black,,,,,,,,0,0,0,0d,0d,0d,No,No,No,No,No,No,No,No,No,No,No,0,0,0,0,0,
1263,3211,Yes,Auto Scheduled,Post Load Validation,3h,Fixed Units,6,0.38d,1262,"June 11, 2026 2:45","June 12, 2026 8:45",6/11/26 2:45,6/12/26 8:45,5/15/26 4:29,5/18/26 10:29,0h,-150.27h,0ed,0,NA,NA,"April 16, 2026 8:15","April 16, 2026 11:15",As Soon As Possible,NA,NA,NA,4/29/26 1:17,3h,3h,0h,0,0,0,0,0,1.2.3.2.41.2,500,No,No,No,,"Matt Palastro, Dave Duda",Black,,,,,,,,0,0,0,0d,0d,0d,No,No,No,No,No,No,No,No,No,No,No,0,0,0,0,0,
1264,3212,Yes,Auto Scheduled,VC_Configuration Profiles,0.63d,Fixed Duration,5,0.63d,,"June 11, 2026 11:45","June 12, 2026 8:45",6/11/26 11:45,6/12/26 8:45,5/13/26 2:44,5/14/26 10:44,0d,-20.75d,0ed,0,NA,NA,"April 15, 2026 3:15","April 16, 2026 11:15",As Soon As Possible,NA,NA,NA,4/29/26 1:17,5h,5h,0h,0,0,0,0,0,1.2.3.2.42,500,No,Yes,Yes,,,Black,,,,,,,,0,0,0,0d,0d,0d,No,No,No,No,No,No,No,No,No,No,No,0,0,0,0,0,
1265,3213,Yes,Auto Scheduled,Run ALE Transaction to QS5 from DS4 130,2h,Fixed Units,6,0.25d,1172,"June 11, 2026 11:45","June 11, 2026 2:45",6/11/26 11:45,6/11/26 2:45,5/13/26 2:44,5/13/26 4:44,0h,-166.02h,0ed,0,NA,NA,"April 15, 2026 3:15","April 16, 2026 8:15",As Soon As Possible,NA,NA,NA,4/29/26 1:17,2h,2h,0h,0,0,0,0,0,1.2.3.2.42.1,500,No,No,No,,,Black,,,,,,,,0,0,0,0d,0d,0d,No,No,No,No,No,No,No,No,No,No,No,0,0,0,0,0,
1266,3214,Yes,Auto Scheduled,Post Load Validation,3h,Fixed Units,6,0.38d,1265,"June 11, 2026 2:45","June 12, 2026 8:45",6/11/26 2:45,6/12/26 8:45,5/13/26 4:44,5/14/26 10:44,0h,-166.02h,0ed,0,NA,NA,"April 16, 2026 8:15","April 16, 2026 11:15",As Soon As Possible,NA,NA,NA,4/29/26 1:17,3h,3h,0h,0,0,0,0,0,1.2.3.2.42.2,500,No,No,No,,"Matt Palastro, Dave Duda",Black,,,,,,,,0,0,0,0d,0d,0d,No,No,No,No,No,No,No,No,No,No,No,0,0,0,0,0,
1267,3215,Yes,Auto Scheduled,VC_Variant Tables,0.63d,Fixed Duration,5,0.63d,,"June 12, 2026 8:45","June 12, 2026 2:45",6/12/26 8:45,6/12/26 2:45,5/15/26 8:29,5/15/26 2:29,0d,-20.03d,0ed,0,NA,NA,"April 16, 2026 11:15","April 17, 2026 8:15",As Soon As Possible,NA,NA,NA,4/29/26 1:17,5h,5h,0h,0,0,0,0,0,1.2.3.2.43,500,No,Yes,Yes,,,Black,,,,,,,,0,0,0,0d,0d,0d,No,No,No,No,No,No,No,No,No,No,No,0,0,0,0,0,
1268,3216,Yes,Auto Scheduled,Run ALE Transaction to QS5 from DS4 130,2h,Fixed Units,6,0.25d,1266,"June 12, 2026 8:45","June 12, 2026 10:45",6/12/26 8:45,6/12/26 10:45,5/15/26 8:29,5/15/26 10:29,0h,-160.27h,0ed,0,NA,NA,"April 16, 2026 11:15","April 16, 2026 2:15",As Soon As Possible,NA,NA,NA,4/29/26 1:17,2h,2h,0h,0,0,0,0,0,1.2.3.2.43.1,500,No,No,No,,,Black,,,,,,,,0,0,0,0d,0d,0d,No,No,No,No,No,No,No,No,No,No,No,0,0,0,0,0,
1269,3217,Yes,Auto Scheduled,Post Load Validation,3h,Fixed Units,6,0.38d,1268,"June 12, 2026 10:45","June 12, 2026 2:45",6/12/26 10:45,6/12/26 2:45,5/15/26 10:29,5/15/26 2:29,0h,-160.27h,0ed,0,NA,NA,"April 16, 2026 2:15","April 17, 2026 8:15",As Soon As Possible,NA,NA,NA,4/29/26 1:17,3h,3h,0h,0,0,0,0,0,1.2.3.2.43.2,500,No,No,No,,"Matt Palastro, Dave Duda",Black,,,,,,,,0,0,0,0d,0d,0d,No,No,No,No,No,No,No,No,No,No,No,0,0,0,0,0,
1270,3218,Yes,Auto Scheduled,VC_Variant Tables Content,0.63d,Fixed Duration,5,0.63d,,"June 12, 2026 2:45","June 15, 2026 10:45",6/12/26 2:45,6/15/26 10:45,5/15/26 2:29,5/18/26 10:29,0d,-20.03d,0ed,0,NA,NA,"April 17, 2026 8:15","April 17, 2026 2:15",As Soon As Possible,NA,NA,NA,4/29/26 1:17,5h,5h,0h,0,0,0,0,0,1.2.3.2.44,500,No,Yes,Yes,,,Black,,,,,,,,0,0,0,0d,0d,0d,No,No,No,No,No,No,No,No,No,No,No,0,0,0,0,0,
1271,3219,Yes,Auto Scheduled,Run ALE Transaction to QS5 from DS4 130,2h,Fixed Units,6,0.25d,1269,"June 12, 2026 2:45","June 12, 2026 4:45",6/12/26 2:45,6/12/26 4:45,5/15/26 2:29,5/15/26 4:29,0h,-160.27h,0ed,0,NA,NA,"April 17, 2026 8:15","April 17, 2026 10:15",As Soon As Possible,NA,NA,NA,4/29/26 1:17,2h,2h,0h,0,0,0,0,0,1.2.3.2.44.1,500,No,No,No,,,Black,,,,,,,,0,0,0,0d,0d,0d,No,No,No,No,No,No,No,No,No,No,No,0,0,0,0,0,
1272,3220,Yes,Auto Scheduled,Post Load Validation,3h,Fixed Units,6,0.38d,1271,"June 12, 2026 4:45","June 15, 2026 10:45",6/12/26 4:45,6/15/26 10:45,5/15/26 4:29,5/18/26 10:29,0h,-160.27h,0ed,0,NA,NA,"April 17, 2026 10:15","April 17, 2026 2:15",As Soon As Possible,NA,NA,NA,4/29/26 1:17,3h,3h,0h,0,0,0,0,0,1.2.3.2.44.2,500,No,No,No,,"Matt Palastro, Dave Duda",Black,,,,,,,,0,0,0,0d,0d,0d,No,No,No,No,No,No,No,No,No,No,No,0,0,0,0,0,
1273,3221,Yes,Auto Scheduled,VC_Characteristic Groups,1.97d,Fixed Duration,5,0.63d,,"June 12, 2026 8:45","June 16, 2026 8:30",6/12/26 8:45,6/16/26 8:30,5/14/26 10:44,5/18/26 10:29,0d,-20.75d,0ed,0,NA,NA,"April 16, 2026 11:15","April 17, 2026 8:15",As Soon As Possible,NA,NA,NA,4/29/26 1:17,15.75h,5h,0h,0,0,0,0,0,1.2.3.2.45,500,No,Yes,Yes,,,Black,,,,,,,,0,0,0,0d,0d,0d,No,No,No,No,No,No,No,No,No,No,No,0,0,0,0,0,
1274,3222,Yes,Auto Scheduled,Run ALE Transaction to QS5 from DS4 130,12.75h,Fixed Units,6,0.25d,1266,"June 12, 2026 8:45","June 15, 2026 2:30",6/12/26 8:45,6/15/26 2:30,5/14/26 10:44,5/15/26 4:29,0h,-166.02h,0ed,0,NA,NA,"April 16, 2026 11:15","April 16, 2026 2:15",As Soon As Possible,NA,NA,NA,4/29/26 1:17,12.75h,2h,0h,0,0,0,0,0,1.2.3.2.45.1,500,No,No,No,,,Black,,,,,,,,0,0,0,0d,0d,0d,No,No,No,No,No,No,No,No,No,No,No,0,0,0,0,0,
1275,3223,Yes,Auto Scheduled,Post Load Validation,3h,Fixed Units,6,0.38d,1274,"June 15, 2026 2:30","June 16, 2026 8:30",6/15/26 2:30,6/16/26 8:30,5/15/26 4:29,5/18/26 10:29,0h,-166.02h,0ed,0,NA,NA,"April 16, 2026 2:15","April 17, 2026 8:15",As Soon As Possible,NA,NA,NA,4/29/26 1:17,3h,3h,0h,0,0,0,0,0,1.2.3.2.45.2,500,No,No,No,,"Matt Palastro, Dave Duda",Black,,,,,,,,0,0,0,0d,0d,0d,No,No,No,No,No,No,No,No,No,No,No,0,0,0,0,0,
1276,3224,Yes,Auto Scheduled,PTM_CM52_Super_BOM,2d,Fixed Duration,5,1.13d,,"June 11, 2026 11:45","June 15, 2026 11:45",6/11/26 11:45,6/15/26 11:45,5/11/26 8:29,5/13/26 8:29,0d,-23.41d,0ed,0,NA,NA,"April 15, 2026 3:15","April 16, 2026 4:15",As Soon As Possible,NA,NA,NA,4/29/26 1:17,16h,9h,0h,0,0,0,0,0,1.2.3.2.46,500,No,Yes,Yes,,,Black,,,,,,,,0,0,0,0d,0d,0d,Yes,No,No,No,No,No,No,No,No,No,No,0,0,0,0,0,
1277,3225,Yes,Auto Scheduled,"Load File Staged and Posted ""Ready""",30m,Fixed Units,6,0.06d,1178,"June 11, 2026 11:45","June 11, 2026 1:15",6/11/26 11:45,6/11/26 1:15,5/11/26 8:29,5/11/26 8:59,0m,-11236m,0ed,0,NA,NA,"April 15, 2026 3:15","April 15, 2026 3:45",As Soon As Possible,NA,NA,NA,4/29/26 1:17,0.5h,0.5h,0h,0,0,0,0,0,1.2.3.2.46.1,500,No,No,No,,,Black,,,,,,,,0,0,0,0d,0d,0d,No,No,No,No,No,No,No,No,No,No,No,0,0,0,0,0,
1278,3226,Yes,Auto Scheduled,Pre Load Validation,30m,Fixed Units,6,0.06d,1277,"June 11, 2026 1:15","June 11, 2026 1:45",6/11/26 1:15,6/11/26 1:45,5/11/26 8:59,5/11/26 9:29,0m,-11236m,0ed,0,NA,NA,"April 15, 2026 3:45","April 15, 2026 4:15",As Soon As Possible,NA,NA,NA,4/29/26 1:17,0.5h,0.5h,0h,0,0,0,0,0,1.2.3.2.46.2,500,No,No,No,,"Matt Palastro, Dave Duda",Black,,,,,,,,0,0,0,0d,0d,0d,No,No,No,No,No,No,No,No,No,No,No,0,0,0,0,0,
1279,3227,Yes,Auto Scheduled,Simulate Load,8h,Fixed Units,6,0.13d,1278,"June 11, 2026 1:45","June 12, 2026 1:45",6/11/26 1:45,6/12/26 1:45,5/11/26 9:29,5/12/26 9:29,0h,-187.27h,0ed,0,NA,NA,"April 15, 2026 4:15","April 16, 2026 8:15",As Soon As Possible,NA,NA,NA,4/29/26 1:17,8h,1h,0h,0,0,0,0,0,1.2.3.2.46.3,500,No,No,No,,"Matt Palastro, Dave Duda",Black,,,,,,,,0,0,0,0d,0d,0d,No,No,No,No,No,No,No,No,No,No,No,0,0,0,0,0,
1280,3228,Yes,Auto Scheduled,Error and Defect Mitigation,2h,Fixed Units,6,0.25d,1279,"June 12, 2026 1:45","June 12, 2026 3:45",6/12/26 1:45,6/12/26 3:45,5/12/26 9:29,5/12/26 11:29,0h,-187.27h,0ed,0,NA,NA,"April 16, 2026 8:15","April 16, 2026 10:15",As Soon As Possible,NA,NA,NA,4/29/26 1:17,2h,2h,0h,0,0,0,0,0,1.2.3.2.46.4,500,No,No,No,,"Matt Palastro, Dave Duda",Black,,,,,,,,0,0,0,0d,0d,0d,No,No,No,No,No,No,No,No,No,No,No,0,0,0,0,0,
1281,3229,Yes,Auto Scheduled,Load,2h,Fixed Units,6,0.25d,1280,"June 12, 2026 3:45","June 15, 2026 8:45",6/12/26 3:45,6/15/26 8:45,5/12/26 11:29,5/12/26 2:29,0h,-187.27h,0ed,0,NA,NA,"April 16, 2026 10:15","April 16, 2026 1:15",As Soon As Possible,NA,NA,NA,4/29/26 1:17,2h,2h,0h,0,0,0,0,0,1.2.3.2.46.5,500,No,No,No,,,Black,,,,,,,,0,0,0,0d,0d,0d,No,No,No,No,No,No,No,No,No,No,No,0,0,0,0,0,
1282,3230,Yes,Auto Scheduled,Post Load Validation,3h,Fixed Units,6,0.38d,1281,"June 15, 2026 8:45","June 15, 2026 11:45",6/15/26 8:45,6/15/26 11:45,5/12/26 2:29,5/13/26 8:29,0h,-187.27h,0ed,0,NA,NA,"April 16, 2026 1:15","April 16, 2026 4:15",As Soon As Possible,NA,NA,NA,4/29/26 1:17,3h,3h,0h,0,0,0,0,0,1.2.3.2.46.6,500,No,No,No,,"Matt Palastro, Dave Duda",Black,,,,,,,,0,0,0,0d,0d,0d,No,No,No,No,No,No,No,No,No,No,No,0,0,0,0,0,
1283,3231,Yes,Auto Scheduled,PTM_CM53_Super_Routing,2.13d,Fixed Duration,5,1.13d,,"June 15, 2026 11:45","June 17, 2026 1:45",6/15/26 11:45,6/17/26 1:45,5/13/26 8:29,5/18/26 10:29,0d,-23.41d,0ed,0,NA,NA,"April 16, 2026 4:15","April 20, 2026 8:15",As Soon As Possible,NA,NA,NA,4/29/26 1:17,9h,9h,0h,0,0,0,0,0,1.2.3.2.47,500,No,Yes,Yes,,,Black,,,,,,,,0,0,0,0d,0d,0d,Yes,No,No,No,No,No,No,No,No,No,No,0,0,0,0,0,
1284,3232,Yes,Auto Scheduled,"Load File Staged and Posted ""Ready""",30m,Fixed Units,6,0.06d,1282,"June 15, 2026 11:45","June 15, 2026 1:15",6/15/26 11:45,6/15/26 1:15,5/13/26 8:29,5/13/26 8:59,0m,-11236m,0ed,0,NA,NA,"April 16, 2026 4:15","April 16, 2026 4:45",As Soon As Possible,NA,NA,NA,4/29/26 1:17,0.5h,0.5h,0h,0,0,0,0,0,1.2.3.2.47.1,500,No,No,No,,,Black,,,,,,,,0,0,0,0d,0d,0d,No,No,No,No,No,No,No,No,No,No,No,0,0,0,0,0,
1285,3233,Yes,Auto Scheduled,Pre Load Validation,30m,Fixed Units,6,0.06d,1284,"June 15, 2026 1:15","June 15, 2026 1:45",6/15/26 1:15,6/15/26 1:45,5/13/26 8:59,5/13/26 9:29,0m,-11236m,0ed,0,NA,NA,"April 16, 2026 4:45","April 17, 2026 8:15",As Soon As Possible,NA,NA,NA,4/29/26 1:17,0.5h,0.5h,0h,0,0,0,0,0,1.2.3.2.47.2,500,No,No,No,,"Matt Palastro, Dave Duda",Black,,,,,,,,0,0,0,0d,0d,0d,No,No,No,No,No,No,No,No,No,No,No,0,0,0,0,0,
1286,3234,Yes,Auto Scheduled,Simulate Load,1h,Fixed Units,6,0.13d,1285,"June 15, 2026 1:45","June 16, 2026 2:45",6/15/26 1:45,6/16/26 2:45,5/13/26 9:29,5/14/26 10:29,0h,-187.27h,0ed,0,NA,NA,"April 17, 2026 8:15","April 17, 2026 9:15",As Soon As Possible,NA,NA,NA,4/29/26 1:17,1h,1h,0h,0,0,0,0,0,1.2.3.2.47.3,500,No,No,No,,,Black,,,,,,,,0,0,0,0d,0d,0d,No,No,No,No,No,No,No,No,No,No,No,0,0,0,0,0,
1287,3235,Yes,Auto Scheduled,Error and Defect Mitigation,2h,Fixed Units,6,0.25d,1286,"June 16, 2026 2:45","June 16, 2026 4:45",6/16/26 2:45,6/16/26 4:45,5/14/26 10:29,5/14/26 1:29,0h,-187.27h,0ed,0,NA,NA,"April 17, 2026 9:15","April 17, 2026 11:15",As Soon As Possible,NA,NA,NA,4/29/26 1:17,2h,2h,0h,0,0,0,0,0,1.2.3.2.47.4,500,No,No,No,,"Matt Palastro, Dave Duda",Black,,,,,,,,0,0,0,0d,0d,0d,No,No,No,No,No,No,No,No,No,No,No,0,0,0,0,0,
1288,3236,Yes,Auto Scheduled,Load,2h,Fixed Units,6,0.25d,1287,"June 16, 2026 4:45","June 17, 2026 9:45",6/16/26 4:45,6/17/26 9:45,5/14/26 1:29,5/14/26 3:29,0h,-187.27h,0ed,0,NA,NA,"April 17, 2026 11:15","April 17, 2026 2:15",As Soon As Possible,NA,NA,NA,4/29/26 1:17,2h,2h,0h,0,0,0,0,0,1.2.3.2.47.5,500,No,No,No,,,Black,,,,,,,,0,0,0,0d,0d,0d,No,No,No,No,No,No,No,No,No,No,No,0,0,0,0,0,
1289,3237,Yes,Auto Scheduled,Post Load Validation,3h,Fixed Units,6,0.38d,1288,"June 17, 2026 9:45","June 17, 2026 1:45",6/17/26 9:45,6/17/26 1:45,5/15/26 4:29,5/18/26 10:29,0h,-178.27h,0ed,0,NA,NA,"April 17, 2026 2:15","April 20, 2026 8:15",As Soon As Possible,NA,NA,NA,4/29/26 1:17,3h,3h,0h,0,0,0,0,0,1.2.3.2.47.6,500,No,No,No,,"Matt Palastro, Dave Duda",Black,,,,,,,,0,0,0,0d,0d,0d,No,No,No,No,No,No,No,No,No,No,No,0,0,0,0,0,
1290,3238,Yes,Auto Scheduled,VC_VK30 Pricing Variant,0.69d,Fixed Duration,5,0.69d,,"June 17, 2026 9:45","June 17, 2026 4:15",6/17/26 9:45,6/17/26 4:15,5/14/26 3:29,5/15/26 11:59,0d,-23.41d,0ed,0,NA,NA,"April 17, 2026 2:15","April 20, 2026 10:45",As Soon As Possible,NA,NA,NA,4/29/26 1:17,5.5h,5.5h,0h,0,0,0,0,0,1.2.3.2.48,500,No,Yes,Yes,,,Black,,,,,,,,0,0,0,0d,0d,0d,No,No,No,No,No,No,No,No,No,No,No,0,0,0,0,0,
1291,3239,Yes,Auto Scheduled,"Manual File Staged and Posted ""Ready""",30m,Fixed Units,6,0.06d,1288,"June 17, 2026 9:45","June 17, 2026 10:15",6/17/26 9:45,6/17/26 10:15,5/14/26 3:29,5/14/26 3:59,0m,-11236m,0ed,0,NA,NA,"April 17, 2026 2:15","April 17, 2026 2:45",As Soon As Possible,NA,NA,NA,4/29/26 1:17,0.5h,0.5h,0h,0,0,0,0,0,1.2.3.2.48.1,500,No,No,No,,"Matt Palastro, Dave Duda",Black,,,,,,,,0,0,0,0d,0d,0d,No,No,No,No,No,No,No,No,No,No,No,0,0,0,0,0,
1292,3240,Yes,Auto Scheduled,Load,2h,Fixed Units,6,0.25d,1291,"June 17, 2026 10:15","June 17, 2026 1:15",6/17/26 10:15,6/17/26 1:15,5/14/26 3:59,5/15/26 8:59,0h,-187.27h,0ed,0,NA,NA,"April 17, 2026 2:45","April 17, 2026 4:45",As Soon As Possible,NA,NA,NA,4/29/26 1:17,2h,2h,0h,0,0,0,0,0,1.2.3.2.48.2,500,No,No,No,,,Black,,,,,,,,0,0,0,0d,0d,0d,No,No,No,No,No,No,No,No,No,No,No,0,0,0,0,0,
1293,3241,Yes,Auto Scheduled,Post Load Validation,3h,Fixed Units,6,0.38d,1292,"June 17, 2026 1:15","June 17, 2026 4:15",6/17/26 1:15,6/17/26 4:15,5/15/26 8:59,5/15/26 11:59,0h,-187.27h,0ed,0,NA,NA,"April 17, 2026 4:45","April 20, 2026 10:45",As Soon As Possible,NA,NA,NA,4/29/26 1:17,3h,3h,0h,0,0,0,0,0,1.2.3.2.48.3,500,No,No,No,,"Matt Palastro, Dave Duda",Black,,,,,,,,0,0,0,0d,0d,0d,No,No,No,No,No,No,No,No,No,No,No,0,0,0,0,0,
1294,3242,Yes,Auto Scheduled,OTC_CM22_Pricing_Condition,0.69d,Fixed Duration,5,0.69d,,"June 17, 2026 4:15","June 18, 2026 1:45",6/17/26 4:15,6/18/26 1:45,5/15/26 11:59,5/18/26 10:29,0d,-23.41d,0ed,0,NA,NA,"April 20, 2026 10:45","April 21, 2026 8:15",As Soon As Possible,NA,NA,NA,4/29/26 1:17,8.5h,5.5h,0h,0,0,0,0,0,1.2.3.2.49,500,No,Yes,Yes,,,Black,,,,,,,,0,0,0,0d,0d,0d,No,No,No,No,No,No,No,No,No,No,No,0,0,0,0,0,
1295,3243,Yes,Auto Scheduled,"Manual File Staged and Posted ""Ready""",30m,Fixed Units,6,0.06d,1293,"June 17, 2026 4:15","June 17, 2026 4:45",6/17/26 4:15,6/17/26 4:45,5/15/26 11:59,5/15/26 1:29,0m,-11236m,0ed,0,NA,NA,"April 20, 2026 10:45","April 20, 2026 11:15",As Soon As Possible,NA,NA,NA,4/29/26 1:17,0.5h,0.5h,0h,0,0,0,0,0,1.2.3.2.49.1,500,No,No,No,,"Matt Palastro, Dave Duda",Black,,,,,,,,0,0,0,0d,0d,0d,No,No,No,No,No,No,No,No,No,No,No,0,0,0,0,0,
1296,3244,Yes,Auto Scheduled,Load,2h,Fixed Units,6,0.25d,1295,"June 17, 2026 4:45","June 18, 2026 9:45",6/17/26 4:45,6/18/26 9:45,5/15/26 1:29,5/15/26 3:29,0h,-187.27h,0ed,0,NA,NA,"April 20, 2026 11:15","April 20, 2026 2:15",As Soon As Possible,NA,NA,NA,4/29/26 1:17,2h,2h,0h,0,0,0,0,0,1.2.3.2.49.2,500,No,No,No,,,Black,,,,,,,,0,0,0,0d,0d,0d,No,No,No,No,No,No,No,No,No,No,No,0,0,0,0,0,
1297,3245,Yes,Auto Scheduled,Post Load Validation,3h,Fixed Units,6,0.38d,1296,"June 18, 2026 9:45","June 18, 2026 1:45",6/18/26 9:45,6/18/26 1:45,5/15/26 4:29,5/18/26 10:29,0h,-186.27h,0ed,0,NA,NA,"April 20, 2026 2:15","April 21, 2026 8:15",As Soon As Possible,NA,NA,NA,4/29/26 1:17,6h,3h,0h,0,0,0,0,0,1.2.3.2.49.3,500,No,No,No,,"Matt Palastro, Dave Duda,kim",Black,,,,,,,,0,0,0,0d,0d,0d,No,No,No,No,No,No,No,No,No,No,No,0,0,0,0,0,
1298,3246,Yes,Auto Scheduled,OTC_CM21_CMIR,0.5d,Fixed Duration,5,1.13d,,"June 18, 2026 9:45","June 18, 2026 2:45",6/18/26 9:45,6/18/26 2:45,5/15/26 3:29,5/18/26 10:29,0d,-23.41d,0ed,0,NA,NA,"April 20, 2026 2:15","April 21, 2026 3:15",As Soon As Possible,NA,NA,NA,4/29/26 1:17,4h,9h,0h,0,0,0,0,0,1.2.3.2.50,500,No,Yes,Yes,,,Black,,,,,,,,0,0,0,0d,0d,0d,No,No,No,No,No,No,No,No,No,No,No,0,0,0,0,0,
1299,3247,Yes,Auto Scheduled,"Load File Staged and Posted ""Ready""",30m,Fixed Units,6,0.06d,"1296,1307","June 18, 2026 9:45","June 18, 2026 10:15",6/18/26 9:45,6/18/26 10:15,5/15/26 3:29,5/15/26 3:59,0m,-11236m,0ed,0,NA,NA,"April 20, 2026 2:15","April 20, 2026 2:45",As Soon As Possible,NA,NA,NA,4/29/26 1:17,0.5h,0.5h,0h,0,0,0,0,0,1.2.3.2.50.1,500,No,No,No,,,Black,,,,,,,,0,0,0,0d,0d,0d,No,No,No,No,No,No,No,No,No,No,No,0,0,0,0,0,
1300,3248,Yes,Auto Scheduled,Pre Load Validation,30m,Fixed Units,6,0.06d,1299,"June 18, 2026 10:15","June 18, 2026 10:45",6/18/26 10:15,6/18/26 10:45,5/15/26 3:59,5/15/26 4:29,0m,-11236m,0ed,0,NA,NA,"April 20, 2026 2:45","April 20, 2026 3:15",As Soon As Possible,NA,NA,NA,4/29/26 1:17,0.5h,0.5h,0h,0,0,0,0,0,1.2.3.2.50.2,500,No,No,No,,Kim,Black,,,,,,,,0,0,0,0d,0d,0d,No,No,No,No,No,No,No,No,No,No,No,0,0,0,0,0,
1301,3249,Yes,Auto Scheduled,Simulate Load,0h,Fixed Units,6,0.13d,1300,"June 18, 2026 10:45","June 18, 2026 10:45",6/18/26 10:45,6/18/26 10:45,5/15/26 4:29,5/15/26 4:29,0h,-187.27h,0ed,0,NA,NA,"April 20, 2026 3:15","April 20, 2026 4:15",As Soon As Possible,NA,NA,NA,4/29/26 1:17,0h,1h,0h,0,0,0,0,0,1.2.3.2.50.3,500,Yes,No,No,,,Black,,,,,,,,0,0,0,0d,0d,0d,No,No,No,No,No,No,No,No,No,No,No,0,0,0,0,0,
1302,3250,Yes,Auto Scheduled,Error and Defect Mitigation,0h,Fixed Units,6,0.25d,1301,"June 18, 2026 10:45","June 18, 2026 10:45",6/18/26 10:45,6/18/26 10:45,5/15/26 4:29,5/15/26 4:29,0h,-187.27h,0ed,0,NA,NA,"April 20, 2026 4:15","April 21, 2026 9:15",As Soon As Possible,NA,NA,NA,4/29/26 1:17,0h,2h,0h,0,0,0,0,0,1.2.3.2.50.4,500,Yes,No,No,,Kim,Black,,,,,,,,0,0,0,0d,0d,0d,No,No,No,No,No,No,No,No,No,No,No,0,0,0,0,0,
1303,3251,Yes,Auto Scheduled,Load,0h,Fixed Units,6,0.25d,1302,"June 18, 2026 10:45","June 18, 2026 10:45",6/18/26 10:45,6/18/26 10:45,5/15/26 4:29,5/15/26 4:29,0h,-187.27h,0ed,0,NA,NA,"April 21, 2026 9:15","April 21, 2026 11:15",As Soon As Possible,NA,NA,NA,4/29/26 1:17,0h,2h,0h,0,0,0,0,0,1.2.3.2.50.5,500,Yes,No,No,,,Black,,,,,,,,0,0,0,0d,0d,0d,No,No,No,No,No,No,No,No,No,No,No,0,0,0,0,0,
1304,3252,Yes,Auto Scheduled,Post Load Validation,3h,Fixed Units,6,0.38d,1303,"June 18, 2026 10:45","June 18, 2026 2:45",6/18/26 10:45,6/18/26 2:45,5/15/26 4:29,5/18/26 10:29,0h,-187.27h,0ed,0,NA,NA,"April 21, 2026 11:15","April 21, 2026 3:15",As Soon As Possible,NA,NA,NA,4/29/26 1:17,3h,3h,0h,0,0,0,0,0,1.2.3.2.50.6,500,No,No,No,,Kim,Black,,,,,,,,0,0,0,0d,0d,0d,No,No,No,No,No,No,No,No,No,No,No,0,0,0,0,0,
1305,3253,Yes,Auto Scheduled,PTP_CM29_Source_List,6.16d,Fixed Duration,5,0.94d,,"June 9, 2026 11:00","June 17, 2026 1:15",6/9/26 11:00,6/17/26 1:15,5/15/26 1:29,5/18/26 10:29,0d,-22.22d,0ed,0,NA,NA,"April 13, 2026 10:45","April 14, 2026 10:15",As Soon As Possible,NA,NA,NA,4/29/26 1:17,5.5h,5.5h,0h,0,0,0,0,0,1.2.3.2.51,500,No,Yes,Yes,,,Black,,,,,,,,0,0,0,0d,0d,0d,No,No,No,No,No,No,No,No,No,No,No,0,0,0,0,0,
1306,3254,Yes,Auto Scheduled,"Manual File Staged and Posted ""Ready""",30m,Fixed Units,6,0.06d,"1149,1156","June 9, 2026 11:00","June 9, 2026 11:30",6/9/26 11:00,6/9/26 11:30,5/18/26 9:59,5/18/26 10:29,0m,-7741m,0ed,0,NA,NA,"April 14, 2026 9:45","April 14, 2026 10:15",As Soon As Possible,NA,NA,NA,4/29/26 1:17,0.5h,0.5h,0h,0,0,0,0,0,1.2.3.2.51.1,500,No,No,No,,Sam,Black,,,,,,,,0,0,0,0d,0d,0d,No,No,No,No,No,No,No,No,No,No,No,0,0,0,0,0,
1307,3255,Yes,Auto Scheduled,Load,2h,Fixed Units,6,0.25d,1125,"June 16, 2026 4:15","June 17, 2026 9:15",6/16/26 4:15,6/17/26 9:15,5/15/26 1:29,5/15/26 3:29,0h,-178.77h,0ed,0,NA,NA,"April 13, 2026 10:45","April 13, 2026 1:45",As Soon As Possible,NA,NA,NA,4/29/26 1:17,2h,2h,0h,0,0,0,0,0,1.2.3.2.51.2,500,No,No,No,,,Black,,,,,,,,0,0,0,0d,0d,0d,No,No,No,No,No,No,No,No,No,No,No,0,0,0,0,0,
1308,3256,Yes,Auto Scheduled,Post Load Validation,3h,Fixed Units,6,0.38d,1307,"June 17, 2026 9:15","June 17, 2026 1:15",6/17/26 9:15,6/17/26 1:15,5/15/26 4:29,5/18/26 10:29,0h,-177.77h,0ed,0,NA,NA,"April 13, 2026 1:45","April 13, 2026 4:45",As Soon As Possible,NA,NA,NA,4/29/26 1:17,3h,3h,0h,0,0,0,0,0,1.2.3.2.51.3,500,No,No,No,,Sam,Black,,,,,,,,0,0,0,0d,0d,0d,No,No,No,No,No,No,No,No,No,No,No,0,0,0,0,0,
1309,3257,Yes,Auto Scheduled,RTR_CM11_Asset_Master,3.75d,Fixed Duration,5,1.13d,,"June 8, 2026 10:00","June 11, 2026 5:00",6/8/26 10:00,6/11/26 5:00,5/12/26 1:29,5/18/26 10:29,0d,-18.69d,0ed,0,NA,NA,"April 10, 2026 9:45","April 13, 2026 10:45",As Soon As Possible,NA,NA,NA,4/29/26 1:17,30.5h,9h,0h,0,0,0,0,0,1.2.3.2.52,500,No,Yes,Yes,,,Black,,,,,,,,0,0,0,0d,0d,0d,No,No,No,No,No,No,No,No,No,No,No,0,0,0,0,0,
1310,3258,Yes,Auto Scheduled,"Load File Staged and Posted ""Ready""",30m,Fixed Units,6,0.06d,,"June 8, 2026 10:00","June 8, 2026 10:30",6/8/26 10:00,6/8/26 10:30,5/12/26 1:29,5/12/26 1:59,0m,-8971m,0ed,0,NA,NA,"April 10, 2026 9:45","April 10, 2026 10:15",As Soon As Possible,NA,NA,NA,4/29/26 1:17,0.5h,0.5h,0h,0,0,0,0,0,1.2.3.2.52.1,500,No,No,No,,,Black,,,,,,,,0,0,0,0d,0d,0d,No,No,No,No,No,No,No,No,No,No,No,0,0,0,0,0,
1311,3259,Yes,Auto Scheduled,Pre Load Validation,30m,Fixed Units,6,0.06d,1310,"June 8, 2026 10:30","June 8, 2026 11:00",6/8/26 10:30,6/8/26 11:00,5/12/26 1:59,5/12/26 2:29,0m,-8971m,0ed,0,NA,NA,"April 10, 2026 10:15","April 10, 2026 10:45",As Soon As Possible,NA,NA,NA,4/29/26 1:17,1h,0.5h,0h,0,0,0,0,0,1.2.3.2.52.2,500,No,No,No,,Brian Wagner,Black,,,,,,,,0,0,0,0d,0d,0d,No,No,No,No,No,No,No,No,No,No,No,0,0,0,0,0,
1312,3260,Yes,Auto Scheduled,Simulate Load,8h,Fixed Units,6,0.13d,1311,"June 8, 2026 11:00","June 9, 2026 11:00",6/8/26 11:00,6/9/26 11:00,5/12/26 2:29,5/13/26 2:29,0h,-149.52h,0ed,0,NA,NA,"April 10, 2026 10:45","April 10, 2026 11:45",As Soon As Possible,NA,NA,NA,4/29/26 1:17,8h,1h,0h,0,0,0,0,0,1.2.3.2.52.3,500,No,No,No,,,Black,,,,,,,,0,0,0,0d,0d,0d,No,No,No,No,No,No,No,No,No,No,No,0,0,0,0,0,
1313,3261,Yes,Auto Scheduled,Error and Defect Mitigation,16h,Fixed Units,6,0.25d,1312,"June 9, 2026 11:00","June 11, 2026 11:00",6/9/26 11:00,6/11/26 11:00,5/13/26 2:29,5/15/26 2:29,0h,-149.52h,0ed,0,NA,NA,"April 10, 2026 11:45","April 10, 2026 2:45",As Soon As Possible,NA,NA,NA,4/29/26 1:17,16h,2h,0h,0,0,0,0,0,1.2.3.2.52.4,500,No,No,No,,Brian Wagner,Black,,,,,,,,0,0,0,0d,0d,0d,No,No,No,No,No,No,No,No,No,No,No,0,0,0,0,0,
1314,3262,Yes,Auto Scheduled,Load,2h,Fixed Units,6,0.25d,1313,"June 11, 2026 11:00","June 11, 2026 2:00",6/11/26 11:00,6/11/26 2:00,5/15/26 2:29,5/15/26 4:29,0h,-149.52h,0ed,0,NA,NA,"April 10, 2026 2:45","April 10, 2026 4:45",As Soon As Possible,NA,NA,NA,4/29/26 1:17,2h,2h,0h,0,0,0,0,0,1.2.3.2.52.5,500,No,No,No,,,Black,,,,,,,,0,0,0,0d,0d,0d,No,No,No,No,No,No,No,No,No,No,No,0,0,0,0,0,
1315,3263,Yes,Auto Scheduled,Post Load Validation,3h,Fixed Units,6,0.38d,1314,"June 11, 2026 2:00","June 11, 2026 5:00",6/11/26 2:00,6/11/26 5:00,5/15/26 4:29,5/18/26 10:29,0h,-149.52h,0ed,0,NA,NA,"April 10, 2026 4:45","April 13, 2026 10:45",As Soon As Possible,NA,NA,NA,4/29/26 1:17,3h,3h,0h,0,0,0,0,0,1.2.3.2.52.6,500,No,No,No,,Brian Wagner,Black,,,,,,,,0,0,0,0d,0d,0d,No,No,No,No,No,No,No,No,No,No,No,0,0,0,0,0,
1316,3264,Yes,Auto Scheduled,PTM_CM50_Material Class,2.13d,Fixed Duration,5,0.25d,,"June 12, 2026 8:15","June 16, 2026 9:15",6/12/26 8:15,6/16/26 9:15,5/14/26 9:29,5/18/26 10:29,0d,-20.85d,0ed,0,NA,NA,"April 16, 2026 10:45","April 16, 2026 1:45",As Soon As Possible,NA,NA,NA,4/29/26 1:17,17h,2h,0h,0,0,0,0,0,1.2.3.2.53,500,No,Yes,Yes,,,Black,,,,,,,,0,0,0,0d,0d,0d,No,No,No,No,No,No,No,No,No,No,No,0,0,0,0,0,
1317,3265,Yes,Auto Scheduled,"Manual File Staged and Posted ""Ready""",30m,Fixed Units,6,0.06d,1222,"June 12, 2026 8:15","June 12, 2026 8:45",6/12/26 8:15,6/12/26 8:45,5/14/26 9:29,5/14/26 9:59,0m,-10006m,0ed,0,NA,NA,"April 16, 2026 10:45","April 16, 2026 11:15",As Soon As Possible,NA,NA,NA,4/29/26 1:17,0.5h,0.5h,0h,0,0,0,0,0,1.2.3.2.53.1,500,No,No,No,,,Black,,,,,,,,0,0,0,0d,0d,0d,No,No,No,No,No,No,No,No,No,No,No,0,0,0,0,0,
1318,3266,Yes,Auto Scheduled,Load,30m,Fixed Units,6,0.06d,1317,"June 12, 2026 8:45","June 12, 2026 9:15",6/12/26 8:45,6/12/26 9:15,5/14/26 9:59,5/14/26 10:29,0m,-10006m,0ed,0,NA,NA,"April 16, 2026 11:15","April 16, 2026 11:45",As Soon As Possible,NA,NA,NA,4/29/26 1:17,0.5h,0.5h,0h,0,0,0,0,0,1.2.3.2.53.2,500,No,No,No,,"Matt Palastro, Dave Duda",Black,,,,,,,,0,0,0,0d,0d,0d,No,No,No,No,No,No,No,No,No,No,No,0,0,0,0,0,
1319,3267,Yes,Auto Scheduled,Post Load Validation,16h,Fixed Units,6,0.13d,1318,"June 12, 2026 9:15","June 16, 2026 9:15",6/12/26 9:15,6/16/26 9:15,5/14/26 10:29,5/18/26 10:29,0h,-166.77h,0ed,0,NA,NA,"April 16, 2026 11:45","April 16, 2026 1:45",As Soon As Possible,NA,NA,NA,4/29/26 1:17,16h,1h,0h,0,0,0,0,0,1.2.3.2.53.3,500,No,No,No,,brad,Black,,,,,,,,0,0,0,0d,0d,0d,No,No,No,No,No,No,No,No,No,No,No,0,0,0,0,0,
1320,3268,Yes,Auto Scheduled,PTM_CM55_Class assignment to materials,1.13d,Fixed Duration,5,1.13d,,"June 12, 2026 8:45","June 15, 2026 9:45",6/12/26 8:45,6/15/26 9:45,5/15/26 9:29,5/18/26 10:29,0d,-19.91d,0ed,0,NA,NA,"April 16, 2026 11:15","April 17, 2026 1:15",As Soon As Possible,NA,NA,NA,4/29/26 1:17,9h,9h,0h,0,0,0,0,0,1.2.3.2.54,500,No,Yes,Yes,,,Black,,,,,,,,0,0,0,0d,0d,0d,No,No,No,No,No,No,No,No,No,No,No,0,0,0,0,0,
1321,3269,Yes,Auto Scheduled,"Load File Staged and Posted ""Ready""",30m,Fixed Units,6,0.06d,1317,"June 12, 2026 8:45","June 12, 2026 9:15",6/12/26 8:45,6/12/26 9:15,5/15/26 9:29,5/15/26 9:59,0m,-9556m,0ed,0,NA,NA,"April 16, 2026 11:15","April 16, 2026 11:45",As Soon As Possible,NA,NA,NA,4/29/26 1:17,0.5h,0.5h,0h,0,0,0,0,0,1.2.3.2.54.1,500,No,No,No,,,Black,,,,,,,,0,0,0,0d,0d,0d,No,No,No,No,No,No,No,No,No,No,No,0,0,0,0,0,
1322,3270,Yes,Auto Scheduled,Pre Load Validation,30m,Fixed Units,6,0.06d,1321,"June 12, 2026 9:15","June 12, 2026 9:45",6/12/26 9:15,6/12/26 9:45,5/15/26 9:59,5/15/26 10:29,0m,-9556m,0ed,0,NA,NA,"April 16, 2026 11:45","April 16, 2026 1:15",As Soon As Possible,NA,NA,NA,4/29/26 1:17,0.5h,0.5h,0h,0,0,0,0,0,1.2.3.2.54.2,500,No,No,No,,"Matt Palastro, Dave Duda",Black,,,,,,,,0,0,0,0d,0d,0d,No,No,No,No,No,No,No,No,No,No,No,0,0,0,0,0,
1323,3271,Yes,Auto Scheduled,Simulate Load,1h,Fixed Units,6,0.13d,1322,"June 12, 2026 9:45","June 12, 2026 10:45",6/12/26 9:45,6/12/26 10:45,5/15/26 10:29,5/15/26 11:29,0h,-159.27h,0ed,0,NA,NA,"April 16, 2026 1:15","April 16, 2026 2:15",As Soon As Possible,NA,NA,NA,4/29/26 1:17,1h,1h,0h,0,0,0,0,0,1.2.3.2.54.3,500,No,No,No,,,Black,,,,,,,,0,0,0,0d,0d,0d,No,No,No,No,No,No,No,No,No,No,No,0,0,0,0,0,
1324,3272,Yes,Auto Scheduled,Error and Defect Mitigation,2h,Fixed Units,6,0.25d,1323,"June 12, 2026 10:45","June 12, 2026 1:45",6/12/26 10:45,6/12/26 1:45,5/15/26 11:29,5/15/26 2:29,0h,-159.27h,0ed,0,NA,NA,"April 16, 2026 2:15","April 16, 2026 4:15",As Soon As Possible,NA,NA,NA,4/29/26 1:17,2h,2h,0h,0,0,0,0,0,1.2.3.2.54.4,500,No,No,No,,"Matt Palastro, Dave Duda",Black,,,,,,,,0,0,0,0d,0d,0d,No,No,No,No,No,No,No,No,No,No,No,0,0,0,0,0,
1325,3273,Yes,Auto Scheduled,Load,2h,Fixed Units,6,0.25d,1324,"June 12, 2026 1:45","June 12, 2026 3:45",6/12/26 1:45,6/12/26 3:45,5/15/26 2:29,5/15/26 4:29,0h,-159.27h,0ed,0,NA,NA,"April 16, 2026 4:15","April 17, 2026 9:15",As Soon As Possible,NA,NA,NA,4/29/26 1:17,2h,2h,0h,0,0,0,0,0,1.2.3.2.54.5,500,No,No,No,,,Black,,,,,,,,0,0,0,0d,0d,0d,No,No,No,No,No,No,No,No,No,No,No,0,0,0,0,0,
1326,3274,Yes,Auto Scheduled,Post Load Validation,3h,Fixed Units,6,0.38d,1325,"June 12, 2026 3:45","June 15, 2026 9:45",6/12/26 3:45,6/15/26 9:45,5/15/26 4:29,5/18/26 10:29,0h,-159.27h,0ed,0,NA,NA,"April 17, 2026 9:15","April 17, 2026 1:15",As Soon As Possible,NA,NA,NA,4/29/26 1:17,3h,3h,0h,0,0,0,0,0,1.2.3.2.54.6,500,No,No,No,,"Matt Palastro, Dave Duda",Black,,,,,,,,0,0,0,0d,0d,0d,No,No,No,No,No,No,No,No,No,No,No,0,0,0,0,0,
1327,3275,Yes,Auto Scheduled,GTS - Material initial load from S4 (Run Interface),2.09d,Fixed Duration,5,0.25d,,"June 11, 2026 2:45","June 15, 2026 3:30",6/11/26 2:45,6/15/26 3:30,5/8/26 4:29,5/13/26 8:14,0d,-23.78d,0ed,0,NA,NA,"April 16, 2026 8:15","April 16, 2026 10:15",As Soon As Possible,NA,NA,NA,4/29/26 1:17,16.75h,2h,0h,0,0,0,0,0,1.2.3.2.55,500,No,Yes,Yes,,,Black,,,,,,,,0,0,0,0d,0d,0d,No,No,No,No,No,No,No,No,No,No,No,0,0,0,0,0,
1328,3276,Yes,Auto Scheduled,Run material interface to GTS,15.75h,Fixed Units,6,0.13d,1196,"June 11, 2026 2:45","June 15, 2026 2:30",6/11/26 2:45,6/15/26 2:30,5/8/26 4:29,5/12/26 4:14,0h,-190.27h,0ed,0,NA,NA,"April 16, 2026 8:15","April 16, 2026 9:15",As Soon As Possible,NA,NA,NA,4/29/26 1:17,15.75h,1h,0h,0,0,0,0,0,1.2.3.2.55.1,500,No,No,No,,,Black,,,,,,,,0,0,0,0d,0d,0d,No,No,No,No,No,No,No,No,No,No,No,0,0,0,0,0,
1329,3277,Yes,Auto Scheduled,Post Load Validation,1h,Fixed Units,6,0.13d,1328,"June 15, 2026 2:30","June 15, 2026 3:30",6/15/26 2:30,6/15/26 3:30,5/12/26 4:14,5/13/26 8:14,0h,-190.27h,0ed,0,NA,NA,"April 16, 2026 9:15","April 16, 2026 10:15",As Soon As Possible,NA,NA,NA,4/29/26 1:17,1h,1h,0h,0,0,0,0,0,1.2.3.2.55.2,500,No,No,No,,Kim Kolesar,Black,,,,,,,,0,0,0,0d,0d,0d,No,No,No,No,No,No,No,No,No,No,No,0,0,0,0,0,
1330,3278,Yes,Auto Scheduled,GTS - Customers  initial load from S4 (Run Interface),0.25d,Fixed Duration,5,0.25d,,"June 8, 2026 10:00","June 8, 2026 12:00",6/8/26 10:00,6/8/26 12:00,5/18/26 8:29,5/18/26 10:29,0d,-15.19d,0ed,0,NA,NA,"April 10, 2026 1:45","April 10, 2026 3:45",As Soon As Possible,NA,NA,NA,4/29/26 1:17,2h,2h,0h,0,0,0,0,0,1.2.3.2.56,500,No,Yes,Yes,,,Black,,,,,,,,0,0,0,0d,0d,0d,No,No,No,No,No,No,No,No,No,No,No,0,0,0,0,0,
1331,3279,Yes,Auto Scheduled,Run material interface to GTS,1h,Fixed Units,6,0.13d,,"June 8, 2026 10:00","June 8, 2026 11:00",6/8/26 10:00,6/8/26 11:00,5/18/26 8:29,5/18/26 9:29,0h,-121.52h,0ed,0,NA,NA,"April 10, 2026 1:45","April 10, 2026 2:45",As Soon As Possible,NA,NA,NA,4/29/26 1:17,1h,1h,0h,0,0,0,0,0,1.2.3.2.56.1,500,No,No,No,,,Black,,,,,,,,0,0,0,0d,0d,0d,No,No,No,No,No,No,No,No,No,No,No,0,0,0,0,0,
1332,3280,Yes,Auto Scheduled,Post Load Validation,1h,Fixed Units,6,0.13d,1331,"June 8, 2026 11:00","June 8, 2026 12:00",6/8/26 11:00,6/8/26 12:00,5/18/26 9:29,5/18/26 10:29,0h,-121.52h,0ed,0,NA,NA,"April 10, 2026 2:45","April 10, 2026 3:45",As Soon As Possible,NA,NA,NA,4/29/26 1:17,1h,1h,0h,0,0,0,0,0,1.2.3.2.56.2,500,No,No,No,,Kim Kolesar,Black,,,,,,,,0,0,0,0d,0d,0d,No,No,No,No,No,No,No,No,No,No,No,0,0,0,0,0,
1333,3281,Yes,Auto Scheduled,GTS - Vendors  initial load from S4 (Run Interface),0.25d,Fixed Duration,5,0.25d,,"June 9, 2026 9:00","June 9, 2026 11:00",6/9/26 9:00,6/9/26 11:00,5/15/26 2:29,5/18/26 10:29,0d,-16.44d,0ed,0,NA,NA,"April 15, 2026 2:00","April 15, 2026 4:00",As Soon As Possible,NA,NA,NA,4/29/26 1:17,2h,2h,0h,0,0,0,0,0,1.2.3.2.57,500,No,Yes,Yes,,,Black,,,,,,,,0,0,0,0d,0d,0d,No,No,No,No,No,No,No,No,No,No,No,0,0,0,0,0,
1334,3282,Yes,Auto Scheduled,Run material interface to GTS,1h,Fixed Units,6,0.13d,1139,"June 9, 2026 9:00","June 9, 2026 10:00",6/9/26 9:00,6/9/26 10:00,5/15/26 2:29,5/15/26 3:29,0h,-131.52h,0ed,0,NA,NA,"April 15, 2026 2:00","April 15, 2026 3:00",As Soon As Possible,NA,NA,NA,4/29/26 1:17,1h,1h,0h,0,0,0,0,0,1.2.3.2.57.1,500,No,No,No,,,Black,,,,,,,,0,0,0,0d,0d,0d,No,No,No,No,No,No,No,No,No,No,No,0,0,0,0,0,
1335,3283,Yes,Auto Scheduled,Post Load Validation,1h,Fixed Units,6,0.13d,1334,"June 9, 2026 10:00","June 9, 2026 11:00",6/9/26 10:00,6/9/26 11:00,5/18/26 9:29,5/18/26 10:29,0h,-128.52h,0ed,0,NA,NA,"April 15, 2026 3:00","April 15, 2026 4:00",As Soon As Possible,NA,NA,NA,4/29/26 1:17,1h,1h,0h,0,0,0,0,0,1.2.3.2.57.2,500,No,No,No,,Kim Kolesar,Black,,,,,,,,0,0,0,0d,0d,0d,No,No,No,No,No,No,No,No,No,No,No,0,0,0,0,0,
1336,3284,Yes,Auto Scheduled,GTS - ECCN - Create,1.13d,Fixed Duration,5,5.63d,,"June 8, 2026 10:00","June 9, 2026 11:00",6/8/26 10:00,6/9/26 11:00,5/15/26 3:29,5/18/26 10:29,0d,-16.06d,0ed,0,NA,NA,"April 6, 2026 8:15","April 13, 2026 2:15",As Soon As Possible,NA,NA,NA,4/29/26 1:17,2h,2h,0h,0,0,0,0,0,1.2.3.2.58,500,No,Yes,Yes,,,Black,,,,,,,,0,0,0,0d,0d,0d,No,No,No,No,No,No,No,No,No,No,No,0,0,0,0,0,
1337,3285,Yes,Auto Scheduled,Load Descartes XML File,1h,Fixed Units,6,0.13d,,"June 8, 2026 10:00","June 8, 2026 11:00",6/8/26 10:00,6/8/26 11:00,5/18/26 9:29,5/18/26 10:29,0h,-120.52h,0ed,0,NA,NA,"April 6, 2026 8:15","April 6, 2026 9:15",As Soon As Possible,NA,NA,NA,4/29/26 1:17,1h,1h,0h,0,0,0,0,0,1.2.3.2.58.1,500,No,No,No,,,Black,,,,,,,,0,0,0,0d,0d,0d,No,No,No,No,No,No,No,No,No,No,No,0,0,0,0,0,
1338,3286,Yes,Auto Scheduled,Post Load Validation,1h,Fixed Units,6,0.13d,1334,"June 9, 2026 10:00","June 9, 2026 11:00",6/9/26 10:00,6/9/26 11:00,5/15/26 3:29,5/15/26 4:29,0h,-131.52h,0ed,0,NA,NA,"April 13, 2026 1:15","April 13, 2026 2:15",As Soon As Possible,NA,NA,NA,4/29/26 1:17,1h,1h,0h,0,0,0,0,0,1.2.3.2.58.2,500,No,No,No,,Kim Kolesar,Black,,,,,,,,0,0,0,0d,0d,0d,No,No,No,No,No,No,No,No,No,No,No,0,0,0,0,0,
1339,3287,Yes,Auto Scheduled,GTS - ECCN - Assign,0.25d,Fixed Duration,5,0.25d,,"June 15, 2026 3:30","June 16, 2026 8:30",6/15/26 3:30,6/16/26 8:30,5/13/26 8:14,5/13/26 10:14,0d,-23.78d,0ed,0,NA,NA,"April 16, 2026 10:15","April 16, 2026 1:15",As Soon As Possible,NA,NA,NA,4/29/26 1:17,2h,2h,0h,0,0,0,0,0,1.2.3.2.59,500,No,Yes,Yes,,,Black,,,,,,,,0,0,0,0d,0d,0d,No,No,No,No,No,No,No,No,No,No,No,0,0,0,0,0,
1340,3288,Yes,Auto Scheduled,Load Descartes XML File,1h,Fixed Units,6,0.13d,1329,"June 15, 2026 3:30","June 15, 2026 4:30",6/15/26 3:30,6/15/26 4:30,5/13/26 8:14,5/13/26 9:14,0h,-190.27h,0ed,0,NA,NA,"April 16, 2026 10:15","April 16, 2026 11:15",As Soon As Possible,NA,NA,NA,4/29/26 1:17,1h,1h,0h,0,0,0,0,0,1.2.3.2.59.1,500,No,No,No,,,Black,,,,,,,,0,0,0,0d,0d,0d,No,No,No,No,No,No,No,No,No,No,No,0,0,0,0,0,
1341,3289,Yes,Auto Scheduled,Post Load Validation,1h,Fixed Units,6,0.13d,1340,"June 15, 2026 4:30","June 16, 2026 8:30",6/15/26 4:30,6/16/26 8:30,5/13/26 9:14,5/13/26 10:14,0h,-190.27h,0ed,0,NA,NA,"April 16, 2026 11:15","April 16, 2026 1:15",As Soon As Possible,NA,NA,NA,4/29/26 1:17,1h,1h,0h,0,0,0,0,0,1.2.3.2.59.2,500,No,No,No,,Kim Kolesar,Black,,,,,,,,0,0,0,0d,0d,0d,No,No,No,No,No,No,No,No,No,No,No,0,0,0,0,0,
1342,3290,Yes,Auto Scheduled,GTS - HTS - Create,0.25d,Fixed Duration,5,0.25d,,"June 8, 2026 10:00","June 8, 2026 12:00",6/8/26 10:00,6/8/26 12:00,5/18/26 8:29,5/18/26 10:29,0d,-15.19d,0ed,0,NA,NA,"April 6, 2026 8:15","April 6, 2026 10:15",As Soon As Possible,NA,NA,NA,4/29/26 1:17,2h,2h,0h,0,0,0,0,0,1.2.3.2.60,500,No,Yes,Yes,,,Black,,,,,,,,0,0,0,0d,0d,0d,No,No,No,No,No,No,No,No,No,No,No,0,0,0,0,0,
1343,3291,Yes,Auto Scheduled,Load Descartes XML File,1h,Fixed Units,6,0.13d,,"June 8, 2026 10:00","June 8, 2026 11:00",6/8/26 10:00,6/8/26 11:00,5/18/26 8:29,5/18/26 9:29,0h,-121.52h,0ed,0,NA,NA,"April 6, 2026 8:15","April 6, 2026 9:15",As Soon As Possible,NA,NA,NA,4/29/26 1:17,1h,1h,0h,0,0,0,0,0,1.2.3.2.60.1,500,No,No,No,,,Black,,,,,,,,0,0,0,0d,0d,0d,No,No,No,No,No,No,No,No,No,No,No,0,0,0,0,0,
1344,3292,Yes,Auto Scheduled,Post Load Validation,1h,Fixed Units,6,0.13d,1343,"June 8, 2026 11:00","June 8, 2026 12:00",6/8/26 11:00,6/8/26 12:00,5/18/26 9:29,5/18/26 10:29,0h,-121.52h,0ed,0,NA,NA,"April 6, 2026 9:15","April 6, 2026 10:15",As Soon As Possible,NA,NA,NA,4/29/26 1:17,1h,1h,0h,0,0,0,0,0,1.2.3.2.60.2,500,No,No,No,,Kim Kolesar,Black,,,,,,,,0,0,0,0d,0d,0d,No,No,No,No,No,No,No,No,No,No,No,0,0,0,0,0,
1345,3293,Yes,Auto Scheduled,GTS - HTS - Assign,0.25d,Fixed Duration,5,0.25d,,"June 16, 2026 8:30","June 16, 2026 10:30",6/16/26 8:30,6/16/26 10:30,5/13/26 10:14,5/13/26 1:14,0d,-23.78d,0ed,0,NA,NA,"April 16, 2026 8:45","April 16, 2026 10:45",As Soon As Possible,NA,NA,NA,4/29/26 1:17,2h,2h,0h,0,0,0,0,0,1.2.3.2.61,500,No,Yes,Yes,,,Black,,,,,,,,0,0,0,0d,0d,0d,No,No,No,No,No,No,No,No,No,No,No,0,0,0,0,0,
1346,3294,Yes,Auto Scheduled,Load Descartes XML File,1h,Fixed Units,6,0.13d,1341,"June 16, 2026 8:30","June 16, 2026 9:30",6/16/26 8:30,6/16/26 9:30,5/13/26 10:14,5/13/26 11:14,0h,-190.27h,0ed,0,NA,NA,"April 16, 2026 8:45","April 16, 2026 9:45",As Soon As Possible,NA,NA,NA,4/29/26 1:17,1h,1h,0h,0,0,0,0,0,1.2.3.2.61.1,500,No,No,No,,,Black,,,,,,,,0,0,0,0d,0d,0d,No,No,No,No,No,No,No,No,No,No,No,0,0,0,0,0,
1347,3295,Yes,Auto Scheduled,Post Load Validation,1h,Fixed Units,6,0.13d,1346,"June 16, 2026 9:30","June 16, 2026 10:30",6/16/26 9:30,6/16/26 10:30,5/13/26 11:14,5/13/26 1:14,0h,-190.27h,0ed,0,NA,NA,"April 16, 2026 9:45","April 16, 2026 10:45",As Soon As Possible,NA,NA,NA,4/29/26 1:17,1h,1h,0h,0,0,0,0,0,1.2.3.2.61.2,500,No,No,No,,Kim Kolesar,Black,,,,,,,,0,0,0,0d,0d,0d,No,No,No,No,No,No,No,No,No,No,No,0,0,0,0,0,
1348,3296,Yes,Auto Scheduled,GTS - License - Create,0.25d,Fixed Duration,5,0.25d,,"June 16, 2026 11:30","June 16, 2026 2:30",6/16/26 11:30,6/16/26 2:30,5/18/26 8:29,5/18/26 10:29,0d,-21.38d,0ed,0,NA,NA,"April 16, 2026 11:45","April 16, 2026 2:45",As Soon As Possible,NA,NA,NA,4/29/26 1:17,2h,2h,0h,0,0,0,0,0,1.2.3.2.62,500,No,Yes,Yes,,,Black,,,,,,,,0,0,0,0d,0d,0d,No,No,No,No,No,No,No,No,No,No,No,0,0,0,0,0,
1349,3297,Yes,Auto Scheduled,Load Descartes XML File,1h,Fixed Units,6,0.13d,"1346,1362","June 16, 2026 11:30","June 16, 2026 1:30",6/16/26 11:30,6/16/26 1:30,5/18/26 8:29,5/18/26 9:29,0h,-171.02h,0ed,0,NA,NA,"April 16, 2026 11:45","April 16, 2026 1:45",As Soon As Possible,NA,NA,NA,4/29/26 1:17,1h,1h,0h,0,0,0,0,0,1.2.3.2.62.1,500,No,No,No,,,Black,,,,,,,,0,0,0,0d,0d,0d,No,No,No,No,No,No,No,No,No,No,No,0,0,0,0,0,
1350,3298,Yes,Auto Scheduled,Post Load Validation,1h,Fixed Units,6,0.13d,1349,"June 16, 2026 1:30","June 16, 2026 2:30",6/16/26 1:30,6/16/26 2:30,5/18/26 9:29,5/18/26 10:29,0h,-171.02h,0ed,0,NA,NA,"April 16, 2026 1:45","April 16, 2026 2:45",As Soon As Possible,NA,NA,NA,4/29/26 1:17,1h,1h,0h,0,0,0,0,0,1.2.3.2.62.2,500,No,No,No,,Kim Kolesar,Black,,,,,,,,0,0,0,0d,0d,0d,No,No,No,No,No,No,No,No,No,No,No,0,0,0,0,0,
1351,3299,Yes,Auto Scheduled,Commodity Code/Tarif,2.78d,Fixed Duration,5,0.25d,,"June 16, 2026 10:30","June 19, 2026 8:45",6/16/26 10:30,6/19/26 8:45,5/13/26 1:14,5/18/26 10:29,0d,-23.78d,0ed,0,NA,NA,"April 16, 2026 10:45","April 16, 2026 1:45",As Soon As Possible,NA,NA,NA,4/29/26 1:17,22.25h,2h,0h,0,0,0,0,0,1.2.3.2.63,500,No,Yes,Yes,,,Black,,,,,,,,0,0,0,0d,0d,0d,No,No,No,No,No,No,No,No,No,No,No,0,0,0,0,0,
1352,3300,Yes,Auto Scheduled,Load,21.25h,Fixed Units,6,0.13d,1347,"June 16, 2026 10:30","June 18, 2026 4:45",6/16/26 10:30,6/18/26 4:45,5/13/26 1:14,5/18/26 9:29,0h,-190.27h,0ed,0,NA,NA,"April 16, 2026 10:45","April 16, 2026 11:45",As Soon As Possible,NA,NA,NA,4/29/26 1:17,21.25h,1h,0h,0,0,0,0,0,1.2.3.2.63.1,500,No,No,No,,,Black,,,,,,,,0,0,0,0d,0d,0d,No,No,No,No,No,No,No,No,No,No,No,0,0,0,0,0,
1353,3301,Yes,Auto Scheduled,Post Load Validation,1h,Fixed Units,6,0.13d,1352,"June 18, 2026 4:45","June 19, 2026 8:45",6/18/26 4:45,6/19/26 8:45,5/18/26 9:29,5/18/26 10:29,0h,-190.27h,0ed,0,NA,NA,"April 16, 2026 11:45","April 16, 2026 1:45",As Soon As Possible,NA,NA,NA,4/29/26 1:17,1h,1h,0h,0,0,0,0,0,1.2.3.2.63.2,500,No,No,No,,Kim Kolesar,Black,,,,,,,,0,0,0,0d,0d,0d,No,No,No,No,No,No,No,No,No,No,No,0,0,0,0,0,
1354,3302,Yes,Auto Scheduled,SPL Master File,0.25d,Fixed Duration,5,0.25d,,"June 16, 2026 9:30","June 16, 2026 11:30",6/16/26 9:30,6/16/26 11:30,5/18/26 8:29,5/18/26 10:29,0d,-21.13d,0ed,0,NA,NA,"March 13, 2025 8:00","March 13, 2025 10:00",As Soon As Possible,NA,NA,NA,4/29/26 1:17,2h,2h,0h,0,0,0,0,0,1.2.3.2.64,500,No,Yes,Yes,,,Black,,,,,,,,0,0,0,0d,0d,0d,No,No,No,No,No,No,No,No,No,No,No,0,0,0,0,0,
1355,3303,Yes,Auto Scheduled,Load,1h,Fixed Units,6,0.13d,1346,"June 16, 2026 9:30","June 16, 2026 10:30",6/16/26 9:30,6/16/26 10:30,5/18/26 8:29,5/18/26 9:29,0h,-169.02h,0ed,0,NA,NA,"March 13, 2025 8:00","March 13, 2025 9:00",As Soon As Possible,NA,NA,NA,4/29/26 1:17,1h,1h,0h,0,0,0,0,0,1.2.3.2.64.1,500,No,No,No,,,Black,,,,,,,,0,0,0,0d,0d,0d,No,No,No,No,No,No,No,No,No,No,No,0,0,0,0,0,
1356,3304,Yes,Auto Scheduled,Post Load Validation,1h,Fixed Units,6,0.13d,1355,"June 16, 2026 10:30","June 16, 2026 11:30",6/16/26 10:30,6/16/26 11:30,5/18/26 9:29,5/18/26 10:29,0h,-169.02h,0ed,0,NA,NA,"March 13, 2025 9:00","March 13, 2025 10:00",As Soon As Possible,NA,NA,NA,4/29/26 1:17,1h,1h,0h,0,0,0,0,0,1.2.3.2.64.2,500,No,No,No,,Kim Kolesar,Black,,,,,,,,0,0,0,0d,0d,0d,No,No,No,No,No,No,No,No,No,No,No,0,0,0,0,0,
1357,3305,Yes,Auto Scheduled,Initialize Embargo situation,0.38d,Fixed Duration,5,0.38d,,"June 9, 2026 11:00","June 9, 2026 3:00",6/9/26 11:00,6/9/26 3:00,5/15/26 4:29,5/18/26 10:29,0d,-16.44d,0ed,0,NA,NA,"April 13, 2026 2:15","April 14, 2026 8:15",As Soon As Possible,NA,NA,NA,4/29/26 1:17,3h,3h,0h,0,0,0,0,0,1.2.3.2.65,500,No,Yes,Yes,,,Black,,,,,,,,0,0,0,0d,0d,0d,No,No,No,No,No,No,No,No,No,No,No,0,0,0,0,0,
1358,3306,Yes,Auto Scheduled,Run report /SAPSLL/EMB_CNTRY_INIT,1h,Fixed Units,6,0.13d,1338,"June 9, 2026 11:00","June 9, 2026 12:00",6/9/26 11:00,6/9/26 12:00,5/15/26 4:29,5/18/26 8:29,0h,-131.52h,0ed,0,NA,NA,"April 13, 2026 2:15","April 13, 2026 3:15",As Soon As Possible,NA,NA,NA,4/29/26 1:17,1h,1h,0h,0,0,0,0,0,1.2.3.2.65.1,500,No,No,No,,,Black,,,,,,,,0,0,0,0d,0d,0d,No,No,No,No,No,No,No,No,No,No,No,0,0,0,0,0,
1359,3307,Yes,Auto Scheduled,Set Embargo situations,1h,Fixed Units,6,0.13d,1358,"June 9, 2026 1:00","June 9, 2026 2:00",6/9/26 1:00,6/9/26 2:00,5/18/26 8:29,5/18/26 9:29,0h,-131.52h,0ed,0,NA,NA,"April 13, 2026 3:15","April 13, 2026 4:15",As Soon As Possible,NA,NA,NA,4/29/26 1:17,1h,1h,0h,0,0,0,0,0,1.2.3.2.65.2,500,No,No,No,,,Black,,,,,,,,0,0,0,0d,0d,0d,No,No,No,No,No,No,No,No,No,No,No,0,0,0,0,0,
1360,3308,Yes,Auto Scheduled,Post Load Validation,1h,Fixed Units,6,0.13d,1359,"June 9, 2026 2:00","June 9, 2026 3:00",6/9/26 2:00,6/9/26 3:00,5/18/26 9:29,5/18/26 10:29,0h,-131.52h,0ed,0,NA,NA,"April 13, 2026 4:15","April 14, 2026 8:15",As Soon As Possible,NA,NA,NA,4/29/26 1:17,1h,1h,0h,0,0,0,0,0,1.2.3.2.65.3,500,No,No,No,,Kim Kolesar,Black,,,,,,,,0,0,0,0d,0d,0d,No,No,No,No,No,No,No,No,No,No,No,0,0,0,0,0,
1361,3309,Yes,Auto Scheduled,GTS - SPL (Sanctioned party list),0.25d,Fixed Duration,5,0.25d,,"June 16, 2026 10:30","June 16, 2026 1:30",6/16/26 10:30,6/16/26 1:30,5/15/26 4:29,5/18/26 10:29,0d,-21.38d,0ed,0,NA,NA,"April 16, 2026 10:45","April 16, 2026 1:45",As Soon As Possible,NA,NA,NA,4/29/26 1:17,2h,2h,0h,0,0,0,0,0,1.2.3.2.66,500,No,Yes,Yes,,,Black,,,,,,,,0,0,0,0d,0d,0d,No,No,No,No,No,No,No,No,No,No,No,0,0,0,0,0,
1362,3310,Yes,Auto Scheduled,Load Descartes XML File,1h,Fixed Units,6,0.13d,1347,"June 16, 2026 10:30","June 16, 2026 11:30",6/16/26 10:30,6/16/26 11:30,5/15/26 4:29,5/18/26 8:29,0h,-171.02h,0ed,0,NA,NA,"April 16, 2026 10:45","April 16, 2026 11:45",As Soon As Possible,NA,NA,NA,4/29/26 1:17,1h,1h,0h,0,0,0,0,0,1.2.3.2.66.1,500,No,No,No,,,Black,,,,,,,,0,0,0,0d,0d,0d,No,No,No,No,No,No,No,No,No,No,No,0,0,0,0,0,
1363,3311,Yes,Auto Scheduled,Post Load Validation,1h,Fixed Units,6,0.13d,1362,"June 16, 2026 11:30","June 16, 2026 1:30",6/16/26 11:30,6/16/26 1:30,5/18/26 9:29,5/18/26 10:29,0h,-170.02h,0ed,0,NA,NA,"April 16, 2026 11:45","April 16, 2026 1:45",As Soon As Possible,NA,NA,NA,4/29/26 1:17,1h,1h,0h,0,0,0,0,0,1.2.3.2.66.2,500,No,No,No,,Kim Kolesar,Black,,,,,,,,0,0,0,0d,0d,0d,No,No,No,No,No,No,No,No,No,No,No,0,0,0,0,0,
1364,3312,Yes,Auto Scheduled,RTR_CM17_Project Definition / Builder,1.13d,Fixed Duration,5,5.38d,,"June 8, 2026 10:30","June 9, 2026 11:30",6/8/26 10:30,6/9/26 11:30,5/15/26 8:59,5/18/26 10:29,0d,-16.19d,0ed,0,NA,NA,"April 10, 2026 10:15","April 17, 2026 2:15",As Soon As Possible,NA,NA,NA,4/29/26 1:17,9h,9h,0h,0,0,0,0,0,1.2.3.2.67,500,No,Yes,Yes,,,Black,,,,,,,,0,0,0,0d,0d,0d,No,No,No,No,No,No,No,No,No,No,No,0,0,0,0,0,
1365,3313,Yes,Auto Scheduled,"Load File Staged and Posted ""Ready""",30m,Fixed Units,6,0.06d,1310,"June 8, 2026 10:30","June 8, 2026 11:00",6/8/26 10:30,6/8/26 11:00,5/15/26 8:59,5/15/26 9:29,0m,-7771m,0ed,0,NA,NA,"April 10, 2026 10:15","April 10, 2026 10:45",As Soon As Possible,NA,NA,NA,4/29/26 1:17,0.5h,0.5h,0h,0,0,0,0,0,1.2.3.2.67.1,500,No,No,No,,,Black,,,,,,,,0,0,0,0d,0d,0d,No,No,No,No,No,No,No,No,No,No,No,0,0,0,0,0,
1366,3314,Yes,Auto Scheduled,Pre Load Validation,30m,Fixed Units,6,0.06d,1365,"June 8, 2026 11:00","June 8, 2026 11:30",6/8/26 11:00,6/8/26 11:30,5/15/26 9:59,5/15/26 10:29,0m,-7741m,0ed,0,NA,NA,"April 10, 2026 10:45","April 10, 2026 11:15",As Soon As Possible,NA,NA,NA,4/29/26 1:17,0.5h,0.5h,0h,0,0,0,0,0,1.2.3.2.67.2,500,No,No,No,,Brian Wagner,Black,,,,,,,,0,0,0,0d,0d,0d,No,No,No,No,No,No,No,No,No,No,No,0,0,0,0,0,
1367,3315,Yes,Auto Scheduled,Simulate Load,1h,Fixed Units,6,0.13d,1366,"June 8, 2026 11:30","June 8, 2026 1:30",6/8/26 11:30,6/8/26 1:30,5/15/26 10:29,5/15/26 11:29,0h,-129.02h,0ed,0,NA,NA,"April 16, 2026 2:15","April 16, 2026 3:15",As Soon As Possible,NA,NA,NA,4/29/26 1:17,1h,1h,0h,0,0,0,0,0,1.2.3.2.67.3,500,No,No,No,,,Black,,,,,,,,0,0,0,0d,0d,0d,No,No,No,No,No,No,No,No,No,No,No,0,0,0,0,0,
1368,3316,Yes,Auto Scheduled,Error and Defect Mitigation,2h,Fixed Units,6,0.25d,1367,"June 8, 2026 1:30","June 8, 2026 3:30",6/8/26 1:30,6/8/26 3:30,5/15/26 11:29,5/15/26 2:29,0h,-129.02h,0ed,0,NA,NA,"April 16, 2026 3:15","April 17, 2026 8:15",As Soon As Possible,NA,NA,NA,4/29/26 1:17,2h,2h,0h,0,0,0,0,0,1.2.3.2.67.4,500,No,No,No,,Brian Wagner,Black,,,,,,,,0,0,0,0d,0d,0d,No,No,No,No,No,No,No,No,No,No,No,0,0,0,0,0,
1369,3317,Yes,Auto Scheduled,Load,2h,Fixed Units,6,0.25d,1368,"June 8, 2026 3:30","June 9, 2026 8:30",6/8/26 3:30,6/9/26 8:30,5/15/26 2:29,5/15/26 4:29,0h,-129.02h,0ed,0,NA,NA,"April 17, 2026 8:15","April 17, 2026 10:15",As Soon As Possible,NA,NA,NA,4/29/26 1:17,2h,2h,0h,0,0,0,0,0,1.2.3.2.67.5,500,No,No,No,,,Black,,,,,,,,0,0,0,0d,0d,0d,No,No,No,No,No,No,No,No,No,No,No,0,0,0,0,0,
1370,3318,Yes,Auto Scheduled,Post Load Validation,3h,Fixed Units,6,0.38d,1369,"June 9, 2026 8:30","June 9, 2026 11:30",6/9/26 8:30,6/9/26 11:30,5/15/26 4:29,5/18/26 10:29,0h,-129.02h,0ed,0,NA,NA,"April 17, 2026 10:15","April 17, 2026 2:15",As Soon As Possible,NA,NA,NA,4/29/26 1:17,3h,3h,0h,0,0,0,0,0,1.2.3.2.67.6,500,No,No,No,,Brian Wagner,Black,,,,,,,,0,0,0,0d,0d,0d,No,No,No,No,No,No,No,No,No,No,No,0,0,0,0,0,
1371,3319,Yes,Auto Scheduled,RTR_CM18_WBS Element,1.13d,Fixed Duration,5,5.44d,,"June 8, 2026 11:00","June 9, 2026 12:00",6/8/26 11:00,6/9/26 12:00,5/15/26 9:29,5/18/26 10:29,0d,-16.19d,0ed,0,NA,NA,"April 10, 2026 10:45","April 17, 2026 3:15",As Soon As Possible,NA,NA,NA,4/29/26 1:17,9h,9h,0h,0,0,0,0,0,1.2.3.2.68,500,No,Yes,Yes,,,Black,,,,,,,,0,0,0,0d,0d,0d,No,No,No,No,No,No,No,No,No,No,No,0,0,0,0,0,
1372,3320,Yes,Auto Scheduled,"Load File Staged and Posted ""Ready""",30m,Fixed Units,6,0.06d,1365,"June 8, 2026 11:00","June 8, 2026 11:30",6/8/26 11:00,6/8/26 11:30,5/15/26 9:29,5/15/26 9:59,0m,-7771m,0ed,0,NA,NA,"April 10, 2026 10:45","April 10, 2026 11:15",As Soon As Possible,NA,NA,NA,4/29/26 1:17,0.5h,0.5h,0h,0,0,0,0,0,1.2.3.2.68.1,500,No,No,No,,,Black,,,,,,,,0,0,0,0d,0d,0d,No,No,No,No,No,No,No,No,No,No,No,0,0,0,0,0,
1373,3321,Yes,Auto Scheduled,Pre Load Validation,30m,Fixed Units,6,0.06d,1372,"June 8, 2026 11:30","June 8, 2026 12:00",6/8/26 11:30,6/8/26 12:00,5/15/26 9:59,5/15/26 10:29,0m,-7771m,0ed,0,NA,NA,"April 10, 2026 11:15","April 10, 2026 11:45",As Soon As Possible,NA,NA,NA,4/29/26 1:17,0.5h,0.5h,0h,0,0,0,0,0,1.2.3.2.68.2,500,No,No,No,,Brian Wagner,Black,,,,,,,,0,0,0,0d,0d,0d,No,No,No,No,No,No,No,No,No,No,No,0,0,0,0,0,
1374,3322,Yes,Auto Scheduled,Simulate Load,1h,Fixed Units,6,0.13d,1373,"June 8, 2026 1:00","June 8, 2026 2:00",6/8/26 1:00,6/8/26 2:00,5/15/26 10:29,5/15/26 11:29,0h,-129.52h,0ed,0,NA,NA,"April 16, 2026 3:15","April 16, 2026 4:15",As Soon As Possible,NA,NA,NA,4/29/26 1:17,1h,1h,0h,0,0,0,0,0,1.2.3.2.68.3,500,No,No,No,,,Black,,,,,,,,0,0,0,0d,0d,0d,No,No,No,No,No,No,No,No,No,No,No,0,0,0,0,0,
1375,3323,Yes,Auto Scheduled,Error and Defect Mitigation,2h,Fixed Units,6,0.25d,1374,"June 8, 2026 2:00","June 8, 2026 4:00",6/8/26 2:00,6/8/26 4:00,5/15/26 11:29,5/15/26 2:29,0h,-129.52h,0ed,0,NA,NA,"April 16, 2026 4:15","April 17, 2026 9:15",As Soon As Possible,NA,NA,NA,4/29/26 1:17,2h,2h,0h,0,0,0,0,0,1.2.3.2.68.4,500,No,No,No,,Brian Wagner,Black,,,,,,,,0,0,0,0d,0d,0d,No,No,No,No,No,No,No,No,No,No,No,0,0,0,0,0,
1376,3324,Yes,Auto Scheduled,Load,2h,Fixed Units,6,0.25d,1375,"June 8, 2026 4:00","June 9, 2026 9:00",6/8/26 4:00,6/9/26 9:00,5/15/26 2:29,5/15/26 4:29,0h,-129.52h,0ed,0,NA,NA,"April 17, 2026 9:15","April 17, 2026 11:15",As Soon As Possible,NA,NA,NA,4/29/26 1:17,2h,2h,0h,0,0,0,0,0,1.2.3.2.68.5,500,No,No,No,,,Black,,,,,,,,0,0,0,0d,0d,0d,No,No,No,No,No,No,No,No,No,No,No,0,0,0,0,0,
1377,3325,Yes,Auto Scheduled,Post Load Validation,3h,Fixed Units,6,0.38d,1376,"June 9, 2026 9:00","June 9, 2026 12:00",6/9/26 9:00,6/9/26 12:00,5/15/26 4:29,5/18/26 10:29,0h,-129.52h,0ed,0,NA,NA,"April 17, 2026 11:15","April 17, 2026 3:15",As Soon As Possible,NA,NA,NA,4/29/26 1:17,3h,3h,0h,0,0,0,0,0,1.2.3.2.68.6,500,No,No,No,,Brian Wagner,Black,,,,,,,,0,0,0,0d,0d,0d,No,No,No,No,No,No,No,No,No,No,No,0,0,0,0,0,
1378,2958,Yes,Auto Scheduled,ITC3 Master Data Loads Complete,0m,Fixed Units,4,0d,1011,"June 19, 2026 4:00","June 19, 2026 4:00",6/19/26 4:00,6/19/26 4:00,5/18/26 10:29,5/18/26 10:29,0m,-11791m,0ed,0,NA,NA,NA,NA,As Soon As Possible,NA,NA,NA,4/29/26 12:43,0h,0h,0h,0,0,0,0,0,1.2.3.3,500,Yes,No,No,,,Black,,,,,,,,0,0,0,0d,0d,0d,No,No,No,No,No,No,No,No,No,No,No,0,0,0,0,0,
1379,3326,Yes,Auto Scheduled,Mock Transactional Data,2d,Fixed Duration,4,0d,1378,"June 19, 2026 4:00","June 23, 2026 4:00",6/19/26 4:00,6/23/26 4:00,5/18/26 10:29,5/20/26 10:29,0d,-24.56d,0ed,0,NA,NA,NA,NA,As Soon As Possible,NA,NA,NA,4/29/26 2:14,0h,0h,0h,0,0,0,0,0,1.2.3.4,500,No,Yes,Yes,,,Black,,,,,,,,0,0,0,0d,0d,0d,No,No,No,No,No,No,No,No,No,No,No,0,0,0,0,0,
1380,3330,Yes,Auto Scheduled,Inventory,4h,Fixed Units,5,0d,998SS,"June 19, 2026 4:00","June 22, 2026 11:00",6/19/26 4:00,6/22/26 11:00,5/18/26 10:29,5/18/26 3:29,0h,-196.52h,0ed,0,NA,NA,NA,NA,As Soon As Possible,NA,NA,NA,4/29/26 2:14,0h,0h,0h,0,0,0,0,0,1.2.3.4.1,500,No,No,No,,,Black,,,,,,,,0,0,0,0d,0d,0d,No,No,No,No,No,No,No,No,No,No,No,0,0,0,0,0,
1381,3331,Yes,Auto Scheduled,Open AR,4h,Fixed Units,5,0d,1380,"June 22, 2026 11:00","June 22, 2026 4:00",6/22/26 11:00,6/22/26 4:00,5/18/26 3:29,5/19/26 10:29,0h,-196.52h,0ed,0,NA,NA,NA,NA,As Soon As Possible,NA,NA,NA,4/29/26 2:14,0h,0h,0h,0,0,0,0,0,1.2.3.4.2,500,No,No,No,,,Black,,,,,,,,0,0,0,0d,0d,0d,No,No,No,No,No,No,No,No,No,No,No,0,0,0,0,0,
1382,3332,Yes,Auto Scheduled,Open AP,4h,Fixed Units,5,0d,1381,"June 22, 2026 4:00","June 23, 2026 11:00",6/22/26 4:00,6/23/26 11:00,5/19/26 10:29,5/19/26 3:29,0h,-196.52h,0ed,0,NA,NA,NA,NA,As Soon As Possible,NA,NA,NA,4/29/26 2:14,0h,0h,0h,0,0,0,0,0,1.2.3.4.3,500,No,No,No,,,Black,,,,,,,,0,0,0,0d,0d,0d,No,No,No,No,No,No,No,No,No,No,No,0,0,0,0,0,
1383,3333,Yes,Auto Scheduled,Bank and Cash,4h,Fixed Units,5,0d,1382,"June 23, 2026 11:00","June 23, 2026 4:00",6/23/26 11:00,6/23/26 4:00,5/19/26 3:29,5/20/26 10:29,0h,-196.52h,0ed,0,NA,NA,NA,NA,As Soon As Possible,NA,NA,NA,4/29/26 2:14,0h,0h,0h,0,0,0,0,0,1.2.3.4.4,500,No,No,No,,,Black,,,,,,,,0,0,0,0d,0d,0d,No,No,No,No,No,No,No,No,No,No,No,0,0,0,0,0,
1384,3334,Yes,Auto Scheduled,Open Purchase Orders(Manual),1d,Fixed Units,5,0d,1380,"June 22, 2026 11:00","June 23, 2026 11:00",6/22/26 11:00,6/23/26 11:00,5/19/26 10:29,5/20/26 10:29,0d,-24.06d,0ed,0,NA,NA,NA,NA,As Soon As Possible,NA,NA,NA,4/29/26 2:14,0h,0h,0h,0,0,0,0,0,1.2.3.4.5,500,No,No,No,,,Black,,,,,,,,0,0,0,0d,0d,0d,No,No,No,No,No,No,No,No,No,No,No,0,0,0,0,0,
1385,3335,Yes,Auto Scheduled,Open Sales Orders(Manual),1d,Fixed Units,5,0d,1380,"June 22, 2026 11:00","June 23, 2026 11:00",6/22/26 11:00,6/23/26 11:00,5/19/26 10:29,5/20/26 10:29,0d,-24.06d,0ed,0,NA,NA,NA,NA,As Soon As Possible,NA,NA,NA,4/29/26 2:14,0h,0h,0h,0,0,0,0,0,1.2.3.4.6,500,No,No,No,,,Black,,,,,,,,0,0,0,0d,0d,0d,No,No,No,No,No,No,No,No,No,No,No,0,0,0,0,0,
1386,3336,Yes,Auto Scheduled,Service Orders(Manual),0.5d,Fixed Units,5,0d,1380,"June 22, 2026 11:00","June 22, 2026 4:00",6/22/26 11:00,6/22/26 4:00,5/19/26 3:29,5/20/26 10:29,0d,-23.56d,0ed,0,NA,NA,NA,NA,As Soon As Possible,NA,NA,NA,4/29/26 2:14,0h,0h,0h,0,0,0,0,0,1.2.3.4.7,500,No,No,No,,,Black,,,,,,,,0,0,0,0d,0d,0d,No,No,No,No,No,No,No,No,No,No,No,0,0,0,0,0,
1387,3337,Yes,Auto Scheduled,Open Production Orders(Manual),1d,Fixed Units,5,0d,1380,"June 22, 2026 11:00","June 23, 2026 11:00",6/22/26 11:00,6/23/26 11:00,5/19/26 10:29,5/20/26 10:29,0d,-24.06d,0ed,0,NA,NA,NA,NA,As Soon As Possible,NA,NA,NA,4/29/26 2:14,0h,0h,0h,0,0,0,0,0,1.2.3.4.8,500,No,No,No,,,Black,,,,,,,,0,0,0,0d,0d,0d,No,No,No,No,No,No,No,No,No,No,No,0,0,0,0,0,
1388,2421,Yes,Auto Scheduled,ITC3 Mock Data Loads Complete,0m,Fixed Units,4,0.03d,1379,"June 23, 2026 4:00","June 23, 2026 4:00",6/23/26 4:00,6/23/26 4:00,5/20/26 10:29,5/20/26 10:29,0m,-11791m,0ed,0,NA,NA,"April 21, 2026 3:15","April 21, 2026 3:30",As Soon As Possible,NA,NA,NA,4/23/26 10:50,0h,0.25h,0h,0,0,0,0,0,1.2.3.5,500,Yes,No,No,,,Black,,,,,,,,0,0,0,0d,0d,0d,No,No,No,No,No,No,No,No,No,No,No,0,0,0,0,0,
1389,2422,Yes,Auto Scheduled,UAT Data Load Tasks QS4,80.66d,Fixed Duration,3,288.78d,"1009,103,134","June 22, 2026 8:00","October 12, 2026 2:15",6/22/26 8:00,10/12/26 2:15,5/20/26 10:29,8/14/26 4:00,0d,-40.78d,0ed,0,NA,NA,"March 13, 2025 8:00","April 21, 2026 3:15",As Soon As Possible,NA,NA,NA,4/23/26 10:51,708.77h,592h,0h,0,0,0,0,0,1.2.4,500,No,Yes,Yes,,,Black,,,,,,,,0,0,0,0d,0d,0d,No,No,No,No,No,No,No,No,No,No,No,0,0,0,0,0,
1390,2423,Yes,Auto Scheduled,PMO Authorization to Start Data Loads,1m,Fixed Units,4,0.03d,"103,134","June 22, 2026 8:00","June 22, 2026 8:01",6/22/26 8:00,6/22/26 8:01,5/20/26 10:29,5/20/26 10:30,0m,-32670m,0ed,0,NA,NA,"April 6, 2026 8:00","April 6, 2026 8:15",Start No Later Than,6/22/26 8:00,NA,NA,4/23/26 10:51,0.02h,0.25h,0h,0,0,0,0,0,1.2.4.1,500,No,No,No,,,Black,,,,,,,,0,0,0,0d,0d,0d,No,No,No,No,No,No,No,No,No,No,No,0,0,0,0,0,
1391,2898,Yes,Auto Scheduled,Master Data Loads,10.56d,Fixed Duration,4,0d,1390,"September 24, 2026 8:30","October 8, 2026 2:00",9/24/26 8:30,10/8/26 2:00,5/20/26 10:30,6/3/26 4:00,0d,-90.75d,0ed,0,NA,NA,NA,NA,As Soon As Possible,NA,NA,NA,4/24/26 12:51,708.5h,0h,0h,0,0,0,0,0,1.2.4.2,500,No,Yes,Yes,,,Black,,,,,,,,0,0,0,0d,0d,0d,No,No,No,No,No,No,No,No,No,No,No,0,0,0,0,0,
1392,2424,Yes,Auto Scheduled,RTR_CM02_Profit Center Hierarchy,0.75d,Fixed Duration,5,0.75d,,"September 24, 2026 8:30","September 24, 2026 3:30",9/24/26 8:30,9/24/26 3:30,5/21/26 10:00,5/21/26 5:00,0d,-89.81d,0ed,0,NA,NA,"April 6, 2026 8:15","April 6, 2026 3:15",As Soon As Possible,NA,NA,NA,4/23/26 10:51,6h,6h,0h,0,0,0,0,0,1.2.4.2.1,500,No,Yes,Yes,,,Black,,,,,,,,0,0,0,0d,0d,0d,No,No,No,No,No,No,No,No,No,No,No,0,0,0,0,0,
1393,2425,Yes,Auto Scheduled,"Manual File Staged and Posted ""Ready""",1h,Fixed Units,6,0.13d,1390,"September 24, 2026 8:30","September 24, 2026 9:30",9/24/26 8:30,9/24/26 9:30,5/21/26 10:00,5/21/26 11:00,0h,-718.5h,0ed,0,NA,NA,"April 6, 2026 8:15","April 6, 2026 9:15",Start No Earlier Than,4/6/26 8:00,NA,NA,4/23/26 10:51,1h,1h,0h,0,0,0,0,0,1.2.4.2.1.1,500,No,No,No,,,Black,,,,,,,,0,0,0,0d,0d,0d,No,No,No,No,No,No,No,No,No,No,No,0,0,0,0,0,
1394,2426,Yes,Auto Scheduled,Load,2h,Fixed Units,6,0.25d,1393,"September 24, 2026 9:30","September 24, 2026 11:30",9/24/26 9:30,9/24/26 11:30,5/21/26 11:00,5/21/26 2:00,0h,-718.5h,0ed,0,NA,NA,"April 6, 2026 9:15","April 6, 2026 11:15",As Soon As Possible,NA,NA,NA,4/23/26 10:51,2h,2h,0h,0,0,0,0,0,1.2.4.2.1.2,500,No,No,No,,,Black,,,,,,,,0,0,0,0d,0d,0d,No,No,No,No,No,No,No,No,No,No,No,0,0,0,0,0,
1395,2427,Yes,Auto Scheduled,Post Load Validation,3h,Fixed Units,6,0.38d,1394,"September 24, 2026 11:30","September 24, 2026 3:30",9/24/26 11:30,9/24/26 3:30,5/21/26 2:00,5/21/26 5:00,0h,-718.5h,0ed,0,NA,NA,"April 6, 2026 11:15","April 6, 2026 3:15",As Soon As Possible,NA,NA,NA,4/23/26 10:51,3h,3h,0h,0,0,0,0,0,1.2.4.2.1.3,500,No,No,No,,Brian Wagner,Black,,,,,,,,0,0,0,0d,0d,0d,No,No,No,No,No,No,No,No,No,No,No,0,0,0,0,0,
1396,2428,Yes,Auto Scheduled,RTR_CM03_Cost Center Hierarchy,0.75d,Fixed Duration,5,0.75d,,"September 24, 2026 3:30","September 25, 2026 1:30",9/24/26 3:30,9/25/26 1:30,5/22/26 8:00,5/22/26 3:00,0d,-89.81d,0ed,0,NA,NA,"April 6, 2026 3:15","April 7, 2026 1:15",As Soon As Possible,NA,NA,NA,4/23/26 10:51,6h,6h,0h,0,0,0,0,0,1.2.4.2.2,500,No,Yes,Yes,,,Black,,,,,,,,0,0,0,0d,0d,0d,No,No,No,No,No,No,No,No,No,No,No,0,0,0,0,0,
1397,2429,Yes,Auto Scheduled,"Manual File Staged and Posted ""Ready""",1h,Fixed Units,6,0.13d,1395,"September 24, 2026 3:30","September 24, 2026 4:30",9/24/26 3:30,9/24/26 4:30,5/22/26 8:00,5/22/26 9:00,0h,-718.5h,0ed,0,NA,NA,"April 6, 2026 3:15","April 6, 2026 4:15",Start No Earlier Than,4/6/26 8:00,NA,NA,4/23/26 10:51,1h,1h,0h,0,0,0,0,0,1.2.4.2.2.1,500,No,No,No,,,Black,,,,,,,,0,0,0,0d,0d,0d,No,No,No,No,No,No,No,No,No,No,No,0,0,0,0,0,
1398,2430,Yes,Auto Scheduled,Load,2h,Fixed Units,6,0.25d,1397,"September 24, 2026 4:30","September 25, 2026 9:30",9/24/26 4:30,9/25/26 9:30,5/22/26 9:00,5/22/26 11:00,0h,-718.5h,0ed,0,NA,NA,"April 6, 2026 4:15","April 7, 2026 9:15",As Soon As Possible,NA,NA,NA,4/23/26 10:51,2h,2h,0h,0,0,0,0,0,1.2.4.2.2.2,500,No,No,No,,,Black,,,,,,,,0,0,0,0d,0d,0d,No,No,No,No,No,No,No,No,No,No,No,0,0,0,0,0,
1399,2431,Yes,Auto Scheduled,Post Load Validation,3h,Fixed Units,6,0.38d,1398,"September 25, 2026 9:30","September 25, 2026 1:30",9/25/26 9:30,9/25/26 1:30,5/22/26 11:00,5/22/26 3:00,0h,-718.5h,0ed,0,NA,NA,"April 7, 2026 9:15","April 7, 2026 1:15",As Soon As Possible,NA,NA,NA,4/23/26 10:51,3h,3h,0h,0,0,0,0,0,1.2.4.2.2.3,500,No,No,No,,Brian Wagner,Black,,,,,,,,0,0,0,0d,0d,0d,No,No,No,No,No,No,No,No,No,No,No,0,0,0,0,0,
1400,2432,Yes,Auto Scheduled,RTR_CM01_GL_Account_Master to CC 1000,2.44d,Fixed Duration,5,1.81d,,"September 25, 2026 1:30","September 29, 2026 5:00",9/25/26 1:30,9/29/26 5:00,5/22/26 3:00,5/27/26 9:30,0d,-89.81d,0ed,0,NA,NA,"April 7, 2026 1:15","April 9, 2026 10:45",As Soon As Possible,NA,NA,NA,4/23/26 10:51,16h,16h,0h,0,0,0,0,0,1.2.4.2.3,500,No,Yes,Yes,,,Black,,,,,,,,0,0,0,0d,0d,0d,No,No,No,No,No,No,No,No,No,No,No,0,0,0,0,0,
1401,2433,Yes,Auto Scheduled,"Load File Staged and Posted ""Ready""",1h,Fixed Units,6,0.13d,1399,"September 25, 2026 1:30","September 25, 2026 2:30",9/25/26 1:30,9/25/26 2:30,5/22/26 3:00,5/22/26 4:00,0h,-718.5h,0ed,0,NA,NA,"April 7, 2026 1:15","April 7, 2026 2:15",Start No Earlier Than,4/6/26 8:00,NA,NA,4/23/26 10:51,1h,1h,0h,0,0,0,0,0,1.2.4.2.3.1,500,No,No,No,,,Black,,,,,,,,0,0,0,0d,0d,0d,No,No,No,No,No,No,No,No,No,No,No,0,0,0,0,0,
1402,2434,Yes,Auto Scheduled,Pre Load Validation,2h,Fixed Units,6,0.25d,1401,"September 25, 2026 2:30","September 25, 2026 4:30",9/25/26 2:30,9/25/26 4:30,5/22/26 4:00,5/25/26 9:00,0h,-718.5h,0ed,0,NA,NA,"April 7, 2026 2:15","April 7, 2026 4:15",As Soon As Possible,NA,NA,NA,4/23/26 10:51,2h,2h,0h,0,0,0,0,0,1.2.4.2.3.2,500,No,No,No,,Brian Wagner,Black,,,,,,,,0,0,0,0d,0d,0d,No,No,No,No,No,No,No,No,No,No,No,0,0,0,0,0,
1403,2435,Yes,Auto Scheduled,Simulate Load,6h,Fixed Units,6,0.75d,1402,"September 25, 2026 4:30","September 28, 2026 2:30",9/25/26 4:30,9/28/26 2:30,5/25/26 9:00,5/25/26 4:00,0h,-718.5h,0ed,0,NA,NA,"April 7, 2026 4:15","April 8, 2026 2:15",As Soon As Possible,NA,NA,NA,4/23/26 10:51,6h,6h,0h,0,0,0,0,0,1.2.4.2.3.3,500,No,No,No,,,Black,,,,,,,,0,0,0,0d,0d,0d,No,No,No,No,No,No,No,No,No,No,No,0,0,0,0,0,
1404,2436,Yes,Auto Scheduled,Error and Defect Mitigation,2h,Fixed Units,6,0.25d,1403,"September 28, 2026 2:30","September 29, 2026 9:00",9/28/26 2:30,9/29/26 9:00,5/25/26 4:00,5/26/26 10:30,0h,-718.5h,0ed,0,NA,NA,"April 8, 2026 8:15","April 8, 2026 11:45",As Soon As Possible,NA,NA,NA,4/23/26 10:51,2h,2h,0h,0,0,0,0,0,1.2.4.2.3.4,500,No,No,No,,Brian Wagner,Black,,,,,,,,0,0,0,0d,0d,0d,No,No,No,No,No,No,No,No,No,No,No,0,0,0,0,0,
1405,2437,Yes,Auto Scheduled,Load,1h,Fixed Units,6,0.13d,1404,"September 29, 2026 9:00","September 29, 2026 10:00",9/29/26 9:00,9/29/26 10:00,5/26/26 10:30,5/26/26 11:30,0h,-718.5h,0ed,0,NA,NA,"April 8, 2026 11:45","April 8, 2026 1:45",As Soon As Possible,NA,NA,NA,4/23/26 10:51,1h,1h,0h,0,0,0,0,0,1.2.4.2.3.5,500,No,No,No,,,Black,,,,,,,,0,0,0,0d,0d,0d,No,No,No,No,No,No,No,No,No,No,No,0,0,0,0,0,
1406,2438,Yes,Auto Scheduled,Post Load Validation,2h,Fixed Units,6,0.25d,1405,"September 29, 2026 10:00","September 29, 2026 12:00",9/29/26 10:00,9/29/26 12:00,5/26/26 11:30,5/26/26 2:30,0h,-718.5h,0ed,0,NA,NA,"April 8, 2026 1:45","April 8, 2026 3:45",As Soon As Possible,NA,NA,NA,4/23/26 10:51,2h,2h,0h,0,0,0,0,0,1.2.4.2.3.6,500,No,No,No,,Brian Wagner,Black,,,,,,,,0,0,0,0d,0d,0d,No,No,No,No,No,No,No,No,No,No,No,0,0,0,0,0,
1407,2439,Yes,Auto Scheduled,Extend GL to all Company Codes,2h,Fixed Units,6,0.25d,1406,"September 29, 2026 1:00","September 29, 2026 3:00",9/29/26 1:00,9/29/26 3:00,5/26/26 2:30,5/26/26 4:30,0h,-718.5h,0ed,0,NA,NA,"April 8, 2026 3:45","April 9, 2026 8:45",As Soon As Possible,NA,NA,NA,4/23/26 10:51,2h,2h,0h,0,0,0,0,0,1.2.4.2.3.7,500,No,No,No,,,Black,,,,,,,,0,0,0,0d,0d,0d,No,No,No,No,No,No,No,No,No,No,No,0,0,0,0,0,
1408,2440,Yes,Auto Scheduled,Post GL Extention Validation,2h,Fixed Units,6,0.25d,1407,"September 29, 2026 3:00","September 29, 2026 5:00",9/29/26 3:00,9/29/26 5:00,5/26/26 4:30,5/27/26 9:30,0h,-718.5h,0ed,0,NA,NA,"April 9, 2026 8:45","April 9, 2026 10:45",As Soon As Possible,NA,NA,NA,4/23/26 10:51,0h,0h,0h,0,0,0,0,0,1.2.4.2.3.8,500,No,No,No,,,Black,,,,,,,,0,0,0,0d,0d,0d,No,No,No,No,No,No,No,No,No,No,No,0,0,0,0,0,
1409,2441,Yes,Auto Scheduled,RTR_CM05_Profit_Center,1.13d,Fixed Duration,5,1.13d,,"September 24, 2026 3:30","September 25, 2026 4:30",9/24/26 3:30,9/25/26 4:30,5/29/26 8:45,6/1/26 9:45,0d,-84.72d,0ed,0,NA,NA,"April 6, 2026 3:15","April 7, 2026 4:15",As Soon As Possible,NA,NA,NA,4/23/26 10:51,9h,9h,0h,0,0,0,0,0,1.2.4.2.4,500,No,Yes,Yes,,,Black,,,,,,,,0,0,0,0d,0d,0d,No,No,No,No,No,No,No,No,No,No,No,0,0,0,0,0,
1410,2442,Yes,Auto Scheduled,"Load File Staged and Posted ""Ready""",1h,Fixed Units,6,0.13d,1395,"September 24, 2026 3:30","September 24, 2026 4:30",9/24/26 3:30,9/24/26 4:30,5/29/26 8:45,5/29/26 9:45,0h,-677.75h,0ed,0,NA,NA,"April 6, 2026 3:15","April 6, 2026 4:15",As Soon As Possible,NA,NA,NA,4/23/26 10:51,1h,1h,0h,0,0,0,0,0,1.2.4.2.4.1,500,No,No,No,,,Black,,,,,,,,0,0,0,0d,0d,0d,No,No,No,No,No,No,No,No,No,No,No,0,0,0,0,0,
1411,2443,Yes,Auto Scheduled,Pre Load Validation,2h,Fixed Units,6,0.25d,1410,"September 24, 2026 4:30","September 25, 2026 9:30",9/24/26 4:30,9/25/26 9:30,5/29/26 9:45,5/29/26 11:45,0h,-677.75h,0ed,0,NA,NA,"April 6, 2026 4:15","April 7, 2026 9:15",As Soon As Possible,NA,NA,NA,4/23/26 10:51,2h,2h,0h,0,0,0,0,0,1.2.4.2.4.2,500,No,No,No,,Brian Wagner,Black,,,,,,,,0,0,0,0d,0d,0d,No,No,No,No,No,No,No,No,No,No,No,0,0,0,0,0,
1412,2444,Yes,Auto Scheduled,Simulate Load,1h,Fixed Units,6,0.13d,1411,"September 25, 2026 9:30","September 25, 2026 10:30",9/25/26 9:30,9/25/26 10:30,5/29/26 11:45,5/29/26 1:45,0h,-677.75h,0ed,0,NA,NA,"April 7, 2026 9:15","April 7, 2026 10:15",As Soon As Possible,NA,NA,NA,4/23/26 10:51,1h,1h,0h,0,0,0,0,0,1.2.4.2.4.3,500,No,No,No,,,Black,,,,,,,,0,0,0,0d,0d,0d,No,No,No,No,No,No,No,No,No,No,No,0,0,0,0,0,
1413,2445,Yes,Auto Scheduled,Error and Defect Mitigation,2h,Fixed Units,6,0.25d,1412,"September 25, 2026 10:30","September 25, 2026 1:30",9/25/26 10:30,9/25/26 1:30,5/29/26 1:45,5/29/26 3:45,0h,-677.75h,0ed,0,NA,NA,"April 7, 2026 10:15","April 7, 2026 1:15",As Soon As Possible,NA,NA,NA,4/23/26 10:51,2h,2h,0h,0,0,0,0,0,1.2.4.2.4.4,500,No,No,No,,Brian Wagner,Black,,,,,,,,0,0,0,0d,0d,0d,No,No,No,No,No,No,No,No,No,No,No,0,0,0,0,0,
1414,2446,Yes,Auto Scheduled,Load,1h,Fixed Units,6,0.13d,1413,"September 25, 2026 1:30","September 25, 2026 2:30",9/25/26 1:30,9/25/26 2:30,5/29/26 3:45,5/29/26 4:45,0h,-677.75h,0ed,0,NA,NA,"April 7, 2026 1:15","April 7, 2026 2:15",As Soon As Possible,NA,NA,NA,4/23/26 10:51,1h,1h,0h,0,0,0,0,0,1.2.4.2.4.5,500,No,No,No,,,Black,,,,,,,,0,0,0,0d,0d,0d,No,No,No,No,No,No,No,No,No,No,No,0,0,0,0,0,
1415,2447,Yes,Auto Scheduled,Post Load Validation,2h,Fixed Units,6,0.25d,1414,"September 25, 2026 2:30","September 25, 2026 4:30",9/25/26 2:30,9/25/26 4:30,5/29/26 4:45,6/1/26 9:45,0h,-677.75h,0ed,0,NA,NA,"April 7, 2026 2:15","April 7, 2026 4:15",As Soon As Possible,NA,NA,NA,4/23/26 10:51,2h,2h,0h,0,0,0,0,0,1.2.4.2.4.6,500,No,No,No,,Brian Wagner,Black,,,,,,,,0,0,0,0d,0d,0d,No,No,No,No,No,No,No,No,No,No,No,0,0,0,0,0,
1416,2448,Yes,Auto Scheduled,RTR_CM04_Cost_Center,1.13d,Fixed Duration,5,1.13d,,"September 25, 2026 4:30","September 29, 2026 8:30",9/25/26 4:30,9/29/26 8:30,6/2/26 3:00,6/3/26 4:00,0d,-83.19d,0ed,0,NA,NA,"April 7, 2026 4:15","April 9, 2026 8:15",As Soon As Possible,NA,NA,NA,4/23/26 10:51,9h,9h,0h,0,0,0,0,0,1.2.4.2.5,500,No,Yes,Yes,,,Black,,,,,,,,0,0,0,0d,0d,0d,No,No,No,No,No,No,No,No,No,No,No,0,0,0,0,0,
1417,2449,Yes,Auto Scheduled,"Load File Staged and Posted ""Ready""",1h,Fixed Units,6,0.13d,1415,"September 25, 2026 4:30","September 28, 2026 8:30",9/25/26 4:30,9/28/26 8:30,6/2/26 3:00,6/2/26 4:00,0h,-665.5h,0ed,0,NA,NA,"April 7, 2026 4:15","April 8, 2026 8:15",As Soon As Possible,NA,NA,NA,4/23/26 10:51,1h,1h,0h,0,0,0,0,0,1.2.4.2.5.1,500,No,No,No,,,Black,,,,,,,,0,0,0,0d,0d,0d,No,No,No,No,No,No,No,No,No,No,No,0,0,0,0,0,
1418,2450,Yes,Auto Scheduled,Pre Load Validation,2h,Fixed Units,6,0.25d,1417,"September 28, 2026 8:30","September 28, 2026 10:30",9/28/26 8:30,9/28/26 10:30,6/2/26 4:00,6/3/26 9:00,0h,-665.5h,0ed,0,NA,NA,"April 8, 2026 8:15","April 8, 2026 10:15",As Soon As Possible,NA,NA,NA,4/23/26 10:51,2h,2h,0h,0,0,0,0,0,1.2.4.2.5.2,500,No,No,No,,Brian Wagner,Black,,,,,,,,0,0,0,0d,0d,0d,No,No,No,No,No,No,No,No,No,No,No,0,0,0,0,0,
1419,2451,Yes,Auto Scheduled,Simulate Load,1h,Fixed Units,6,0.13d,1418,"September 28, 2026 10:30","September 28, 2026 11:30",9/28/26 10:30,9/28/26 11:30,6/3/26 9:00,6/3/26 10:00,0h,-665.5h,0ed,0,NA,NA,"April 8, 2026 10:15","April 8, 2026 11:15",As Soon As Possible,NA,NA,NA,4/23/26 10:51,1h,1h,0h,0,0,0,0,0,1.2.4.2.5.3,500,No,No,No,,,Black,,,,,,,,0,0,0,0d,0d,0d,No,No,No,No,No,No,No,No,No,No,No,0,0,0,0,0,
1420,2452,Yes,Auto Scheduled,Error and Defect Mitigation,2h,Fixed Units,6,0.25d,1419,"September 28, 2026 11:30","September 28, 2026 2:30",9/28/26 11:30,9/28/26 2:30,6/3/26 10:00,6/3/26 12:00,0h,-665.5h,0ed,0,NA,NA,"April 8, 2026 11:15","April 8, 2026 2:15",As Soon As Possible,NA,NA,NA,4/23/26 10:51,2h,2h,0h,0,0,0,0,0,1.2.4.2.5.4,500,No,No,No,,Brian Wagner,Black,,,,,,,,0,0,0,0d,0d,0d,No,No,No,No,No,No,No,No,No,No,No,0,0,0,0,0,
1421,2453,Yes,Auto Scheduled,Load,1h,Fixed Units,6,0.13d,1420,"September 28, 2026 2:30","September 28, 2026 3:30",9/28/26 2:30,9/28/26 3:30,6/3/26 1:00,6/3/26 2:00,0h,-665.5h,0ed,0,NA,NA,"April 8, 2026 2:15","April 8, 2026 3:15",As Soon As Possible,NA,NA,NA,4/23/26 10:51,1h,1h,0h,0,0,0,0,0,1.2.4.2.5.5,500,No,No,No,,,Black,,,,,,,,0,0,0,0d,0d,0d,No,No,No,No,No,No,No,No,No,No,No,0,0,0,0,0,
1422,2454,Yes,Auto Scheduled,Post Load Validation,2h,Fixed Units,6,0.25d,1421,"September 28, 2026 3:30","September 29, 2026 8:30",9/28/26 3:30,9/29/26 8:30,6/3/26 2:00,6/3/26 4:00,0h,-665.5h,0ed,0,NA,NA,"April 8, 2026 3:15","April 9, 2026 8:15",As Soon As Possible,NA,NA,NA,4/23/26 10:51,2h,2h,0h,0,0,0,0,0,1.2.4.2.5.6,500,No,No,No,,Brian Wagner,Black,,,,,,,,0,0,0,0d,0d,0d,No,No,No,No,No,No,No,No,No,No,No,0,0,0,0,0,
1423,2455,Yes,Auto Scheduled,Manual Configuration Activities in QS5,8.94d,Fixed Duration,5,7.16d,40,"September 24, 2026 8:30","October 6, 2026 5:00",9/24/26 8:30,10/6/26 5:00,5/27/26 4:00,6/3/26 4:00,0d,-89.13d,0ed,0,NA,NA,"April 6, 2026 1:00","April 15, 2026 2:15",As Soon As Possible,NA,NA,NA,4/23/26 10:51,43h,43h,0h,0,0,0,0,0,1.2.4.2.6,500,No,Yes,Yes,,,Black,,,,,,,,0,0,0,0d,0d,0d,No,No,No,No,No,No,No,No,No,No,No,0,0,0,0,0,
1424,2456,Yes,Auto Scheduled,Open Client,30m,Fixed Units,6,0.06d,,"September 24, 2026 8:30","September 24, 2026 9:00",9/24/26 8:30,9/24/26 9:00,6/3/26 3:30,6/3/26 4:00,0m,-38520m,0ed,0,NA,NA,"April 6, 2026 1:00","April 6, 2026 1:30",As Soon As Possible,NA,NA,NA,4/23/26 10:51,0.5h,0.5h,0h,0,0,0,0,0,1.2.4.2.6.1,500,No,No,No,,,Black,,,,,,,,0,0,0,0d,0d,0d,No,No,No,No,No,No,No,No,No,No,No,0,0,0,0,0,
1425,2457,Yes,Auto Scheduled,Service Enterprise Setup,5d,Fixed Units,6,5d,"1392,1396,1400","September 30, 2026 8:00","October 6, 2026 5:00",9/30/26 8:00,10/6/26 5:00,5/27/26 4:00,6/3/26 4:00,0d,-89.13d,0ed,0,NA,NA,"April 8, 2026 2:15","April 15, 2026 2:15",As Soon As Possible,NA,NA,NA,4/23/26 10:51,40h,40h,0h,0,0,0,0,0,1.2.4.2.6.2,500,No,No,No,,,Black,,,,,,,,0,0,0,0d,0d,0d,No,No,No,No,No,No,No,No,No,No,No,0,0,0,0,0,
1426,2458,Yes,Auto Scheduled,Close Client,30m,Fixed Units,6,0.06d,,"September 24, 2026 8:30","September 24, 2026 9:00",9/24/26 8:30,9/24/26 9:00,6/3/26 3:30,6/3/26 4:00,0m,-38520m,0ed,0,NA,NA,"April 6, 2026 1:00","April 6, 2026 1:30",As Soon As Possible,NA,NA,NA,4/23/26 10:51,0.5h,0.5h,0h,0,0,0,0,0,1.2.4.2.6.3,500,No,No,No,,,Black,,,,,,,,0,0,0,0d,0d,0d,No,No,No,No,No,No,No,No,No,No,No,0,0,0,0,0,
1427,2459,Yes,Auto Scheduled,Intercompany Business Partner Setup,2h,Fixed Units,6,0.25d,"1392,1396,1408","September 30, 2026 8:00","September 30, 2026 10:00",9/30/26 8:00,9/30/26 10:00,6/3/26 2:00,6/3/26 4:00,0h,-675h,0ed,0,NA,NA,"April 8, 2026 3:45","April 9, 2026 8:45",As Soon As Possible,NA,NA,NA,4/23/26 10:51,2h,2h,0h,0,0,0,0,0,1.2.4.2.6.4,500,No,No,No,,,Black,,,,,,,,0,0,0,0d,0d,0d,No,No,No,No,No,No,No,No,No,No,No,0,0,0,0,0,
1428,2460,Yes,Auto Scheduled,RTR_CM09_Activity_Type,1.38d,Fixed Duration,5,1.22d,,"September 29, 2026 1:00","September 30, 2026 4:00",9/29/26 1:00,9/30/26 4:00,6/2/26 1:00,6/3/26 4:00,0d,-85d,0ed,0,NA,NA,"April 8, 2026 2:15","April 9, 2026 4:00",As Soon As Possible,NA,NA,NA,4/23/26 10:51,9h,9h,0h,0,0,0,0,0,1.2.4.2.7,500,No,Yes,Yes,,,Black,,,,,,,,0,0,0,0d,0d,0d,No,No,No,No,No,No,No,No,No,No,No,0,0,0,0,0,
1429,2461,Yes,Auto Scheduled,"Load File Staged and Posted ""Ready""",1h,Fixed Units,6,0.13d,1406,"September 29, 2026 1:00","September 29, 2026 3:15",9/29/26 1:00,9/29/26 3:15,6/2/26 1:00,6/2/26 3:15,0h,-680h,0ed,0,NA,NA,"April 8, 2026 2:15","April 8, 2026 4:30",As Soon As Possible,NA,NA,NA,4/23/26 10:51,1h,1h,0h,0,0,0,0,0,1.2.4.2.7.1,500,No,No,No,,,Black,,,,,,,,0,0,0,0d,0d,0d,No,No,No,No,No,No,No,No,No,No,No,0,0,0,0,0,
1430,2462,Yes,Auto Scheduled,Pre Load Validation,2h,Fixed Units,6,0.25d,1429,"September 29, 2026 3:15","September 30, 2026 9:00",9/29/26 3:15,9/30/26 9:00,6/2/26 3:15,6/3/26 9:00,0h,-680h,0ed,0,NA,NA,"April 8, 2026 3:15","April 9, 2026 9:00",As Soon As Possible,NA,NA,NA,4/23/26 10:51,2h,2h,0h,0,0,0,0,0,1.2.4.2.7.2,500,No,No,No,,Brian Wagner,Black,,,,,,,,0,0,0,0d,0d,0d,No,No,No,No,No,No,No,No,No,No,No,0,0,0,0,0,
1431,2463,Yes,Auto Scheduled,Simulate Load,1h,Fixed Units,6,0.13d,1430,"September 30, 2026 9:00","September 30, 2026 10:00",9/30/26 9:00,9/30/26 10:00,6/3/26 9:00,6/3/26 10:00,0h,-680h,0ed,0,NA,NA,"April 9, 2026 9:00","April 9, 2026 10:00",As Soon As Possible,NA,NA,NA,4/23/26 10:51,1h,1h,0h,0,0,0,0,0,1.2.4.2.7.3,500,No,No,No,,,Black,,,,,,,,0,0,0,0d,0d,0d,No,No,No,No,No,No,No,No,No,No,No,0,0,0,0,0,
1432,2464,Yes,Auto Scheduled,Error and Defect Mitigation,2h,Fixed Units,6,0.25d,1431,"September 30, 2026 10:00","September 30, 2026 12:00",9/30/26 10:00,9/30/26 12:00,6/3/26 10:00,6/3/26 12:00,0h,-680h,0ed,0,NA,NA,"April 9, 2026 10:00","April 9, 2026 12:00",As Soon As Possible,NA,NA,NA,4/23/26 10:51,2h,2h,0h,0,0,0,0,0,1.2.4.2.7.4,500,No,No,No,,Brian Wagner,Black,,,,,,,,0,0,0,0d,0d,0d,No,No,No,No,No,No,No,No,No,No,No,0,0,0,0,0,
1433,2465,Yes,Auto Scheduled,Load,1h,Fixed Units,6,0.13d,1432,"September 30, 2026 1:00","September 30, 2026 2:00",9/30/26 1:00,9/30/26 2:00,6/3/26 1:00,6/3/26 2:00,0h,-680h,0ed,0,NA,NA,"April 9, 2026 1:00","April 9, 2026 2:00",As Soon As Possible,NA,NA,NA,4/23/26 10:51,1h,1h,0h,0,0,0,0,0,1.2.4.2.7.5,500,No,No,No,,,Black,,,,,,,,0,0,0,0d,0d,0d,No,No,No,No,No,No,No,No,No,No,No,0,0,0,0,0,
1434,2466,Yes,Auto Scheduled,Post Load Validation,2h,Fixed Units,6,0.25d,1433,"September 30, 2026 2:00","September 30, 2026 4:00",9/30/26 2:00,9/30/26 4:00,6/3/26 2:00,6/3/26 4:00,0h,-680h,0ed,0,NA,NA,"April 9, 2026 2:00","April 9, 2026 4:00",As Soon As Possible,NA,NA,NA,4/23/26 10:51,2h,2h,0h,0,0,0,0,0,1.2.4.2.7.6,500,No,No,No,,Brian Wagner,Black,,,,,,,,0,0,0,0d,0d,0d,No,No,No,No,No,No,No,No,No,No,No,0,0,0,0,0,
1435,2467,Yes,Auto Scheduled,RTR_CM12_Activity Rates,1.13d,Fixed Duration,5,1.13d,,"September 25, 2026 1:30","September 28, 2026 2:30",9/25/26 1:30,9/28/26 2:30,6/2/26 3:00,6/3/26 4:00,0d,-82.81d,0ed,0,NA,NA,"April 7, 2026 1:15","April 8, 2026 2:15",As Soon As Possible,NA,NA,NA,4/23/26 10:51,9h,9h,0h,0,0,0,0,0,1.2.4.2.8,500,No,Yes,Yes,,,Black,,,,,,,,0,0,0,0d,0d,0d,No,No,No,No,No,No,No,No,No,No,No,0,0,0,0,0,
1436,2468,Yes,Auto Scheduled,"Load File Staged and Posted ""Ready""",1h,Fixed Units,6,0.13d,1399,"September 25, 2026 1:30","September 25, 2026 2:30",9/25/26 1:30,9/25/26 2:30,6/2/26 3:00,6/2/26 4:00,0h,-662.5h,0ed,0,NA,NA,"April 7, 2026 1:15","April 7, 2026 2:15",As Soon As Possible,NA,NA,NA,4/23/26 10:51,1h,1h,0h,0,0,0,0,0,1.2.4.2.8.1,500,No,No,No,,,Black,,,,,,,,0,0,0,0d,0d,0d,No,No,No,No,No,No,No,No,No,No,No,0,0,0,0,0,
1437,2469,Yes,Auto Scheduled,Pre Load Validation,2h,Fixed Units,6,0.25d,1436,"September 25, 2026 2:30","September 25, 2026 4:30",9/25/26 2:30,9/25/26 4:30,6/2/26 4:00,6/3/26 9:00,0h,-662.5h,0ed,0,NA,NA,"April 7, 2026 2:15","April 7, 2026 4:15",As Soon As Possible,NA,NA,NA,4/23/26 10:51,2h,2h,0h,0,0,0,0,0,1.2.4.2.8.2,500,No,No,No,,Brian Wagner,Black,,,,,,,,0,0,0,0d,0d,0d,No,No,No,No,No,No,No,No,No,No,No,0,0,0,0,0,
1438,2470,Yes,Auto Scheduled,Simulate Load,1h,Fixed Units,6,0.13d,1437,"September 25, 2026 4:30","September 28, 2026 8:30",9/25/26 4:30,9/28/26 8:30,6/3/26 9:00,6/3/26 10:00,0h,-662.5h,0ed,0,NA,NA,"April 7, 2026 4:15","April 8, 2026 8:15",As Soon As Possible,NA,NA,NA,4/23/26 10:51,1h,1h,0h,0,0,0,0,0,1.2.4.2.8.3,500,No,No,No,,,Black,,,,,,,,0,0,0,0d,0d,0d,No,No,No,No,No,No,No,No,No,No,No,0,0,0,0,0,
1439,2471,Yes,Auto Scheduled,Error and Defect Mitigation,2h,Fixed Units,6,0.25d,1438,"September 28, 2026 8:30","September 28, 2026 10:30",9/28/26 8:30,9/28/26 10:30,6/3/26 10:00,6/3/26 12:00,0h,-662.5h,0ed,0,NA,NA,"April 8, 2026 8:15","April 8, 2026 10:15",As Soon As Possible,NA,NA,NA,4/23/26 10:51,2h,2h,0h,0,0,0,0,0,1.2.4.2.8.4,500,No,No,No,,Brian Wagner,Black,,,,,,,,0,0,0,0d,0d,0d,No,No,No,No,No,No,No,No,No,No,No,0,0,0,0,0,
1440,2472,Yes,Auto Scheduled,Load,1h,Fixed Units,6,0.13d,1439,"September 28, 2026 10:30","September 28, 2026 11:30",9/28/26 10:30,9/28/26 11:30,6/3/26 1:00,6/3/26 2:00,0h,-662.5h,0ed,0,NA,NA,"April 8, 2026 10:15","April 8, 2026 11:15",As Soon As Possible,NA,NA,NA,4/23/26 10:51,1h,1h,0h,0,0,0,0,0,1.2.4.2.8.5,500,No,No,No,,,Black,,,,,,,,0,0,0,0d,0d,0d,No,No,No,No,No,No,No,No,No,No,No,0,0,0,0,0,
1441,2473,Yes,Auto Scheduled,Post Load Validation,2h,Fixed Units,6,0.25d,1440,"September 28, 2026 11:30","September 28, 2026 2:30",9/28/26 11:30,9/28/26 2:30,6/3/26 2:00,6/3/26 4:00,0h,-662.5h,0ed,0,NA,NA,"April 8, 2026 11:15","April 8, 2026 2:15",As Soon As Possible,NA,NA,NA,4/23/26 10:51,2h,2h,0h,0,0,0,0,0,1.2.4.2.8.6,500,No,No,No,,Brian Wagner,Black,,,,,,,,0,0,0,0d,0d,0d,No,No,No,No,No,No,No,No,No,No,No,0,0,0,0,0,
1442,2474,Yes,Auto Scheduled,RTR_CM06_Bank_master,3.81d,Fixed Duration,5,1.22d,,"September 24, 2026 8:30","September 29, 2026 4:00",9/24/26 8:30,9/29/26 4:00,5/26/26 3:00,6/3/26 4:00,0d,-86.31d,0ed,0,NA,NA,"April 8, 2026 2:15","April 9, 2026 4:00",As Soon As Possible,NA,NA,NA,4/23/26 10:51,13h,9h,0h,0,0,0,0,0,1.2.4.2.9,500,No,Yes,Yes,,,Black,,,,,,,,0,0,0,0d,0d,0d,No,No,No,No,No,No,No,No,No,No,No,0,0,0,0,0,
1443,2475,Yes,Auto Scheduled,"Load File Staged and Posted ""Ready""",1h,Fixed Units,6,0.13d,1406,"September 29, 2026 1:00","September 29, 2026 2:00",9/29/26 1:00,9/29/26 2:00,6/3/26 1:00,6/3/26 2:00,0h,-672h,0ed,0,NA,NA,"April 8, 2026 2:15","April 8, 2026 4:30",As Soon As Possible,NA,NA,NA,4/23/26 10:51,1h,1h,0h,0,0,0,0,0,1.2.4.2.9.1,500,No,No,No,,,Black,,,,,,,,0,0,0,0d,0d,0d,No,No,No,No,No,No,No,No,No,No,No,0,0,0,0,0,
1444,2476,Yes,Auto Scheduled,Pre Load Validation,2h,Fixed Units,6,0.25d,1443,"September 29, 2026 2:00","September 29, 2026 4:00",9/29/26 2:00,9/29/26 4:00,6/3/26 2:00,6/3/26 4:00,0h,-672h,0ed,0,NA,NA,"April 8, 2026 4:30","April 9, 2026 9:30",As Soon As Possible,NA,NA,NA,4/23/26 10:51,2h,2h,0h,0,0,0,0,0,1.2.4.2.9.2,500,No,No,No,,Brian Wagner,Black,,,,,,,,0,0,0,0d,0d,0d,No,No,No,No,No,No,No,No,No,No,No,0,0,0,0,0,
1445,2477,Yes,Auto Scheduled,Simulate Load,1h,Fixed Units,6,0.13d,,"September 24, 2026 8:30","September 24, 2026 9:30",9/24/26 8:30,9/24/26 9:30,5/26/26 3:00,5/26/26 4:00,0h,-690.5h,0ed,0,NA,NA,"April 9, 2026 9:30","April 9, 2026 10:30",Start No Earlier Than,4/15/26 8:00,NA,NA,4/23/26 10:51,1h,1h,0h,0,0,0,0,0,1.2.4.2.9.3,500,No,No,No,,,Black,,,,,,,,0,0,0,0d,0d,0d,No,No,No,No,No,No,No,No,No,No,No,0,0,0,0,0,
1446,2478,Yes,Auto Scheduled,Error and Defect Mitigation,2h,Fixed Units,6,0.25d,1445,"September 24, 2026 9:30","September 24, 2026 11:30",9/24/26 9:30,9/24/26 11:30,5/26/26 4:00,5/27/26 9:00,0h,-690.5h,0ed,0,NA,NA,"April 9, 2026 10:30","April 9, 2026 1:30",As Soon As Possible,NA,NA,NA,4/23/26 10:51,2h,2h,0h,0,0,0,0,0,1.2.4.2.9.4,500,No,No,No,,Brian Wagner,Black,,,,,,,,0,0,0,0d,0d,0d,No,No,No,No,No,No,No,No,No,No,No,0,0,0,0,0,
1447,2479,Yes,Auto Scheduled,Load,5h,Fixed Units,6,0.13d,1446,"September 24, 2026 11:30","September 25, 2026 8:30",9/24/26 11:30,9/25/26 8:30,5/27/26 9:00,5/27/26 3:00,0h,-690.5h,0ed,0,NA,NA,"April 9, 2026 1:30","April 9, 2026 2:30",Finish No Earlier Than,4/15/26 5:00,NA,NA,4/23/26 10:51,5h,1h,0h,0,0,0,0,0,1.2.4.2.9.5,500,No,No,No,,,Black,,,,,,,,0,0,0,0d,0d,0d,No,No,No,No,No,No,No,No,No,No,No,0,0,0,0,0,
1448,2480,Yes,Auto Scheduled,Post Load Validation,2h,Fixed Units,6,0.25d,1447,"September 25, 2026 8:30","September 25, 2026 3:00",9/25/26 8:30,9/25/26 3:00,5/27/26 3:00,5/28/26 11:30,0h,-690.5h,0ed,0,NA,NA,"April 9, 2026 8:00","April 9, 2026 4:00",Finish No Earlier Than,4/14/26 5:00,NA,NA,4/23/26 10:51,2h,2h,0h,0,0,0,0,0,1.2.4.2.9.6,500,No,No,No,,Brian Wagner,Black,,,,,,,,0,0,0,0d,0d,0d,No,No,No,No,No,No,No,No,No,No,No,0,0,0,0,0,
1449,2481,Yes,Auto Scheduled,RTR_CM08_Exchange_Rates,1.13d,Fixed Duration,5,1.13d,,"September 25, 2026 8:30","September 28, 2026 9:30",9/25/26 8:30,9/28/26 9:30,6/2/26 3:00,6/3/26 4:00,0d,-82.31d,0ed,0,NA,NA,"April 9, 2026 2:30","April 10, 2026 3:30",As Soon As Possible,NA,NA,NA,4/23/26 10:51,9h,9h,0h,0,0,0,0,0,1.2.4.2.10,500,No,Yes,Yes,,,Black,,,,,,,,0,0,0,0d,0d,0d,No,No,No,No,No,No,No,No,No,No,No,0,0,0,0,0,
1450,2482,Yes,Auto Scheduled,"Load File Staged and Posted ""Ready""",1h,Fixed Units,6,0.13d,1447,"September 25, 2026 8:30","September 25, 2026 9:30",9/25/26 8:30,9/25/26 9:30,6/2/26 3:00,6/2/26 4:00,0h,-658.5h,0ed,0,NA,NA,"April 9, 2026 2:30","April 9, 2026 3:30",As Soon As Possible,NA,NA,NA,4/23/26 10:51,1h,1h,0h,0,0,0,0,0,1.2.4.2.10.1,500,No,No,No,,,Black,,,,,,,,0,0,0,0d,0d,0d,No,No,No,No,No,No,No,No,No,No,No,0,0,0,0,0,
1451,2483,Yes,Auto Scheduled,Pre Load Validation,2h,Fixed Units,6,0.25d,1450,"September 25, 2026 9:30","September 25, 2026 11:30",9/25/26 9:30,9/25/26 11:30,6/2/26 4:00,6/3/26 9:00,0h,-658.5h,0ed,0,NA,NA,"April 9, 2026 3:30","April 10, 2026 8:30",As Soon As Possible,NA,NA,NA,4/23/26 10:51,2h,2h,0h,0,0,0,0,0,1.2.4.2.10.2,500,No,No,No,,Brian Wagner,Black,,,,,,,,0,0,0,0d,0d,0d,No,No,No,No,No,No,No,No,No,No,No,0,0,0,0,0,
1452,2484,Yes,Auto Scheduled,Simulate Load,1h,Fixed Units,6,0.13d,1451,"September 25, 2026 11:30","September 25, 2026 1:30",9/25/26 11:30,9/25/26 1:30,6/3/26 9:00,6/3/26 10:00,0h,-658.5h,0ed,0,NA,NA,"April 10, 2026 8:30","April 10, 2026 9:30",As Soon As Possible,NA,NA,NA,4/23/26 10:51,1h,1h,0h,0,0,0,0,0,1.2.4.2.10.3,500,No,No,No,,,Black,,,,,,,,0,0,0,0d,0d,0d,No,No,No,No,No,No,No,No,No,No,No,0,0,0,0,0,
1453,2485,Yes,Auto Scheduled,Error and Defect Mitigation,2h,Fixed Units,6,0.25d,1452,"September 25, 2026 1:30","September 25, 2026 3:30",9/25/26 1:30,9/25/26 3:30,6/3/26 10:00,6/3/26 12:00,0h,-658.5h,0ed,0,NA,NA,"April 10, 2026 9:30","April 10, 2026 11:30",As Soon As Possible,NA,NA,NA,4/23/26 10:51,2h,2h,0h,0,0,0,0,0,1.2.4.2.10.4,500,No,No,No,,Brian Wagner,Black,,,,,,,,0,0,0,0d,0d,0d,No,No,No,No,No,No,No,No,No,No,No,0,0,0,0,0,
1454,2486,Yes,Auto Scheduled,Load,1h,Fixed Units,6,0.13d,1453,"September 25, 2026 3:30","September 25, 2026 4:30",9/25/26 3:30,9/25/26 4:30,6/3/26 1:00,6/3/26 2:00,0h,-658.5h,0ed,0,NA,NA,"April 10, 2026 11:30","April 10, 2026 1:30",As Soon As Possible,NA,NA,NA,4/23/26 10:51,1h,1h,0h,0,0,0,0,0,1.2.4.2.10.5,500,No,No,No,,,Black,,,,,,,,0,0,0,0d,0d,0d,No,No,No,No,No,No,No,No,No,No,No,0,0,0,0,0,
1455,2487,Yes,Auto Scheduled,Post Load Validation,2h,Fixed Units,6,0.25d,1454,"September 25, 2026 4:30","September 28, 2026 9:30",9/25/26 4:30,9/28/26 9:30,6/3/26 2:00,6/3/26 4:00,0h,-658.5h,0ed,0,NA,NA,"April 10, 2026 1:30","April 10, 2026 3:30",As Soon As Possible,NA,NA,NA,4/23/26 10:51,2h,2h,0h,0,0,0,0,0,1.2.4.2.10.6,500,No,No,No,,Brian Wagner,Black,,,,,,,,0,0,0,0d,0d,0d,No,No,No,No,No,No,No,No,No,No,No,0,0,0,0,0,
1456,2488,Yes,Auto Scheduled,RTR_CM14_Cost Element_Group,4.44d,Fixed Duration,5,4.78d,,"September 29, 2026 1:00","October 5, 2026 4:30",9/29/26 1:00,10/5/26 4:30,5/28/26 11:30,6/3/26 4:00,0d,-88.06d,0ed,0,NA,NA,"April 8, 2026 3:45","April 15, 2026 2:00",As Soon As Possible,NA,NA,NA,4/23/26 10:51,35.5h,38.25h,0h,0,0,0,0,0,1.2.4.2.11,500,No,Yes,Yes,,Brian Wagner,Black,,,,,,,,0,0,0,0d,0d,0d,No,No,No,No,No,No,No,No,No,No,No,0,0,0,0,0,
1457,2489,Yes,Auto Scheduled,"Manual File Staged and Posted ""Ready""",30m,Fixed Units,6,4.16d,1406,"September 29, 2026 1:00","September 29, 2026 1:30",9/29/26 1:00,9/29/26 1:30,5/28/26 11:30,5/28/26 12:00,0m,-42270m,0ed,0,NA,NA,"April 8, 2026 3:45","April 14, 2026 5:00",Finish No Earlier Than,4/14/26 5:00,NA,NA,4/23/26 10:51,0.5h,33.25h,0h,0,0,0,0,0,1.2.4.2.11.1,500,No,No,No,,,Black,,,,,,,,0,0,0,0d,0d,0d,No,No,No,No,No,No,No,No,No,No,No,0,0,0,0,0,
1458,2490,Yes,Auto Scheduled,Load,32h,Fixed Units,6,0.25d,1457,"September 29, 2026 1:30","October 5, 2026 1:30",9/29/26 1:30,10/5/26 1:30,5/28/26 1:00,6/3/26 12:00,0h,-704.5h,0ed,0,NA,NA,"April 15, 2026 8:00","April 15, 2026 10:00",Finish No Earlier Than,4/21/26 5:00,NA,NA,4/23/26 10:51,32h,2h,0h,0,0,0,0,0,1.2.4.2.11.2,500,No,No,No,,,Black,2026-04-20 15:36 - jsw73 - Start ignored — already in progress,,,,,,,0,0,0,0d,0d,0d,No,No,No,No,No,No,No,No,No,No,No,0,0,0,0,0,
1459,2491,Yes,Auto Scheduled,Post Load Validation,3h,Fixed Units,6,0.38d,1458,"October 5, 2026 1:30","October 5, 2026 4:30",10/5/26 1:30,10/5/26 4:30,6/3/26 1:00,6/3/26 4:00,0h,-704.5h,0ed,0,NA,NA,"April 15, 2026 10:00","April 15, 2026 2:00",Start No Earlier Than,4/17/26 8:00,NA,NA,4/23/26 10:51,3h,3h,0h,0,0,0,0,0,1.2.4.2.11.3,500,No,No,No,,Brian Wagner,Black,,,,,,,,0,0,0,0d,0d,0d,No,No,No,No,No,No,No,No,No,No,No,0,0,0,0,0,
1460,2492,Yes,Auto Scheduled,OTC_CM19_Customer_Master - Bill-To,2h,Fixed Units,5,0d,,"September 24, 2026 8:30","September 24, 2026 10:30",9/24/26 8:30,9/24/26 10:30,6/3/26 2:00,6/3/26 4:00,0h,-643.5h,0ed,0,NA,NA,"April 16, 2025 8:00","April 16, 2025 8:00",As Soon As Possible,NA,NA,NA,4/23/26 10:51,0h,0h,0h,0,0,0,0,0,1.2.4.2.12,500,No,No,No,,,Black,,,,,,,,0,0,0,0d,0d,0d,No,No,No,No,No,No,No,No,No,No,No,0,0,0,0,0,
1461,2493,Yes,Auto Scheduled,OTC_CM19_Customer_Master - Ship-To,1.5d,Fixed Duration,5,3.13d,,"September 29, 2026 1:00","September 30, 2026 5:00",9/29/26 1:00,9/30/26 5:00,5/26/26 4:30,6/3/26 4:00,0d,-89.56d,0ed,0,NA,NA,"April 8, 2026 3:45","April 13, 2026 4:45",As Soon As Possible,NA,NA,NA,4/23/26 10:51,13.25h,36h,0h,0,0,0,0,0,1.2.4.2.13,500,No,Yes,Yes,,,Black,,,,,,,,0,0,0,0d,0d,0d,No,No,No,No,No,No,No,No,No,No,No,0,0,0,0,0,
1462,2494,Yes,Auto Scheduled,"Load File Staged and Posted ""Ready""",30m,Fixed Units,6,0.06d,1406,"September 29, 2026 1:00","September 29, 2026 1:30",9/29/26 1:00,9/29/26 1:30,5/26/26 4:30,5/26/26 5:00,0m,-42990m,0ed,0,NA,NA,"April 8, 2026 3:45","April 8, 2026 4:15",As Soon As Possible,NA,NA,NA,4/23/26 10:51,0.5h,0.5h,0h,0,0,0,0,0,1.2.4.2.13.1,500,No,No,No,,,Black,,,,,,,,0,0,0,0d,0d,0d,No,No,No,No,No,No,No,No,No,No,No,0,0,0,0,0,
1463,2495,Yes,Auto Scheduled,Pre Load Validation,30m,Fixed Units,6,0.06d,1462,"September 29, 2026 1:30","September 29, 2026 2:00",9/29/26 1:30,9/29/26 2:00,5/27/26 8:00,5/27/26 8:30,0m,-42990m,0ed,0,NA,NA,"April 8, 2026 4:15","April 8, 2026 4:45",As Soon As Possible,NA,NA,NA,4/23/26 10:51,0.5h,0.5h,0h,0,0,0,0,0,1.2.4.2.13.2,500,No,No,No,,Kim Kolesar,Black,,,,,,,,0,0,0,0d,0d,0d,No,No,No,No,No,No,No,No,No,No,No,0,0,0,0,0,
1464,2496,Yes,Auto Scheduled,Open client for BP number range update,30m,Fixed Units,6,1d,1463,"September 29, 2026 2:00","September 29, 2026 2:30",9/29/26 2:00,9/29/26 2:30,6/3/26 2:45,6/3/26 3:15,0m,-40275m,0ed,0,NA,NA,"April 8, 2026 4:45","April 9, 2026 4:45",As Soon As Possible,NA,NA,NA,4/23/26 10:51,0.5h,8h,0h,0,0,0,0,0,1.2.4.2.13.3,500,No,No,No,,,Black,,,,,,,,0,0,0,0d,0d,0d,No,No,No,No,No,No,No,No,No,No,No,0,0,0,0,0,
1465,2497,Yes,Auto Scheduled,Update number range BP02 from Internal to External,30m,Fixed Units,6,1d,1464,"September 29, 2026 2:30","September 29, 2026 3:00",9/29/26 2:30,9/29/26 3:00,6/3/26 3:15,6/3/26 3:45,0m,-40275m,0ed,0,NA,NA,"April 9, 2026 4:45","April 10, 2026 4:45",As Soon As Possible,NA,NA,NA,4/23/26 10:51,0.5h,8h,0h,0,0,0,0,0,1.2.4.2.13.4,500,No,No,No,,,Black,,,,,,,,0,0,0,0d,0d,0d,No,No,No,No,No,No,No,No,No,No,No,0,0,0,0,0,
1466,2498,Yes,Auto Scheduled,Close Client,15m,Fixed Units,6,1d,1465,"September 29, 2026 3:00","September 29, 2026 3:15",9/29/26 3:00,9/29/26 3:15,6/3/26 3:45,6/3/26 4:00,0m,-40275m,0ed,0,NA,NA,"April 10, 2026 4:45","April 13, 2026 4:45",As Soon As Possible,NA,NA,NA,4/23/26 10:51,0.25h,8h,0h,0,0,0,0,0,1.2.4.2.13.5,500,No,No,No,,,Black,,,,,,,,0,0,0,0d,0d,0d,No,No,No,No,No,No,No,No,No,No,No,0,0,0,0,0,
1467,2499,Yes,Auto Scheduled,Simulate Load,1h,Fixed Units,6,0.13d,1463,"September 29, 2026 2:00","September 29, 2026 3:00",9/29/26 2:00,9/29/26 3:00,5/27/26 8:30,5/27/26 9:30,0h,-716.5h,0ed,0,NA,NA,"April 8, 2026 4:45","April 9, 2026 8:45",As Soon As Possible,NA,NA,NA,4/23/26 10:51,1h,1h,0h,0,0,0,0,0,1.2.4.2.13.6,500,No,No,No,,,Black,,,,,,,,0,0,0,0d,0d,0d,No,No,No,No,No,No,No,No,No,No,No,0,0,0,0,0,
1468,2500,Yes,Auto Scheduled,Error and Defect Mitigation,4h,Fixed Units,6,0.5d,1467,"September 29, 2026 3:00","September 30, 2026 10:00",9/29/26 3:00,9/30/26 10:00,6/2/26 2:00,6/3/26 9:00,0h,-681h,0ed,0,NA,NA,"April 9, 2026 8:45","April 9, 2026 1:45",As Soon As Possible,NA,NA,NA,4/23/26 10:51,4h,4h,0h,0,0,0,0,0,1.2.4.2.13.7,500,No,No,No,,Kim Kolesar,Black,,,,,,,,0,0,0,0d,0d,0d,No,No,No,No,No,No,No,No,No,No,No,0,0,0,0,0,
1469,2501,Yes,Auto Scheduled,Load,3h,Fixed Units,6,0.38d,1468,"September 30, 2026 10:00","September 30, 2026 2:00",9/30/26 10:00,9/30/26 2:00,6/3/26 9:00,6/3/26 12:00,0h,-681h,0ed,0,NA,NA,"April 9, 2026 1:45","April 9, 2026 4:45",As Soon As Possible,NA,NA,NA,4/23/26 10:51,3h,3h,0h,0,0,0,0,0,1.2.4.2.13.8,500,No,No,No,,,Black,,,,,,,,0,0,0,0d,0d,0d,No,No,No,No,No,No,No,No,No,No,No,0,0,0,0,0,
1470,2502,Yes,Auto Scheduled,Post Load Validation,3h,Fixed Units,6,0.38d,1469,"September 30, 2026 2:00","September 30, 2026 5:00",9/30/26 2:00,9/30/26 5:00,6/3/26 1:00,6/3/26 4:00,0h,-681h,0ed,0,NA,NA,"April 9, 2026 4:45","April 10, 2026 10:45",As Soon As Possible,NA,NA,NA,4/23/26 10:51,3h,3h,0h,0,0,0,0,0,1.2.4.2.13.9,500,No,No,No,,Kim Kolesar,Black,,,,,,,,0,0,0,0d,0d,0d,No,No,No,No,No,No,No,No,No,No,No,0,0,0,0,0,
1471,2503,Yes,Auto Scheduled,OTC_CM19_Customer_Master - Sold-To,1.63d,Fixed Duration,5,1.63d,,"September 29, 2026 2:00","October 1, 2026 10:00",9/29/26 2:00,10/1/26 10:00,5/27/26 9:30,6/3/26 4:00,0d,-89.44d,0ed,0,NA,NA,"April 8, 2026 4:45","April 10, 2026 1:45",As Soon As Possible,NA,NA,NA,4/23/26 10:51,11.75h,11.75h,0h,0,0,0,0,0,1.2.4.2.14,500,No,Yes,Yes,,,Black,,,,,,,,0,0,0,0d,0d,0d,No,No,No,No,No,No,No,No,No,No,No,0,0,0,0,0,
1472,2504,Yes,Auto Scheduled,"Load File Staged and Posted ""Ready""",30m,Fixed Units,6,0.06d,1463,"September 29, 2026 2:00","September 29, 2026 2:30",9/29/26 2:00,9/29/26 2:30,6/3/26 3:00,6/3/26 3:30,0m,-40260m,0ed,0,NA,NA,"April 8, 2026 4:45","April 9, 2026 8:15",As Soon As Possible,NA,NA,NA,4/23/26 10:51,0.5h,0.5h,0h,0,0,0,0,0,1.2.4.2.14.1,500,No,No,No,,,Black,,,,,,,,0,0,0,0d,0d,0d,No,No,No,No,No,No,No,No,No,No,No,0,0,0,0,0,
1473,2505,Yes,Auto Scheduled,Pre Load Validation,30m,Fixed Units,6,0.06d,1472,"September 29, 2026 2:30","September 29, 2026 3:00",9/29/26 2:30,9/29/26 3:00,6/3/26 3:30,6/3/26 4:00,0m,-40260m,0ed,0,NA,NA,"April 9, 2026 8:15","April 9, 2026 8:45",As Soon As Possible,NA,NA,NA,4/23/26 10:51,0.5h,0.5h,0h,0,0,0,0,0,1.2.4.2.14.2,500,No,No,No,,Kim Kolesar,Black,,,,,,,,0,0,0,0d,0d,0d,No,No,No,No,No,No,No,No,No,No,No,0,0,0,0,0,
1474,2506,Yes,Auto Scheduled,Simulate Load,1h,Fixed Units,6,0.13d,"1408,1467","September 30, 2026 8:00","September 30, 2026 9:00",9/30/26 8:00,9/30/26 9:00,5/27/26 9:30,5/27/26 10:30,0h,-718.5h,0ed,0,NA,NA,"April 9, 2026 10:45","April 9, 2026 11:45",As Soon As Possible,NA,NA,NA,4/23/26 10:51,1h,1h,0h,0,0,0,0,0,1.2.4.2.14.3,500,No,No,No,,,Black,,,,,,,,0,0,0,0d,0d,0d,No,No,No,No,No,No,No,No,No,No,No,0,0,0,0,0,
1475,2507,Yes,Auto Scheduled,Error and Defect Mitigation,3h,Fixed Units,6,0.38d,1474,"September 30, 2026 9:00","September 30, 2026 12:00",9/30/26 9:00,9/30/26 12:00,5/27/26 10:30,5/27/26 2:30,0h,-718.5h,0ed,0,NA,NA,"April 9, 2026 11:45","April 9, 2026 3:45",As Soon As Possible,NA,NA,NA,4/23/26 10:51,3h,3h,0h,0,0,0,0,0,1.2.4.2.14.4,500,No,No,No,,Kim Kolesar,Black,,,,,,,,0,0,0,0d,0d,0d,No,No,No,No,No,No,No,No,No,No,No,0,0,0,0,0,
1476,2508,Yes,Auto Scheduled,Load,3h,Fixed Units,6,0.38d,1475,"September 30, 2026 1:00","September 30, 2026 4:00",9/30/26 1:00,9/30/26 4:00,5/27/26 2:30,5/28/26 8:30,0h,-718.5h,0ed,0,NA,NA,"April 9, 2026 3:45","April 10, 2026 9:45",As Soon As Possible,NA,NA,NA,4/23/26 10:51,3h,3h,0h,0,0,0,0,0,1.2.4.2.14.5,500,No,No,No,,,Black,,,,,,,,0,0,0,0d,0d,0d,No,No,No,No,No,No,No,No,No,No,No,0,0,0,0,0,
1477,2509,Yes,Auto Scheduled,Post Load Validation,3h,Fixed Units,6,0.38d,1476,"September 30, 2026 4:00","October 1, 2026 10:00",9/30/26 4:00,10/1/26 10:00,6/3/26 1:00,6/3/26 4:00,0h,-683h,0ed,0,NA,NA,"April 10, 2026 9:45","April 10, 2026 1:45",As Soon As Possible,NA,NA,NA,4/23/26 10:51,3h,3h,0h,0,0,0,0,0,1.2.4.2.14.6,500,No,No,No,,Kim Kolesar,Black,,,,,,,,0,0,0,0d,0d,0d,No,No,No,No,No,No,No,No,No,No,No,0,0,0,0,0,
1478,2510,Yes,Auto Scheduled,Open client for BP number range update,15m,Fixed Units,6,0.03d,1467,"September 29, 2026 3:00","September 29, 2026 3:15",9/29/26 3:00,9/29/26 3:15,6/3/26 3:15,6/3/26 3:30,0m,-40305m,0ed,0,NA,NA,"April 9, 2026 8:45","April 9, 2026 9:00",As Soon As Possible,NA,NA,NA,4/23/26 10:51,0.25h,0.25h,0h,0,0,0,0,0,1.2.4.2.14.7,500,No,No,No,,,Black,,,,,,,,0,0,0,0d,0d,0d,No,No,No,No,No,No,No,No,No,No,No,0,0,0,0,0,
1479,2511,Yes,Auto Scheduled,Update number range BP02 from Internal to External,15m,Fixed Units,6,0.03d,1478,"September 29, 2026 3:15","September 29, 2026 3:30",9/29/26 3:15,9/29/26 3:30,6/3/26 3:30,6/3/26 3:45,0m,-40305m,0ed,0,NA,NA,"April 9, 2026 9:00","April 9, 2026 9:15",As Soon As Possible,NA,NA,NA,4/23/26 10:51,0.25h,0.25h,0h,0,0,0,0,0,1.2.4.2.14.8,500,No,No,No,,,Black,,,,,,,,0,0,0,0d,0d,0d,No,No,No,No,No,No,No,No,No,No,No,0,0,0,0,0,
1480,2512,Yes,Auto Scheduled,Close Client,15m,Fixed Units,6,0.03d,1479,"September 29, 2026 3:30","September 29, 2026 3:45",9/29/26 3:30,9/29/26 3:45,6/3/26 3:45,6/3/26 4:00,0m,-40305m,0ed,0,NA,NA,"April 9, 2026 9:15","April 9, 2026 9:30",As Soon As Possible,NA,NA,NA,4/23/26 10:51,0.25h,0.25h,0h,0,0,0,0,0,1.2.4.2.14.9,500,No,No,No,,,Black,,,,,,,,0,0,0,0d,0d,0d,No,No,No,No,No,No,No,No,No,No,No,0,0,0,0,0,
1481,2513,Yes,Auto Scheduled,PTP_CM27_Vendor Master as Customer - FLCU01,4.81d,Fixed Duration,5,2.31d,,"September 30, 2026 4:00","October 7, 2026 2:30",9/30/26 4:00,10/7/26 2:30,5/28/26 8:30,6/3/26 4:00,0d,-89.81d,0ed,0,NA,NA,"April 10, 2026 9:45","April 14, 2026 1:15",As Soon As Possible,NA,NA,NA,4/23/26 10:51,19.25h,19.25h,0h,0,0,0,0,0,1.2.4.2.15,500,No,Yes,Yes,,,Black,,,,,,,,0,0,0,0d,0d,0d,No,No,No,No,No,No,No,No,No,No,No,0,0,0,0,0,
1482,2514,Yes,Auto Scheduled,Extract File,1h,Fixed Units,6,0.13d,1476,"September 30, 2026 4:00","September 30, 2026 5:00",9/30/26 4:00,9/30/26 5:00,5/28/26 8:30,5/28/26 9:30,0h,-718.5h,0ed,0,NA,NA,"April 10, 2026 9:45","April 10, 2026 10:45",As Soon As Possible,NA,NA,NA,4/23/26 10:51,1h,1h,0h,0,0,0,0,0,1.2.4.2.15.1,500,No,No,No,,,Black,,,,,,,,0,0,0,0d,0d,0d,No,No,No,No,No,No,No,No,No,No,No,0,0,0,0,0,
1483,2515,Yes,Auto Scheduled,Pre Load Validation,2h,Fixed Units,6,0.25d,1482,"October 1, 2026 8:00","October 1, 2026 10:00",10/1/26 8:00,10/1/26 10:00,5/28/26 9:30,5/28/26 11:30,0h,-718.5h,0ed,0,NA,NA,"April 10, 2026 10:45","April 10, 2026 1:45",As Soon As Possible,NA,NA,NA,4/23/26 10:51,2h,2h,0h,0,0,0,0,0,1.2.4.2.15.2,500,No,No,No,,Sam Houff,Black,,,,,,,,0,0,0,0d,0d,0d,No,No,No,No,No,No,No,No,No,No,No,0,0,0,0,0,
1484,2516,Yes,Auto Scheduled,Simulate Load,11.25h,Fixed Units,6,1.41d,"1448,1483","October 1, 2026 10:00","October 2, 2026 2:15",10/1/26 10:00,10/2/26 2:15,5/28/26 11:30,5/29/26 3:45,0h,-718.5h,0ed,0,NA,NA,"April 10, 2026 1:45","April 13, 2026 5:00",Finish No Earlier Than,4/13/26 5:00,NA,NA,4/23/26 10:51,11.25h,11.25h,0h,0,0,0,0,0,1.2.4.2.15.3,500,No,No,No,,,Black,,,,,,,,0,0,0,0d,0d,0d,No,No,No,No,No,No,No,No,No,No,No,0,0,0,0,0,
1485,2517,Yes,Auto Scheduled,Error and Defect Mitigation,2h,Fixed Units,6,0.25d,1484,"October 2, 2026 2:15","October 6, 2026 9:00",10/2/26 2:15,10/6/26 9:00,5/29/26 3:45,6/2/26 10:30,0h,-718.5h,0ed,0,NA,NA,"April 10, 2026 2:45","April 14, 2026 9:30",As Soon As Possible,NA,NA,NA,4/23/26 10:51,2h,2h,0h,0,0,0,0,0,1.2.4.2.15.4,500,No,No,No,,Sam Houff,Black,,,,,,,,0,0,0,0d,0d,0d,No,No,No,No,No,No,No,No,No,No,No,0,0,0,0,0,
1486,2518,Yes,Auto Scheduled,Load,1h,Fixed Units,6,0.13d,1485,"October 6, 2026 9:00","October 7, 2026 11:30",10/6/26 9:00,10/7/26 11:30,6/2/26 10:30,6/3/26 2:00,0h,-718.5h,0ed,0,NA,NA,"April 10, 2026 4:45","April 14, 2026 10:15",As Soon As Possible,NA,NA,NA,4/23/26 10:51,1h,1h,0h,0,0,0,0,0,1.2.4.2.15.5,500,No,No,No,,,Black,,,,,,,,0,0,0,0d,0d,0d,No,No,No,No,No,No,No,No,No,No,No,0,0,0,0,0,
1487,2519,Yes,Auto Scheduled,Post Load Validation,2h,Fixed Units,6,0.25d,1486,"October 7, 2026 11:30","October 7, 2026 2:30",10/7/26 11:30,10/7/26 2:30,6/3/26 2:00,6/3/26 4:00,0h,-718.5h,0ed,0,NA,NA,"April 14, 2026 10:15","April 14, 2026 1:15",As Soon As Possible,NA,NA,NA,4/23/26 10:51,2h,2h,0h,0,0,0,0,0,1.2.4.2.15.6,500,No,No,No,,Sam Houff,Black,,,,,,,,0,0,0,0d,0d,0d,No,No,No,No,No,No,No,No,No,No,No,0,0,0,0,0,
1488,2520,Yes,Auto Scheduled,OTC_CM23_Customer_Hierarchy,0.69d,Fixed Duration,5,0.69d,,"September 30, 2026 4:00","October 1, 2026 1:30",9/30/26 4:00,10/1/26 1:30,6/3/26 9:30,6/3/26 4:00,0d,-85.69d,0ed,0,NA,NA,"April 10, 2026 9:45","April 10, 2026 4:15",As Soon As Possible,NA,NA,NA,4/23/26 10:51,5.5h,5.5h,0h,0,0,0,0,0,1.2.4.2.16,500,No,Yes,Yes,,,Black,,,,,,,,0,0,0,0d,0d,0d,No,No,No,No,No,No,No,No,No,No,No,0,0,0,0,0,
1489,2521,Yes,Auto Scheduled,"Manual File Staged and Posted ""Ready""",30m,Fixed Units,6,0.06d,1476,"September 30, 2026 4:00","September 30, 2026 4:30",9/30/26 4:00,9/30/26 4:30,6/3/26 9:30,6/3/26 10:00,0m,-41130m,0ed,0,NA,NA,"April 10, 2026 9:45","April 10, 2026 10:15",Start No Earlier Than,4/6/26 8:00,NA,NA,4/23/26 10:51,0.5h,0.5h,0h,0,0,0,0,0,1.2.4.2.16.1,500,No,No,No,,Kim Kolesar,Black,,,,,,,,0,0,0,0d,0d,0d,No,No,No,No,No,No,No,No,No,No,No,0,0,0,0,0,
1490,2522,Yes,Auto Scheduled,Load,2h,Fixed Units,6,0.25d,1489,"September 30, 2026 4:30","October 1, 2026 9:30",9/30/26 4:30,10/1/26 9:30,6/3/26 10:00,6/3/26 12:00,0h,-685.5h,0ed,0,NA,NA,"April 10, 2026 10:15","April 10, 2026 1:15",Start No Earlier Than,4/15/26 8:00,NA,NA,4/23/26 10:51,2h,2h,0h,0,0,0,0,0,1.2.4.2.16.2,500,No,No,No,,,Black,,,,,,,,0,0,0,0d,0d,0d,No,No,No,No,No,No,No,No,No,No,No,0,0,0,0,0,
1491,2523,Yes,Auto Scheduled,Post Load Validation,3h,Fixed Units,6,0.38d,1490,"October 1, 2026 9:30","October 1, 2026 1:30",10/1/26 9:30,10/1/26 1:30,6/3/26 1:00,6/3/26 4:00,0h,-685.5h,0ed,0,NA,NA,"April 10, 2026 1:15","April 10, 2026 4:15",As Soon As Possible,NA,NA,NA,4/23/26 10:51,3h,3h,0h,0,0,0,0,0,1.2.4.2.16.3,500,No,No,No,,Kim Kolesar,Black,,,,,,,,0,0,0,0d,0d,0d,No,No,No,No,No,No,No,No,No,No,No,0,0,0,0,0,
1492,2524,Yes,Auto Scheduled,PTP_CM27_Vendor Master - Z001 - External Sales Rep,3.38d,Fixed Duration,5,1.13d,,"September 30, 2026 4:00","October 6, 2026 10:00",9/30/26 4:00,10/6/26 10:00,5/29/26 1:00,6/3/26 4:00,0d,-88.38d,0ed,0,NA,NA,"April 10, 2026 9:45","April 13, 2026 10:45",As Soon As Possible,NA,NA,NA,4/23/26 10:51,9h,9h,0h,0,0,0,0,0,1.2.4.2.17,500,No,Yes,Yes,,,Black,,,,,,,,0,0,0,0d,0d,0d,No,No,No,No,No,No,No,No,No,No,No,0,0,0,0,0,
1493,2525,Yes,Auto Scheduled,Extract File,1h,Fixed Units,6,0.13d,1476,"September 30, 2026 4:00","September 30, 2026 5:00",9/30/26 4:00,9/30/26 5:00,5/29/26 1:00,5/29/26 2:00,0h,-707h,0ed,0,NA,NA,"April 10, 2026 9:45","April 10, 2026 10:45",As Soon As Possible,NA,NA,NA,4/23/26 10:51,1h,1h,0h,0,0,0,0,0,1.2.4.2.17.1,500,No,No,No,,,Black,,,,,,,,0,0,0,0d,0d,0d,No,No,No,No,No,No,No,No,No,No,No,0,0,0,0,0,
1494,2526,Yes,Auto Scheduled,Pre Load Validation,2h,Fixed Units,6,0.25d,1493,"October 1, 2026 8:00","October 1, 2026 10:00",10/1/26 8:00,10/1/26 10:00,5/29/26 2:00,5/29/26 4:00,0h,-707h,0ed,0,NA,NA,"April 10, 2026 10:45","April 10, 2026 1:45",As Soon As Possible,NA,NA,NA,4/23/26 10:51,2h,2h,0h,0,0,0,0,0,1.2.4.2.17.2,500,No,No,No,,Sam Houff,Black,,,,,,,,0,0,0,0d,0d,0d,No,No,No,No,No,No,No,No,No,No,No,0,0,0,0,0,
1495,2527,Yes,Auto Scheduled,Simulate Load,1h,Fixed Units,6,0.13d,"1448,1494","October 1, 2026 10:00","October 1, 2026 11:00",10/1/26 10:00,10/1/26 11:00,5/29/26 4:00,5/29/26 5:00,0h,-707h,0ed,0,NA,NA,"April 10, 2026 1:45","April 10, 2026 2:45",As Soon As Possible,NA,NA,NA,4/23/26 10:51,1h,1h,0h,0,0,0,0,0,1.2.4.2.17.3,500,No,No,No,,,Black,,,,,,,,0,0,0,0d,0d,0d,No,No,No,No,No,No,No,No,No,No,No,0,0,0,0,0,
1496,2528,Yes,Auto Scheduled,Error and Defect Mitigation,2h,Fixed Units,6,0.25d,1495,"October 1, 2026 11:00","October 1, 2026 2:00",10/1/26 11:00,10/1/26 2:00,6/1/26 8:00,6/1/26 10:00,0h,-707h,0ed,0,NA,NA,"April 10, 2026 2:45","April 10, 2026 4:45",As Soon As Possible,NA,NA,NA,4/23/26 10:51,2h,2h,0h,0,0,0,0,0,1.2.4.2.17.4,500,No,No,No,,Sam Houff,Black,,,,,,,,0,0,0,0d,0d,0d,No,No,No,No,No,No,No,No,No,No,No,0,0,0,0,0,
1497,2529,Yes,Auto Scheduled,Load,1h,Fixed Units,6,0.13d,1496,"October 1, 2026 2:00","October 5, 2026 5:00",10/1/26 2:00,10/5/26 5:00,6/1/26 10:00,6/3/26 2:00,0h,-707h,0ed,0,NA,NA,"April 10, 2026 4:45","April 13, 2026 8:45",As Soon As Possible,NA,NA,NA,4/23/26 10:51,1h,1h,0h,0,0,0,0,0,1.2.4.2.17.5,500,No,No,No,,,Black,,,,,,,,0,0,0,0d,0d,0d,No,No,No,No,No,No,No,No,No,No,No,0,0,0,0,0,
1498,2530,Yes,Auto Scheduled,Post Load Validation,2h,Fixed Units,6,0.25d,1497,"October 6, 2026 8:00","October 6, 2026 10:00",10/6/26 8:00,10/6/26 10:00,6/3/26 2:00,6/3/26 4:00,0h,-707h,0ed,0,NA,NA,"April 13, 2026 8:45","April 13, 2026 10:45",As Soon As Possible,NA,NA,NA,4/23/26 10:51,2h,2h,0h,0,0,0,0,0,1.2.4.2.17.6,500,No,No,No,,Sam Houff,Black,,,,,,,,0,0,0,0d,0d,0d,No,No,No,No,No,No,No,No,No,No,No,0,0,0,0,0,
1499,2531,Yes,Auto Scheduled,RTR_CM10_Credit_Management_Role,1.84d,Fixed Duration,5,1.13d,,"September 30, 2026 4:00","October 2, 2026 2:45",9/30/26 4:00,10/2/26 2:45,6/1/26 10:15,6/3/26 9:00,0d,-87.59d,0ed,0,NA,NA,"April 10, 2026 9:45","April 13, 2026 10:45",As Soon As Possible,NA,NA,NA,4/23/26 10:51,9h,9h,0h,0,0,0,0,0,1.2.4.2.18,500,No,Yes,Yes,,,Black,,,,,,,,0,0,0,0d,0d,0d,No,No,No,No,No,No,No,No,No,No,No,0,0,0,0,0,
1500,2532,Yes,Auto Scheduled,"Load File Staged and Posted ""Ready""",30m,Fixed Units,6,0.06d,1476,"September 30, 2026 4:00","September 30, 2026 4:30",9/30/26 4:00,9/30/26 4:30,6/1/26 10:15,6/1/26 10:45,0m,-42045m,0ed,0,NA,NA,"April 10, 2026 9:45","April 10, 2026 10:15",As Soon As Possible,NA,NA,NA,4/23/26 10:51,0.5h,0.5h,0h,0,0,0,0,0,1.2.4.2.18.1,500,No,No,No,,,Black,,,,,,,,0,0,0,0d,0d,0d,No,No,No,No,No,No,No,No,No,No,No,0,0,0,0,0,
1501,2533,Yes,Auto Scheduled,Pre Load Validation,30m,Fixed Units,6,0.06d,1500,"September 30, 2026 4:30","September 30, 2026 5:00",9/30/26 4:30,9/30/26 5:00,6/1/26 10:45,6/1/26 11:15,0m,-42045m,0ed,0,NA,NA,"April 10, 2026 10:15","April 10, 2026 10:45",As Soon As Possible,NA,NA,NA,4/23/26 10:51,0.5h,0.5h,0h,0,0,0,0,0,1.2.4.2.18.2,500,No,No,No,,Brian Wagner,Black,,,,,,,,0,0,0,0d,0d,0d,No,No,No,No,No,No,No,No,No,No,No,0,0,0,0,0,
1502,2534,Yes,Auto Scheduled,Simulate Load,1h,Fixed Units,6,0.13d,1501,"October 1, 2026 8:00","October 1, 2026 9:00",10/1/26 8:00,10/1/26 9:00,6/1/26 11:15,6/1/26 1:15,0h,-700.75h,0ed,0,NA,NA,"April 10, 2026 10:45","April 10, 2026 11:45",As Soon As Possible,NA,NA,NA,4/23/26 10:51,1h,1h,0h,0,0,0,0,0,1.2.4.2.18.3,500,No,No,No,,,Black,,,,,,,,0,0,0,0d,0d,0d,No,No,No,No,No,No,No,No,No,No,No,0,0,0,0,0,
1503,2535,Yes,Auto Scheduled,Error and Defect Mitigation,2h,Fixed Units,6,0.25d,1502,"October 1, 2026 9:00","October 1, 2026 11:30",10/1/26 9:00,10/1/26 11:30,6/1/26 1:15,6/1/26 3:45,0h,-700.75h,0ed,0,NA,NA,"April 10, 2026 11:45","April 10, 2026 2:45",As Soon As Possible,NA,NA,NA,4/23/26 10:51,2h,2h,0h,0,0,0,0,0,1.2.4.2.18.4,500,No,No,No,,Brian Wagner,Black,,,,,,,,0,0,0,0d,0d,0d,No,No,No,No,No,No,No,No,No,No,No,0,0,0,0,0,
1504,2536,Yes,Auto Scheduled,Load,2h,Fixed Units,6,0.25d,1503,"October 1, 2026 11:30","October 1, 2026 4:30",10/1/26 11:30,10/1/26 4:30,6/1/26 3:45,6/2/26 10:45,0h,-700.75h,0ed,0,NA,NA,"April 10, 2026 2:45","April 10, 2026 4:45",As Soon As Possible,NA,NA,NA,4/23/26 10:51,2h,2h,0h,0,0,0,0,0,1.2.4.2.18.5,500,No,No,No,,,Black,,,,,,,,0,0,0,0d,0d,0d,No,No,No,No,No,No,No,No,No,No,No,0,0,0,0,0,
1505,2537,Yes,Auto Scheduled,Post Load Validation,3h,Fixed Units,6,0.38d,1504,"October 1, 2026 4:30","October 2, 2026 2:45",10/1/26 4:30,10/2/26 2:45,6/2/26 10:45,6/3/26 9:00,0h,-700.75h,0ed,0,NA,NA,"April 10, 2026 4:45","April 13, 2026 10:45",As Soon As Possible,NA,NA,NA,4/23/26 10:51,3h,3h,0h,0,0,0,0,0,1.2.4.2.18.6,500,No,No,No,,Brian Wagner,Black,,,,,,,,0,0,0,0d,0d,0d,No,No,No,No,No,No,No,No,No,No,No,0,0,0,0,0,
1506,2538,Yes,Auto Scheduled,PTP_CM27_Vendor Master,6.28d,Fixed Duration,5,2.91d,,"September 24, 2026 8:30","October 2, 2026 10:45",9/24/26 8:30,10/2/26 10:45,5/20/26 10:30,6/3/26 4:00,0d,-90.75d,0ed,0,NA,NA,"April 10, 2026 10:45","April 15, 2026 10:00",As Soon As Possible,NA,NA,NA,4/23/26 10:51,10.25h,9h,0h,0,0,0,0,0,1.2.4.2.19,500,No,Yes,Yes,,,Black,,,,,,,,0,0,0,0d,0d,0d,No,No,No,No,No,No,No,No,No,No,No,0,0,0,0,0,
1507,2539,Yes,Auto Scheduled,Extract File,1h,Fixed Units,6,0.13d,1493,"October 1, 2026 8:00","October 1, 2026 9:00",10/1/26 8:00,10/1/26 9:00,6/2/26 1:15,6/2/26 2:15,0h,-691.75h,0ed,0,NA,NA,"April 10, 2026 10:45","April 10, 2026 11:45",As Soon As Possible,NA,NA,NA,4/23/26 10:51,1h,1h,0h,0,0,0,0,0,1.2.4.2.19.1,500,No,No,No,,,Black,,,,,,,,0,0,0,0d,0d,0d,No,No,No,No,No,No,No,No,No,No,No,0,0,0,0,0,
1508,2540,Yes,Auto Scheduled,Pre Load Validation,2h,Fixed Units,6,0.25d,1507,"October 1, 2026 9:00","October 1, 2026 11:00",10/1/26 9:00,10/1/26 11:00,6/2/26 2:15,6/2/26 4:15,0h,-691.75h,0ed,0,NA,NA,"April 10, 2026 11:45","April 10, 2026 2:45",As Soon As Possible,NA,NA,NA,4/23/26 10:51,2h,2h,0h,0,0,0,0,0,1.2.4.2.19.2,500,No,No,No,,Sam Houff,Black,,,,,,,,0,0,0,0d,0d,0d,No,No,No,No,No,No,No,No,No,No,No,0,0,0,0,0,
1509,2541,Yes,Auto Scheduled,Simulate Load,2.25h,Fixed Units,6,0.13d,1508,"October 1, 2026 11:00","October 1, 2026 2:15",10/1/26 11:00,10/1/26 2:15,6/2/26 4:15,6/3/26 9:30,0h,-691.75h,0ed,0,NA,NA,"April 10, 2026 2:45","April 14, 2026 2:00",Finish No Earlier Than,4/10/26 5:00,NA,NA,4/23/26 10:51,2.25h,1h,0h,0,0,0,0,0,1.2.4.2.19.3,500,No,No,No,,,Black,,,,,,,,0,0,0,0d,0d,0d,No,No,No,No,No,No,No,No,No,No,No,0,0,0,0,0,
1510,2542,Yes,Auto Scheduled,Error and Defect Mitigation,2h,Fixed Units,6,0.25d,1509,"October 1, 2026 2:15","October 2, 2026 10:45",10/1/26 2:15,10/2/26 10:45,6/3/26 9:30,6/3/26 4:00,0h,-691.75h,0ed,0,NA,NA,"April 14, 2026 2:00","April 14, 2026 4:00",As Soon As Possible,NA,NA,NA,4/23/26 10:51,2h,2h,0h,0,0,0,0,0,1.2.4.2.19.4,500,No,No,No,,Sam Houff,Black,,,,,,,,0,0,0,0d,0d,0d,No,No,No,No,No,No,No,No,No,No,No,0,0,0,0,0,
1511,2543,Yes,Auto Scheduled,Load,1h,Fixed Units,6,0.13d,,"September 24, 2026 8:30","September 24, 2026 9:30",9/24/26 8:30,9/24/26 9:30,5/20/26 10:30,5/20/26 11:30,0h,-726h,0ed,0,NA,NA,"April 14, 2026 4:00","April 14, 2026 5:00",As Soon As Possible,NA,NA,NA,4/23/26 10:51,1h,1h,0h,0,0,0,0,0,1.2.4.2.19.5,500,No,No,No,,,Black,,,,,,,,0,0,0,0d,0d,0d,No,No,No,No,No,No,No,No,No,No,No,0,0,0,0,0,
1512,2544,Yes,Auto Scheduled,Post Load Validation,2h,Fixed Units,6,0.25d,1511,"September 24, 2026 9:30","September 24, 2026 11:30",9/24/26 9:30,9/24/26 11:30,5/20/26 11:30,5/20/26 2:30,0h,-726h,0ed,0,NA,NA,"April 15, 2026 8:00","April 15, 2026 10:00",As Soon As Possible,NA,NA,NA,4/23/26 10:51,2h,2h,0h,0,0,0,0,0,1.2.4.2.19.6,500,No,No,No,,Sam Houff,Black,,,,,,,,0,0,0,0d,0d,0d,No,No,No,No,No,No,No,No,No,No,No,0,0,0,0,0,
1513,2545,Yes,Auto Scheduled,PTP_CM27_Vendor Master - Mass Maintenance - LFA1-WERKR,0.88d,Fixed Duration,5,3.16d,,"September 24, 2026 8:30","September 24, 2026 4:30",9/24/26 8:30,9/24/26 4:30,6/2/26 11:00,6/3/26 4:00,0d,-81.69d,0ed,0,NA,NA,"April 10, 2026 11:45","April 15, 2026 2:00",As Soon As Possible,NA,NA,NA,4/23/26 10:51,9h,9h,0h,0,0,0,0,0,1.2.4.2.20,500,No,Yes,Yes,,,Black,,,,,,,,0,0,0,0d,0d,0d,No,No,No,No,No,No,No,No,No,No,No,0,0,0,0,0,
1514,2546,Yes,Auto Scheduled,Extract File(Will Extract from LFA1),1h,Fixed Units,6,0.13d,,"September 24, 2026 8:30","September 24, 2026 9:30",9/24/26 8:30,9/24/26 9:30,6/2/26 11:00,6/2/26 12:00,0h,-653.5h,0ed,0,NA,NA,"April 10, 2026 11:45","April 10, 2026 1:45",Start No Earlier Than,4/16/26 8:00,NA,NA,4/23/26 10:51,1h,1h,0h,0,0,0,0,0,1.2.4.2.20.1,500,No,No,No,,,Black,,,,,,,,0,0,0,0d,0d,0d,No,No,No,No,No,No,No,No,No,No,No,0,0,0,0,0,
1515,2547,Yes,Auto Scheduled,Pre Load Validation,2h,Fixed Units,6,0.25d,1514,"September 24, 2026 9:30","September 24, 2026 11:30",9/24/26 9:30,9/24/26 11:30,6/2/26 1:00,6/2/26 3:00,0h,-653.5h,0ed,0,NA,NA,"April 10, 2026 1:45","April 10, 2026 3:45",As Soon As Possible,NA,NA,NA,4/23/26 10:51,2h,2h,0h,0,0,0,0,0,1.2.4.2.20.2,500,No,No,No,,Sam Houff,Black,,,,,,,,0,0,0,0d,0d,0d,No,No,No,No,No,No,No,No,No,No,No,0,0,0,0,0,
1516,2548,Yes,Auto Scheduled,Simulate Load/ Not Needed,1h,Fixed Units,6,0.13d,1515,"September 24, 2026 11:30","September 24, 2026 1:30",9/24/26 11:30,9/24/26 1:30,6/2/26 3:00,6/2/26 4:00,0h,-653.5h,0ed,0,NA,NA,"April 10, 2026 3:45","April 10, 2026 4:45",As Soon As Possible,NA,NA,NA,4/23/26 10:51,1h,1h,0h,0,0,0,0,0,1.2.4.2.20.3,500,No,No,No,,,Black,,,,,,,,0,0,0,0d,0d,0d,No,No,No,No,No,No,No,No,No,No,No,0,0,0,0,0,
1517,2549,Yes,Auto Scheduled,Error and Defect Mitigation,2h,Fixed Units,6,0.25d,1516,"September 24, 2026 1:30","September 24, 2026 3:30",9/24/26 1:30,9/24/26 3:30,6/3/26 2:00,6/3/26 4:00,0h,-647.5h,0ed,0,NA,NA,"April 10, 2026 4:45","April 13, 2026 9:45",As Soon As Possible,NA,NA,NA,4/23/26 10:51,2h,2h,0h,0,0,0,0,0,1.2.4.2.20.4,500,No,No,No,,Sam Houff,Black,,,,,,,,0,0,0,0d,0d,0d,No,No,No,No,No,No,No,No,No,No,No,0,0,0,0,0,
1518,2550,Yes,Auto Scheduled,Load,1h,Fixed Units,6,0.13d,1516,"September 24, 2026 1:30","September 24, 2026 2:30",9/24/26 1:30,9/24/26 2:30,6/2/26 4:00,6/2/26 5:00,0h,-653.5h,0ed,0,NA,NA,"April 15, 2026 10:00","April 15, 2026 11:00",As Soon As Possible,NA,NA,NA,4/23/26 10:51,1h,1h,0h,0,0,0,0,0,1.2.4.2.20.5,500,No,No,No,,,Black,,,,,,,,0,0,0,0d,0d,0d,No,No,No,No,No,No,No,No,No,No,No,0,0,0,0,0,
1519,2551,Yes,Auto Scheduled,Post Load Validation,2h,Fixed Units,6,0.25d,1518,"September 24, 2026 2:30","September 24, 2026 4:30",9/24/26 2:30,9/24/26 4:30,6/3/26 8:00,6/3/26 10:00,0h,-653.5h,0ed,0,NA,NA,"April 15, 2026 11:00","April 15, 2026 2:00",As Soon As Possible,NA,NA,NA,4/23/26 10:51,2h,2h,0h,0,0,0,0,0,1.2.4.2.20.6,500,No,No,No,,Sam Houff,Black,,,,,,,,0,0,0,0d,0d,0d,No,No,No,No,No,No,No,No,No,No,No,0,0,0,0,0,
1520,2552,Yes,Auto Scheduled,RTR_****_Credit Hierarchy,1.91d,Fixed Duration,5,1.25d,,"October 1, 2026 11:30","October 5, 2026 10:45",10/1/26 11:30,10/5/26 10:45,6/3/26 10:00,6/3/26 4:00,0d,-87.47d,0ed,0,NA,NA,"April 10, 2026 2:45","April 13, 2026 4:45",As Soon As Possible,NA,NA,NA,4/23/26 10:51,5.5h,5.5h,0h,0,0,0,0,0,1.2.4.2.21,500,No,Yes,Yes,,,Black,,,,,,,,0,0,0,0d,0d,0d,No,No,No,No,No,No,No,No,No,No,No,0,0,0,0,0,
1521,2553,Yes,Auto Scheduled,"Manual File Staged and Posted ""Ready""",30m,Fixed Units,6,0.06d,1503,"October 1, 2026 11:30","October 1, 2026 12:00",10/1/26 11:30,10/1/26 12:00,6/3/26 3:30,6/3/26 4:00,0m,-41100m,0ed,0,NA,NA,"April 10, 2026 2:45","April 10, 2026 3:15",Start No Earlier Than,4/15/26 8:00,NA,NA,4/23/26 10:51,0.5h,0.5h,0h,0,0,0,0,0,1.2.4.2.21.1,500,No,No,No,,Brian Wagner,Black,,,,,,,,0,0,0,0d,0d,0d,No,No,No,No,No,No,No,No,No,No,No,0,0,0,0,0,
1522,2554,Yes,Auto Scheduled,Load,2h,Fixed Units,6,0.25d,1505,"October 2, 2026 2:45","October 2, 2026 4:45",10/2/26 2:45,10/2/26 4:45,6/3/26 10:00,6/3/26 12:00,0h,-699.75h,0ed,0,NA,NA,"April 13, 2026 10:45","April 13, 2026 1:45",As Soon As Possible,NA,NA,NA,4/23/26 10:51,2h,2h,0h,0,0,0,0,0,1.2.4.2.21.2,500,No,No,No,,,Black,,,,,,,,0,0,0,0d,0d,0d,No,No,No,No,No,No,No,No,No,No,No,0,0,0,0,0,
1523,2555,Yes,Auto Scheduled,Post Load Validation,3h,Fixed Units,6,0.38d,1522,"October 2, 2026 4:45","October 5, 2026 10:45",10/2/26 4:45,10/5/26 10:45,6/3/26 1:00,6/3/26 4:00,0h,-699.75h,0ed,0,NA,NA,"April 13, 2026 1:45","April 13, 2026 4:45",As Soon As Possible,NA,NA,NA,4/23/26 10:51,3h,3h,0h,0,0,0,0,0,1.2.4.2.21.3,500,No,No,No,,Brian Wagner,Black,,,,,,,,0,0,0,0d,0d,0d,No,No,No,No,No,No,No,No,No,No,No,0,0,0,0,0,
1524,2556,Yes,Auto Scheduled,PTP_CM27_BP_Intercompany Supplier,1.13d,Fixed Duration,5,1.13d,,"September 24, 2026 11:30","September 25, 2026 1:30",9/24/26 11:30,9/25/26 1:30,6/2/26 3:00,6/3/26 4:00,0d,-81.69d,0ed,0,NA,NA,"April 13, 2026 11:45","April 14, 2026 1:45",As Soon As Possible,NA,NA,NA,4/23/26 10:51,15h,15h,0h,0,0,0,0,0,1.2.4.2.22,500,No,Yes,Yes,,,Black,,,,,,,,0,0,0,0d,0d,0d,No,No,No,No,No,No,No,No,No,No,No,0,0,0,0,0,
1525,2557,Yes,Auto Scheduled,"Load File Staged and Posted ""Ready""",30m,Fixed Units,6,0.06d,1512,"September 24, 2026 11:30","September 24, 2026 12:00",9/24/26 11:30,9/24/26 12:00,6/2/26 3:00,6/2/26 3:30,0m,-39210m,0ed,0,NA,NA,"April 13, 2026 11:45","April 13, 2026 1:15",As Soon As Possible,NA,NA,NA,4/23/26 10:51,1h,1h,0h,0,0,0,0,0,1.2.4.2.22.1,500,No,No,No,,,Black,,,,,,,,0,0,0,0d,0d,0d,No,No,No,No,No,No,No,No,No,No,No,0,0,0,0,0,
1526,2558,Yes,Auto Scheduled,Pre Load Validation,30m,Fixed Units,6,0.06d,1525,"September 24, 2026 1:00","September 24, 2026 1:30",9/24/26 1:00,9/24/26 1:30,6/2/26 3:30,6/2/26 4:00,0m,-39210m,0ed,0,NA,NA,"April 13, 2026 1:15","April 13, 2026 1:45",As Soon As Possible,NA,NA,NA,4/23/26 10:51,1h,1h,0h,0,0,0,0,0,1.2.4.2.22.2,500,No,No,No,,"Sam Houff,Kim Kolesar",Black,,,,,,,,0,0,0,0d,0d,0d,No,No,No,No,No,No,No,No,No,No,No,0,0,0,0,0,
1527,2559,Yes,Auto Scheduled,Simulate Load,1h,Fixed Units,6,0.13d,1526,"September 24, 2026 1:30","September 24, 2026 2:30",9/24/26 1:30,9/24/26 2:30,6/2/26 4:00,6/2/26 5:00,0h,-653.5h,0ed,0,NA,NA,"April 13, 2026 1:45","April 13, 2026 2:45",As Soon As Possible,NA,NA,NA,4/23/26 10:51,1h,1h,0h,0,0,0,0,0,1.2.4.2.22.3,500,No,No,No,,,Black,,,,,,,,0,0,0,0d,0d,0d,No,No,No,No,No,No,No,No,No,No,No,0,0,0,0,0,
1528,2560,Yes,Auto Scheduled,Error and Defect Mitigation,2h,Fixed Units,6,0.25d,1527,"September 24, 2026 2:30","September 24, 2026 4:30",9/24/26 2:30,9/24/26 4:30,6/3/26 8:00,6/3/26 10:00,0h,-653.5h,0ed,0,NA,NA,"April 13, 2026 2:45","April 13, 2026 4:45",As Soon As Possible,NA,NA,NA,4/23/26 10:51,4h,4h,0h,0,0,0,0,0,1.2.4.2.22.4,500,No,No,No,,"Sam Houff,Kim Kolesar",Black,,,,,,,,0,0,0,0d,0d,0d,No,No,No,No,No,No,No,No,No,No,No,0,0,0,0,0,
1529,2561,Yes,Auto Scheduled,Load,2h,Fixed Units,6,0.25d,1528,"September 24, 2026 4:30","September 25, 2026 9:30",9/24/26 4:30,9/25/26 9:30,6/3/26 10:00,6/3/26 12:00,0h,-653.5h,0ed,0,NA,NA,"April 13, 2026 4:45","April 14, 2026 9:45",As Soon As Possible,NA,NA,NA,4/23/26 10:51,2h,2h,0h,0,0,0,0,0,1.2.4.2.22.5,500,No,No,No,,,Black,,,,,,,,0,0,0,0d,0d,0d,No,No,No,No,No,No,No,No,No,No,No,0,0,0,0,0,
1530,2562,Yes,Auto Scheduled,Post Load Validation,3h,Fixed Units,6,0.38d,1529,"September 25, 2026 9:30","September 25, 2026 1:30",9/25/26 9:30,9/25/26 1:30,6/3/26 1:00,6/3/26 4:00,0h,-653.5h,0ed,0,NA,NA,"April 14, 2026 9:45","April 14, 2026 1:45",As Soon As Possible,NA,NA,NA,4/23/26 10:51,6h,6h,0h,0,0,0,0,0,1.2.4.2.22.6,500,No,No,No,,"Sam Houff,Kim Kolesar",Black,,,,,,,,0,0,0,0d,0d,0d,No,No,No,No,No,No,No,No,No,No,No,0,0,0,0,0,
1531,2563,Yes,Auto Scheduled,PTP_CM27_BP_Intercompany Customer,1.06d,Fixed Duration,5,1.13d,,"September 24, 2026 8:30","September 25, 2026 9:00",9/24/26 8:30,9/25/26 9:00,6/2/26 3:30,6/3/26 4:00,0d,-81.25d,0ed,0,NA,NA,"April 13, 2026 11:45","April 14, 2026 1:45",As Soon As Possible,NA,NA,NA,4/23/26 10:51,15h,15h,0h,0,0,0,0,0,1.2.4.2.23,500,No,Yes,Yes,,,Black,,,,,,,,0,0,0,0d,0d,0d,No,No,No,No,No,No,No,No,No,No,No,0,0,0,0,0,
1532,2564,Yes,Auto Scheduled,"Load File Staged and Posted ""Ready""",30m,Fixed Units,6,0.06d,,"September 24, 2026 8:30","September 24, 2026 9:00",9/24/26 8:30,9/24/26 9:00,6/3/26 3:30,6/3/26 4:00,0m,-38520m,0ed,0,NA,NA,"April 13, 2026 11:45","April 13, 2026 1:15",As Soon As Possible,NA,NA,NA,4/23/26 10:51,1h,1h,0h,0,0,0,0,0,1.2.4.2.23.1,500,No,No,No,,,Black,,,,,,,,0,0,0,0d,0d,0d,No,No,No,No,No,No,No,No,No,No,No,0,0,0,0,0,
1533,2565,Yes,Auto Scheduled,Pre Load Validation,30m,Fixed Units,6,0.06d,,"September 24, 2026 8:30","September 24, 2026 9:00",9/24/26 8:30,9/24/26 9:00,6/2/26 3:30,6/2/26 4:00,0m,-39000m,0ed,0,NA,NA,"April 13, 2026 1:15","April 13, 2026 1:45",As Soon As Possible,NA,NA,NA,4/23/26 10:51,1h,1h,0h,0,0,0,0,0,1.2.4.2.23.2,500,No,No,No,,"Sam Houff,Kim Kolesar",Black,,,,,,,,0,0,0,0d,0d,0d,No,No,No,No,No,No,No,No,No,No,No,0,0,0,0,0,
1534,2566,Yes,Auto Scheduled,Simulate Load,1h,Fixed Units,6,0.13d,1533,"September 24, 2026 9:00","September 24, 2026 10:00",9/24/26 9:00,9/24/26 10:00,6/2/26 4:00,6/2/26 5:00,0h,-650h,0ed,0,NA,NA,"April 13, 2026 1:45","April 13, 2026 2:45",As Soon As Possible,NA,NA,NA,4/23/26 10:51,1h,1h,0h,0,0,0,0,0,1.2.4.2.23.3,500,No,No,No,,,Black,,,,,,,,0,0,0,0d,0d,0d,No,No,No,No,No,No,No,No,No,No,No,0,0,0,0,0,
1535,2567,Yes,Auto Scheduled,Error and Defect Mitigation,2h,Fixed Units,6,0.25d,1534,"September 24, 2026 10:00","September 24, 2026 12:00",9/24/26 10:00,9/24/26 12:00,6/3/26 8:00,6/3/26 10:00,0h,-650h,0ed,0,NA,NA,"April 13, 2026 2:45","April 13, 2026 4:45",As Soon As Possible,NA,NA,NA,4/23/26 10:51,4h,4h,0h,0,0,0,0,0,1.2.4.2.23.4,500,No,No,No,,"Sam Houff,Kim Kolesar",Black,,,,,,,,0,0,0,0d,0d,0d,No,No,No,No,No,No,No,No,No,No,No,0,0,0,0,0,
1536,2568,Yes,Auto Scheduled,Load,2h,Fixed Units,6,0.25d,1535,"September 24, 2026 1:00","September 24, 2026 3:00",9/24/26 1:00,9/24/26 3:00,6/3/26 10:00,6/3/26 12:00,0h,-650h,0ed,0,NA,NA,"April 13, 2026 4:45","April 14, 2026 9:45",As Soon As Possible,NA,NA,NA,4/23/26 10:51,2h,2h,0h,0,0,0,0,0,1.2.4.2.23.5,500,No,No,No,,,Black,,,,,,,,0,0,0,0d,0d,0d,No,No,No,No,No,No,No,No,No,No,No,0,0,0,0,0,
1537,2569,Yes,Auto Scheduled,Post Load Validation,3h,Fixed Units,6,0.38d,1536,"September 24, 2026 3:00","September 25, 2026 9:00",9/24/26 3:00,9/25/26 9:00,6/3/26 1:00,6/3/26 4:00,0h,-650h,0ed,0,NA,NA,"April 14, 2026 9:45","April 14, 2026 1:45",As Soon As Possible,NA,NA,NA,4/23/26 10:51,6h,6h,0h,0,0,0,0,0,1.2.4.2.23.6,500,No,No,No,,"Sam Houff,Kim Kolesar",Black,,,,,,,,0,0,0,0d,0d,0d,No,No,No,No,No,No,No,No,No,No,No,0,0,0,0,0,
1538,2570,Yes,Auto Scheduled,PTP_CM26_Material_Master - All Types,2.28d,Fixed Duration,5,3.16d,,"September 24, 2026 9:30","September 28, 2026 11:45",9/24/26 9:30,9/28/26 11:45,5/20/26 2:30,6/3/26 4:00,0d,-90.5d,0ed,0,NA,NA,"April 10, 2026 10:45","April 15, 2026 12:00",As Soon As Possible,NA,NA,NA,4/23/26 10:51,19h,19h,0h,0,0,0,0,0,1.2.4.2.24,500,No,Yes,Yes,,,Black,,,,,,,,0,0,0,0d,0d,0d,No,No,No,No,No,No,No,No,No,No,No,0,0,0,0,0,
1539,2571,Yes,Auto Scheduled,Extract File,5h,Fixed Units,6,0.63d,1514,"September 24, 2026 9:30","September 25, 2026 8:15",9/24/26 9:30,9/25/26 8:15,6/3/26 8:15,6/3/26 4:00,0h,-649.25h,0ed,0,NA,NA,"April 10, 2026 10:45","April 13, 2026 9:30",As Soon As Possible,NA,NA,NA,4/23/26 10:51,5h,5h,0h,0,0,0,0,0,1.2.4.2.24.1,500,No,No,No,,,Black,,,,,,,,0,0,0,0d,0d,0d,No,No,No,No,No,No,No,No,No,No,No,0,0,0,0,0,
1540,2572,Yes,Auto Scheduled,Pre Load Validation,2h,Fixed Units,6,0.25d,1512,"September 24, 2026 11:30","September 25, 2026 9:45",9/24/26 11:30,9/25/26 9:45,5/20/26 2:30,5/21/26 11:45,0h,-726h,0ed,0,NA,NA,"April 13, 2026 11:45","April 14, 2026 10:00",As Soon As Possible,NA,NA,NA,4/23/26 10:51,4h,4h,0h,0,0,0,0,0,1.2.4.2.24.2,500,No,No,No,,"Sam Houff,Kim Kolesar,Matt",Black,,,,,,,,0,0,0,0d,0d,0d,No,No,No,No,No,No,No,No,No,No,No,0,0,0,0,0,
1541,2573,Yes,Auto Scheduled,Simulate Load,1h,Fixed Units,6,0.13d,1540,"September 25, 2026 9:45","September 25, 2026 10:45",9/25/26 9:45,9/25/26 10:45,5/21/26 11:45,5/21/26 1:45,0h,-726h,0ed,0,NA,NA,"April 14, 2026 10:00","April 14, 2026 11:00",As Soon As Possible,NA,NA,NA,4/23/26 10:51,1h,1h,0h,0,0,0,0,0,1.2.4.2.24.3,500,No,No,No,,,Black,,,,,,,,0,0,0,0d,0d,0d,No,No,No,No,No,No,No,No,No,No,No,0,0,0,0,0,
1542,2574,Yes,Auto Scheduled,Error and Defect Mitigation,4h,Fixed Units,6,0.5d,1541,"September 25, 2026 10:45","September 25, 2026 3:45",9/25/26 10:45,9/25/26 3:45,5/21/26 1:45,5/22/26 8:45,0h,-726h,0ed,0,NA,NA,"April 14, 2026 11:00","April 14, 2026 4:00",As Soon As Possible,NA,NA,NA,4/23/26 10:51,4h,4h,0h,0,0,0,0,0,1.2.4.2.24.4,500,No,No,No,,"Sam Houff,Kim Kolesar,Matt",Black,,,,,,,,0,0,0,0d,0d,0d,No,No,No,No,No,No,No,No,No,No,No,0,0,0,0,0,
1543,2575,Yes,Auto Scheduled,Load,3h,Fixed Units,6,0.38d,1542,"September 25, 2026 3:45","September 28, 2026 9:45",9/25/26 3:45,9/28/26 9:45,5/22/26 8:45,5/22/26 11:45,0h,-726h,0ed,0,NA,NA,"April 14, 2026 4:00","April 15, 2026 10:00",As Soon As Possible,NA,NA,NA,4/23/26 10:51,3h,3h,0h,0,0,0,0,0,1.2.4.2.24.5,500,No,No,No,,,Black,,,,,,,,0,0,0,0d,0d,0d,No,No,No,No,No,No,No,No,No,No,No,0,0,0,0,0,
1544,2576,Yes,Auto Scheduled,Post Load Validation,2h,Fixed Units,6,0.25d,1543,"September 28, 2026 9:45","September 28, 2026 11:45",9/28/26 9:45,9/28/26 11:45,5/27/26 8:00,5/27/26 10:00,0h,-705.75h,0ed,0,NA,NA,"April 15, 2026 10:00","April 15, 2026 12:00",As Soon As Possible,NA,NA,NA,4/23/26 10:51,2h,2h,0h,0,0,0,0,0,1.2.4.2.24.6,500,No,No,No,,"Sam Houff,Kim Kolesar,Matt",Black,,,,,,,,0,0,0,0d,0d,0d,No,No,No,No,No,No,No,No,No,No,No,0,0,0,0,0,
1545,2577,Yes,Auto Scheduled,PTP_CM26_Material_Master - SERV - Service Materials,1.34d,Fixed Duration,5,5.88d,,"September 25, 2026 4:30","September 29, 2026 10:15",9/25/26 4:30,9/29/26 10:15,6/2/26 3:30,6/3/26 4:00,0d,-83.41d,0ed,0,NA,NA,"April 7, 2026 4:15","April 15, 2026 3:15",As Soon As Possible,NA,NA,NA,4/23/26 10:51,15h,15h,0h,0,0,0,0,0,1.2.4.2.25,500,No,Yes,Yes,,,Black,,,,,,,,0,0,0,0d,0d,0d,No,No,No,No,No,No,No,No,No,No,No,0,0,0,0,0,
1546,2578,Yes,Auto Scheduled,"Load File Staged and Posted ""Ready""",30m,Fixed Units,6,0.06d,1415,"September 25, 2026 4:30","September 25, 2026 5:00",9/25/26 4:30,9/25/26 5:00,6/3/26 3:30,6/3/26 4:00,0m,-39420m,0ed,0,NA,NA,"April 7, 2026 4:15","April 7, 2026 4:45",As Soon As Possible,NA,NA,NA,4/23/26 10:51,1h,1h,0h,0,0,0,0,0,1.2.4.2.25.1,500,No,No,No,,,Black,,,,,,,,0,0,0,0d,0d,0d,No,No,No,No,No,No,No,No,No,No,No,0,0,0,0,0,
1547,2579,Yes,Auto Scheduled,Pre Load Validation,30m,Fixed Units,6,0.06d,1543,"September 28, 2026 9:45","September 28, 2026 10:15",9/28/26 9:45,9/28/26 10:15,6/2/26 3:30,6/2/26 4:00,0m,-40035m,0ed,0,NA,NA,"April 14, 2026 2:45","April 14, 2026 3:15",As Soon As Possible,NA,NA,NA,4/23/26 10:51,1h,1h,0h,0,0,0,0,0,1.2.4.2.25.2,500,No,No,No,,"Sam Houff,Kim Kolesar",Black,,,,,,,,0,0,0,0d,0d,0d,No,No,No,No,No,No,No,No,No,No,No,0,0,0,0,0,
1548,2580,Yes,Auto Scheduled,Simulate Load,1h,Fixed Units,6,0.13d,1547,"September 28, 2026 10:15","September 28, 2026 11:15",9/28/26 10:15,9/28/26 11:15,6/2/26 4:00,6/2/26 5:00,0h,-667.25h,0ed,0,NA,NA,"April 14, 2026 3:15","April 14, 2026 4:15",As Soon As Possible,NA,NA,NA,4/23/26 10:51,1h,1h,0h,0,0,0,0,0,1.2.4.2.25.3,500,No,No,No,,,Black,,,,,,,,0,0,0,0d,0d,0d,No,No,No,No,No,No,No,No,No,No,No,0,0,0,0,0,
1549,2581,Yes,Auto Scheduled,Error and Defect Mitigation,2h,Fixed Units,6,0.25d,1548,"September 28, 2026 11:15","September 28, 2026 2:15",9/28/26 11:15,9/28/26 2:15,6/3/26 8:00,6/3/26 10:00,0h,-667.25h,0ed,0,NA,NA,"April 14, 2026 4:15","April 15, 2026 9:15",As Soon As Possible,NA,NA,NA,4/23/26 10:51,4h,4h,0h,0,0,0,0,0,1.2.4.2.25.4,500,No,No,No,,"Sam Houff,Kim Kolesar",Black,,,,,,,,0,0,0,0d,0d,0d,No,No,No,No,No,No,No,No,No,No,No,0,0,0,0,0,
1550,2582,Yes,Auto Scheduled,Load,2h,Fixed Units,6,0.25d,1549,"September 28, 2026 2:15","September 28, 2026 4:15",9/28/26 2:15,9/28/26 4:15,6/3/26 10:00,6/3/26 12:00,0h,-667.25h,0ed,0,NA,NA,"April 15, 2026 9:15","April 15, 2026 11:15",As Soon As Possible,NA,NA,NA,4/23/26 10:51,2h,2h,0h,0,0,0,0,0,1.2.4.2.25.5,500,No,No,No,,,Black,,,,,,,,0,0,0,0d,0d,0d,No,No,No,No,No,No,No,No,No,No,No,0,0,0,0,0,
1551,2583,Yes,Auto Scheduled,Post Load Validation,3h,Fixed Units,6,0.38d,1550,"September 28, 2026 4:15","September 29, 2026 10:15",9/28/26 4:15,9/29/26 10:15,6/3/26 1:00,6/3/26 4:00,0h,-667.25h,0ed,0,NA,NA,"April 15, 2026 11:15","April 15, 2026 3:15",As Soon As Possible,NA,NA,NA,4/23/26 10:51,6h,6h,0h,0,0,0,0,0,1.2.4.2.25.6,500,No,No,No,,"Sam Houff,Kim Kolesar",Black,,,,,,,,0,0,0,0d,0d,0d,No,No,No,No,No,No,No,No,No,No,No,0,0,0,0,0,
1552,2584,Yes,Auto Scheduled,PTP_CM26_Material_Master - KMAT - Configurable Materials,1.34d,Fixed Duration,5,5.88d,,"September 25, 2026 4:30","September 29, 2026 10:15",9/25/26 4:30,9/29/26 10:15,5/22/26 11:45,6/1/26 10:15,0d,-90.47d,0ed,0,NA,NA,"April 7, 2026 4:15","April 15, 2026 3:15",As Soon As Possible,NA,NA,NA,4/23/26 10:51,9h,9h,0h,0,0,0,0,0,1.2.4.2.26,500,No,Yes,Yes,,,Black,,,,,,,,0,0,0,0d,0d,0d,No,No,No,No,No,No,No,No,No,No,No,0,0,0,0,0,
1553,2585,Yes,Auto Scheduled,"Load File Staged and Posted ""Ready""",30m,Fixed Units,6,0.06d,1415,"September 25, 2026 4:30","September 25, 2026 5:00",9/25/26 4:30,9/25/26 5:00,6/1/26 9:45,6/1/26 10:15,0m,-40665m,0ed,0,NA,NA,"April 7, 2026 4:15","April 7, 2026 4:45",As Soon As Possible,NA,NA,NA,4/23/26 10:51,0.5h,0.5h,0h,0,0,0,0,0,1.2.4.2.26.1,500,No,No,No,,,Black,,,,,,,,0,0,0,0d,0d,0d,No,No,No,No,No,No,No,No,No,No,No,0,0,0,0,0,
1554,2586,Yes,Auto Scheduled,Pre Load Validation,30m,Fixed Units,6,0.06d,1543,"September 28, 2026 9:45","September 28, 2026 10:15",9/28/26 9:45,9/28/26 10:15,5/22/26 11:45,5/22/26 1:15,0m,-43560m,0ed,0,NA,NA,"April 14, 2026 2:45","April 14, 2026 3:15",As Soon As Possible,NA,NA,NA,4/23/26 10:51,0.5h,0.5h,0h,0,0,0,0,0,1.2.4.2.26.2,500,No,No,No,,"Sam Houff,Kim Kolesar,Matt",Black,,,,,,,,0,0,0,0d,0d,0d,No,No,No,No,No,No,No,No,No,No,No,0,0,0,0,0,
1555,2587,Yes,Auto Scheduled,Simulate Load,1h,Fixed Units,6,0.13d,1554,"September 28, 2026 10:15","September 28, 2026 11:15",9/28/26 10:15,9/28/26 11:15,5/22/26 1:15,5/22/26 2:15,0h,-726h,0ed,0,NA,NA,"April 14, 2026 3:15","April 14, 2026 4:15",As Soon As Possible,NA,NA,NA,4/23/26 10:51,1h,1h,0h,0,0,0,0,0,1.2.4.2.26.3,500,No,No,No,,,Black,,,,,,,,0,0,0,0d,0d,0d,No,No,No,No,No,No,No,No,No,No,No,0,0,0,0,0,
1556,2588,Yes,Auto Scheduled,Error and Defect Mitigation,2h,Fixed Units,6,0.25d,1555,"September 28, 2026 11:15","September 28, 2026 2:15",9/28/26 11:15,9/28/26 2:15,5/22/26 2:15,5/22/26 4:15,0h,-726h,0ed,0,NA,NA,"April 14, 2026 4:15","April 15, 2026 9:15",As Soon As Possible,NA,NA,NA,4/23/26 10:51,2h,2h,0h,0,0,0,0,0,1.2.4.2.26.4,500,No,No,No,,"Sam Houff,Kim Kolesar,Matt",Black,,,,,,,,0,0,0,0d,0d,0d,No,No,No,No,No,No,No,No,No,No,No,0,0,0,0,0,
1557,2589,Yes,Auto Scheduled,Load,2h,Fixed Units,6,0.25d,1556,"September 28, 2026 2:15","September 28, 2026 4:15",9/28/26 2:15,9/28/26 4:15,5/22/26 4:15,5/25/26 9:15,0h,-726h,0ed,0,NA,NA,"April 15, 2026 9:15","April 15, 2026 11:15",As Soon As Possible,NA,NA,NA,4/23/26 10:51,2h,2h,0h,0,0,0,0,0,1.2.4.2.26.5,500,No,No,No,,,Black,,,,,,,,0,0,0,0d,0d,0d,No,No,No,No,No,No,No,No,No,No,No,0,0,0,0,0,
1558,2590,Yes,Auto Scheduled,Post Load Validation,3h,Fixed Units,6,0.38d,1557,"September 28, 2026 4:15","September 29, 2026 10:15",9/28/26 4:15,9/29/26 10:15,5/25/26 9:15,5/25/26 1:15,0h,-726h,0ed,0,NA,NA,"April 15, 2026 11:15","April 15, 2026 3:15",As Soon As Possible,NA,NA,NA,4/23/26 10:51,3h,3h,0h,0,0,0,0,0,1.2.4.2.26.6,500,No,No,No,,"Sam Houff,Kim Kolesar,Matt",Black,,,,,,,,0,0,0,0d,0d,0d,No,No,No,No,No,No,No,No,No,No,No,0,0,0,0,0,
1559,2591,Yes,Auto Scheduled,PTP_CM28_Purchase_Info_Records,3.59d,Fixed Duration,5,1.28d,,"September 24, 2026 11:30","September 30, 2026 8:15",9/24/26 11:30,9/30/26 8:15,5/28/26 2:53,6/3/26 4:00,0d,-84.7d,0ed,0,NA,NA,"April 15, 2026 10:00","April 16, 2026 1:15",As Soon As Possible,NA,NA,NA,4/23/26 10:51,9h,9h,0h,0,0,0,0,0,1.2.4.2.27,500,No,Yes,Yes,,,Black,,,,,,,,0,0,0,0d,0d,0d,No,No,No,No,No,No,No,No,No,No,No,0,0,0,0,0,
1560,2592,Yes,Auto Scheduled,Extract File,1h,Fixed Units,6,0.13d,"1544,1558","September 29, 2026 10:15","September 29, 2026 11:15",9/29/26 10:15,9/29/26 11:15,5/28/26 2:53,5/28/26 3:53,0h,-700.38h,0ed,0,NA,NA,"April 15, 2026 3:15","April 15, 2026 4:15",As Soon As Possible,NA,NA,NA,4/23/26 10:51,1h,1h,0h,0,0,0,0,0,1.2.4.2.27.1,500,No,No,No,,,Black,,,,,,,,0,0,0,0d,0d,0d,No,No,No,No,No,No,No,No,No,No,No,0,0,0,0,0,
1561,2593,Yes,Auto Scheduled,Pre Load Validation,2h,Fixed Units,6,0.25d,1560,"September 29, 2026 11:15","September 29, 2026 2:15",9/29/26 11:15,9/29/26 2:15,6/3/26 10:00,6/3/26 12:00,0h,-673.25h,0ed,0,NA,NA,"April 15, 2026 4:15","April 16, 2026 9:15",As Soon As Possible,NA,NA,NA,4/23/26 10:51,2h,2h,0h,0,0,0,0,0,1.2.4.2.27.2,500,No,No,No,,Sam Houff,Black,,,,,,,,0,0,0,0d,0d,0d,No,No,No,No,No,No,No,No,No,No,No,0,0,0,0,0,
1562,2594,Yes,Auto Scheduled,Simulate Load,1h,Fixed Units,6,0.13d,1561,"September 29, 2026 2:15","September 29, 2026 3:15",9/29/26 2:15,9/29/26 3:15,6/3/26 1:00,6/3/26 2:00,0h,-673.25h,0ed,0,NA,NA,"April 16, 2026 9:15","April 16, 2026 10:15",As Soon As Possible,NA,NA,NA,4/23/26 10:51,1h,1h,0h,0,0,0,0,0,1.2.4.2.27.3,500,No,No,No,,,Black,,,,,,,,0,0,0,0d,0d,0d,No,No,No,No,No,No,No,No,No,No,No,0,0,0,0,0,
1563,2595,Yes,Auto Scheduled,Error and Defect Mitigation,2h,Fixed Units,6,0.25d,1562,"September 29, 2026 3:15","September 30, 2026 8:15",9/29/26 3:15,9/30/26 8:15,6/3/26 2:00,6/3/26 4:00,0h,-673.25h,0ed,0,NA,NA,"April 16, 2026 10:15","April 16, 2026 1:15",Start No Earlier Than,4/17/26 8:00,NA,NA,4/23/26 10:51,2h,2h,0h,0,0,0,0,0,1.2.4.2.27.4,500,No,No,No,,Sam Houff,Black,,,,,,,,0,0,0,0d,0d,0d,No,No,No,No,No,No,No,No,No,No,No,0,0,0,0,0,
1564,2596,Yes,Auto Scheduled,Load,1h,Fixed Units,6,0.13d,1512,"September 24, 2026 11:30","September 24, 2026 1:30",9/24/26 11:30,9/24/26 1:30,6/3/26 1:00,6/3/26 2:00,0h,-647.5h,0ed,0,NA,NA,"April 15, 2026 10:00","April 15, 2026 11:00",Start No Earlier Than,4/17/26 8:00,NA,NA,4/23/26 10:51,1h,1h,0h,0,0,0,0,0,1.2.4.2.27.5,500,No,No,No,,,Black,,,,,,,,0,0,0,0d,0d,0d,No,No,No,No,No,No,No,No,No,No,No,0,0,0,0,0,
1565,2597,Yes,Auto Scheduled,Post Load Validation,2h,Fixed Units,6,0.25d,1564,"September 24, 2026 1:30","September 24, 2026 3:30",9/24/26 1:30,9/24/26 3:30,6/3/26 2:00,6/3/26 4:00,0h,-647.5h,0ed,0,NA,NA,"April 15, 2026 11:00","April 15, 2026 2:00",Start No Earlier Than,4/17/26 8:00,NA,NA,4/23/26 10:51,2h,2h,0h,0,0,0,0,0,1.2.4.2.27.6,500,No,No,No,,Sam Houff,Black,,,,,,,,0,0,0,0d,0d,0d,No,No,No,No,No,No,No,No,No,No,No,0,0,0,0,0,
1566,2598,Yes,Auto Scheduled,PTP_CM28_Purchase_Info_Record External Processing,1.13d,Fixed Duration,5,1.13d,,"September 29, 2026 10:15","September 30, 2026 11:15",9/29/26 10:15,9/30/26 11:15,6/2/26 3:00,6/3/26 4:00,0d,-84.53d,0ed,0,NA,NA,"April 15, 2026 3:15","April 16, 2026 4:15",As Soon As Possible,NA,NA,NA,4/23/26 10:51,9h,9h,0h,0,0,0,0,0,1.2.4.2.28,500,No,Yes,Yes,,,Black,,,,,,,,0,0,0,0d,0d,0d,No,No,No,No,No,No,No,No,No,No,No,0,0,0,0,0,
1567,2599,Yes,Auto Scheduled,"Load File Staged and Posted ""Ready""",30m,Fixed Units,6,0.06d,"1544,1558","September 29, 2026 10:15","September 29, 2026 10:45",9/29/26 10:15,9/29/26 10:45,6/2/26 3:00,6/2/26 3:30,0m,-40575m,0ed,0,NA,NA,"April 15, 2026 3:15","April 15, 2026 3:45",As Soon As Possible,NA,NA,NA,4/23/26 10:51,0.5h,0.5h,0h,0,0,0,0,0,1.2.4.2.28.1,500,No,No,No,,,Black,,,,,,,,0,0,0,0d,0d,0d,No,No,No,No,No,No,No,No,No,No,No,0,0,0,0,0,
1568,2600,Yes,Auto Scheduled,Pre Load Validation,30m,Fixed Units,6,0.06d,1567,"September 29, 2026 10:45","September 29, 2026 11:15",9/29/26 10:45,9/29/26 11:15,6/2/26 3:30,6/2/26 4:00,0m,-40575m,0ed,0,NA,NA,"April 15, 2026 3:45","April 15, 2026 4:15",As Soon As Possible,NA,NA,NA,4/23/26 10:51,0.5h,0.5h,0h,0,0,0,0,0,1.2.4.2.28.2,500,No,No,No,,Sam Houff,Black,,,,,,,,0,0,0,0d,0d,0d,No,No,No,No,No,No,No,No,No,No,No,0,0,0,0,0,
1569,2601,Yes,Auto Scheduled,Simulate Load,1h,Fixed Units,6,0.13d,1568,"September 29, 2026 11:15","September 29, 2026 1:15",9/29/26 11:15,9/29/26 1:15,6/2/26 4:00,6/2/26 5:00,0h,-676.25h,0ed,0,NA,NA,"April 15, 2026 4:15","April 16, 2026 8:15",As Soon As Possible,NA,NA,NA,4/23/26 10:51,1h,1h,0h,0,0,0,0,0,1.2.4.2.28.3,500,No,No,No,,,Black,,,,,,,,0,0,0,0d,0d,0d,No,No,No,No,No,No,No,No,No,No,No,0,0,0,0,0,
1570,2602,Yes,Auto Scheduled,Error and Defect Mitigation,2h,Fixed Units,6,0.25d,1569,"September 29, 2026 1:15","September 29, 2026 3:15",9/29/26 1:15,9/29/26 3:15,6/3/26 8:00,6/3/26 10:00,0h,-676.25h,0ed,0,NA,NA,"April 16, 2026 8:15","April 16, 2026 10:15",As Soon As Possible,NA,NA,NA,4/23/26 10:51,2h,2h,0h,0,0,0,0,0,1.2.4.2.28.4,500,No,No,No,,Sam Houff,Black,,,,,,,,0,0,0,0d,0d,0d,No,No,No,No,No,No,No,No,No,No,No,0,0,0,0,0,
1571,2603,Yes,Auto Scheduled,Load,2h,Fixed Units,6,0.25d,1570,"September 29, 2026 3:15","September 30, 2026 8:15",9/29/26 3:15,9/30/26 8:15,6/3/26 10:00,6/3/26 12:00,0h,-676.25h,0ed,0,NA,NA,"April 16, 2026 10:15","April 16, 2026 1:15",As Soon As Possible,NA,NA,NA,4/23/26 10:51,2h,2h,0h,0,0,0,0,0,1.2.4.2.28.5,500,No,No,No,,,Black,,,,,,,,0,0,0,0d,0d,0d,No,No,No,No,No,No,No,No,No,No,No,0,0,0,0,0,
1572,2604,Yes,Auto Scheduled,Post Load Validation,3h,Fixed Units,6,0.38d,1571,"September 30, 2026 8:15","September 30, 2026 11:15",9/30/26 8:15,9/30/26 11:15,6/3/26 1:00,6/3/26 4:00,0h,-676.25h,0ed,0,NA,NA,"April 16, 2026 1:15","April 16, 2026 4:15",As Soon As Possible,NA,NA,NA,4/23/26 10:51,3h,3h,0h,0,0,0,0,0,1.2.4.2.28.6,500,No,No,No,,Sam Houff,Black,,,,,,,,0,0,0,0d,0d,0d,No,No,No,No,No,No,No,No,No,No,No,0,0,0,0,0,
1573,2605,Yes,Auto Scheduled,PTP_CM28_Purchase_Info_Record Subcontracting and Consignment,1.13d,Fixed Duration,5,1.13d,,"September 29, 2026 10:15","September 30, 2026 11:15",9/29/26 10:15,9/30/26 11:15,5/27/26 10:00,6/3/26 4:00,0d,-89.03d,0ed,0,NA,NA,"April 15, 2026 3:15","April 16, 2026 4:15",As Soon As Possible,NA,NA,NA,4/23/26 10:51,9h,9h,0h,0,0,0,0,0,1.2.4.2.29,500,No,Yes,Yes,,,Black,,,,,,,,0,0,0,0d,0d,0d,No,No,No,No,No,No,No,No,No,No,No,0,0,0,0,0,
1574,2606,Yes,Auto Scheduled,"Load File Staged and Posted ""Ready""",30m,Fixed Units,6,0.06d,"1544,1558","September 29, 2026 10:15","September 29, 2026 10:45",9/29/26 10:15,9/29/26 10:45,5/27/26 10:00,5/27/26 10:30,0m,-42735m,0ed,0,NA,NA,"April 15, 2026 3:15","April 15, 2026 3:45",As Soon As Possible,NA,NA,NA,4/23/26 10:51,0.5h,0.5h,0h,0,0,0,0,0,1.2.4.2.29.1,500,No,No,No,,,Black,,,,,,,,0,0,0,0d,0d,0d,No,No,No,No,No,No,No,No,No,No,No,0,0,0,0,0,
1575,2607,Yes,Auto Scheduled,Pre Load Validation,30m,Fixed Units,6,0.06d,1574,"September 29, 2026 10:45","September 29, 2026 11:15",9/29/26 10:45,9/29/26 11:15,5/27/26 10:30,5/27/26 11:00,0m,-42735m,0ed,0,NA,NA,"April 15, 2026 3:45","April 15, 2026 4:15",As Soon As Possible,NA,NA,NA,4/23/26 10:51,0.5h,0.5h,0h,0,0,0,0,0,1.2.4.2.29.2,500,No,No,No,,Sam Houff,Black,,,,,,,,0,0,0,0d,0d,0d,No,No,No,No,No,No,No,No,No,No,No,0,0,0,0,0,
1576,2608,Yes,Auto Scheduled,Simulate Load,1h,Fixed Units,6,0.13d,1575,"September 29, 2026 11:15","September 29, 2026 1:15",9/29/26 11:15,9/29/26 1:15,5/27/26 11:00,5/27/26 12:00,0h,-712.25h,0ed,0,NA,NA,"April 15, 2026 4:15","April 16, 2026 8:15",As Soon As Possible,NA,NA,NA,4/23/26 10:51,1h,1h,0h,0,0,0,0,0,1.2.4.2.29.3,500,No,No,No,,,Black,,,,,,,,0,0,0,0d,0d,0d,No,No,No,No,No,No,No,No,No,No,No,0,0,0,0,0,
1577,2609,Yes,Auto Scheduled,Error and Defect Mitigation,2h,Fixed Units,6,0.25d,1576,"September 29, 2026 1:15","September 29, 2026 3:15",9/29/26 1:15,9/29/26 3:15,6/3/26 8:00,6/3/26 10:00,0h,-676.25h,0ed,0,NA,NA,"April 16, 2026 8:15","April 16, 2026 10:15",As Soon As Possible,NA,NA,NA,4/23/26 10:51,2h,2h,0h,0,0,0,0,0,1.2.4.2.29.4,500,No,No,No,,Sam Houff,Black,,,,,,,,0,0,0,0d,0d,0d,No,No,No,No,No,No,No,No,No,No,No,0,0,0,0,0,
1578,2610,Yes,Auto Scheduled,Load,2h,Fixed Units,6,0.25d,1577,"September 29, 2026 3:15","September 30, 2026 8:15",9/29/26 3:15,9/30/26 8:15,6/3/26 10:00,6/3/26 12:00,0h,-676.25h,0ed,0,NA,NA,"April 16, 2026 10:15","April 16, 2026 1:15",As Soon As Possible,NA,NA,NA,4/23/26 10:51,2h,2h,0h,0,0,0,0,0,1.2.4.2.29.5,500,No,No,No,,,Black,,,,,,,,0,0,0,0d,0d,0d,No,No,No,No,No,No,No,No,No,No,No,0,0,0,0,0,
1579,2611,Yes,Auto Scheduled,Post Load Validation,3h,Fixed Units,6,0.38d,1578,"September 30, 2026 8:15","September 30, 2026 11:15",9/30/26 8:15,9/30/26 11:15,6/3/26 1:00,6/3/26 4:00,0h,-676.25h,0ed,0,NA,NA,"April 16, 2026 1:15","April 16, 2026 4:15",As Soon As Possible,NA,NA,NA,4/23/26 10:51,3h,3h,0h,0,0,0,0,0,1.2.4.2.29.6,500,No,No,No,,Sam Houff,Black,,,,,,,,0,0,0,0d,0d,0d,No,No,No,No,No,No,No,No,No,No,No,0,0,0,0,0,
1580,2612,Yes,Auto Scheduled,PTM_CM31_BOM Conversion,2.48d,Fixed Duration,5,1.13d,,"September 29, 2026 11:15","October 1, 2026 4:08",9/29/26 11:15,10/1/26 4:08,5/28/26 3:53,6/2/26 10:45,0d,-87.55d,0ed,0,NA,NA,"April 15, 2026 4:15","April 17, 2026 8:15",As Soon As Possible,NA,NA,NA,4/23/26 10:51,19h,9h,0h,0,0,0,0,0,1.2.4.2.30,500,No,Yes,Yes,,,Black,,,,,,,,0,0,0,0d,0d,0d,Yes,No,No,No,No,No,No,No,No,No,No,0,0,0,0,0,
1581,2613,Yes,Auto Scheduled,Extract File,1h,Fixed Units,6,0.13d,1560,"September 29, 2026 11:15","September 29, 2026 1:15",9/29/26 11:15,9/29/26 1:15,5/28/26 3:53,5/28/26 4:53,0h,-700.38h,0ed,0,NA,NA,"April 15, 2026 4:15","April 16, 2026 8:15",As Soon As Possible,NA,NA,NA,4/23/26 10:51,1h,1h,0h,0,0,0,0,0,1.2.4.2.30.1,500,No,No,No,,,Black,,,,,,,,0,0,0,0d,0d,0d,No,No,No,No,No,No,No,No,No,No,No,0,0,0,0,0,
1582,2614,Yes,Auto Scheduled,Pre Load Validation,0.5h,Fixed Units,6,0.25d,1581,"September 29, 2026 1:15","September 29, 2026 1:45",9/29/26 1:15,9/29/26 1:45,5/28/26 4:53,5/29/26 8:23,0h,-700.38h,0ed,0,NA,NA,"April 16, 2026 8:15","April 16, 2026 10:15",As Soon As Possible,NA,NA,NA,4/23/26 10:51,0.5h,2h,0h,0,0,0,0,0,1.2.4.2.30.2,500,No,No,No,,"Matt Palastro, Dave Duda",Black,,,,,,,,0,0,0,0d,0d,0d,No,No,No,No,No,No,No,No,No,No,No,0,0,0,0,0,
1583,2615,Yes,Auto Scheduled,Simulate Load,15.5h,Fixed Units,6,0.13d,1582,"September 29, 2026 1:45","October 1, 2026 1:45",9/29/26 1:45,10/1/26 1:45,5/29/26 8:23,6/2/26 8:23,0h,-700.38h,0ed,0,NA,NA,"April 16, 2026 10:15","April 16, 2026 11:15",Finish No Earlier Than,4/17/26 5:00,NA,NA,4/23/26 10:51,15.5h,1h,0h,0,0,0,0,0,1.2.4.2.30.3,500,No,No,No,,,Black,,,,,,,,0,0,0,0d,0d,0d,No,No,No,No,No,No,No,No,No,No,No,0,0,0,0,0,
1584,2616,Yes,Auto Scheduled,Error and Defect Mitigation,0.5h,Fixed Units,6,0.25d,1583,"October 1, 2026 1:45","October 1, 2026 2:15",10/1/26 1:45,10/1/26 2:15,6/2/26 8:23,6/2/26 8:53,0h,-700.38h,0ed,0,NA,NA,"April 16, 2026 11:15","April 16, 2026 2:15",Finish No Earlier Than,4/17/26 5:00,NA,NA,4/23/26 10:51,0.5h,2h,0h,0,0,0,0,0,1.2.4.2.30.4,500,No,No,No,,"Matt Palastro, Dave Duda",Black,,,,,,,,0,0,0,0d,0d,0d,No,No,No,No,No,No,No,No,No,No,No,0,0,0,0,0,
1585,2617,Yes,Auto Scheduled,Load,1h,Fixed Units,6,0.13d,1584,"October 1, 2026 2:15","October 1, 2026 3:30",10/1/26 2:15,10/1/26 3:30,6/2/26 8:53,6/2/26 10:08,0h,-700.38h,0ed,0,NA,NA,"April 16, 2026 2:15","April 16, 2026 3:15",As Soon As Possible,NA,NA,NA,4/23/26 10:51,1h,1h,0h,0,0,0,0,0,4/1,500,No,No,No,,,Black,,,,,,,,0,0,0,0d,0d,0d,No,No,No,No,No,No,No,No,No,No,No,0,0,0,0,0,
1586,2618,Yes,Auto Scheduled,Post Load Validation,0.5h,Fixed Units,6,0.25d,1585,"October 1, 2026 3:30","October 1, 2026 4:08",10/1/26 3:30,10/1/26 4:08,6/2/26 10:08,6/2/26 10:45,0h,-700.38h,0ed,0,NA,NA,"April 16, 2026 3:15","April 17, 2026 8:15",Finish No Earlier Than,4/16/26 5:00,NA,NA,4/23/26 10:51,0.5h,2h,0h,0,0,0,0,0,1.2.4.2.30.6,500,No,No,No,,"Matt Palastro, Dave Duda",Black,,,,,,,,0,0,0,0d,0d,0d,No,No,No,No,No,No,No,No,No,No,No,0,0,0,0,0,
1587,2619,Yes,Auto Scheduled,PTM_CM40_Work Center Conversion,3.08d,Fixed Duration,5,2d,,"September 29, 2026 1:15","October 2, 2026 1:53",9/29/26 1:15,10/2/26 1:53,5/29/26 1:30,6/3/26 8:30,0d,-87.55d,0ed,0,NA,NA,"April 16, 2026 8:15","April 20, 2026 8:15",As Soon As Possible,NA,NA,NA,4/23/26 10:51,6.75h,9h,0h,0,0,0,0,0,1.2.4.2.31,500,No,Yes,Yes,,,Black,,,,,,,,0,0,0,0d,0d,0d,No,No,No,No,No,No,No,No,No,No,No,0,0,0,0,0,
1588,2620,Yes,Auto Scheduled,Extract File,1h,Fixed Units,6,0.13d,1581,"September 29, 2026 1:15","September 29, 2026 2:15",9/29/26 1:15,9/29/26 2:15,5/29/26 1:30,5/29/26 2:30,0h,-695.75h,0ed,0,NA,NA,"April 16, 2026 8:15","April 16, 2026 9:15",As Soon As Possible,NA,NA,NA,4/23/26 10:51,1h,1h,0h,0,0,0,0,0,1.2.4.2.31.1,500,No,No,No,,,Black,,,,,,,,0,0,0,0d,0d,0d,No,No,No,No,No,No,No,No,No,No,No,0,0,0,0,0,
1589,2621,Yes,Auto Scheduled,Pre Load Validation,2h,Fixed Units,6,0.25d,1586,"October 1, 2026 4:08","October 2, 2026 9:08",10/1/26 4:08,10/2/26 9:08,6/2/26 10:45,6/2/26 1:45,0h,-700.38h,0ed,0,NA,NA,"April 17, 2026 8:15","April 17, 2026 10:15",As Soon As Possible,NA,NA,NA,4/23/26 10:51,2h,2h,0h,0,0,0,0,0,1.2.4.2.31.2,500,No,No,No,,"Matt Palastro, Dave Duda",Black,,,,,,,,0,0,0,0d,0d,0d,No,No,No,No,No,No,No,No,No,No,No,0,0,0,0,0,
1590,2622,Yes,Auto Scheduled,Simulate Load,0.25h,Fixed Units,6,0.13d,1589,"October 2, 2026 9:08","October 2, 2026 9:23",10/2/26 9:08,10/2/26 9:23,6/2/26 1:45,6/2/26 2:00,0h,-700.38h,0ed,0,NA,NA,"April 17, 2026 10:15","April 17, 2026 11:15",As Soon As Possible,NA,NA,NA,4/23/26 10:51,0.25h,1h,0h,0,0,0,0,0,1.2.4.2.31.3,500,No,No,No,,,Black,,,,,,,,0,0,0,0d,0d,0d,No,No,No,No,No,No,No,No,No,No,No,0,0,0,0,0,
1591,2623,Yes,Auto Scheduled,Error and Defect Mitigation,0.5h,Fixed Units,6,0.25d,1590,"October 2, 2026 9:23","October 2, 2026 9:53",10/2/26 9:23,10/2/26 9:53,6/2/26 2:00,6/2/26 2:30,0h,-700.38h,0ed,0,NA,NA,"April 17, 2026 11:15","April 17, 2026 2:15",As Soon As Possible,NA,NA,NA,4/23/26 10:51,0.5h,2h,0h,0,0,0,0,0,1.2.4.2.31.4,500,No,No,No,,"Matt Palastro, Dave Duda",Black,,,,,,,,0,0,0,0d,0d,0d,No,No,No,No,No,No,No,No,No,No,No,0,0,0,0,0,
1592,2624,Yes,Auto Scheduled,Load,1h,Fixed Units,6,0.13d,1591,"October 2, 2026 9:53","October 2, 2026 10:53",10/2/26 9:53,10/2/26 10:53,6/2/26 2:30,6/2/26 3:30,0h,-700.38h,0ed,0,NA,NA,"April 17, 2026 2:15","April 17, 2026 3:15",As Soon As Possible,NA,NA,NA,4/23/26 10:51,1h,1h,0h,0,0,0,0,0,1.2.4.2.31.5,500,No,No,No,,,Black,,,,,,,,0,0,0,0d,0d,0d,No,No,No,No,No,No,No,No,No,No,No,0,0,0,0,0,
1593,2625,Yes,Auto Scheduled,Post Load Validation,2h,Fixed Units,6,0.25d,1592,"October 2, 2026 10:53","October 2, 2026 1:53",10/2/26 10:53,10/2/26 1:53,6/2/26 3:30,6/3/26 8:30,0h,-700.38h,0ed,0,NA,NA,"April 17, 2026 3:15","April 20, 2026 8:15",As Soon As Possible,NA,NA,NA,4/23/26 10:51,2h,2h,0h,0,0,0,0,0,1.2.4.2.31.6,500,No,No,No,,"Matt Palastro, Dave Duda",Black,,,,,,,,0,0,0,0d,0d,0d,No,No,No,No,No,No,No,No,No,No,No,0,0,0,0,0,
1594,2626,Yes,Auto Scheduled,PTM_CM38_Routing Conversion,4.27d,Fixed Duration,5,2.88d,,"September 29, 2026 2:15","October 5, 2026 4:23",9/29/26 2:15,10/5/26 4:23,5/29/26 2:30,6/3/26 4:00,0d,-88.05d,0ed,0,NA,NA,"April 16, 2026 9:15","April 21, 2026 8:15",As Soon As Possible,NA,NA,NA,4/23/26 10:51,11h,9h,0h,0,0,0,0,0,1.2.4.2.32,500,No,Yes,Yes,,,Black,,,,,,,,0,0,0,0d,0d,0d,Yes,No,No,No,No,No,No,No,No,No,No,0,0,0,0,0,
1595,2627,Yes,Auto Scheduled,Extract File,1h,Fixed Units,6,0.13d,1588,"September 29, 2026 2:15","September 29, 2026 3:15",9/29/26 2:15,9/29/26 3:15,5/29/26 2:30,5/29/26 3:30,0h,-695.75h,0ed,0,NA,NA,"April 16, 2026 9:15","April 16, 2026 10:15",As Soon As Possible,NA,NA,NA,4/23/26 10:51,1h,1h,0h,0,0,0,0,0,1.2.4.2.32.1,500,No,No,No,,,Black,,,,,,,,0,0,0,0d,0d,0d,No,No,No,No,No,No,No,No,No,No,No,0,0,0,0,0,
1596,2628,Yes,Auto Scheduled,Pre Load Validation,2h,Fixed Units,6,0.25d,1593,"October 2, 2026 1:53","October 5, 2026 9:23",10/2/26 1:53,10/5/26 9:23,6/3/26 8:30,6/3/26 2:00,0h,-700.38h,0ed,0,NA,NA,"April 20, 2026 8:15","April 20, 2026 10:15",As Soon As Possible,NA,NA,NA,4/23/26 10:51,2h,2h,0h,0,0,0,0,0,1.2.4.2.32.2,500,No,No,No,,"Matt Palastro, Dave Duda",Black,,,,,,,,0,0,0,0d,0d,0d,No,No,No,No,No,No,No,No,No,No,No,0,0,0,0,0,
1597,2629,Yes,Auto Scheduled,Simulate Load,2h,Fixed Units,6,0.13d,1596,"October 5, 2026 9:23","October 5, 2026 11:23",10/5/26 9:23,10/5/26 11:23,6/3/26 2:00,6/3/26 4:00,0h,-700.38h,0ed,0,NA,NA,"April 20, 2026 10:15","April 20, 2026 11:15",Finish No Earlier Than,4/17/26 5:00,NA,NA,4/23/26 10:51,2h,1h,0h,0,0,0,0,0,1.2.4.2.32.3,500,No,No,No,,,Black,,,,,,,,0,0,0,0d,0d,0d,No,No,No,No,No,No,No,No,No,No,No,0,0,0,0,0,
1598,2630,Yes,Auto Scheduled,Error and Defect Mitigation,3h,Fixed Units,6,0.25d,1597SS,"October 5, 2026 9:23","October 5, 2026 1:23",10/5/26 9:23,10/5/26 1:23,6/3/26 9:00,6/3/26 12:00,0h,-704.38h,0ed,0,NA,NA,"April 20, 2026 11:15","April 20, 2026 2:15",Start No Earlier Than,4/17/26 8:00,NA,NA,4/23/26 10:51,3h,2h,0h,0,0,0,0,0,1.2.4.2.32.4,500,No,No,No,,"Matt Palastro, Dave Duda",Black,,,,,,,,0,0,0,0d,0d,0d,No,No,No,No,No,No,No,No,No,No,No,0,0,0,0,0,
1599,2631,Yes,Auto Scheduled,Load,1h,Fixed Units,6,0.13d,1598,"October 5, 2026 1:23","October 5, 2026 2:23",10/5/26 1:23,10/5/26 2:23,6/3/26 1:00,6/3/26 2:00,0h,-704.38h,0ed,0,NA,NA,"April 20, 2026 2:15","April 20, 2026 3:15",Start No Earlier Than,4/20/26 8:00,NA,NA,4/23/26 10:51,1h,1h,0h,0,0,0,0,0,1.2.4.2.32.5,500,No,No,No,,,Black,,,,,,,,0,0,0,0d,0d,0d,No,No,No,No,No,No,No,No,No,No,No,0,0,0,0,0,
1600,2632,Yes,Auto Scheduled,Post Load Validation,2h,Fixed Units,6,0.25d,1599,"October 5, 2026 2:23","October 5, 2026 4:23",10/5/26 2:23,10/5/26 4:23,6/3/26 2:00,6/3/26 4:00,0h,-704.38h,0ed,0,NA,NA,"April 20, 2026 3:15","April 21, 2026 8:15",Start No Earlier Than,4/20/26 8:00,NA,NA,4/23/26 10:51,2h,2h,0h,0,0,0,0,0,1.2.4.2.32.6,500,No,No,No,,"Matt Palastro, Dave Duda",Black,,,,,,,,0,0,0,0d,0d,0d,No,No,No,No,No,No,No,No,No,No,No,0,0,0,0,0,
1601,2633,Yes,Auto Scheduled,PTM_CM36_Production Version Conversion,1.13d,Fixed Duration,5,1.13d,,"September 29, 2026 3:15","September 30, 2026 4:15",9/29/26 3:15,9/30/26 4:15,5/29/26 3:30,6/1/26 4:30,0d,-86.97d,0ed,0,NA,NA,"April 16, 2026 10:15","April 17, 2026 11:15",As Soon As Possible,NA,NA,NA,4/23/26 10:51,9h,9h,0h,0,0,0,0,0,1.2.4.2.33,500,No,Yes,Yes,,,Black,,,,,,,,0,0,0,0d,0d,0d,Yes,No,No,No,No,No,No,No,No,No,No,0,0,0,0,0,
1602,2634,Yes,Auto Scheduled,"Load File Staged and Posted ""Ready""",30m,Fixed Units,6,0.06d,1595,"September 29, 2026 3:15","September 29, 2026 3:45",9/29/26 3:15,9/29/26 3:45,5/29/26 3:30,5/29/26 4:00,0m,-41745m,0ed,0,NA,NA,"April 16, 2026 10:15","April 16, 2026 10:45",Start No Earlier Than,4/20/26 8:00,NA,NA,4/23/26 10:51,0.5h,0.5h,0h,0,0,0,0,0,1.2.4.2.33.1,500,No,No,No,,,Black,,,,,,,,0,0,0,0d,0d,0d,No,No,No,No,No,No,No,No,No,No,No,0,0,0,0,0,
1603,2635,Yes,Auto Scheduled,Pre Load Validation,30m,Fixed Units,6,0.06d,1602,"September 29, 2026 3:45","September 29, 2026 4:15",9/29/26 3:45,9/29/26 4:15,5/29/26 4:00,5/29/26 4:30,0m,-41745m,0ed,0,NA,NA,"April 16, 2026 10:45","April 16, 2026 11:15",As Soon As Possible,NA,NA,NA,4/23/26 10:51,0.5h,0.5h,0h,0,0,0,0,0,1.2.4.2.33.2,500,No,No,No,,"Matt Palastro, Dave Duda",Black,,,,,,,,0,0,0,0d,0d,0d,No,No,No,No,No,No,No,No,No,No,No,0,0,0,0,0,
1604,2636,Yes,Auto Scheduled,Simulate Load,1h,Fixed Units,6,0.13d,1603,"September 29, 2026 4:15","September 30, 2026 8:15",9/29/26 4:15,9/30/26 8:15,5/29/26 4:30,6/1/26 8:30,0h,-695.75h,0ed,0,NA,NA,"April 16, 2026 11:15","April 16, 2026 1:15",As Soon As Possible,NA,NA,NA,4/23/26 10:51,1h,1h,0h,0,0,0,0,0,1.2.4.2.33.3,500,No,No,No,,,Black,,,,,,,,0,0,0,0d,0d,0d,No,No,No,No,No,No,No,No,No,No,No,0,0,0,0,0,
1605,2637,Yes,Auto Scheduled,Error and Defect Mitigation,2h,Fixed Units,6,0.25d,1604,"September 30, 2026 8:15","September 30, 2026 10:15",9/30/26 8:15,9/30/26 10:15,6/1/26 8:30,6/1/26 10:30,0h,-695.75h,0ed,0,NA,NA,"April 16, 2026 1:15","April 16, 2026 3:15",As Soon As Possible,NA,NA,NA,4/23/26 10:51,2h,2h,0h,0,0,0,0,0,1.2.4.2.33.4,500,No,No,No,,"Matt Palastro, Dave Duda",Black,,,,,,,,0,0,0,0d,0d,0d,No,No,No,No,No,No,No,No,No,No,No,0,0,0,0,0,
1606,2638,Yes,Auto Scheduled,Load,2h,Fixed Units,6,0.25d,1605,"September 30, 2026 10:15","September 30, 2026 1:15",9/30/26 10:15,9/30/26 1:15,6/1/26 10:30,6/1/26 1:30,0h,-695.75h,0ed,0,NA,NA,"April 16, 2026 3:15","April 17, 2026 8:15",As Soon As Possible,NA,NA,NA,4/23/26 10:51,2h,2h,0h,0,0,0,0,0,1.2.4.2.33.5,500,No,No,No,,,Black,,,,,,,,0,0,0,0d,0d,0d,No,No,No,No,No,No,No,No,No,No,No,0,0,0,0,0,
1607,2639,Yes,Auto Scheduled,Post Load Validation,3h,Fixed Units,6,0.38d,1606,"September 30, 2026 1:15","September 30, 2026 4:15",9/30/26 1:15,9/30/26 4:15,6/1/26 1:30,6/1/26 4:30,0h,-695.75h,0ed,0,NA,NA,"April 17, 2026 8:15","April 17, 2026 11:15",Finish No Earlier Than,4/17/26 5:00,NA,NA,4/23/26 10:51,3h,3h,0h,0,0,0,0,0,1.2.4.2.33.6,500,No,No,No,,"Matt Palastro, Dave Duda",Black,,,,,,,,0,0,0,0d,0d,0d,No,No,No,No,No,No,No,No,No,No,No,0,0,0,0,0,
1608,2640,Yes,Auto Scheduled,PTM_CM35_Inspection Plan,1.13d,Fixed Duration,5,1.13d,,"September 30, 2026 4:15","October 2, 2026 8:15",9/30/26 4:15,10/2/26 8:15,6/1/26 4:30,6/3/26 4:00,0d,-86.97d,0ed,0,NA,NA,"April 17, 2026 11:15","April 20, 2026 1:15",As Soon As Possible,NA,NA,NA,4/23/26 10:51,9h,9h,0h,0,0,0,0,0,1.2.4.2.34,500,No,Yes,Yes,,,Black,,,,,,,,0,0,0,0d,0d,0d,No,No,No,No,No,No,No,No,No,No,No,0,0,0,0,0,
1609,2641,Yes,Auto Scheduled,"Load File Staged and Posted ""Ready""",30m,Fixed Units,6,0.06d,1607,"September 30, 2026 4:15","September 30, 2026 4:45",9/30/26 4:15,9/30/26 4:45,6/1/26 4:30,6/1/26 5:00,0m,-41745m,0ed,0,NA,NA,"April 17, 2026 11:15","April 17, 2026 11:45",As Soon As Possible,NA,NA,NA,4/23/26 10:51,0.5h,0.5h,0h,0,0,0,0,0,1.2.4.2.34.1,500,No,No,No,,,Black,,,,,,,,0,0,0,0d,0d,0d,No,No,No,No,No,No,No,No,No,No,No,0,0,0,0,0,
1610,2642,Yes,Auto Scheduled,Pre Load Validation,30m,Fixed Units,6,0.06d,1609,"September 30, 2026 4:45","October 1, 2026 8:15",9/30/26 4:45,10/1/26 8:15,6/2/26 3:30,6/2/26 4:00,0m,-41355m,0ed,0,NA,NA,"April 17, 2026 11:45","April 17, 2026 1:15",As Soon As Possible,NA,NA,NA,4/23/26 10:51,0.5h,0.5h,0h,0,0,0,0,0,1.2.4.2.34.2,500,No,No,No,,"Matt Palastro, Dave Duda",Black,,,,,,,,0,0,0,0d,0d,0d,No,No,No,No,No,No,No,No,No,No,No,0,0,0,0,0,
1611,2643,Yes,Auto Scheduled,Simulate Load,1h,Fixed Units,6,0.13d,1610,"October 1, 2026 8:15","October 1, 2026 9:15",10/1/26 8:15,10/1/26 9:15,6/2/26 4:00,6/2/26 5:00,0h,-689.25h,0ed,0,NA,NA,"April 17, 2026 1:15","April 17, 2026 2:15",As Soon As Possible,NA,NA,NA,4/23/26 10:51,1h,1h,0h,0,0,0,0,0,1.2.4.2.34.3,500,No,No,No,,,Black,,,,,,,,0,0,0,0d,0d,0d,No,No,No,No,No,No,No,No,No,No,No,0,0,0,0,0,
1612,2644,Yes,Auto Scheduled,Error and Defect Mitigation,2h,Fixed Units,6,0.25d,1611,"October 1, 2026 9:15","October 1, 2026 11:15",10/1/26 9:15,10/1/26 11:15,6/3/26 8:00,6/3/26 10:00,0h,-689.25h,0ed,0,NA,NA,"April 17, 2026 2:15","April 17, 2026 4:15",As Soon As Possible,NA,NA,NA,4/23/26 10:51,2h,2h,0h,0,0,0,0,0,1.2.4.2.34.4,500,No,No,No,,"Matt Palastro, Dave Duda",Black,,,,,,,,0,0,0,0d,0d,0d,No,No,No,No,No,No,No,No,No,No,No,0,0,0,0,0,
1613,2645,Yes,Auto Scheduled,Load,2h,Fixed Units,6,0.25d,1612,"October 1, 2026 11:15","October 1, 2026 2:15",10/1/26 11:15,10/1/26 2:15,6/3/26 10:00,6/3/26 12:00,0h,-689.25h,0ed,0,NA,NA,"April 17, 2026 4:15","April 20, 2026 9:15",Finish No Earlier Than,4/17/26 5:00,NA,NA,4/23/26 10:51,2h,2h,0h,0,0,0,0,0,1.2.4.2.34.5,500,No,No,No,,,Black,,,,,,,,0,0,0,0d,0d,0d,No,No,No,No,No,No,No,No,No,No,No,0,0,0,0,0,
1614,2646,Yes,Auto Scheduled,Post Load Validation,3h,Fixed Units,6,0.38d,1613,"October 1, 2026 2:15","October 2, 2026 8:15",10/1/26 2:15,10/2/26 8:15,6/3/26 1:00,6/3/26 4:00,0h,-689.25h,0ed,0,NA,NA,"April 20, 2026 9:15","April 20, 2026 1:15",As Soon As Possible,NA,NA,NA,4/23/26 10:51,3h,3h,0h,0,0,0,0,0,1.2.4.2.34.6,500,No,No,No,,"Matt Palastro, Dave Duda",Black,,,,,,,,0,0,0,0d,0d,0d,No,No,No,No,No,No,No,No,No,No,No,0,0,0,0,0,
1615,2647,Yes,Auto Scheduled,PTM_CM48_Equipment_Master_Serial Numbers,1.13d,Fixed Duration,5,1.13d,,"September 30, 2026 4:45","October 2, 2026 8:45",9/30/26 4:45,10/2/26 8:45,6/2/26 8:00,6/3/26 9:00,0d,-86.97d,0ed,0,NA,NA,"April 17, 2026 11:45","April 20, 2026 1:45",As Soon As Possible,NA,NA,NA,4/23/26 10:51,9h,9h,0h,0,0,0,0,0,1.2.4.2.35,500,No,Yes,Yes,,,Black,,,,,,,,0,0,0,0d,0d,0d,No,No,No,No,No,No,No,No,No,No,No,0,0,0,0,0,
1616,2648,Yes,Auto Scheduled,"Load File Staged and Posted ""Ready""",30m,Fixed Units,6,0.06d,1609,"September 30, 2026 4:45","October 1, 2026 8:15",9/30/26 4:45,10/1/26 8:15,6/2/26 8:00,6/2/26 8:30,0m,-41745m,0ed,0,NA,NA,"April 17, 2026 11:45","April 17, 2026 1:15",As Soon As Possible,NA,NA,NA,4/23/26 10:51,0.5h,0.5h,0h,0,0,0,0,0,1.2.4.2.35.1,500,No,No,No,,,Black,,,,,,,,0,0,0,0d,0d,0d,No,No,No,No,No,No,No,No,No,No,No,0,0,0,0,0,
1617,2649,Yes,Auto Scheduled,Pre Load Validation,30m,Fixed Units,6,0.06d,1616,"October 1, 2026 8:15","October 1, 2026 8:45",10/1/26 8:15,10/1/26 8:45,6/2/26 8:30,6/2/26 9:00,0m,-41745m,0ed,0,NA,NA,"April 17, 2026 1:15","April 17, 2026 1:45",As Soon As Possible,NA,NA,NA,4/23/26 10:51,0.5h,0.5h,0h,0,0,0,0,0,1.2.4.2.35.2,500,No,No,No,,"Matt Palastro, Dave Duda",Black,,,,,,,,0,0,0,0d,0d,0d,No,No,No,No,No,No,No,No,No,No,No,0,0,0,0,0,
1618,2650,Yes,Auto Scheduled,Simulate Load,1h,Fixed Units,6,0.13d,1617,"October 1, 2026 8:45","October 1, 2026 9:45",10/1/26 8:45,10/1/26 9:45,6/2/26 9:00,6/2/26 10:00,0h,-695.75h,0ed,0,NA,NA,"April 17, 2026 1:45","April 17, 2026 2:45",As Soon As Possible,NA,NA,NA,4/23/26 10:51,1h,1h,0h,0,0,0,0,0,1.2.4.2.35.3,500,No,No,No,,,Black,,,,,,,,0,0,0,0d,0d,0d,No,No,No,No,No,No,No,No,No,No,No,0,0,0,0,0,
1619,2651,Yes,Auto Scheduled,Error and Defect Mitigation,2h,Fixed Units,6,0.25d,1618,"October 1, 2026 9:45","October 1, 2026 11:45",10/1/26 9:45,10/1/26 11:45,6/2/26 10:00,6/2/26 12:00,0h,-695.75h,0ed,0,NA,NA,"April 17, 2026 2:45","April 17, 2026 4:45",As Soon As Possible,NA,NA,NA,4/23/26 10:51,2h,2h,0h,0,0,0,0,0,1.2.4.2.35.4,500,No,No,No,,"Matt Palastro, Dave Duda",Black,,,,,,,,0,0,0,0d,0d,0d,No,No,No,No,No,No,No,No,No,No,No,0,0,0,0,0,
1620,2652,Yes,Auto Scheduled,Load,2h,Fixed Units,6,0.25d,1619,"October 1, 2026 11:45","October 1, 2026 2:45",10/1/26 11:45,10/1/26 2:45,6/2/26 1:00,6/2/26 3:00,0h,-695.75h,0ed,0,NA,NA,"April 17, 2026 4:45","April 20, 2026 9:45",As Soon As Possible,NA,NA,NA,4/23/26 10:51,2h,2h,0h,0,0,0,0,0,1.2.4.2.35.5,500,No,No,No,,,Black,,,,,,,,0,0,0,0d,0d,0d,No,No,No,No,No,No,No,No,No,No,No,0,0,0,0,0,
1621,2653,Yes,Auto Scheduled,Post Load Validation,3h,Fixed Units,6,0.38d,1620,"October 1, 2026 2:45","October 2, 2026 8:45",10/1/26 2:45,10/2/26 8:45,6/2/26 3:00,6/3/26 9:00,0h,-695.75h,0ed,0,NA,NA,"April 20, 2026 9:45","April 20, 2026 1:45",As Soon As Possible,NA,NA,NA,4/23/26 10:51,3h,3h,0h,0,0,0,0,0,1.2.4.2.35.6,500,No,No,No,,"Matt Palastro, Dave Duda",Black,,,,,,,,0,0,0,0d,0d,0d,No,No,No,No,No,No,No,No,No,No,No,0,0,0,0,0,
1622,2654,Yes,Auto Scheduled,PTM_CM48_Equipment_Master_Service,6.78d,Fixed Duration,5,1.13d,,"September 24, 2026 8:30","October 2, 2026 3:45",9/24/26 8:30,10/2/26 3:45,6/3/26 9:00,6/3/26 4:00,0d,-86.97d,0ed,0,NA,NA,"April 20, 2026 1:45","April 21, 2026 2:45",As Soon As Possible,NA,NA,NA,4/23/26 10:51,9h,9h,0h,0,0,0,0,0,1.2.4.2.36,500,No,Yes,Yes,,,Black,,,,,,,,0,0,0,0d,0d,0d,No,No,No,No,No,No,No,No,No,No,No,0,0,0,0,0,
1623,2655,Yes,Auto Scheduled,"Load File Staged and Posted ""Ready""",30m,Fixed Units,6,0.06d,1621,"October 2, 2026 8:45","October 2, 2026 9:15",10/2/26 8:45,10/2/26 9:15,6/3/26 9:00,6/3/26 9:30,0m,-41745m,0ed,0,NA,NA,"April 20, 2026 1:45","April 20, 2026 2:15",As Soon As Possible,NA,NA,NA,4/23/26 10:51,0.5h,0.5h,0h,0,0,0,0,0,1.2.4.2.36.1,500,No,No,No,,,Black,,,,,,,,0,0,0,0d,0d,0d,No,No,No,No,No,No,No,No,No,No,No,0,0,0,0,0,
1624,2656,Yes,Auto Scheduled,Pre Load Validation,30m,Fixed Units,6,0.06d,1623,"October 2, 2026 9:15","October 2, 2026 9:45",10/2/26 9:15,10/2/26 9:45,6/3/26 9:30,6/3/26 10:00,0m,-41745m,0ed,0,NA,NA,"April 20, 2026 2:15","April 20, 2026 2:45",As Soon As Possible,NA,NA,NA,4/23/26 10:51,0.5h,0.5h,0h,0,0,0,0,0,1.2.4.2.36.2,500,No,No,No,,"Matt Palastro, Dave Duda",Black,,,,,,,,0,0,0,0d,0d,0d,No,No,No,No,No,No,No,No,No,No,No,0,0,0,0,0,
1625,2657,Yes,Auto Scheduled,Simulate Load,1h,Fixed Units,6,0.13d,1624,"October 2, 2026 9:45","October 2, 2026 10:45",10/2/26 9:45,10/2/26 10:45,6/3/26 10:00,6/3/26 11:00,0h,-695.75h,0ed,0,NA,NA,"April 20, 2026 2:45","April 20, 2026 3:45",As Soon As Possible,NA,NA,NA,4/23/26 10:51,1h,1h,0h,0,0,0,0,0,1.2.4.2.36.3,500,No,No,No,,,Black,,,,,,,,0,0,0,0d,0d,0d,No,No,No,No,No,No,No,No,No,No,No,0,0,0,0,0,
1626,2658,Yes,Auto Scheduled,Error and Defect Mitigation,2h,Fixed Units,6,0.25d,1625,"October 2, 2026 10:45","October 2, 2026 1:45",10/2/26 10:45,10/2/26 1:45,6/3/26 11:00,6/3/26 2:00,0h,-695.75h,0ed,0,NA,NA,"April 20, 2026 3:45","April 21, 2026 8:45",As Soon As Possible,NA,NA,NA,4/23/26 10:51,2h,2h,0h,0,0,0,0,0,1.2.4.2.36.4,500,No,No,No,,"Matt Palastro, Dave Duda",Black,,,,,,,,0,0,0,0d,0d,0d,No,No,No,No,No,No,No,No,No,No,No,0,0,0,0,0,
1627,2659,Yes,Auto Scheduled,Load,2h,Fixed Units,6,0.25d,1626,"October 2, 2026 1:45","October 2, 2026 3:45",10/2/26 1:45,10/2/26 3:45,6/3/26 2:00,6/3/26 4:00,0h,-695.75h,0ed,0,NA,NA,"April 21, 2026 8:45","April 21, 2026 10:45",Finish No Earlier Than,4/21/26 5:00,NA,NA,4/23/26 10:51,2h,2h,0h,0,0,0,0,0,1.2.4.2.36.5,500,No,No,No,,,Black,,,,,,,,0,0,0,0d,0d,0d,No,No,No,No,No,No,No,No,No,No,No,0,0,0,0,0,
1628,2660,Yes,Auto Scheduled,Post Load Validation,3h,Fixed Units,6,0.38d,,"September 24, 2026 8:30","September 24, 2026 11:30",9/24/26 8:30,9/24/26 11:30,6/3/26 1:00,6/3/26 4:00,0h,-644.5h,0ed,0,NA,NA,"April 21, 2026 10:45","April 21, 2026 2:45",Start No Earlier Than,4/21/26 8:00,NA,NA,4/23/26 10:51,3h,3h,0h,0,0,0,0,0,1.2.4.2.36.6,500,No,No,No,,"Matt Palastro, Dave Duda",Black,,,,,,,,0,0,0,0d,0d,0d,No,No,No,No,No,No,No,No,No,No,No,0,0,0,0,0,
1629,2661,Yes,Auto Scheduled,VC_Object Dependencies,0.63d,Fixed Duration,5,0.63d,,"September 24, 2026 8:30","September 24, 2026 2:30",9/24/26 8:30,9/24/26 2:30,6/1/26 11:00,6/1/26 5:00,0d,-82.69d,0ed,0,NA,NA,"April 6, 2026 8:15","April 6, 2026 2:15",As Soon As Possible,NA,NA,NA,4/23/26 10:51,5h,5h,0h,0,0,0,0,0,1.2.4.2.37,500,No,Yes,Yes,,,Black,,,,,,,,0,0,0,0d,0d,0d,No,No,No,No,No,No,No,No,No,No,No,0,0,0,0,0,
1630,2662,Yes,Auto Scheduled,Run ALE Transaction to QS5 from DS4 130,2h,Fixed Units,6,0.25d,1390,"September 24, 2026 8:30","September 24, 2026 10:30",9/24/26 8:30,9/24/26 10:30,6/1/26 11:00,6/1/26 2:00,0h,-661.5h,0ed,0,NA,NA,"April 6, 2026 8:15","April 6, 2026 10:15",As Soon As Possible,NA,NA,NA,4/23/26 10:51,2h,2h,0h,0,0,0,0,0,1.2.4.2.37.1,500,No,No,No,,,Black,,,,,,,,0,0,0,0d,0d,0d,No,No,No,No,No,No,No,No,No,No,No,0,0,0,0,0,
1631,2663,Yes,Auto Scheduled,Post Load Validation,3h,Fixed Units,6,0.38d,1630,"September 24, 2026 10:30","September 24, 2026 2:30",9/24/26 10:30,9/24/26 2:30,6/1/26 2:00,6/1/26 5:00,0h,-661.5h,0ed,0,NA,NA,"April 6, 2026 10:15","April 6, 2026 2:15",As Soon As Possible,NA,NA,NA,4/23/26 10:51,3h,3h,0h,0,0,0,0,0,1.2.4.2.37.2,500,No,No,No,,"Matt Palastro, Dave Duda",Black,,,,,,,,0,0,0,0d,0d,0d,No,No,No,No,No,No,No,No,No,No,No,0,0,0,0,0,
1632,2664,Yes,Auto Scheduled,VC_Characteristics,0.63d,Fixed Duration,5,0.63d,,"September 24, 2026 2:30","September 25, 2026 10:30",9/24/26 2:30,9/25/26 10:30,6/2/26 8:00,6/2/26 2:00,0d,-82.69d,0ed,0,NA,NA,"April 6, 2026 2:15","April 7, 2026 10:15",As Soon As Possible,NA,NA,NA,4/23/26 10:51,5h,5h,0h,0,0,0,0,0,1.2.4.2.38,500,No,Yes,Yes,,,Black,,,,,,,,0,0,0,0d,0d,0d,No,No,No,No,No,No,No,No,No,No,No,0,0,0,0,0,
1633,2665,Yes,Auto Scheduled,Run ALE Transaction to QS5 from DS4 130,2h,Fixed Units,6,0.25d,1631,"September 24, 2026 2:30","September 24, 2026 4:30",9/24/26 2:30,9/24/26 4:30,6/2/26 8:00,6/2/26 10:00,0h,-661.5h,0ed,0,NA,NA,"April 6, 2026 2:15","April 6, 2026 4:15",As Soon As Possible,NA,NA,NA,4/23/26 10:51,2h,2h,0h,0,0,0,0,0,1.2.4.2.38.1,500,No,No,No,,,Black,,,,,,,,0,0,0,0d,0d,0d,No,No,No,No,No,No,No,No,No,No,No,0,0,0,0,0,
1634,2666,Yes,Auto Scheduled,Post Load Validation,3h,Fixed Units,6,0.38d,1633,"September 24, 2026 4:30","September 25, 2026 10:30",9/24/26 4:30,9/25/26 10:30,6/2/26 10:00,6/2/26 2:00,0h,-661.5h,0ed,0,NA,NA,"April 6, 2026 4:15","April 7, 2026 10:15",As Soon As Possible,NA,NA,NA,4/23/26 10:51,3h,3h,0h,0,0,0,0,0,1.2.4.2.38.2,500,No,No,No,,"Matt Palastro, Dave Duda",Black,,,,,,,,0,0,0,0d,0d,0d,No,No,No,No,No,No,No,No,No,No,No,0,0,0,0,0,
1635,2667,Yes,Auto Scheduled,VC_Classes,0.63d,Fixed Duration,5,0.63d,,"September 25, 2026 10:30","September 25, 2026 4:30",9/25/26 10:30,9/25/26 4:30,6/2/26 2:00,6/3/26 10:00,0d,-82.69d,0ed,0,NA,NA,"April 7, 2026 10:15","April 7, 2026 4:15",As Soon As Possible,NA,NA,NA,4/23/26 10:51,5h,5h,0h,0,0,0,0,0,1.2.4.2.39,500,No,Yes,Yes,,,Black,,,,,,,,0,0,0,0d,0d,0d,No,No,No,No,No,No,No,No,No,No,No,0,0,0,0,0,
1636,2668,Yes,Auto Scheduled,Run ALE Transaction to QS5 from DS4 130,2h,Fixed Units,6,0.25d,1634,"September 25, 2026 10:30","September 25, 2026 1:30",9/25/26 10:30,9/25/26 1:30,6/2/26 2:00,6/2/26 4:00,0h,-661.5h,0ed,0,NA,NA,"April 7, 2026 10:15","April 7, 2026 1:15",As Soon As Possible,NA,NA,NA,4/23/26 10:51,2h,2h,0h,0,0,0,0,0,1.2.4.2.39.1,500,No,No,No,,,Black,,,,,,,,0,0,0,0d,0d,0d,No,No,No,No,No,No,No,No,No,No,No,0,0,0,0,0,
1637,2669,Yes,Auto Scheduled,Post Load Validation,3h,Fixed Units,6,0.38d,1636,"September 25, 2026 1:30","September 25, 2026 4:30",9/25/26 1:30,9/25/26 4:30,6/2/26 4:00,6/3/26 10:00,0h,-661.5h,0ed,0,NA,NA,"April 7, 2026 1:15","April 7, 2026 4:15",As Soon As Possible,NA,NA,NA,4/23/26 10:51,3h,3h,0h,0,0,0,0,0,1.2.4.2.39.2,500,No,No,No,,"Matt Palastro, Dave Duda",Black,,,,,,,,0,0,0,0d,0d,0d,No,No,No,No,No,No,No,No,No,No,No,0,0,0,0,0,
1638,2670,Yes,Auto Scheduled,VC_Classification (Class Type 200),0.63d,Fixed Duration,5,0.63d,,"September 29, 2026 10:15","September 29, 2026 4:15",9/29/26 10:15,9/29/26 4:15,6/3/26 10:00,6/3/26 4:00,0d,-84.03d,0ed,0,NA,NA,"April 15, 2026 3:15","April 16, 2026 11:15",As Soon As Possible,NA,NA,NA,4/23/26 10:51,5h,5h,0h,0,0,0,0,0,1.2.4.2.40,500,No,Yes,Yes,,,Black,,,,,,,,0,0,0,0d,0d,0d,No,No,No,No,No,No,No,No,No,No,No,0,0,0,0,0,
1639,2671,Yes,Auto Scheduled,Run ALE Transaction to QS5 from DS4 130,2h,Fixed Units,6,0.25d,1558,"September 29, 2026 10:15","September 29, 2026 1:15",9/29/26 10:15,9/29/26 1:15,6/3/26 10:00,6/3/26 12:00,0h,-672.25h,0ed,0,NA,NA,"April 15, 2026 3:15","April 16, 2026 8:15",As Soon As Possible,NA,NA,NA,4/23/26 10:51,2h,2h,0h,0,0,0,0,0,1.2.4.2.40.1,500,No,No,No,,,Black,,,,,,,,0,0,0,0d,0d,0d,No,No,No,No,No,No,No,No,No,No,No,0,0,0,0,0,
1640,2672,Yes,Auto Scheduled,Post Load Validation,3h,Fixed Units,6,0.38d,1639,"September 29, 2026 1:15","September 29, 2026 4:15",9/29/26 1:15,9/29/26 4:15,6/3/26 1:00,6/3/26 4:00,0h,-672.25h,0ed,0,NA,NA,"April 16, 2026 8:15","April 16, 2026 11:15",As Soon As Possible,NA,NA,NA,4/23/26 10:51,3h,3h,0h,0,0,0,0,0,1.2.4.2.40.2,500,No,No,No,,"Matt Palastro, Dave Duda",Black,,,,,,,,0,0,0,0d,0d,0d,No,No,No,No,No,No,No,No,No,No,No,0,0,0,0,0,
1641,2673,Yes,Auto Scheduled,VC_Dependency Nets,0.63d,Fixed Duration,5,0.63d,,"September 29, 2026 10:15","September 29, 2026 4:15",9/29/26 10:15,9/29/26 4:15,6/3/26 10:00,6/3/26 4:00,0d,-84.03d,0ed,0,NA,NA,"April 15, 2026 3:15","April 16, 2026 11:15",As Soon As Possible,NA,NA,NA,4/23/26 10:51,5h,5h,0h,0,0,0,0,0,1.2.4.2.41,500,No,Yes,Yes,,,Black,,,,,,,,0,0,0,0d,0d,0d,No,No,No,No,No,No,No,No,No,No,No,0,0,0,0,0,
1642,2674,Yes,Auto Scheduled,Run ALE Transaction to QS5 from DS4 130,2h,Fixed Units,6,0.25d,"1552,1637","September 29, 2026 10:15","September 29, 2026 1:15",9/29/26 10:15,9/29/26 1:15,6/3/26 10:00,6/3/26 12:00,0h,-672.25h,0ed,0,NA,NA,"April 15, 2026 3:15","April 16, 2026 8:15",As Soon As Possible,NA,NA,NA,4/23/26 10:51,2h,2h,0h,0,0,0,0,0,1.2.4.2.41.1,500,No,No,No,,,Black,,,,,,,,0,0,0,0d,0d,0d,No,No,No,No,No,No,No,No,No,No,No,0,0,0,0,0,
1643,2675,Yes,Auto Scheduled,Post Load Validation,3h,Fixed Units,6,0.38d,1642,"September 29, 2026 1:15","September 29, 2026 4:15",9/29/26 1:15,9/29/26 4:15,6/3/26 1:00,6/3/26 4:00,0h,-672.25h,0ed,0,NA,NA,"April 16, 2026 8:15","April 16, 2026 11:15",As Soon As Possible,NA,NA,NA,4/23/26 10:51,3h,3h,0h,0,0,0,0,0,1.2.4.2.41.2,500,No,No,No,,"Matt Palastro, Dave Duda",Black,,,,,,,,0,0,0,0d,0d,0d,No,No,No,No,No,No,No,No,No,No,No,0,0,0,0,0,
1644,2676,Yes,Auto Scheduled,VC_Configuration Profiles,0.63d,Fixed Duration,5,0.63d,,"September 29, 2026 10:15","September 29, 2026 4:15",9/29/26 10:15,9/29/26 4:15,6/1/26 10:15,6/1/26 4:15,0d,-86d,0ed,0,NA,NA,"April 15, 2026 3:15","April 16, 2026 11:15",As Soon As Possible,NA,NA,NA,4/23/26 10:51,5h,5h,0h,0,0,0,0,0,1.2.4.2.42,500,No,Yes,Yes,,,Black,,,,,,,,0,0,0,0d,0d,0d,No,No,No,No,No,No,No,No,No,No,No,0,0,0,0,0,
1645,2677,Yes,Auto Scheduled,Run ALE Transaction to QS5 from DS4 130,2h,Fixed Units,6,0.25d,1552,"September 29, 2026 10:15","September 29, 2026 1:15",9/29/26 10:15,9/29/26 1:15,6/1/26 10:15,6/1/26 1:15,0h,-688h,0ed,0,NA,NA,"April 15, 2026 3:15","April 16, 2026 8:15",As Soon As Possible,NA,NA,NA,4/23/26 10:51,2h,2h,0h,0,0,0,0,0,1.2.4.2.42.1,500,No,No,No,,,Black,,,,,,,,0,0,0,0d,0d,0d,No,No,No,No,No,No,No,No,No,No,No,0,0,0,0,0,
1646,2678,Yes,Auto Scheduled,Post Load Validation,3h,Fixed Units,6,0.38d,1645,"September 29, 2026 1:15","September 29, 2026 4:15",9/29/26 1:15,9/29/26 4:15,6/1/26 1:15,6/1/26 4:15,0h,-688h,0ed,0,NA,NA,"April 16, 2026 8:15","April 16, 2026 11:15",As Soon As Possible,NA,NA,NA,4/23/26 10:51,3h,3h,0h,0,0,0,0,0,1.2.4.2.42.2,500,No,No,No,,"Matt Palastro, Dave Duda",Black,,,,,,,,0,0,0,0d,0d,0d,No,No,No,No,No,No,No,No,No,No,No,0,0,0,0,0,
1647,2679,Yes,Auto Scheduled,VC_Variant Tables,0.63d,Fixed Duration,5,0.63d,,"September 29, 2026 4:15","September 30, 2026 1:15",9/29/26 4:15,9/30/26 1:15,6/2/26 2:00,6/3/26 10:00,0d,-85.28d,0ed,0,NA,NA,"April 16, 2026 11:15","April 17, 2026 8:15",As Soon As Possible,NA,NA,NA,4/23/26 10:51,5h,5h,0h,0,0,0,0,0,1.2.4.2.43,500,No,Yes,Yes,,,Black,,,,,,,,0,0,0,0d,0d,0d,No,No,No,No,No,No,No,No,No,No,No,0,0,0,0,0,
1648,2680,Yes,Auto Scheduled,Run ALE Transaction to QS5 from DS4 130,2h,Fixed Units,6,0.25d,1646,"September 29, 2026 4:15","September 30, 2026 9:15",9/29/26 4:15,9/30/26 9:15,6/2/26 2:00,6/2/26 4:00,0h,-682.25h,0ed,0,NA,NA,"April 16, 2026 11:15","April 16, 2026 2:15",As Soon As Possible,NA,NA,NA,4/23/26 10:51,2h,2h,0h,0,0,0,0,0,1.2.4.2.43.1,500,No,No,No,,,Black,,,,,,,,0,0,0,0d,0d,0d,No,No,No,No,No,No,No,No,No,No,No,0,0,0,0,0,
1649,2681,Yes,Auto Scheduled,Post Load Validation,3h,Fixed Units,6,0.38d,1648,"September 30, 2026 9:15","September 30, 2026 1:15",9/30/26 9:15,9/30/26 1:15,6/2/26 4:00,6/3/26 10:00,0h,-682.25h,0ed,0,NA,NA,"April 16, 2026 2:15","April 17, 2026 8:15",As Soon As Possible,NA,NA,NA,4/23/26 10:51,3h,3h,0h,0,0,0,0,0,1.2.4.2.43.2,500,No,No,No,,"Matt Palastro, Dave Duda",Black,,,,,,,,0,0,0,0d,0d,0d,No,No,No,No,No,No,No,No,No,No,No,0,0,0,0,0,
1650,2682,Yes,Auto Scheduled,VC_Variant Tables Content,0.63d,Fixed Duration,5,0.63d,,"September 30, 2026 1:15","October 1, 2026 9:15",9/30/26 1:15,10/1/26 9:15,6/3/26 10:00,6/3/26 4:00,0d,-85.28d,0ed,0,NA,NA,"April 17, 2026 8:15","April 17, 2026 2:15",As Soon As Possible,NA,NA,NA,4/23/26 10:51,5h,5h,0h,0,0,0,0,0,1.2.4.2.44,500,No,Yes,Yes,,,Black,,,,,,,,0,0,0,0d,0d,0d,No,No,No,No,No,No,No,No,No,No,No,0,0,0,0,0,
1651,2683,Yes,Auto Scheduled,Run ALE Transaction to QS5 from DS4 130,2h,Fixed Units,6,0.25d,1649,"September 30, 2026 1:15","September 30, 2026 3:15",9/30/26 1:15,9/30/26 3:15,6/3/26 10:00,6/3/26 12:00,0h,-682.25h,0ed,0,NA,NA,"April 17, 2026 8:15","April 17, 2026 10:15",As Soon As Possible,NA,NA,NA,4/23/26 10:51,2h,2h,0h,0,0,0,0,0,1.2.4.2.44.1,500,No,No,No,,,Black,,,,,,,,0,0,0,0d,0d,0d,No,No,No,No,No,No,No,No,No,No,No,0,0,0,0,0,
1652,2684,Yes,Auto Scheduled,Post Load Validation,3h,Fixed Units,6,0.38d,1651,"September 30, 2026 3:15","October 1, 2026 9:15",9/30/26 3:15,10/1/26 9:15,6/3/26 1:00,6/3/26 4:00,0h,-682.25h,0ed,0,NA,NA,"April 17, 2026 10:15","April 17, 2026 2:15",As Soon As Possible,NA,NA,NA,4/23/26 10:51,3h,3h,0h,0,0,0,0,0,1.2.4.2.44.2,500,No,No,No,,"Matt Palastro, Dave Duda",Black,,,,,,,,0,0,0,0d,0d,0d,No,No,No,No,No,No,No,No,No,No,No,0,0,0,0,0,
1653,2685,Yes,Auto Scheduled,VC_Characteristic Groups,1.97d,Fixed Duration,5,0.63d,,"September 29, 2026 4:15","October 1, 2026 4:00",9/29/26 4:15,10/1/26 4:00,6/1/26 4:15,6/3/26 4:00,0d,-86d,0ed,0,NA,NA,"April 16, 2026 11:15","April 17, 2026 8:15",As Soon As Possible,NA,NA,NA,4/23/26 10:51,15.75h,5h,0h,0,0,0,0,0,1.2.4.2.45,500,No,Yes,Yes,,,Black,,,,,,,,0,0,0,0d,0d,0d,No,No,No,No,No,No,No,No,No,No,No,0,0,0,0,0,
1654,2686,Yes,Auto Scheduled,Run ALE Transaction to QS5 from DS4 130,12.75h,Fixed Units,6,0.25d,1646,"September 29, 2026 4:15","October 1, 2026 12:00",9/29/26 4:15,10/1/26 12:00,6/1/26 4:15,6/3/26 12:00,0h,-688h,0ed,0,NA,NA,"April 16, 2026 11:15","April 16, 2026 2:15",Finish No Earlier Than,4/17/26 5:00,NA,NA,4/23/26 10:51,12.75h,2h,0h,0,0,0,0,0,1.2.4.2.45.1,500,No,No,No,,,Black,,,,,,,,0,0,0,0d,0d,0d,No,No,No,No,No,No,No,No,No,No,No,0,0,0,0,0,
1655,2687,Yes,Auto Scheduled,Post Load Validation,3h,Fixed Units,6,0.38d,1654,"October 1, 2026 1:00","October 1, 2026 4:00",10/1/26 1:00,10/1/26 4:00,6/3/26 1:00,6/3/26 4:00,0h,-688h,0ed,0,NA,NA,"April 16, 2026 2:15","April 17, 2026 8:15",As Soon As Possible,NA,NA,NA,4/23/26 10:51,3h,3h,0h,0,0,0,0,0,1.2.4.2.45.2,500,No,No,No,,"Matt Palastro, Dave Duda",Black,,,,,,,,0,0,0,0d,0d,0d,No,No,No,No,No,No,No,No,No,No,No,0,0,0,0,0,
1656,2688,Yes,Auto Scheduled,PTM_CM52_Super_BOM,4.09d,Fixed Duration,5,1.13d,,"September 29, 2026 10:15","October 5, 2026 11:00",9/29/26 10:15,10/5/26 11:00,5/25/26 1:15,5/29/26 2:00,0d,-90.75d,0ed,0,NA,NA,"April 15, 2026 3:15","April 16, 2026 4:15",As Soon As Possible,NA,NA,NA,4/23/26 10:51,32.75h,9h,0h,0,0,0,0,0,1.2.4.2.46,500,No,Yes,Yes,,,Black,,,,,,,,0,0,0,0d,0d,0d,Yes,No,No,No,No,No,No,No,No,No,No,0,0,0,0,0,
1657,2689,Yes,Auto Scheduled,"Load File Staged and Posted ""Ready""",30m,Fixed Units,6,0.06d,1558,"September 29, 2026 10:15","September 29, 2026 10:45",9/29/26 10:15,9/29/26 10:45,5/25/26 1:15,5/25/26 1:45,0m,-43560m,0ed,0,NA,NA,"April 15, 2026 3:15","April 15, 2026 3:45",As Soon As Possible,NA,NA,NA,4/23/26 10:51,0.5h,0.5h,0h,0,0,0,0,0,1.2.4.2.46.1,500,No,No,No,,,Black,,,,,,,,0,0,0,0d,0d,0d,No,No,No,No,No,No,No,No,No,No,No,0,0,0,0,0,
1658,2690,Yes,Auto Scheduled,Pre Load Validation,30m,Fixed Units,6,0.06d,1657,"September 29, 2026 10:45","September 29, 2026 11:15",9/29/26 10:45,9/29/26 11:15,5/25/26 1:45,5/25/26 2:15,0m,-43560m,0ed,0,NA,NA,"April 15, 2026 3:45","April 15, 2026 4:15",As Soon As Possible,NA,NA,NA,4/23/26 10:51,0.5h,0.5h,0h,0,0,0,0,0,1.2.4.2.46.2,500,No,No,No,,"Matt Palastro, Dave Duda",Black,,,,,,,,0,0,0,0d,0d,0d,No,No,No,No,No,No,No,No,No,No,No,0,0,0,0,0,
1659,2691,Yes,Auto Scheduled,Simulate Load,24.75h,Fixed Units,6,0.13d,1658,"September 29, 2026 11:15","October 2, 2026 12:00",9/29/26 11:15,10/2/26 12:00,5/25/26 2:15,5/28/26 3:00,0h,-726h,0ed,0,NA,NA,"April 15, 2026 4:15","April 16, 2026 8:15",Finish No Earlier Than,4/20/26 5:00,NA,NA,4/23/26 10:51,24.75h,1h,0h,0,0,0,0,0,1.2.4.2.46.3,500,No,No,No,,"Matt Palastro, Dave Duda",Black,,,,,,,,0,0,0,0d,0d,0d,No,No,No,No,No,No,No,No,No,No,No,0,0,0,0,0,
1660,2692,Yes,Auto Scheduled,Error and Defect Mitigation,2h,Fixed Units,6,0.25d,1659,"October 2, 2026 1:00","October 2, 2026 3:00",10/2/26 1:00,10/2/26 3:00,5/28/26 3:00,5/28/26 5:00,0h,-726h,0ed,0,NA,NA,"April 16, 2026 8:15","April 16, 2026 10:15",Finish No Earlier Than,4/17/26 5:00,NA,NA,4/23/26 10:51,2h,2h,0h,0,0,0,0,0,1.2.4.2.46.4,500,No,No,No,,"Matt Palastro, Dave Duda",Black,,,,,,,,0,0,0,0d,0d,0d,No,No,No,No,No,No,No,No,No,No,No,0,0,0,0,0,
1661,2693,Yes,Auto Scheduled,Load,2h,Fixed Units,6,0.25d,1660,"October 2, 2026 3:00","October 2, 2026 5:00",10/2/26 3:00,10/2/26 5:00,5/29/26 8:00,5/29/26 10:00,0h,-726h,0ed,0,NA,NA,"April 16, 2026 10:15","April 16, 2026 1:15",Start No Earlier Than,4/17/26 8:00,NA,NA,4/23/26 10:51,2h,2h,0h,0,0,0,0,0,1.2.4.2.46.5,500,No,No,No,,,Black,,,,,,,,0,0,0,0d,0d,0d,No,No,No,No,No,No,No,No,No,No,No,0,0,0,0,0,
1662,2694,Yes,Auto Scheduled,Post Load Validation,3h,Fixed Units,6,0.38d,1661,"October 5, 2026 8:00","October 5, 2026 11:00",10/5/26 8:00,10/5/26 11:00,5/29/26 10:00,5/29/26 2:00,0h,-726h,0ed,0,NA,NA,"April 16, 2026 1:15","April 16, 2026 4:15",As Soon As Possible,NA,NA,NA,4/23/26 10:51,3h,3h,0h,0,0,0,0,0,1.2.4.2.46.6,500,No,No,No,,"Matt Palastro, Dave Duda",Black,,,,,,,,0,0,0,0d,0d,0d,No,No,No,No,No,No,No,No,No,No,No,0,0,0,0,0,
1663,2695,Yes,Auto Scheduled,PTM_CM53_Super_Routing,2.13d,Fixed Duration,5,1.13d,,"October 5, 2026 11:00","October 7, 2026 12:00",10/5/26 11:00,10/7/26 12:00,5/29/26 2:00,6/3/26 4:00,0d,-90.75d,0ed,0,NA,NA,"April 16, 2026 4:15","April 20, 2026 8:15",As Soon As Possible,NA,NA,NA,4/23/26 10:51,9h,9h,0h,0,0,0,0,0,1.2.4.2.47,500,No,Yes,Yes,,,Black,,,,,,,,0,0,0,0d,0d,0d,Yes,No,No,No,No,No,No,No,No,No,No,0,0,0,0,0,
1664,2696,Yes,Auto Scheduled,"Load File Staged and Posted ""Ready""",30m,Fixed Units,6,0.06d,1662,"October 5, 2026 11:00","October 5, 2026 11:30",10/5/26 11:00,10/5/26 11:30,5/29/26 2:00,5/29/26 2:30,0m,-43560m,0ed,0,NA,NA,"April 16, 2026 4:15","April 16, 2026 4:45",As Soon As Possible,NA,NA,NA,4/23/26 10:51,0.5h,0.5h,0h,0,0,0,0,0,1.2.4.2.47.1,500,No,No,No,,,Black,,,,,,,,0,0,0,0d,0d,0d,No,No,No,No,No,No,No,No,No,No,No,0,0,0,0,0,
1665,2697,Yes,Auto Scheduled,Pre Load Validation,30m,Fixed Units,6,0.06d,1664,"October 5, 2026 11:30","October 5, 2026 12:00",10/5/26 11:30,10/5/26 12:00,5/29/26 2:30,5/29/26 3:00,0m,-43560m,0ed,0,NA,NA,"April 16, 2026 4:45","April 17, 2026 8:15",As Soon As Possible,NA,NA,NA,4/23/26 10:51,0.5h,0.5h,0h,0,0,0,0,0,1.2.4.2.47.2,500,No,No,No,,"Matt Palastro, Dave Duda",Black,,,,,,,,0,0,0,0d,0d,0d,No,No,No,No,No,No,No,No,No,No,No,0,0,0,0,0,
1666,2698,Yes,Auto Scheduled,Simulate Load,1h,Fixed Units,6,0.13d,1665,"October 5, 2026 1:00","October 6, 2026 2:00",10/5/26 1:00,10/6/26 2:00,5/29/26 3:00,6/1/26 4:00,0h,-726h,0ed,0,NA,NA,"April 17, 2026 8:15","April 17, 2026 9:15",As Soon As Possible,NA,NA,NA,4/23/26 10:51,1h,1h,0h,0,0,0,0,0,1.2.4.2.47.3,500,No,No,No,,,Black,,,,,,,,0,0,0,0d,0d,0d,No,No,No,No,No,No,No,No,No,No,No,0,0,0,0,0,
1667,2699,Yes,Auto Scheduled,Error and Defect Mitigation,2h,Fixed Units,6,0.25d,1666,"October 6, 2026 2:00","October 6, 2026 4:00",10/6/26 2:00,10/6/26 4:00,6/1/26 4:00,6/2/26 9:00,0h,-726h,0ed,0,NA,NA,"April 17, 2026 9:15","April 17, 2026 11:15",As Soon As Possible,NA,NA,NA,4/23/26 10:51,2h,2h,0h,0,0,0,0,0,1.2.4.2.47.4,500,No,No,No,,"Matt Palastro, Dave Duda",Black,,,,,,,,0,0,0,0d,0d,0d,No,No,No,No,No,No,No,No,No,No,No,0,0,0,0,0,
1668,2700,Yes,Auto Scheduled,Load,2h,Fixed Units,6,0.25d,1667,"October 6, 2026 4:00","October 7, 2026 9:00",10/6/26 4:00,10/7/26 9:00,6/2/26 9:00,6/2/26 11:00,0h,-726h,0ed,0,NA,NA,"April 17, 2026 11:15","April 17, 2026 2:15",As Soon As Possible,NA,NA,NA,4/23/26 10:51,2h,2h,0h,0,0,0,0,0,1.2.4.2.47.5,500,No,No,No,,,Black,,,,,,,,0,0,0,0d,0d,0d,No,No,No,No,No,No,No,No,No,No,No,0,0,0,0,0,
1669,2701,Yes,Auto Scheduled,Post Load Validation,3h,Fixed Units,6,0.38d,1668,"October 7, 2026 9:00","October 7, 2026 12:00",10/7/26 9:00,10/7/26 12:00,6/3/26 1:00,6/3/26 4:00,0h,-717h,0ed,0,NA,NA,"April 17, 2026 2:15","April 20, 2026 8:15",As Soon As Possible,NA,NA,NA,4/23/26 10:51,3h,3h,0h,0,0,0,0,0,1.2.4.2.47.6,500,No,No,No,,"Matt Palastro, Dave Duda",Black,,,,,,,,0,0,0,0d,0d,0d,No,No,No,No,No,No,No,No,No,No,No,0,0,0,0,0,
1670,2702,Yes,Auto Scheduled,VC_VK30 Pricing Variant,0.69d,Fixed Duration,5,0.69d,,"October 7, 2026 9:00","October 7, 2026 3:30",10/7/26 9:00,10/7/26 3:30,6/2/26 11:00,6/3/26 8:30,0d,-90.75d,0ed,0,NA,NA,"April 17, 2026 2:15","April 20, 2026 10:45",As Soon As Possible,NA,NA,NA,4/23/26 10:51,5.5h,5.5h,0h,0,0,0,0,0,1.2.4.2.48,500,No,Yes,Yes,,,Black,,,,,,,,0,0,0,0d,0d,0d,No,No,No,No,No,No,No,No,No,No,No,0,0,0,0,0,
1671,2703,Yes,Auto Scheduled,"Manual File Staged and Posted ""Ready""",30m,Fixed Units,6,0.06d,1668,"October 7, 2026 9:00","October 7, 2026 9:30",10/7/26 9:00,10/7/26 9:30,6/2/26 11:00,6/2/26 11:30,0m,-43560m,0ed,0,NA,NA,"April 17, 2026 2:15","April 17, 2026 2:45",Start No Earlier Than,4/6/26 8:00,NA,NA,4/23/26 10:51,0.5h,0.5h,0h,0,0,0,0,0,1.2.4.2.48.1,500,No,No,No,,"Matt Palastro, Dave Duda",Black,,,,,,,,0,0,0,0d,0d,0d,No,No,No,No,No,No,No,No,No,No,No,0,0,0,0,0,
1672,2704,Yes,Auto Scheduled,Load,2h,Fixed Units,6,0.25d,1671,"October 7, 2026 9:30","October 7, 2026 11:30",10/7/26 9:30,10/7/26 11:30,6/2/26 11:30,6/2/26 2:30,0h,-726h,0ed,0,NA,NA,"April 17, 2026 2:45","April 17, 2026 4:45",As Soon As Possible,NA,NA,NA,4/23/26 10:51,2h,2h,0h,0,0,0,0,0,1.2.4.2.48.2,500,No,No,No,,,Black,,,,,,,,0,0,0,0d,0d,0d,No,No,No,No,No,No,No,No,No,No,No,0,0,0,0,0,
1673,2705,Yes,Auto Scheduled,Post Load Validation,3h,Fixed Units,6,0.38d,1672,"October 7, 2026 11:30","October 7, 2026 3:30",10/7/26 11:30,10/7/26 3:30,6/2/26 2:30,6/3/26 8:30,0h,-726h,0ed,0,NA,NA,"April 17, 2026 4:45","April 20, 2026 10:45",As Soon As Possible,NA,NA,NA,4/23/26 10:51,3h,3h,0h,0,0,0,0,0,1.2.4.2.48.3,500,No,No,No,,"Matt Palastro, Dave Duda",Black,,,,,,,,0,0,0,0d,0d,0d,No,No,No,No,No,No,No,No,No,No,No,0,0,0,0,0,
1674,2706,Yes,Auto Scheduled,OTC_CM22_Pricing_Condition,0.69d,Fixed Duration,5,0.69d,,"October 7, 2026 3:30","October 8, 2026 12:00",10/7/26 3:30,10/8/26 12:00,6/3/26 8:30,6/3/26 4:00,0d,-90.75d,0ed,0,NA,NA,"April 20, 2026 10:45","April 21, 2026 8:15",As Soon As Possible,NA,NA,NA,4/23/26 10:51,8.5h,5.5h,0h,0,0,0,0,0,1.2.4.2.49,500,No,Yes,Yes,,,Black,,,,,,,,0,0,0,0d,0d,0d,No,No,No,No,No,No,No,No,No,No,No,0,0,0,0,0,
1675,2707,Yes,Auto Scheduled,"Manual File Staged and Posted ""Ready""",30m,Fixed Units,6,0.06d,1673,"October 7, 2026 3:30","October 7, 2026 4:00",10/7/26 3:30,10/7/26 4:00,6/3/26 8:30,6/3/26 9:00,0m,-43560m,0ed,0,NA,NA,"April 20, 2026 10:45","April 20, 2026 11:15",Start No Earlier Than,4/6/26 8:00,NA,NA,4/23/26 10:51,0.5h,0.5h,0h,0,0,0,0,0,1.2.4.2.49.1,500,No,No,No,,"Matt Palastro, Dave Duda",Black,,,,,,,,0,0,0,0d,0d,0d,No,No,No,No,No,No,No,No,No,No,No,0,0,0,0,0,
1676,2708,Yes,Auto Scheduled,Load,2h,Fixed Units,6,0.25d,1675,"October 7, 2026 4:00","October 8, 2026 9:00",10/7/26 4:00,10/8/26 9:00,6/3/26 9:00,6/3/26 11:00,0h,-726h,0ed,0,NA,NA,"April 20, 2026 11:15","April 20, 2026 2:15",As Soon As Possible,NA,NA,NA,4/23/26 10:51,2h,2h,0h,0,0,0,0,0,1.2.4.2.49.2,500,No,No,No,,,Black,,,,,,,,0,0,0,0d,0d,0d,No,No,No,No,No,No,No,No,No,No,No,0,0,0,0,0,
1677,2709,Yes,Auto Scheduled,Post Load Validation,3h,Fixed Units,6,0.38d,1676,"October 8, 2026 9:00","October 8, 2026 12:00",10/8/26 9:00,10/8/26 12:00,6/3/26 1:00,6/3/26 4:00,0h,-725h,0ed,0,NA,NA,"April 20, 2026 2:15","April 21, 2026 8:15",As Soon As Possible,NA,NA,NA,4/23/26 10:51,6h,3h,0h,0,0,0,0,0,1.2.4.2.49.3,500,No,No,No,,"Matt Palastro, Dave Duda,kim",Black,,,,,,,,0,0,0,0d,0d,0d,No,No,No,No,No,No,No,No,No,No,No,0,0,0,0,0,
1678,2710,Yes,Auto Scheduled,OTC_CM21_CMIR,0.5d,Fixed Duration,5,1.13d,,"October 8, 2026 9:00","October 8, 2026 2:00",10/8/26 9:00,10/8/26 2:00,6/3/26 11:00,6/3/26 4:00,0d,-90.75d,0ed,0,NA,NA,"April 20, 2026 2:15","April 21, 2026 3:15",As Soon As Possible,NA,NA,NA,4/23/26 10:51,4h,9h,0h,0,0,0,0,0,1.2.4.2.50,500,No,Yes,Yes,,,Black,,,,,,,,0,0,0,0d,0d,0d,No,No,No,No,No,No,No,No,No,No,No,0,0,0,0,0,
1679,2711,Yes,Auto Scheduled,"Load File Staged and Posted ""Ready""",30m,Fixed Units,6,0.06d,"1676,1687","October 8, 2026 9:00","October 8, 2026 9:30",10/8/26 9:00,10/8/26 9:30,6/3/26 11:00,6/3/26 11:30,0m,-43560m,0ed,0,NA,NA,"April 20, 2026 2:15","April 20, 2026 2:45",As Soon As Possible,NA,NA,NA,4/23/26 10:51,0.5h,0.5h,0h,0,0,0,0,0,1.2.4.2.50.1,500,No,No,No,,,Black,,,,,,,,0,0,0,0d,0d,0d,No,No,No,No,No,No,No,No,No,No,No,0,0,0,0,0,
1680,2712,Yes,Auto Scheduled,Pre Load Validation,30m,Fixed Units,6,0.06d,1679,"October 8, 2026 9:30","October 8, 2026 10:00",10/8/26 9:30,10/8/26 10:00,6/3/26 11:30,6/3/26 12:00,0m,-43560m,0ed,0,NA,NA,"April 20, 2026 2:45","April 20, 2026 3:15",As Soon As Possible,NA,NA,NA,4/23/26 10:51,0.5h,0.5h,0h,0,0,0,0,0,1.2.4.2.50.2,500,No,No,No,,Kim,Black,,,,,,,,0,0,0,0d,0d,0d,No,No,No,No,No,No,No,No,No,No,No,0,0,0,0,0,
1681,2713,Yes,Auto Scheduled,Simulate Load,0h,Fixed Units,6,0.13d,1680,"October 8, 2026 10:00","October 8, 2026 10:00",10/8/26 10:00,10/8/26 10:00,6/3/26 1:00,6/3/26 1:00,0h,-726h,0ed,0,NA,NA,"April 20, 2026 3:15","April 20, 2026 4:15",As Soon As Possible,NA,NA,NA,4/23/26 10:51,0h,1h,0h,0,0,0,0,0,1.2.4.2.50.3,500,Yes,No,No,,,Black,,,,,,,,0,0,0,0d,0d,0d,No,No,No,No,No,No,No,No,No,No,No,0,0,0,0,0,
1682,2714,Yes,Auto Scheduled,Error and Defect Mitigation,0h,Fixed Units,6,0.25d,1681,"October 8, 2026 10:00","October 8, 2026 10:00",10/8/26 10:00,10/8/26 10:00,6/3/26 1:00,6/3/26 1:00,0h,-726h,0ed,0,NA,NA,"April 20, 2026 4:15","April 21, 2026 9:15",As Soon As Possible,NA,NA,NA,4/23/26 10:51,0h,2h,0h,0,0,0,0,0,1.2.4.2.50.4,500,Yes,No,No,,Kim,Black,,,,,,,,0,0,0,0d,0d,0d,No,No,No,No,No,No,No,No,No,No,No,0,0,0,0,0,
1683,2715,Yes,Auto Scheduled,Load,0h,Fixed Units,6,0.25d,1682,"October 8, 2026 10:00","October 8, 2026 10:00",10/8/26 10:00,10/8/26 10:00,6/3/26 1:00,6/3/26 1:00,0h,-726h,0ed,0,NA,NA,"April 21, 2026 9:15","April 21, 2026 11:15",As Soon As Possible,NA,NA,NA,4/23/26 10:51,0h,2h,0h,0,0,0,0,0,1.2.4.2.50.5,500,Yes,No,No,,,Black,,,,,,,,0,0,0,0d,0d,0d,No,No,No,No,No,No,No,No,No,No,No,0,0,0,0,0,
1684,2716,Yes,Auto Scheduled,Post Load Validation,3h,Fixed Units,6,0.38d,1683,"October 8, 2026 10:00","October 8, 2026 2:00",10/8/26 10:00,10/8/26 2:00,6/3/26 1:00,6/3/26 4:00,0h,-726h,0ed,0,NA,NA,"April 21, 2026 11:15","April 21, 2026 3:15",As Soon As Possible,NA,NA,NA,4/23/26 10:51,3h,3h,0h,0,0,0,0,0,1.2.4.2.50.6,500,No,No,No,,Kim,Black,,,,,,,,0,0,0,0d,0d,0d,No,No,No,No,No,No,No,No,No,No,No,0,0,0,0,0,
1685,2717,Yes,Auto Scheduled,PTP_CM29_Source_List,6.16d,Fixed Duration,5,0.94d,,"September 25, 2026 9:30","October 5, 2026 10:45",9/25/26 9:30,10/5/26 10:45,6/3/26 9:00,6/3/26 4:00,0d,-87.47d,0ed,0,NA,NA,"April 13, 2026 10:45","April 14, 2026 10:15",As Soon As Possible,NA,NA,NA,4/23/26 10:51,5.5h,5.5h,0h,0,0,0,0,0,1.2.4.2.51,500,No,Yes,Yes,,,Black,,,,,,,,0,0,0,0d,0d,0d,No,No,No,No,No,No,No,No,No,No,No,0,0,0,0,0,
1686,2718,Yes,Auto Scheduled,"Manual File Staged and Posted ""Ready""",30m,Fixed Units,6,0.06d,"1529,1536","September 25, 2026 9:30","September 25, 2026 10:00",9/25/26 9:30,9/25/26 10:00,6/3/26 3:30,6/3/26 4:00,0m,-39060m,0ed,0,NA,NA,"April 14, 2026 9:45","April 14, 2026 10:15",Start No Earlier Than,4/17/26 8:00,NA,NA,4/23/26 10:51,0.5h,0.5h,0h,0,0,0,0,0,1.2.4.2.51.1,500,No,No,No,,Sam,Black,,,,,,,,0,0,0,0d,0d,0d,No,No,No,No,No,No,No,No,No,No,No,0,0,0,0,0,
1687,2719,Yes,Auto Scheduled,Load,2h,Fixed Units,6,0.25d,1505,"October 2, 2026 2:45","October 2, 2026 4:45",10/2/26 2:45,10/2/26 4:45,6/3/26 9:00,6/3/26 11:00,0h,-700.75h,0ed,0,NA,NA,"April 13, 2026 10:45","April 13, 2026 1:45",Finish No Earlier Than,4/17/26 5:00,NA,NA,4/23/26 10:51,2h,2h,0h,0,0,0,0,0,1.2.4.2.51.2,500,No,No,No,,,Black,,,,,,,,0,0,0,0d,0d,0d,No,No,No,No,No,No,No,No,No,No,No,0,0,0,0,0,
1688,2720,Yes,Auto Scheduled,Post Load Validation,3h,Fixed Units,6,0.38d,1687,"October 2, 2026 4:45","October 5, 2026 10:45",10/2/26 4:45,10/5/26 10:45,6/3/26 1:00,6/3/26 4:00,0h,-699.75h,0ed,0,NA,NA,"April 13, 2026 1:45","April 13, 2026 4:45",As Soon As Possible,NA,NA,NA,4/23/26 10:51,3h,3h,0h,0,0,0,0,0,1.2.4.2.51.3,500,No,No,No,,Sam,Black,,,,,,,,0,0,0,0d,0d,0d,No,No,No,No,No,No,No,No,No,No,No,0,0,0,0,0,
1689,2721,Yes,Auto Scheduled,RTR_CM11_Asset_Master,6.63d,Fixed Duration,5,1.13d,,"September 24, 2026 8:30","October 2, 2026 2:30",9/24/26 8:30,10/2/26 2:30,5/26/26 10:00,6/3/26 4:00,0d,-86.81d,0ed,0,NA,NA,"April 10, 2026 9:45","April 13, 2026 10:45",As Soon As Possible,NA,NA,NA,4/23/26 10:51,53.5h,9h,0h,0,0,0,0,0,1.2.4.2.52,500,No,Yes,Yes,,,Black,,,,,,,,0,0,0,0d,0d,0d,No,No,No,No,No,No,No,No,No,No,No,0,0,0,0,0,
1690,2722,Yes,Auto Scheduled,"Load File Staged and Posted ""Ready""",30m,Fixed Units,6,0.06d,,"September 24, 2026 8:30","September 24, 2026 9:00",9/24/26 8:30,9/24/26 9:00,5/26/26 10:00,5/26/26 10:30,0m,-41670m,0ed,0,NA,NA,"April 10, 2026 9:45","April 10, 2026 10:15",Start No Earlier Than,4/15/26 8:00,NA,NA,4/23/26 10:51,0.5h,0.5h,0h,0,0,0,0,0,1.2.4.2.52.1,500,No,No,No,,,Black,,,,,,,,0,0,0,0d,0d,0d,No,No,No,No,No,No,No,No,No,No,No,0,0,0,0,0,
1691,2723,Yes,Auto Scheduled,Pre Load Validation,30m,Fixed Units,6,0.06d,1690,"September 24, 2026 9:00","September 24, 2026 9:30",9/24/26 9:00,9/24/26 9:30,5/26/26 10:30,5/26/26 11:00,0m,-41670m,0ed,0,NA,NA,"April 10, 2026 10:15","April 10, 2026 10:45",As Soon As Possible,NA,NA,NA,4/23/26 10:51,1h,0.5h,0h,0,0,0,0,0,1.2.4.2.52.2,500,No,No,No,,Brian Wagner,Black,,,,,,,,0,0,0,0d,0d,0d,No,No,No,No,No,No,No,No,No,No,No,0,0,0,0,0,
1692,2724,Yes,Auto Scheduled,Simulate Load,31h,Fixed Units,6,0.13d,1691,"September 24, 2026 9:30","September 30, 2026 8:30",9/24/26 9:30,9/30/26 8:30,5/26/26 11:00,6/1/26 10:00,0h,-694.5h,0ed,0,NA,NA,"April 10, 2026 10:45","April 10, 2026 11:45",Finish No Earlier Than,4/20/26 5:00,NA,NA,4/23/26 10:51,31h,1h,0h,0,0,0,0,0,1.2.4.2.52.3,500,No,No,No,,,Black,,,,,,,,0,0,0,0d,0d,0d,No,No,No,No,No,No,No,No,No,No,No,0,0,0,0,0,
1693,2725,Yes,Auto Scheduled,Error and Defect Mitigation,16h,Fixed Units,6,0.25d,1692,"September 30, 2026 8:30","October 2, 2026 8:30",9/30/26 8:30,10/2/26 8:30,6/1/26 10:00,6/3/26 10:00,0h,-694.5h,0ed,0,NA,NA,"April 10, 2026 11:45","April 10, 2026 2:45",Finish No Earlier Than,4/17/26 5:00,NA,NA,4/23/26 10:51,16h,2h,0h,0,0,0,0,0,1.2.4.2.52.4,500,No,No,No,,Brian Wagner,Black,,,,,,,,0,0,0,0d,0d,0d,No,No,No,No,No,No,No,No,No,No,No,0,0,0,0,0,
1694,2726,Yes,Auto Scheduled,Load,2h,Fixed Units,6,0.25d,1693,"October 2, 2026 8:30","October 2, 2026 10:30",10/2/26 8:30,10/2/26 10:30,6/3/26 10:00,6/3/26 12:00,0h,-694.5h,0ed,0,NA,NA,"April 10, 2026 2:45","April 10, 2026 4:45",Start No Earlier Than,4/17/26 8:00,NA,NA,4/23/26 10:51,2h,2h,0h,0,0,0,0,0,1.2.4.2.52.5,500,No,No,No,,,Black,,,,,,,,0,0,0,0d,0d,0d,No,No,No,No,No,No,No,No,No,No,No,0,0,0,0,0,
1695,2727,Yes,Auto Scheduled,Post Load Validation,3h,Fixed Units,6,0.38d,1694,"October 2, 2026 10:30","October 2, 2026 2:30",10/2/26 10:30,10/2/26 2:30,6/3/26 1:00,6/3/26 4:00,0h,-694.5h,0ed,0,NA,NA,"April 10, 2026 4:45","April 13, 2026 10:45",As Soon As Possible,NA,NA,NA,4/23/26 10:51,3h,3h,0h,0,0,0,0,0,1.2.4.2.52.6,500,No,No,No,,Brian Wagner,Black,,,,,,,,0,0,0,0d,0d,0d,No,No,No,No,No,No,No,No,No,No,No,0,0,0,0,0,
1696,2728,Yes,Auto Scheduled,PTM_CM50_Material Class,2.13d,Fixed Duration,5,0.25d,,"September 29, 2026 3:45","October 1, 2026 4:45",9/29/26 3:45,10/1/26 4:45,6/1/26 3:00,6/3/26 4:00,0d,-86.09d,0ed,0,NA,NA,"April 16, 2026 10:45","April 16, 2026 1:45",As Soon As Possible,NA,NA,NA,4/23/26 10:51,17h,2h,0h,0,0,0,0,0,1.2.4.2.53,500,No,Yes,Yes,,,Black,,,,,,,,0,0,0,0d,0d,0d,No,No,No,No,No,No,No,No,No,No,No,0,0,0,0,0,
1697,2729,Yes,Auto Scheduled,"Manual File Staged and Posted ""Ready""",30m,Fixed Units,6,0.06d,1602,"September 29, 2026 3:45","September 29, 2026 4:15",9/29/26 3:45,9/29/26 4:15,6/1/26 3:00,6/1/26 3:30,0m,-41325m,0ed,0,NA,NA,"April 16, 2026 10:45","April 16, 2026 11:15",As Soon As Possible,NA,NA,NA,4/23/26 10:51,0.5h,0.5h,0h,0,0,0,0,0,1.2.4.2.53.1,500,No,No,No,,,Black,,,,,,,,0,0,0,0d,0d,0d,No,No,No,No,No,No,No,No,No,No,No,0,0,0,0,0,
1698,2730,Yes,Auto Scheduled,Load,30m,Fixed Units,6,0.06d,1697,"September 29, 2026 4:15","September 29, 2026 4:45",9/29/26 4:15,9/29/26 4:45,6/1/26 3:30,6/1/26 4:00,0m,-41325m,0ed,0,NA,NA,"April 16, 2026 11:15","April 16, 2026 11:45",As Soon As Possible,NA,NA,NA,4/23/26 10:51,0.5h,0.5h,0h,0,0,0,0,0,1.2.4.2.53.2,500,No,No,No,,"Matt Palastro, Dave Duda",Black,,,,,,,,0,0,0,0d,0d,0d,No,No,No,No,No,No,No,No,No,No,No,0,0,0,0,0,
1699,2731,Yes,Auto Scheduled,Post Load Validation,16h,Fixed Units,6,0.13d,1698,"September 29, 2026 4:45","October 1, 2026 4:45",9/29/26 4:45,10/1/26 4:45,6/1/26 4:00,6/3/26 4:00,0h,-688.75h,0ed,0,NA,NA,"April 16, 2026 11:45","April 16, 2026 1:45",Finish No Earlier Than,4/20/26 5:00,NA,NA,4/23/26 10:51,16h,1h,0h,0,0,0,0,0,1.2.4.2.53.3,500,No,No,No,,brad,Black,,,,,,,,0,0,0,0d,0d,0d,No,No,No,No,No,No,No,No,No,No,No,0,0,0,0,0,
1700,2732,Yes,Auto Scheduled,PTM_CM55_Class assignment to materials,1.13d,Fixed Duration,5,1.13d,,"September 29, 2026 4:15","October 1, 2026 8:15",9/29/26 4:15,10/1/26 8:15,6/2/26 3:00,6/3/26 4:00,0d,-85.16d,0ed,0,NA,NA,"April 16, 2026 11:15","April 17, 2026 1:15",As Soon As Possible,NA,NA,NA,4/23/26 10:51,9h,9h,0h,0,0,0,0,0,1.2.4.2.54,500,No,Yes,Yes,,,Black,,,,,,,,0,0,0,0d,0d,0d,No,No,No,No,No,No,No,No,No,No,No,0,0,0,0,0,
1701,2733,Yes,Auto Scheduled,"Load File Staged and Posted ""Ready""",30m,Fixed Units,6,0.06d,1697,"September 29, 2026 4:15","September 29, 2026 4:45",9/29/26 4:15,9/29/26 4:45,6/2/26 3:00,6/2/26 3:30,0m,-40875m,0ed,0,NA,NA,"April 16, 2026 11:15","April 16, 2026 11:45",As Soon As Possible,NA,NA,NA,4/23/26 10:51,0.5h,0.5h,0h,0,0,0,0,0,1.2.4.2.54.1,500,No,No,No,,,Black,,,,,,,,0,0,0,0d,0d,0d,No,No,No,No,No,No,No,No,No,No,No,0,0,0,0,0,
1702,2734,Yes,Auto Scheduled,Pre Load Validation,30m,Fixed Units,6,0.06d,1701,"September 29, 2026 4:45","September 30, 2026 8:15",9/29/26 4:45,9/30/26 8:15,6/2/26 3:30,6/2/26 4:00,0m,-40875m,0ed,0,NA,NA,"April 16, 2026 11:45","April 16, 2026 1:15",As Soon As Possible,NA,NA,NA,4/23/26 10:51,0.5h,0.5h,0h,0,0,0,0,0,1.2.4.2.54.2,500,No,No,No,,"Matt Palastro, Dave Duda",Black,,,,,,,,0,0,0,0d,0d,0d,No,No,No,No,No,No,No,No,No,No,No,0,0,0,0,0,
1703,2735,Yes,Auto Scheduled,Simulate Load,1h,Fixed Units,6,0.13d,1702,"September 30, 2026 8:15","September 30, 2026 9:15",9/30/26 8:15,9/30/26 9:15,6/2/26 4:00,6/2/26 5:00,0h,-681.25h,0ed,0,NA,NA,"April 16, 2026 1:15","April 16, 2026 2:15",As Soon As Possible,NA,NA,NA,4/23/26 10:51,1h,1h,0h,0,0,0,0,0,1.2.4.2.54.3,500,No,No,No,,,Black,,,,,,,,0,0,0,0d,0d,0d,No,No,No,No,No,No,No,No,No,No,No,0,0,0,0,0,
1704,2736,Yes,Auto Scheduled,Error and Defect Mitigation,2h,Fixed Units,6,0.25d,1703,"September 30, 2026 9:15","September 30, 2026 11:15",9/30/26 9:15,9/30/26 11:15,6/3/26 8:00,6/3/26 10:00,0h,-681.25h,0ed,0,NA,NA,"April 16, 2026 2:15","April 16, 2026 4:15",As Soon As Possible,NA,NA,NA,4/23/26 10:51,2h,2h,0h,0,0,0,0,0,1.2.4.2.54.4,500,No,No,No,,"Matt Palastro, Dave Duda",Black,,,,,,,,0,0,0,0d,0d,0d,No,No,No,No,No,No,No,No,No,No,No,0,0,0,0,0,
1705,2737,Yes,Auto Scheduled,Load,2h,Fixed Units,6,0.25d,1704,"September 30, 2026 11:15","September 30, 2026 2:15",9/30/26 11:15,9/30/26 2:15,6/3/26 10:00,6/3/26 12:00,0h,-681.25h,0ed,0,NA,NA,"April 16, 2026 4:15","April 17, 2026 9:15",As Soon As Possible,NA,NA,NA,4/23/26 10:51,2h,2h,0h,0,0,0,0,0,1.2.4.2.54.5,500,No,No,No,,,Black,,,,,,,,0,0,0,0d,0d,0d,No,No,No,No,No,No,No,No,No,No,No,0,0,0,0,0,
1706,2738,Yes,Auto Scheduled,Post Load Validation,3h,Fixed Units,6,0.38d,1705,"September 30, 2026 2:15","October 1, 2026 8:15",9/30/26 2:15,10/1/26 8:15,6/3/26 1:00,6/3/26 4:00,0h,-681.25h,0ed,0,NA,NA,"April 17, 2026 9:15","April 17, 2026 1:15",As Soon As Possible,NA,NA,NA,4/23/26 10:51,3h,3h,0h,0,0,0,0,0,1.2.4.2.54.6,500,No,No,No,,"Matt Palastro, Dave Duda",Black,,,,,,,,0,0,0,0d,0d,0d,No,No,No,No,No,No,No,No,No,No,No,0,0,0,0,0,
1707,2739,Yes,Auto Scheduled,GTS - Material initial load from S4 (Run Interface),2.09d,Fixed Duration,5,0.25d,,"September 29, 2026 1:15","October 1, 2026 2:00",9/29/26 1:15,10/1/26 2:00,5/27/26 1:00,5/29/26 1:45,0d,-89.03d,0ed,0,NA,NA,"April 16, 2026 8:15","April 16, 2026 10:15",As Soon As Possible,NA,NA,NA,4/23/26 10:51,16.75h,2h,0h,0,0,0,0,0,1.2.4.2.55,500,No,Yes,Yes,,,Black,,,,,,,,0,0,0,0d,0d,0d,No,No,No,No,No,No,No,No,No,No,No,0,0,0,0,0,
1708,2740,Yes,Auto Scheduled,Run material interface to GTS,15.75h,Fixed Units,6,0.13d,1576,"September 29, 2026 1:15","October 1, 2026 12:00",9/29/26 1:15,10/1/26 12:00,5/27/26 1:00,5/29/26 11:45,0h,-712.25h,0ed,0,NA,NA,"April 16, 2026 8:15","April 16, 2026 9:15",Finish No Earlier Than,4/17/26 5:00,NA,NA,4/23/26 10:51,15.75h,1h,0h,0,0,0,0,0,1.2.4.2.55.1,500,No,No,No,,,Black,,,,,,,,0,0,0,0d,0d,0d,No,No,No,No,No,No,No,No,No,No,No,0,0,0,0,0,
1709,2741,Yes,Auto Scheduled,Post Load Validation,1h,Fixed Units,6,0.13d,1708,"October 1, 2026 1:00","October 1, 2026 2:00",10/1/26 1:00,10/1/26 2:00,5/29/26 11:45,5/29/26 1:45,0h,-712.25h,0ed,0,NA,NA,"April 16, 2026 9:15","April 16, 2026 10:15",As Soon As Possible,NA,NA,NA,4/23/26 10:51,1h,1h,0h,0,0,0,0,0,1.2.4.2.55.2,500,No,No,No,,Kim Kolesar,Black,,,,,,,,0,0,0,0d,0d,0d,No,No,No,No,No,No,No,No,No,No,No,0,0,0,0,0,
1710,2742,Yes,Auto Scheduled,GTS - Customers  initial load from S4 (Run Interface),0.25d,Fixed Duration,5,0.25d,,"September 24, 2026 8:30","September 24, 2026 10:30",9/24/26 8:30,9/24/26 10:30,6/3/26 2:00,6/3/26 4:00,0d,-80.44d,0ed,0,NA,NA,"April 10, 2026 1:45","April 10, 2026 3:45",As Soon As Possible,NA,NA,NA,4/23/26 10:51,2h,2h,0h,0,0,0,0,0,1.2.4.2.56,500,No,Yes,Yes,,,Black,,,,,,,,0,0,0,0d,0d,0d,No,No,No,No,No,No,No,No,No,No,No,0,0,0,0,0,
1711,2743,Yes,Auto Scheduled,Run material interface to GTS,1h,Fixed Units,6,0.13d,,"September 24, 2026 8:30","September 24, 2026 9:30",9/24/26 8:30,9/24/26 9:30,6/3/26 2:00,6/3/26 3:00,0h,-643.5h,0ed,0,NA,NA,"April 10, 2026 1:45","April 10, 2026 2:45",Start No Earlier Than,4/15/26 8:00,NA,NA,4/23/26 10:51,1h,1h,0h,0,0,0,0,0,1.2.4.2.56.1,500,No,No,No,,,Black,,,,,,,,0,0,0,0d,0d,0d,No,No,No,No,No,No,No,No,No,No,No,0,0,0,0,0,
1712,2744,Yes,Auto Scheduled,Post Load Validation,1h,Fixed Units,6,0.13d,1711,"September 24, 2026 9:30","September 24, 2026 10:30",9/24/26 9:30,9/24/26 10:30,6/3/26 3:00,6/3/26 4:00,0h,-643.5h,0ed,0,NA,NA,"April 10, 2026 2:45","April 10, 2026 3:45",Finish No Earlier Than,4/20/26 5:00,NA,NA,4/23/26 10:51,1h,1h,0h,0,0,0,0,0,1.2.4.2.56.2,500,No,No,No,,Kim Kolesar,Black,,,,,,,,0,0,0,0d,0d,0d,No,No,No,No,No,No,No,No,No,No,No,0,0,0,0,0,
1713,2745,Yes,Auto Scheduled,GTS - Vendors  initial load from S4 (Run Interface),0.25d,Fixed Duration,5,0.25d,,"September 24, 2026 4:30","September 25, 2026 9:30",9/24/26 4:30,9/25/26 9:30,6/3/26 10:00,6/3/26 4:00,0d,-81.69d,0ed,0,NA,NA,"April 15, 2026 2:00","April 15, 2026 4:00",As Soon As Possible,NA,NA,NA,4/23/26 10:51,2h,2h,0h,0,0,0,0,0,1.2.4.2.57,500,No,Yes,Yes,,,Black,,,,,,,,0,0,0,0d,0d,0d,No,No,No,No,No,No,No,No,No,No,No,0,0,0,0,0,
1714,2746,Yes,Auto Scheduled,Run material interface to GTS,1h,Fixed Units,6,0.13d,1519,"September 24, 2026 4:30","September 25, 2026 8:30",9/24/26 4:30,9/25/26 8:30,6/3/26 10:00,6/3/26 11:00,0h,-653.5h,0ed,0,NA,NA,"April 15, 2026 2:00","April 15, 2026 3:00",As Soon As Possible,NA,NA,NA,4/23/26 10:51,1h,1h,0h,0,0,0,0,0,1.2.4.2.57.1,500,No,No,No,,,Black,,,,,,,,0,0,0,0d,0d,0d,No,No,No,No,No,No,No,No,No,No,No,0,0,0,0,0,
1715,2747,Yes,Auto Scheduled,Post Load Validation,1h,Fixed Units,6,0.13d,1714,"September 25, 2026 8:30","September 25, 2026 9:30",9/25/26 8:30,9/25/26 9:30,6/3/26 3:00,6/3/26 4:00,0h,-650.5h,0ed,0,NA,NA,"April 15, 2026 3:00","April 15, 2026 4:00",As Soon As Possible,NA,NA,NA,4/23/26 10:51,1h,1h,0h,0,0,0,0,0,1.2.4.2.57.2,500,No,No,No,,Kim Kolesar,Black,,,,,,,,0,0,0,0d,0d,0d,No,No,No,No,No,No,No,No,No,No,No,0,0,0,0,0,
1716,2748,Yes,Auto Scheduled,GTS - ECCN - Create,1.13d,Fixed Duration,5,5.63d,,"September 24, 2026 8:30","September 25, 2026 9:30",9/24/26 8:30,9/25/26 9:30,6/3/26 11:00,6/3/26 4:00,0d,-81.31d,0ed,0,NA,NA,"April 6, 2026 8:15","April 13, 2026 2:15",As Soon As Possible,NA,NA,NA,4/23/26 10:51,2h,2h,0h,0,0,0,0,0,1.2.4.2.58,500,No,Yes,Yes,,,Black,,,,,,,,0,0,0,0d,0d,0d,No,No,No,No,No,No,No,No,No,No,No,0,0,0,0,0,
1717,2749,Yes,Auto Scheduled,Load Descartes XML File,1h,Fixed Units,6,0.13d,1390,"September 24, 2026 8:30","September 24, 2026 9:30",9/24/26 8:30,9/24/26 9:30,6/3/26 3:00,6/3/26 4:00,0h,-642.5h,0ed,0,NA,NA,"April 6, 2026 8:15","April 6, 2026 9:15",As Soon As Possible,NA,NA,NA,4/23/26 10:51,1h,1h,0h,0,0,0,0,0,1.2.4.2.58.1,500,No,No,No,,,Black,,,,,,,,0,0,0,0d,0d,0d,No,No,No,No,No,No,No,No,No,No,No,0,0,0,0,0,
1718,2750,Yes,Auto Scheduled,Post Load Validation,1h,Fixed Units,6,0.13d,1714,"September 25, 2026 8:30","September 25, 2026 9:30",9/25/26 8:30,9/25/26 9:30,6/3/26 11:00,6/3/26 12:00,0h,-653.5h,0ed,0,NA,NA,"April 13, 2026 1:15","April 13, 2026 2:15",As Soon As Possible,NA,NA,NA,4/23/26 10:51,1h,1h,0h,0,0,0,0,0,1.2.4.2.58.2,500,No,No,No,,Kim Kolesar,Black,,,,,,,,0,0,0,0d,0d,0d,No,No,No,No,No,No,No,No,No,No,No,0,0,0,0,0,
1719,2751,Yes,Auto Scheduled,GTS - ECCN - Assign,0.25d,Fixed Duration,5,0.25d,,"October 1, 2026 2:00","October 1, 2026 4:00",10/1/26 2:00,10/1/26 4:00,5/29/26 1:45,5/29/26 3:45,0d,-89.03d,0ed,0,NA,NA,"April 16, 2026 10:15","April 16, 2026 1:15",As Soon As Possible,NA,NA,NA,4/23/26 10:51,2h,2h,0h,0,0,0,0,0,1.2.4.2.59,500,No,Yes,Yes,,,Black,,,,,,,,0,0,0,0d,0d,0d,No,No,No,No,No,No,No,No,No,No,No,0,0,0,0,0,
1720,2752,Yes,Auto Scheduled,Load Descartes XML File,1h,Fixed Units,6,0.13d,1709,"October 1, 2026 2:00","October 1, 2026 3:00",10/1/26 2:00,10/1/26 3:00,5/29/26 1:45,5/29/26 2:45,0h,-712.25h,0ed,0,NA,NA,"April 16, 2026 10:15","April 16, 2026 11:15",Finish No Earlier Than,4/17/26 5:00,NA,NA,4/23/26 10:51,1h,1h,0h,0,0,0,0,0,1.2.4.2.59.1,500,No,No,No,,,Black,,,,,,,,0,0,0,0d,0d,0d,No,No,No,No,No,No,No,No,No,No,No,0,0,0,0,0,
1721,2753,Yes,Auto Scheduled,Post Load Validation,1h,Fixed Units,6,0.13d,1720,"October 1, 2026 3:00","October 1, 2026 4:00",10/1/26 3:00,10/1/26 4:00,5/29/26 2:45,5/29/26 3:45,0h,-712.25h,0ed,0,NA,NA,"April 16, 2026 11:15","April 16, 2026 1:15",As Soon As Possible,NA,NA,NA,4/23/26 10:51,1h,1h,0h,0,0,0,0,0,1.2.4.2.59.2,500,No,No,No,,Kim Kolesar,Black,,,,,,,,0,0,0,0d,0d,0d,No,No,No,No,No,No,No,No,No,No,No,0,0,0,0,0,
1722,2754,Yes,Auto Scheduled,GTS - HTS - Create,0.25d,Fixed Duration,5,0.25d,,"September 24, 2026 8:30","September 24, 2026 10:30",9/24/26 8:30,9/24/26 10:30,6/3/26 2:00,6/3/26 4:00,0d,-80.44d,0ed,0,NA,NA,"April 6, 2026 8:15","April 6, 2026 10:15",As Soon As Possible,NA,NA,NA,4/23/26 10:51,2h,2h,0h,0,0,0,0,0,1.2.4.2.60,500,No,Yes,Yes,,,Black,,,,,,,,0,0,0,0d,0d,0d,No,No,No,No,No,No,No,No,No,No,No,0,0,0,0,0,
1723,2755,Yes,Auto Scheduled,Load Descartes XML File,1h,Fixed Units,6,0.13d,1390,"September 24, 2026 8:30","September 24, 2026 9:30",9/24/26 8:30,9/24/26 9:30,6/3/26 2:00,6/3/26 3:00,0h,-643.5h,0ed,0,NA,NA,"April 6, 2026 8:15","April 6, 2026 9:15",As Soon As Possible,NA,NA,NA,4/23/26 10:51,1h,1h,0h,0,0,0,0,0,1.2.4.2.60.1,500,No,No,No,,,Black,,,,,,,,0,0,0,0d,0d,0d,No,No,No,No,No,No,No,No,No,No,No,0,0,0,0,0,
1724,2756,Yes,Auto Scheduled,Post Load Validation,1h,Fixed Units,6,0.13d,1723,"September 24, 2026 9:30","September 24, 2026 10:30",9/24/26 9:30,9/24/26 10:30,6/3/26 3:00,6/3/26 4:00,0h,-643.5h,0ed,0,NA,NA,"April 6, 2026 9:15","April 6, 2026 10:15",As Soon As Possible,NA,NA,NA,4/23/26 10:51,1h,1h,0h,0,0,0,0,0,1.2.4.2.60.2,500,No,No,No,,Kim Kolesar,Black,,,,,,,,0,0,0,0d,0d,0d,No,No,No,No,No,No,No,No,No,No,No,0,0,0,0,0,
1725,2757,Yes,Auto Scheduled,GTS - HTS - Assign,0.25d,Fixed Duration,5,0.25d,,"October 1, 2026 4:00","October 2, 2026 9:00",10/1/26 4:00,10/2/26 9:00,5/29/26 3:45,6/1/26 8:45,0d,-89.03d,0ed,0,NA,NA,"April 16, 2026 8:45","April 16, 2026 10:45",As Soon As Possible,NA,NA,NA,4/23/26 10:51,2h,2h,0h,0,0,0,0,0,1.2.4.2.61,500,No,Yes,Yes,,,Black,,,,,,,,0,0,0,0d,0d,0d,No,No,No,No,No,No,No,No,No,No,No,0,0,0,0,0,
1726,2758,Yes,Auto Scheduled,Load Descartes XML File,1h,Fixed Units,6,0.13d,1721,"October 1, 2026 4:00","October 1, 2026 5:00",10/1/26 4:00,10/1/26 5:00,5/29/26 3:45,5/29/26 4:45,0h,-712.25h,0ed,0,NA,NA,"April 16, 2026 8:45","April 16, 2026 9:45",As Soon As Possible,NA,NA,NA,4/23/26 10:51,1h,1h,0h,0,0,0,0,0,1.2.4.2.61.1,500,No,No,No,,,Black,,,,,,,,0,0,0,0d,0d,0d,No,No,No,No,No,No,No,No,No,No,No,0,0,0,0,0,
1727,2759,Yes,Auto Scheduled,Post Load Validation,1h,Fixed Units,6,0.13d,1726,"October 2, 2026 8:00","October 2, 2026 9:00",10/2/26 8:00,10/2/26 9:00,5/29/26 4:45,6/1/26 8:45,0h,-712.25h,0ed,0,NA,NA,"April 16, 2026 9:45","April 16, 2026 10:45",As Soon As Possible,NA,NA,NA,4/23/26 10:51,1h,1h,0h,0,0,0,0,0,1.2.4.2.61.2,500,No,No,No,,Kim Kolesar,Black,,,,,,,,0,0,0,0d,0d,0d,No,No,No,No,No,No,No,No,No,No,No,0,0,0,0,0,
1728,2760,Yes,Auto Scheduled,GTS - License - Create,0.25d,Fixed Duration,5,0.25d,,"October 2, 2026 10:00","October 2, 2026 12:00",10/2/26 10:00,10/2/26 12:00,6/3/26 2:00,6/3/26 4:00,0d,-86.63d,0ed,0,NA,NA,"April 16, 2026 11:45","April 16, 2026 2:45",As Soon As Possible,NA,NA,NA,4/23/26 10:51,2h,2h,0h,0,0,0,0,0,1.2.4.2.62,500,No,Yes,Yes,,,Black,,,,,,,,0,0,0,0d,0d,0d,No,No,No,No,No,No,No,No,No,No,No,0,0,0,0,0,
1729,2761,Yes,Auto Scheduled,Load Descartes XML File,1h,Fixed Units,6,0.13d,"1726,1742","October 2, 2026 10:00","October 2, 2026 11:00",10/2/26 10:00,10/2/26 11:00,6/3/26 2:00,6/3/26 3:00,0h,-693h,0ed,0,NA,NA,"April 16, 2026 11:45","April 16, 2026 1:45",As Soon As Possible,NA,NA,NA,4/23/26 10:51,1h,1h,0h,0,0,0,0,0,1.2.4.2.62.1,500,No,No,No,,,Black,,,,,,,,0,0,0,0d,0d,0d,No,No,No,No,No,No,No,No,No,No,No,0,0,0,0,0,
1730,2762,Yes,Auto Scheduled,Post Load Validation,1h,Fixed Units,6,0.13d,1729,"October 2, 2026 11:00","October 2, 2026 12:00",10/2/26 11:00,10/2/26 12:00,6/3/26 3:00,6/3/26 4:00,0h,-693h,0ed,0,NA,NA,"April 16, 2026 1:45","April 16, 2026 2:45",As Soon As Possible,NA,NA,NA,4/23/26 10:51,1h,1h,0h,0,0,0,0,0,1.2.4.2.62.2,500,No,No,No,,Kim Kolesar,Black,,,,,,,,0,0,0,0d,0d,0d,No,No,No,No,No,No,No,No,No,No,No,0,0,0,0,0,
1731,2763,Yes,Auto Scheduled,Commodity Code/Tarif,2.78d,Fixed Duration,5,0.25d,,"October 2, 2026 9:00","October 6, 2026 4:15",10/2/26 9:00,10/6/26 4:15,6/1/26 8:45,6/3/26 4:00,0d,-89.03d,0ed,0,NA,NA,"April 16, 2026 10:45","April 16, 2026 1:45",As Soon As Possible,NA,NA,NA,4/23/26 10:51,22.25h,2h,0h,0,0,0,0,0,1.2.4.2.63,500,No,Yes,Yes,,,Black,,,,,,,,0,0,0,0d,0d,0d,No,No,No,No,No,No,No,No,No,No,No,0,0,0,0,0,
1732,2764,Yes,Auto Scheduled,Load,21.25h,Fixed Units,6,0.13d,1727,"October 2, 2026 9:00","October 6, 2026 3:15",10/2/26 9:00,10/6/26 3:15,6/1/26 8:45,6/3/26 3:00,0h,-712.25h,0ed,0,NA,NA,"April 16, 2026 10:45","April 16, 2026 11:45",Finish No Earlier Than,4/20/26 5:00,NA,NA,4/23/26 10:51,21.25h,1h,0h,0,0,0,0,0,1.2.4.2.63.1,500,No,No,No,,,Black,,,,,,,,0,0,0,0d,0d,0d,No,No,No,No,No,No,No,No,No,No,No,0,0,0,0,0,
1733,2765,Yes,Auto Scheduled,Post Load Validation,1h,Fixed Units,6,0.13d,1732,"October 6, 2026 3:15","October 6, 2026 4:15",10/6/26 3:15,10/6/26 4:15,6/3/26 3:00,6/3/26 4:00,0h,-712.25h,0ed,0,NA,NA,"April 16, 2026 11:45","April 16, 2026 1:45",Start No Earlier Than,4/17/26 8:00,NA,NA,4/23/26 10:51,1h,1h,0h,0,0,0,0,0,1.2.4.2.63.2,500,No,No,No,,Kim Kolesar,Black,,,,,,,,0,0,0,0d,0d,0d,No,No,No,No,No,No,No,No,No,No,No,0,0,0,0,0,
1734,2766,Yes,Auto Scheduled,SPL Master File,0.25d,Fixed Duration,5,0.25d,,"October 2, 2026 8:00","October 2, 2026 10:00",10/2/26 8:00,10/2/26 10:00,6/3/26 2:00,6/3/26 4:00,0d,-86.38d,0ed,0,NA,NA,"March 13, 2025 8:00","March 13, 2025 10:00",As Soon As Possible,NA,NA,NA,4/23/26 10:51,2h,2h,0h,0,0,0,0,0,1.2.4.2.64,500,No,Yes,Yes,,,Black,,,,,,,,0,0,0,0d,0d,0d,No,No,No,No,No,No,No,No,No,No,No,0,0,0,0,0,
1735,2767,Yes,Auto Scheduled,Load,1h,Fixed Units,6,0.13d,1726,"October 2, 2026 8:00","October 2, 2026 9:00",10/2/26 8:00,10/2/26 9:00,6/3/26 2:00,6/3/26 3:00,0h,-691h,0ed,0,NA,NA,"March 13, 2025 8:00","March 13, 2025 9:00",As Soon As Possible,NA,NA,NA,4/23/26 10:51,1h,1h,0h,0,0,0,0,0,1.2.4.2.64.1,500,No,No,No,,,Black,,,,,,,,0,0,0,0d,0d,0d,No,No,No,No,No,No,No,No,No,No,No,0,0,0,0,0,
1736,2768,Yes,Auto Scheduled,Post Load Validation,1h,Fixed Units,6,0.13d,1735,"October 2, 2026 9:00","October 2, 2026 10:00",10/2/26 9:00,10/2/26 10:00,6/3/26 3:00,6/3/26 4:00,0h,-691h,0ed,0,NA,NA,"March 13, 2025 9:00","March 13, 2025 10:00",As Soon As Possible,NA,NA,NA,4/23/26 10:51,1h,1h,0h,0,0,0,0,0,1.2.4.2.64.2,500,No,No,No,,Kim Kolesar,Black,,,,,,,,0,0,0,0d,0d,0d,No,No,No,No,No,No,No,No,No,No,No,0,0,0,0,0,
1737,2769,Yes,Auto Scheduled,Initialize Embargo situation,0.38d,Fixed Duration,5,0.38d,,"September 25, 2026 9:30","September 25, 2026 1:30",9/25/26 9:30,9/25/26 1:30,6/3/26 1:00,6/3/26 4:00,0d,-81.69d,0ed,0,NA,NA,"April 13, 2026 2:15","April 14, 2026 8:15",As Soon As Possible,NA,NA,NA,4/23/26 10:51,3h,3h,0h,0,0,0,0,0,1.2.4.2.65,500,No,Yes,Yes,,,Black,,,,,,,,0,0,0,0d,0d,0d,No,No,No,No,No,No,No,No,No,No,No,0,0,0,0,0,
1738,2770,Yes,Auto Scheduled,Run report /SAPSLL/EMB_CNTRY_INIT,1h,Fixed Units,6,0.13d,1718,"September 25, 2026 9:30","September 25, 2026 10:30",9/25/26 9:30,9/25/26 10:30,6/3/26 1:00,6/3/26 2:00,0h,-653.5h,0ed,0,NA,NA,"April 13, 2026 2:15","April 13, 2026 3:15",As Soon As Possible,NA,NA,NA,4/23/26 10:51,1h,1h,0h,0,0,0,0,0,1.2.4.2.65.1,500,No,No,No,,,Black,,,,,,,,0,0,0,0d,0d,0d,No,No,No,No,No,No,No,No,No,No,No,0,0,0,0,0,
1739,2771,Yes,Auto Scheduled,Set Embargo situations,1h,Fixed Units,6,0.13d,1738,"September 25, 2026 10:30","September 25, 2026 11:30",9/25/26 10:30,9/25/26 11:30,6/3/26 2:00,6/3/26 3:00,0h,-653.5h,0ed,0,NA,NA,"April 13, 2026 3:15","April 13, 2026 4:15",As Soon As Possible,NA,NA,NA,4/23/26 10:51,1h,1h,0h,0,0,0,0,0,1.2.4.2.65.2,500,No,No,No,,,Black,,,,,,,,0,0,0,0d,0d,0d,No,No,No,No,No,No,No,No,No,No,No,0,0,0,0,0,
1740,2772,Yes,Auto Scheduled,Post Load Validation,1h,Fixed Units,6,0.13d,1739,"September 25, 2026 11:30","September 25, 2026 1:30",9/25/26 11:30,9/25/26 1:30,6/3/26 3:00,6/3/26 4:00,0h,-653.5h,0ed,0,NA,NA,"April 13, 2026 4:15","April 14, 2026 8:15",As Soon As Possible,NA,NA,NA,4/23/26 10:51,1h,1h,0h,0,0,0,0,0,1.2.4.2.65.3,500,No,No,No,,Kim Kolesar,Black,,,,,,,,0,0,0,0d,0d,0d,No,No,No,No,No,No,No,No,No,No,No,0,0,0,0,0,
1741,2773,Yes,Auto Scheduled,GTS - SPL (Sanctioned party list),0.25d,Fixed Duration,5,0.25d,,"October 2, 2026 9:00","October 2, 2026 11:00",10/2/26 9:00,10/2/26 11:00,6/3/26 1:00,6/3/26 4:00,0d,-86.63d,0ed,0,NA,NA,"April 16, 2026 10:45","April 16, 2026 1:45",As Soon As Possible,NA,NA,NA,4/23/26 10:51,2h,2h,0h,0,0,0,0,0,1.2.4.2.66,500,No,Yes,Yes,,,Black,,,,,,,,0,0,0,0d,0d,0d,No,No,No,No,No,No,No,No,No,No,No,0,0,0,0,0,
1742,2774,Yes,Auto Scheduled,Load Descartes XML File,1h,Fixed Units,6,0.13d,1727,"October 2, 2026 9:00","October 2, 2026 10:00",10/2/26 9:00,10/2/26 10:00,6/3/26 1:00,6/3/26 2:00,0h,-693h,0ed,0,NA,NA,"April 16, 2026 10:45","April 16, 2026 11:45",As Soon As Possible,NA,NA,NA,4/23/26 10:51,1h,1h,0h,0,0,0,0,0,1.2.4.2.66.1,500,No,No,No,,,Black,,,,,,,,0,0,0,0d,0d,0d,No,No,No,No,No,No,No,No,No,No,No,0,0,0,0,0,
1743,2775,Yes,Auto Scheduled,Post Load Validation,1h,Fixed Units,6,0.13d,1742,"October 2, 2026 10:00","October 2, 2026 11:00",10/2/26 10:00,10/2/26 11:00,6/3/26 3:00,6/3/26 4:00,0h,-692h,0ed,0,NA,NA,"April 16, 2026 11:45","April 16, 2026 1:45",As Soon As Possible,NA,NA,NA,4/23/26 10:51,1h,1h,0h,0,0,0,0,0,1.2.4.2.66.2,500,No,No,No,,Kim Kolesar,Black,,,,,,,,0,0,0,0d,0d,0d,No,No,No,No,No,No,No,No,No,No,No,0,0,0,0,0,
1744,2776,Yes,Auto Scheduled,RTR_CM17_Project Definition / Builder,1.13d,Fixed Duration,5,5.38d,,"September 24, 2026 9:00","September 25, 2026 10:00",9/24/26 9:00,9/25/26 10:00,6/2/26 2:30,6/3/26 4:00,0d,-81.44d,0ed,0,NA,NA,"April 10, 2026 10:15","April 17, 2026 2:15",As Soon As Possible,NA,NA,NA,4/23/26 10:51,9h,9h,0h,0,0,0,0,0,1.2.4.2.67,500,No,Yes,Yes,,,Black,,,,,,,,0,0,0,0d,0d,0d,No,No,No,No,No,No,No,No,No,No,No,0,0,0,0,0,
1745,2777,Yes,Auto Scheduled,"Load File Staged and Posted ""Ready""",30m,Fixed Units,6,0.06d,1690,"September 24, 2026 9:00","September 24, 2026 9:30",9/24/26 9:00,9/24/26 9:30,6/2/26 2:30,6/2/26 3:00,0m,-39090m,0ed,0,NA,NA,"April 10, 2026 10:15","April 10, 2026 10:45",Start No Earlier Than,4/20/26 8:00,NA,NA,4/23/26 10:51,0.5h,0.5h,0h,0,0,0,0,0,1.2.4.2.67.1,500,No,No,No,,,Black,,,,,,,,0,0,0,0d,0d,0d,No,No,No,No,No,No,No,No,No,No,No,0,0,0,0,0,
1746,2778,Yes,Auto Scheduled,Pre Load Validation,30m,Fixed Units,6,0.06d,1745,"September 24, 2026 9:30","September 24, 2026 10:00",9/24/26 9:30,9/24/26 10:00,6/2/26 3:30,6/2/26 4:00,0m,-39060m,0ed,0,NA,NA,"April 10, 2026 10:45","April 10, 2026 11:15",As Soon As Possible,NA,NA,NA,4/23/26 10:51,0.5h,0.5h,0h,0,0,0,0,0,1.2.4.2.67.2,500,No,No,No,,Brian Wagner,Black,,,,,,,,0,0,0,0d,0d,0d,No,No,No,No,No,No,No,No,No,No,No,0,0,0,0,0,
1747,2779,Yes,Auto Scheduled,Simulate Load,1h,Fixed Units,6,0.13d,1746,"September 24, 2026 10:00","September 24, 2026 11:00",9/24/26 10:00,9/24/26 11:00,6/2/26 4:00,6/2/26 5:00,0h,-651h,0ed,0,NA,NA,"April 16, 2026 2:15","April 16, 2026 3:15",As Soon As Possible,NA,NA,NA,4/23/26 10:51,1h,1h,0h,0,0,0,0,0,1.2.4.2.67.3,500,No,No,No,,,Black,,,,,,,,0,0,0,0d,0d,0d,No,No,No,No,No,No,No,No,No,No,No,0,0,0,0,0,
1748,2780,Yes,Auto Scheduled,Error and Defect Mitigation,2h,Fixed Units,6,0.25d,1747,"September 24, 2026 11:00","September 24, 2026 2:00",9/24/26 11:00,9/24/26 2:00,6/3/26 8:00,6/3/26 10:00,0h,-651h,0ed,0,NA,NA,"April 16, 2026 3:15","April 17, 2026 8:15",As Soon As Possible,NA,NA,NA,4/23/26 10:51,2h,2h,0h,0,0,0,0,0,1.2.4.2.67.4,500,No,No,No,,Brian Wagner,Black,,,,,,,,0,0,0,0d,0d,0d,No,No,No,No,No,No,No,No,No,No,No,0,0,0,0,0,
1749,2781,Yes,Auto Scheduled,Load,2h,Fixed Units,6,0.25d,1748,"September 24, 2026 2:00","September 24, 2026 4:00",9/24/26 2:00,9/24/26 4:00,6/3/26 10:00,6/3/26 12:00,0h,-651h,0ed,0,NA,NA,"April 17, 2026 8:15","April 17, 2026 10:15",As Soon As Possible,NA,NA,NA,4/23/26 10:51,2h,2h,0h,0,0,0,0,0,1.2.4.2.67.5,500,No,No,No,,,Black,,,,,,,,0,0,0,0d,0d,0d,No,No,No,No,No,No,No,No,No,No,No,0,0,0,0,0,
1750,2782,Yes,Auto Scheduled,Post Load Validation,3h,Fixed Units,6,0.38d,1749,"September 24, 2026 4:00","September 25, 2026 10:00",9/24/26 4:00,9/25/26 10:00,6/3/26 1:00,6/3/26 4:00,0h,-651h,0ed,0,NA,NA,"April 17, 2026 10:15","April 17, 2026 2:15",As Soon As Possible,NA,NA,NA,4/23/26 10:51,3h,3h,0h,0,0,0,0,0,1.2.4.2.67.6,500,No,No,No,,Brian Wagner,Black,,,,,,,,0,0,0,0d,0d,0d,No,No,No,No,No,No,No,No,No,No,No,0,0,0,0,0,
1751,2783,Yes,Auto Scheduled,RTR_CM18_WBS Element,1.25d,Fixed Duration,5,5.44d,,"September 24, 2026 8:30","September 25, 2026 10:30",9/24/26 8:30,9/25/26 10:30,6/2/26 3:00,6/3/26 4:00,0d,-81.44d,0ed,0,NA,NA,"April 10, 2026 10:45","April 17, 2026 3:15",As Soon As Possible,NA,NA,NA,4/23/26 10:51,9.25h,9h,0h,0,0,0,0,0,1.2.4.2.68,500,No,Yes,Yes,,,Black,,,,,,,,0,0,0,0d,0d,0d,No,No,No,No,No,No,No,No,No,No,No,0,0,0,0,0,
1752,2784,Yes,Auto Scheduled,"Load File Staged and Posted ""Ready""",30m,Fixed Units,6,0.06d,1745,"September 24, 2026 9:30","September 24, 2026 10:00",9/24/26 9:30,9/24/26 10:00,6/2/26 3:00,6/2/26 3:30,0m,-39090m,0ed,0,NA,NA,"April 10, 2026 10:45","April 10, 2026 11:15",Start No Earlier Than,4/17/26 8:00,NA,NA,4/23/26 10:51,0.5h,0.5h,0h,0,0,0,0,0,1.2.4.2.68.1,500,No,No,No,,,Black,,,,,,,,0,0,0,0d,0d,0d,No,No,No,No,No,No,No,No,No,No,No,0,0,0,0,0,
1753,2785,Yes,Auto Scheduled,Pre Load Validation,30m,Fixed Units,6,0.06d,1752,"September 24, 2026 10:00","September 24, 2026 10:30",9/24/26 10:00,9/24/26 10:30,6/2/26 3:30,6/2/26 4:00,0m,-39090m,0ed,0,NA,NA,"April 10, 2026 11:15","April 10, 2026 11:45",As Soon As Possible,NA,NA,NA,4/23/26 10:51,0.5h,0.5h,0h,0,0,0,0,0,1.2.4.2.68.2,500,No,No,No,,Brian Wagner,Black,,,,,,,,0,0,0,0d,0d,0d,No,No,No,No,No,No,No,No,No,No,No,0,0,0,0,0,
1754,2786,Yes,Auto Scheduled,Simulate Load,1h,Fixed Units,6,0.13d,1753,"September 24, 2026 10:30","September 24, 2026 11:30",9/24/26 10:30,9/24/26 11:30,6/2/26 4:00,6/2/26 5:00,0h,-651.5h,0ed,0,NA,NA,"April 16, 2026 3:15","April 16, 2026 4:15",As Soon As Possible,NA,NA,NA,4/23/26 10:51,1h,1h,0h,0,0,0,0,0,1.2.4.2.68.3,500,No,No,No,,,Black,,,,,,,,0,0,0,0d,0d,0d,No,No,No,No,No,No,No,No,No,No,No,0,0,0,0,0,
1755,2787,Yes,Auto Scheduled,Error and Defect Mitigation,2h,Fixed Units,6,0.25d,1754,"September 24, 2026 11:30","September 24, 2026 2:30",9/24/26 11:30,9/24/26 2:30,6/3/26 8:00,6/3/26 10:00,0h,-651.5h,0ed,0,NA,NA,"April 16, 2026 4:15","April 17, 2026 9:15",As Soon As Possible,NA,NA,NA,4/23/26 10:51,2h,2h,0h,0,0,0,0,0,1.2.4.2.68.4,500,No,No,No,,Brian Wagner,Black,,,,,,,,0,0,0,0d,0d,0d,No,No,No,No,No,No,No,No,No,No,No,0,0,0,0,0,
1756,2788,Yes,Auto Scheduled,Load,2h,Fixed Units,6,0.25d,1755,"September 24, 2026 2:30","September 24, 2026 4:30",9/24/26 2:30,9/24/26 4:30,6/3/26 10:00,6/3/26 12:00,0h,-651.5h,0ed,0,NA,NA,"April 17, 2026 9:15","April 17, 2026 11:15",As Soon As Possible,NA,NA,NA,4/23/26 10:51,2h,2h,0h,0,0,0,0,0,1.2.4.2.68.5,500,No,No,No,,,Black,,,,,,,,0,0,0,0d,0d,0d,No,No,No,No,No,No,No,No,No,No,No,0,0,0,0,0,
1757,2789,Yes,Auto Scheduled,Post Load Validation,3h,Fixed Units,6,0.38d,1756,"September 24, 2026 4:30","September 25, 2026 10:30",9/24/26 4:30,9/25/26 10:30,6/3/26 1:00,6/3/26 4:00,0h,-651.5h,0ed,0,NA,NA,"April 17, 2026 11:15","April 17, 2026 3:15",As Soon As Possible,NA,NA,NA,4/23/26 10:51,3h,3h,0h,0,0,0,0,0,1.2.4.2.68.6,500,No,No,No,,Brian Wagner,Black,,,,,,,,0,0,0,0d,0d,0d,No,No,No,No,No,No,No,No,No,No,No,0,0,0,0,0,
1758,2790,Yes,Auto Scheduled,UAT Mock Data Loads Complete,15m,Fixed Units,6,0.03d,,"September 24, 2026 8:30","September 24, 2026 8:45",9/24/26 8:30,9/24/26 8:45,6/3/26 3:45,6/3/26 4:00,0m,-38505m,0ed,0,NA,NA,"April 21, 2026 3:15","April 21, 2026 3:30",As Soon As Possible,NA,NA,NA,4/23/26 10:51,0.25h,0.25h,0h,0,0,0,0,0,1.2.4.2.68.7,500,Yes,No,No,,,Black,,,,,,,,0,0,0,0d,0d,0d,No,No,No,No,No,No,No,No,No,No,No,0,0,0,0,0,
1759,3360,Yes,Auto Scheduled,UAT Master Data Loads Complete,0m,Fixed Units,4,0d,1391,"October 8, 2026 2:00","October 8, 2026 2:00",10/8/26 2:00,10/8/26 2:00,6/3/26 4:00,6/3/26 4:00,0m,-43560m,0ed,0,NA,NA,NA,NA,As Soon As Possible,NA,NA,NA,4/30/26 7:05,0h,0h,0h,0,0,0,0,0,1.2.4.3,500,Yes,No,No,,,Black,,,,,,,,0,0,0,0d,0d,0d,No,No,No,No,No,No,No,No,No,No,No,0,0,0,0,0,
1760,3350,Yes,Auto Scheduled,Mock Transactional Data,2d,Fixed Duration,4,0d,1759,"October 8, 2026 2:00","October 12, 2026 2:00",10/8/26 2:00,10/12/26 2:00,8/12/26 3:45,8/14/26 3:45,0d,-40.78d,0ed,0,NA,NA,NA,NA,As Soon As Possible,NA,NA,NA,4/30/26 6:46,0h,0h,0h,0,0,0,0,0,1.2.4.4,500,No,Yes,Yes,,,Black,,,,,,,,0,0,0,0d,0d,0d,No,No,No,No,No,No,No,No,No,No,No,0,0,0,0,0,
1761,3351,Yes,Auto Scheduled,Inventory,4h,Fixed Units,5,0d,"998SS,1759SS","October 8, 2026 2:00","October 9, 2026 9:00",10/8/26 2:00,10/9/26 9:00,8/12/26 3:45,8/13/26 10:45,0h,-326.25h,0ed,0,NA,NA,NA,NA,As Soon As Possible,NA,NA,NA,4/30/26 6:46,0h,0h,0h,0,0,0,0,0,1.2.4.4.1,500,No,No,No,,,Black,,,,,,,,0,0,0,0d,0d,0d,No,No,No,No,No,No,No,No,No,No,No,0,0,0,0,0,
1762,3352,Yes,Auto Scheduled,Open AR,4h,Fixed Units,5,0d,1761,"October 9, 2026 9:00","October 9, 2026 2:00",10/9/26 9:00,10/9/26 2:00,8/13/26 10:45,8/13/26 3:45,0h,-326.25h,0ed,0,NA,NA,NA,NA,As Soon As Possible,NA,NA,NA,4/30/26 6:46,0h,0h,0h,0,0,0,0,0,1.2.4.4.2,500,No,No,No,,,Black,,,,,,,,0,0,0,0d,0d,0d,No,No,No,No,No,No,No,No,No,No,No,0,0,0,0,0,
1763,3353,Yes,Auto Scheduled,Open AP,4h,Fixed Units,5,0d,1762,"October 9, 2026 2:00","October 12, 2026 9:00",10/9/26 2:00,10/12/26 9:00,8/13/26 3:45,8/14/26 10:45,0h,-326.25h,0ed,0,NA,NA,NA,NA,As Soon As Possible,NA,NA,NA,4/30/26 6:46,0h,0h,0h,0,0,0,0,0,1.2.4.4.3,500,No,No,No,,,Black,,,,,,,,0,0,0,0d,0d,0d,No,No,No,No,No,No,No,No,No,No,No,0,0,0,0,0,
1764,3354,Yes,Auto Scheduled,Bank and Cash,4h,Fixed Units,5,0d,1763,"October 12, 2026 9:00","October 12, 2026 2:00",10/12/26 9:00,10/12/26 2:00,8/14/26 10:45,8/14/26 3:45,0h,-326.25h,0ed,0,NA,NA,NA,NA,As Soon As Possible,NA,NA,NA,4/30/26 6:46,0h,0h,0h,0,0,0,0,0,1.2.4.4.4,500,No,No,No,,,Black,,,,,,,,0,0,0,0d,0d,0d,No,No,No,No,No,No,No,No,No,No,No,0,0,0,0,0,
1765,3355,Yes,Auto Scheduled,Open Purchase Orders(Manual),1d,Fixed Units,5,0d,1761,"October 9, 2026 9:00","October 12, 2026 9:00",10/9/26 9:00,10/12/26 9:00,8/13/26 3:45,8/14/26 3:45,0d,-40.28d,0ed,0,NA,NA,NA,NA,As Soon As Possible,NA,NA,NA,4/30/26 6:46,0h,0h,0h,0,0,0,0,0,1.2.4.4.5,500,No,No,No,,,Black,,,,,,,,0,0,0,0d,0d,0d,No,No,No,No,No,No,No,No,No,No,No,0,0,0,0,0,
1766,3356,Yes,Auto Scheduled,Open Sales Orders(Manual),1d,Fixed Units,5,0d,1761,"October 9, 2026 9:00","October 12, 2026 9:00",10/9/26 9:00,10/12/26 9:00,8/13/26 3:45,8/14/26 3:45,0d,-40.28d,0ed,0,NA,NA,NA,NA,As Soon As Possible,NA,NA,NA,4/30/26 6:46,0h,0h,0h,0,0,0,0,0,1.2.4.4.6,500,No,No,No,,,Black,,,,,,,,0,0,0,0d,0d,0d,No,No,No,No,No,No,No,No,No,No,No,0,0,0,0,0,
1767,3357,Yes,Auto Scheduled,Service Orders(Manual),0.5d,Fixed Units,5,0d,1761,"October 9, 2026 9:00","October 9, 2026 2:00",10/9/26 9:00,10/9/26 2:00,8/14/26 10:45,8/14/26 3:45,0d,-39.78d,0ed,0,NA,NA,NA,NA,As Soon As Possible,NA,NA,NA,4/30/26 6:46,0h,0h,0h,0,0,0,0,0,1.2.4.4.7,500,No,No,No,,,Black,,,,,,,,0,0,0,0d,0d,0d,No,No,No,No,No,No,No,No,No,No,No,0,0,0,0,0,
1768,3358,Yes,Auto Scheduled,Open Production Orders(Manual),1d,Fixed Units,5,0d,1761,"October 9, 2026 9:00","October 12, 2026 9:00",10/9/26 9:00,10/12/26 9:00,8/13/26 3:45,8/14/26 3:45,0d,-40.28d,0ed,0,NA,NA,NA,NA,As Soon As Possible,NA,NA,NA,4/30/26 6:46,0h,0h,0h,0,0,0,0,0,1.2.4.4.8,500,No,No,No,,,Black,,,,,,,,0,0,0,0d,0d,0d,No,No,No,No,No,No,No,No,No,No,No,0,0,0,0,0,
1769,2938,Yes,Auto Scheduled,UAT Mock Data Loads Complete,15m,Fixed Units,4,0.03d,1760,"October 12, 2026 2:00","October 12, 2026 2:15",10/12/26 2:00,10/12/26 2:15,8/14/26 3:45,8/14/26 4:00,0m,-19575m,0ed,0,NA,NA,"April 21, 2026 3:15","April 21, 2026 3:30",As Soon As Possible,NA,NA,NA,4/24/26 5:27,0.25h,0.25h,0h,0,0,0,0,0,1.2.4.5,500,Yes,No,No,,,Black,,,,,,,,0,0,0,0d,0d,0d,No,No,No,No,No,No,No,No,No,No,No,0,0,0,0,0,
1770,4160,Yes,Auto Scheduled,PROD Data Load Tasks P?,10.56d,Fixed Duration,3,288.78d,134,"September 24, 2026 8:30","October 8, 2026 2:01",9/24/26 8:30,10/8/26 2:01,5/20/26 10:29,10/8/26 2:01,0d,-90.75d,0ed,0,NA,NA,"March 13, 2025 8:00","April 21, 2026 3:15",As Soon As Possible,NA,NA,NA,4/30/26 2:05,708.77h,592h,0h,0,0,0,0,0,1.2.5,500,No,Yes,Yes,,,Black,,,,,,,,0,0,0,0d,0d,0d,No,No,No,No,No,No,No,No,No,No,No,0,0,0,0,0,
1771,4161,Yes,Auto Scheduled,PMO Authorization to Start Data Loads,1m,Fixed Units,4,0.03d,134,"September 24, 2026 8:30","September 24, 2026 8:31",9/24/26 8:30,9/24/26 8:31,5/20/26 10:29,5/20/26 10:30,0m,-43561m,0ed,0,NA,NA,"April 6, 2026 8:00","April 6, 2026 8:15",As Soon As Possible,NA,NA,NA,4/30/26 2:05,0.02h,0.25h,0h,0,0,0,0,0,1.2.5.1,500,No,No,No,,,Black,,,,,,,,0,0,0,0d,0d,0d,No,No,No,No,No,No,No,No,No,No,No,0,0,0,0,0,
1772,4162,Yes,Manually Scheduled,Master Data Loads,5d,Fixed Duration,4,0d,1771,"September 24, 2026 8:31","October 1, 2026 8:31",9/24/26 8:31,10/1/26 8:31,9/24/26 8:31,10/1/26 8:31,0d,0d,0ed,0,NA,NA,NA,NA,As Soon As Possible,NA,NA,NA,4/30/26 2:05,708.5h,0h,0h,0,0,0,0,0,1.2.5.2,500,No,Yes,Yes,,,Black,,,,,,,,0,0,0,0d,0d,0d,No,No,No,No,No,No,No,No,No,No,No,0,0,0,0,0,
1773,4163,Yes,Auto Scheduled,RTR_CM02_Profit Center Hierarchy,0.75d,Fixed Duration,5,0.75d,,"September 24, 2026 8:31","September 24, 2026 3:31",9/24/26 8:31,9/24/26 3:31,5/21/26 10:00,5/21/26 5:00,0d,-89.81d,0ed,0,NA,NA,"April 6, 2026 8:15","April 6, 2026 3:15",As Soon As Possible,NA,NA,NA,4/30/26 2:05,6h,6h,0h,0,0,0,0,0,1.2.5.2.1,500,No,Yes,Yes,,,Black,,,,,,,,0,0,0,0d,0d,0d,No,No,No,No,No,No,No,No,No,No,No,0,0,0,0,0,
1774,4164,Yes,Auto Scheduled,"Manual File Staged and Posted ""Ready""",1h,Fixed Units,6,0.13d,1771,"September 24, 2026 8:31","September 24, 2026 9:31",9/24/26 8:31,9/24/26 9:31,5/21/26 10:00,5/21/26 11:00,0h,-718.52h,0ed,0,NA,NA,"April 6, 2026 8:15","April 6, 2026 9:15",Start No Earlier Than,4/6/26 8:00,NA,NA,4/30/26 2:05,1h,1h,0h,0,0,0,0,0,1.2.5.2.1.1,500,No,No,No,,,Black,,,,,,,,0,0,0,0d,0d,0d,No,No,No,No,No,No,No,No,No,No,No,0,0,0,0,0,
1775,4165,Yes,Auto Scheduled,Load,2h,Fixed Units,6,0.25d,1774,"September 24, 2026 9:31","September 24, 2026 11:31",9/24/26 9:31,9/24/26 11:31,5/21/26 11:00,5/21/26 2:00,0h,-718.52h,0ed,0,NA,NA,"April 6, 2026 9:15","April 6, 2026 11:15",As Soon As Possible,NA,NA,NA,4/30/26 2:05,2h,2h,0h,0,0,0,0,0,1.2.5.2.1.2,500,No,No,No,,,Black,,,,,,,,0,0,0,0d,0d,0d,No,No,No,No,No,No,No,No,No,No,No,0,0,0,0,0,
1776,4166,Yes,Auto Scheduled,Post Load Validation,3h,Fixed Units,6,0.38d,1775,"September 24, 2026 11:31","September 24, 2026 3:31",9/24/26 11:31,9/24/26 3:31,5/21/26 2:00,5/21/26 5:00,0h,-718.52h,0ed,0,NA,NA,"April 6, 2026 11:15","April 6, 2026 3:15",As Soon As Possible,NA,NA,NA,4/30/26 2:05,3h,3h,0h,0,0,0,0,0,1.2.5.2.1.3,500,No,No,No,,Brian Wagner,Black,,,,,,,,0,0,0,0d,0d,0d,No,No,No,No,No,No,No,No,No,No,No,0,0,0,0,0,
1777,4167,Yes,Auto Scheduled,RTR_CM03_Cost Center Hierarchy,0.75d,Fixed Duration,5,0.75d,,"September 24, 2026 3:31","September 25, 2026 1:31",9/24/26 3:31,9/25/26 1:31,5/22/26 8:00,5/22/26 3:00,0d,-89.81d,0ed,0,NA,NA,"April 6, 2026 3:15","April 7, 2026 1:15",As Soon As Possible,NA,NA,NA,4/30/26 2:05,6h,6h,0h,0,0,0,0,0,1.2.5.2.2,500,No,Yes,Yes,,,Black,,,,,,,,0,0,0,0d,0d,0d,No,No,No,No,No,No,No,No,No,No,No,0,0,0,0,0,
1778,4168,Yes,Auto Scheduled,"Manual File Staged and Posted ""Ready""",1h,Fixed Units,6,0.13d,1776,"September 24, 2026 3:31","September 24, 2026 4:31",9/24/26 3:31,9/24/26 4:31,5/22/26 8:00,5/22/26 9:00,0h,-718.52h,0ed,0,NA,NA,"April 6, 2026 3:15","April 6, 2026 4:15",Start No Earlier Than,4/6/26 8:00,NA,NA,4/30/26 2:05,1h,1h,0h,0,0,0,0,0,1.2.5.2.2.1,500,No,No,No,,,Black,,,,,,,,0,0,0,0d,0d,0d,No,No,No,No,No,No,No,No,No,No,No,0,0,0,0,0,
1779,4169,Yes,Auto Scheduled,Load,2h,Fixed Units,6,0.25d,1778,"September 24, 2026 4:31","September 25, 2026 9:31",9/24/26 4:31,9/25/26 9:31,5/22/26 9:00,5/22/26 11:00,0h,-718.52h,0ed,0,NA,NA,"April 6, 2026 4:15","April 7, 2026 9:15",As Soon As Possible,NA,NA,NA,4/30/26 2:05,2h,2h,0h,0,0,0,0,0,1.2.5.2.2.2,500,No,No,No,,,Black,,,,,,,,0,0,0,0d,0d,0d,No,No,No,No,No,No,No,No,No,No,No,0,0,0,0,0,
1780,4170,Yes,Auto Scheduled,Post Load Validation,3h,Fixed Units,6,0.38d,1779,"September 25, 2026 9:31","September 25, 2026 1:31",9/25/26 9:31,9/25/26 1:31,5/22/26 11:00,5/22/26 3:00,0h,-718.52h,0ed,0,NA,NA,"April 7, 2026 9:15","April 7, 2026 1:15",As Soon As Possible,NA,NA,NA,4/30/26 2:05,3h,3h,0h,0,0,0,0,0,1.2.5.2.2.3,500,No,No,No,,Brian Wagner,Black,,,,,,,,0,0,0,0d,0d,0d,No,No,No,No,No,No,No,No,No,No,No,0,0,0,0,0,
1781,4171,Yes,Auto Scheduled,RTR_CM01_GL_Account_Master to CC 1000,2.44d,Fixed Duration,5,1.81d,,"September 25, 2026 1:31","September 30, 2026 8:01",9/25/26 1:31,9/30/26 8:01,5/22/26 3:00,5/27/26 9:30,0d,-89.81d,0ed,0,NA,NA,"April 7, 2026 1:15","April 9, 2026 10:45",As Soon As Possible,NA,NA,NA,4/30/26 2:05,16h,16h,0h,0,0,0,0,0,1.2.5.2.3,500,No,Yes,Yes,,,Black,,,,,,,,0,0,0,0d,0d,0d,No,No,No,No,No,No,No,No,No,No,No,0,0,0,0,0,
1782,4172,Yes,Auto Scheduled,"Load File Staged and Posted ""Ready""",1h,Fixed Units,6,0.13d,1780,"September 25, 2026 1:31","September 25, 2026 2:31",9/25/26 1:31,9/25/26 2:31,5/22/26 3:00,5/22/26 4:00,0h,-718.52h,0ed,0,NA,NA,"April 7, 2026 1:15","April 7, 2026 2:15",Start No Earlier Than,4/6/26 8:00,NA,NA,4/30/26 2:05,1h,1h,0h,0,0,0,0,0,1.2.5.2.3.1,500,No,No,No,,,Black,,,,,,,,0,0,0,0d,0d,0d,No,No,No,No,No,No,No,No,No,No,No,0,0,0,0,0,
1783,4173,Yes,Auto Scheduled,Pre Load Validation,2h,Fixed Units,6,0.25d,1782,"September 25, 2026 2:31","September 25, 2026 4:31",9/25/26 2:31,9/25/26 4:31,5/22/26 4:00,5/25/26 9:00,0h,-718.52h,0ed,0,NA,NA,"April 7, 2026 2:15","April 7, 2026 4:15",As Soon As Possible,NA,NA,NA,4/30/26 2:05,2h,2h,0h,0,0,0,0,0,1.2.5.2.3.2,500,No,No,No,,Brian Wagner,Black,,,,,,,,0,0,0,0d,0d,0d,No,No,No,No,No,No,No,No,No,No,No,0,0,0,0,0,
1784,4174,Yes,Auto Scheduled,Simulate Load,6h,Fixed Units,6,0.75d,1783,"September 25, 2026 4:31","September 28, 2026 2:31",9/25/26 4:31,9/28/26 2:31,5/25/26 9:00,5/25/26 4:00,0h,-718.52h,0ed,0,NA,NA,"April 7, 2026 4:15","April 8, 2026 2:15",As Soon As Possible,NA,NA,NA,4/30/26 2:05,6h,6h,0h,0,0,0,0,0,1.2.5.2.3.3,500,No,No,No,,,Black,,,,,,,,0,0,0,0d,0d,0d,No,No,No,No,No,No,No,No,No,No,No,0,0,0,0,0,
1785,4175,Yes,Auto Scheduled,Error and Defect Mitigation,2h,Fixed Units,6,0.25d,1784,"September 28, 2026 2:31","September 29, 2026 9:01",9/28/26 2:31,9/29/26 9:01,5/25/26 4:00,5/26/26 10:30,0h,-718.52h,0ed,0,NA,NA,"April 8, 2026 8:15","April 8, 2026 11:45",As Soon As Possible,NA,NA,NA,4/30/26 2:05,2h,2h,0h,0,0,0,0,0,1.2.5.2.3.4,500,No,No,No,,Brian Wagner,Black,,,,,,,,0,0,0,0d,0d,0d,No,No,No,No,No,No,No,No,No,No,No,0,0,0,0,0,
1786,4176,Yes,Auto Scheduled,Load,1h,Fixed Units,6,0.13d,1785,"September 29, 2026 9:01","September 29, 2026 10:01",9/29/26 9:01,9/29/26 10:01,5/26/26 10:30,5/26/26 11:30,0h,-718.52h,0ed,0,NA,NA,"April 8, 2026 11:45","April 8, 2026 1:45",As Soon As Possible,NA,NA,NA,4/30/26 2:05,1h,1h,0h,0,0,0,0,0,1.2.5.2.3.5,500,No,No,No,,,Black,,,,,,,,0,0,0,0d,0d,0d,No,No,No,No,No,No,No,No,No,No,No,0,0,0,0,0,
1787,4177,Yes,Auto Scheduled,Post Load Validation,2h,Fixed Units,6,0.25d,1786,"September 29, 2026 10:01","September 29, 2026 1:01",9/29/26 10:01,9/29/26 1:01,5/26/26 11:30,5/26/26 2:30,0h,-718.52h,0ed,0,NA,NA,"April 8, 2026 1:45","April 8, 2026 3:45",As Soon As Possible,NA,NA,NA,4/30/26 2:05,2h,2h,0h,0,0,0,0,0,1.2.5.2.3.6,500,No,No,No,,Brian Wagner,Black,,,,,,,,0,0,0,0d,0d,0d,No,No,No,No,No,No,No,No,No,No,No,0,0,0,0,0,
1788,4178,Yes,Auto Scheduled,Extend GL to all Company Codes,2h,Fixed Units,6,0.25d,1787,"September 29, 2026 1:01","September 29, 2026 3:01",9/29/26 1:01,9/29/26 3:01,5/26/26 2:30,5/26/26 4:30,0h,-718.52h,0ed,0,NA,NA,"April 8, 2026 3:45","April 9, 2026 8:45",As Soon As Possible,NA,NA,NA,4/30/26 2:05,2h,2h,0h,0,0,0,0,0,1.2.5.2.3.7,500,No,No,No,,,Black,,,,,,,,0,0,0,0d,0d,0d,No,No,No,No,No,No,No,No,No,No,No,0,0,0,0,0,
1789,4179,Yes,Auto Scheduled,Post GL Extention Validation,2h,Fixed Units,6,0.25d,1788,"September 29, 2026 3:01","September 30, 2026 8:01",9/29/26 3:01,9/30/26 8:01,5/26/26 4:30,5/27/26 9:30,0h,-718.52h,0ed,0,NA,NA,"April 9, 2026 8:45","April 9, 2026 10:45",As Soon As Possible,NA,NA,NA,4/30/26 2:05,0h,0h,0h,0,0,0,0,0,1.2.5.2.3.8,500,No,No,No,,,Black,,,,,,,,0,0,0,0d,0d,0d,No,No,No,No,No,No,No,No,No,No,No,0,0,0,0,0,
1790,4180,Yes,Auto Scheduled,RTR_CM05_Profit_Center,1.13d,Fixed Duration,5,1.13d,,"September 24, 2026 3:31","September 25, 2026 4:31",9/24/26 3:31,9/25/26 4:31,5/29/26 8:45,6/1/26 9:45,0d,-84.72d,0ed,0,NA,NA,"April 6, 2026 3:15","April 7, 2026 4:15",As Soon As Possible,NA,NA,NA,4/30/26 2:05,9h,9h,0h,0,0,0,0,0,1.2.5.2.4,500,No,Yes,Yes,,,Black,,,,,,,,0,0,0,0d,0d,0d,No,No,No,No,No,No,No,No,No,No,No,0,0,0,0,0,
1791,4181,Yes,Auto Scheduled,"Load File Staged and Posted ""Ready""",1h,Fixed Units,6,0.13d,1776,"September 24, 2026 3:31","September 24, 2026 4:31",9/24/26 3:31,9/24/26 4:31,5/29/26 8:45,5/29/26 9:45,0h,-677.77h,0ed,0,NA,NA,"April 6, 2026 3:15","April 6, 2026 4:15",As Soon As Possible,NA,NA,NA,4/30/26 2:05,1h,1h,0h,0,0,0,0,0,1.2.5.2.4.1,500,No,No,No,,,Black,,,,,,,,0,0,0,0d,0d,0d,No,No,No,No,No,No,No,No,No,No,No,0,0,0,0,0,
1792,4182,Yes,Auto Scheduled,Pre Load Validation,2h,Fixed Units,6,0.25d,1791,"September 24, 2026 4:31","September 25, 2026 9:31",9/24/26 4:31,9/25/26 9:31,5/29/26 9:45,5/29/26 11:45,0h,-677.77h,0ed,0,NA,NA,"April 6, 2026 4:15","April 7, 2026 9:15",As Soon As Possible,NA,NA,NA,4/30/26 2:05,2h,2h,0h,0,0,0,0,0,1.2.5.2.4.2,500,No,No,No,,Brian Wagner,Black,,,,,,,,0,0,0,0d,0d,0d,No,No,No,No,No,No,No,No,No,No,No,0,0,0,0,0,
1793,4183,Yes,Auto Scheduled,Simulate Load,1h,Fixed Units,6,0.13d,1792,"September 25, 2026 9:31","September 25, 2026 10:31",9/25/26 9:31,9/25/26 10:31,5/29/26 11:45,5/29/26 1:45,0h,-677.77h,0ed,0,NA,NA,"April 7, 2026 9:15","April 7, 2026 10:15",As Soon As Possible,NA,NA,NA,4/30/26 2:05,1h,1h,0h,0,0,0,0,0,1.2.5.2.4.3,500,No,No,No,,,Black,,,,,,,,0,0,0,0d,0d,0d,No,No,No,No,No,No,No,No,No,No,No,0,0,0,0,0,
1794,4184,Yes,Auto Scheduled,Error and Defect Mitigation,2h,Fixed Units,6,0.25d,1793,"September 25, 2026 10:31","September 25, 2026 1:31",9/25/26 10:31,9/25/26 1:31,5/29/26 1:45,5/29/26 3:45,0h,-677.77h,0ed,0,NA,NA,"April 7, 2026 10:15","April 7, 2026 1:15",As Soon As Possible,NA,NA,NA,4/30/26 2:05,2h,2h,0h,0,0,0,0,0,1.2.5.2.4.4,500,No,No,No,,Brian Wagner,Black,,,,,,,,0,0,0,0d,0d,0d,No,No,No,No,No,No,No,No,No,No,No,0,0,0,0,0,
1795,4185,Yes,Auto Scheduled,Load,1h,Fixed Units,6,0.13d,1794,"September 25, 2026 1:31","September 25, 2026 2:31",9/25/26 1:31,9/25/26 2:31,5/29/26 3:45,5/29/26 4:45,0h,-677.77h,0ed,0,NA,NA,"April 7, 2026 1:15","April 7, 2026 2:15",As Soon As Possible,NA,NA,NA,4/30/26 2:05,1h,1h,0h,0,0,0,0,0,1.2.5.2.4.5,500,No,No,No,,,Black,,,,,,,,0,0,0,0d,0d,0d,No,No,No,No,No,No,No,No,No,No,No,0,0,0,0,0,
1796,4186,Yes,Auto Scheduled,Post Load Validation,2h,Fixed Units,6,0.25d,1795,"September 25, 2026 2:31","September 25, 2026 4:31",9/25/26 2:31,9/25/26 4:31,5/29/26 4:45,6/1/26 9:45,0h,-677.77h,0ed,0,NA,NA,"April 7, 2026 2:15","April 7, 2026 4:15",As Soon As Possible,NA,NA,NA,4/30/26 2:05,2h,2h,0h,0,0,0,0,0,1.2.5.2.4.6,500,No,No,No,,Brian Wagner,Black,,,,,,,,0,0,0,0d,0d,0d,No,No,No,No,No,No,No,No,No,No,No,0,0,0,0,0,
1797,4187,Yes,Auto Scheduled,RTR_CM04_Cost_Center,1.13d,Fixed Duration,5,1.13d,,"September 25, 2026 4:31","September 29, 2026 8:31",9/25/26 4:31,9/29/26 8:31,6/2/26 3:00,6/3/26 4:00,0d,-83.19d,0ed,0,NA,NA,"April 7, 2026 4:15","April 9, 2026 8:15",As Soon As Possible,NA,NA,NA,4/30/26 2:05,9h,9h,0h,0,0,0,0,0,1.2.5.2.5,500,No,Yes,Yes,,,Black,,,,,,,,0,0,0,0d,0d,0d,No,No,No,No,No,No,No,No,No,No,No,0,0,0,0,0,
1798,4188,Yes,Auto Scheduled,"Load File Staged and Posted ""Ready""",1h,Fixed Units,6,0.13d,1796,"September 25, 2026 4:31","September 28, 2026 8:31",9/25/26 4:31,9/28/26 8:31,6/2/26 3:00,6/2/26 4:00,0h,-665.52h,0ed,0,NA,NA,"April 7, 2026 4:15","April 8, 2026 8:15",As Soon As Possible,NA,NA,NA,4/30/26 2:05,1h,1h,0h,0,0,0,0,0,1.2.5.2.5.1,500,No,No,No,,,Black,,,,,,,,0,0,0,0d,0d,0d,No,No,No,No,No,No,No,No,No,No,No,0,0,0,0,0,
1799,4189,Yes,Auto Scheduled,Pre Load Validation,2h,Fixed Units,6,0.25d,1798,"September 28, 2026 8:31","September 28, 2026 10:31",9/28/26 8:31,9/28/26 10:31,6/2/26 4:00,6/3/26 9:00,0h,-665.52h,0ed,0,NA,NA,"April 8, 2026 8:15","April 8, 2026 10:15",As Soon As Possible,NA,NA,NA,4/30/26 2:05,2h,2h,0h,0,0,0,0,0,1.2.5.2.5.2,500,No,No,No,,Brian Wagner,Black,,,,,,,,0,0,0,0d,0d,0d,No,No,No,No,No,No,No,No,No,No,No,0,0,0,0,0,
1800,4190,Yes,Auto Scheduled,Simulate Load,1h,Fixed Units,6,0.13d,1799,"September 28, 2026 10:31","September 28, 2026 11:31",9/28/26 10:31,9/28/26 11:31,6/3/26 9:00,6/3/26 10:00,0h,-665.52h,0ed,0,NA,NA,"April 8, 2026 10:15","April 8, 2026 11:15",As Soon As Possible,NA,NA,NA,4/30/26 2:05,1h,1h,0h,0,0,0,0,0,1.2.5.2.5.3,500,No,No,No,,,Black,,,,,,,,0,0,0,0d,0d,0d,No,No,No,No,No,No,No,No,No,No,No,0,0,0,0,0,
1801,4191,Yes,Auto Scheduled,Error and Defect Mitigation,2h,Fixed Units,6,0.25d,1800,"September 28, 2026 11:31","September 28, 2026 2:31",9/28/26 11:31,9/28/26 2:31,6/3/26 10:00,6/3/26 12:00,0h,-665.52h,0ed,0,NA,NA,"April 8, 2026 11:15","April 8, 2026 2:15",As Soon As Possible,NA,NA,NA,4/30/26 2:05,2h,2h,0h,0,0,0,0,0,1.2.5.2.5.4,500,No,No,No,,Brian Wagner,Black,,,,,,,,0,0,0,0d,0d,0d,No,No,No,No,No,No,No,No,No,No,No,0,0,0,0,0,
1802,4192,Yes,Auto Scheduled,Load,1h,Fixed Units,6,0.13d,1801,"September 28, 2026 2:31","September 28, 2026 3:31",9/28/26 2:31,9/28/26 3:31,6/3/26 1:00,6/3/26 2:00,0h,-665.52h,0ed,0,NA,NA,"April 8, 2026 2:15","April 8, 2026 3:15",As Soon As Possible,NA,NA,NA,4/30/26 2:05,1h,1h,0h,0,0,0,0,0,1.2.5.2.5.5,500,No,No,No,,,Black,,,,,,,,0,0,0,0d,0d,0d,No,No,No,No,No,No,No,No,No,No,No,0,0,0,0,0,
1803,4193,Yes,Auto Scheduled,Post Load Validation,2h,Fixed Units,6,0.25d,1802,"September 28, 2026 3:31","September 29, 2026 8:31",9/28/26 3:31,9/29/26 8:31,6/3/26 2:00,6/3/26 4:00,0h,-665.52h,0ed,0,NA,NA,"April 8, 2026 3:15","April 9, 2026 8:15",As Soon As Possible,NA,NA,NA,4/30/26 2:05,2h,2h,0h,0,0,0,0,0,1.2.5.2.5.6,500,No,No,No,,Brian Wagner,Black,,,,,,,,0,0,0,0d,0d,0d,No,No,No,No,No,No,No,No,No,No,No,0,0,0,0,0,
1804,4194,Yes,Auto Scheduled,Manual Configuration Activities in QS5,8.94d,Fixed Duration,5,7.16d,40,"September 24, 2026 8:31","October 7, 2026 8:01",9/24/26 8:31,10/7/26 8:01,5/27/26 4:00,6/3/26 4:00,0d,-89.13d,0ed,0,NA,NA,"April 6, 2026 1:00","April 15, 2026 2:15",As Soon As Possible,NA,NA,NA,4/30/26 2:05,43h,43h,0h,0,0,0,0,0,1.2.5.2.6,500,No,Yes,Yes,,,Black,,,,,,,,0,0,0,0d,0d,0d,No,No,No,No,No,No,No,No,No,No,No,0,0,0,0,0,
1805,4195,Yes,Auto Scheduled,Open Client,30m,Fixed Units,6,0.06d,,"September 24, 2026 8:31","September 24, 2026 9:01",9/24/26 8:31,9/24/26 9:01,6/3/26 3:30,6/3/26 4:00,0m,-38521m,0ed,0,NA,NA,"April 6, 2026 1:00","April 6, 2026 1:30",As Soon As Possible,NA,NA,NA,4/30/26 2:05,0.5h,0.5h,0h,0,0,0,0,0,1.2.5.2.6.1,500,No,No,No,,,Black,,,,,,,,0,0,0,0d,0d,0d,No,No,No,No,No,No,No,No,No,No,No,0,0,0,0,0,
1806,4196,Yes,Auto Scheduled,Service Enterprise Setup,5d,Fixed Units,6,5d,"1773,1777,1781","September 30, 2026 8:01","October 7, 2026 8:01",9/30/26 8:01,10/7/26 8:01,5/27/26 4:00,6/3/26 4:00,0d,-89.13d,0ed,0,NA,NA,"April 8, 2026 2:15","April 15, 2026 2:15",As Soon As Possible,NA,NA,NA,4/30/26 2:05,40h,40h,0h,0,0,0,0,0,1.2.5.2.6.2,500,No,No,No,,,Black,,,,,,,,0,0,0,0d,0d,0d,No,No,No,No,No,No,No,No,No,No,No,0,0,0,0,0,
1807,4197,Yes,Auto Scheduled,Close Client,30m,Fixed Units,6,0.06d,,"September 24, 2026 8:31","September 24, 2026 9:01",9/24/26 8:31,9/24/26 9:01,6/3/26 3:30,6/3/26 4:00,0m,-38521m,0ed,0,NA,NA,"April 6, 2026 1:00","April 6, 2026 1:30",As Soon As Possible,NA,NA,NA,4/30/26 2:05,0.5h,0.5h,0h,0,0,0,0,0,1.2.5.2.6.3,500,No,No,No,,,Black,,,,,,,,0,0,0,0d,0d,0d,No,No,No,No,No,No,No,No,No,No,No,0,0,0,0,0,
1808,4198,Yes,Auto Scheduled,Intercompany Business Partner Setup,2h,Fixed Units,6,0.25d,"1773,1777,1789","September 30, 2026 8:01","September 30, 2026 10:01",9/30/26 8:01,9/30/26 10:01,6/3/26 2:00,6/3/26 4:00,0h,-675.02h,0ed,0,NA,NA,"April 8, 2026 3:45","April 9, 2026 8:45",As Soon As Possible,NA,NA,NA,4/30/26 2:05,2h,2h,0h,0,0,0,0,0,1.2.5.2.6.4,500,No,No,No,,,Black,,,,,,,,0,0,0,0d,0d,0d,No,No,No,No,No,No,No,No,No,No,No,0,0,0,0,0,
1809,4199,Yes,Auto Scheduled,RTR_CM09_Activity_Type,1.38d,Fixed Duration,5,1.22d,,"September 29, 2026 1:01","September 30, 2026 4:01",9/29/26 1:01,9/30/26 4:01,6/2/26 1:00,6/3/26 4:00,0d,-85d,0ed,0,NA,NA,"April 8, 2026 2:15","April 9, 2026 4:00",As Soon As Possible,NA,NA,NA,4/30/26 2:05,9h,9h,0h,0,0,0,0,0,1.2.5.2.7,500,No,Yes,Yes,,,Black,,,,,,,,0,0,0,0d,0d,0d,No,No,No,No,No,No,No,No,No,No,No,0,0,0,0,0,
1810,4200,Yes,Auto Scheduled,"Load File Staged and Posted ""Ready""",1h,Fixed Units,6,0.13d,1787,"September 29, 2026 1:01","September 29, 2026 3:16",9/29/26 1:01,9/29/26 3:16,6/2/26 1:00,6/2/26 3:15,0h,-680.02h,0ed,0,NA,NA,"April 8, 2026 2:15","April 8, 2026 4:30",As Soon As Possible,NA,NA,NA,4/30/26 2:05,1h,1h,0h,0,0,0,0,0,1.2.5.2.7.1,500,No,No,No,,,Black,,,,,,,,0,0,0,0d,0d,0d,No,No,No,No,No,No,No,No,No,No,No,0,0,0,0,0,
1811,4201,Yes,Auto Scheduled,Pre Load Validation,2h,Fixed Units,6,0.25d,1810,"September 29, 2026 3:16","September 30, 2026 9:01",9/29/26 3:16,9/30/26 9:01,6/2/26 3:15,6/3/26 9:00,0h,-680.02h,0ed,0,NA,NA,"April 8, 2026 3:15","April 9, 2026 9:00",As Soon As Possible,NA,NA,NA,4/30/26 2:05,2h,2h,0h,0,0,0,0,0,1.2.5.2.7.2,500,No,No,No,,Brian Wagner,Black,,,,,,,,0,0,0,0d,0d,0d,No,No,No,No,No,No,No,No,No,No,No,0,0,0,0,0,
1812,4202,Yes,Auto Scheduled,Simulate Load,1h,Fixed Units,6,0.13d,1811,"September 30, 2026 9:01","September 30, 2026 10:01",9/30/26 9:01,9/30/26 10:01,6/3/26 9:00,6/3/26 10:00,0h,-680.02h,0ed,0,NA,NA,"April 9, 2026 9:00","April 9, 2026 10:00",As Soon As Possible,NA,NA,NA,4/30/26 2:05,1h,1h,0h,0,0,0,0,0,1.2.5.2.7.3,500,No,No,No,,,Black,,,,,,,,0,0,0,0d,0d,0d,No,No,No,No,No,No,No,No,No,No,No,0,0,0,0,0,
1813,4203,Yes,Auto Scheduled,Error and Defect Mitigation,2h,Fixed Units,6,0.25d,1812,"September 30, 2026 10:01","September 30, 2026 1:01",9/30/26 10:01,9/30/26 1:01,6/3/26 10:00,6/3/26 12:00,0h,-680.02h,0ed,0,NA,NA,"April 9, 2026 10:00","April 9, 2026 12:00",As Soon As Possible,NA,NA,NA,4/30/26 2:05,2h,2h,0h,0,0,0,0,0,1.2.5.2.7.4,500,No,No,No,,Brian Wagner,Black,,,,,,,,0,0,0,0d,0d,0d,No,No,No,No,No,No,No,No,No,No,No,0,0,0,0,0,
1814,4204,Yes,Auto Scheduled,Load,1h,Fixed Units,6,0.13d,1813,"September 30, 2026 1:01","September 30, 2026 2:01",9/30/26 1:01,9/30/26 2:01,6/3/26 1:00,6/3/26 2:00,0h,-680.02h,0ed,0,NA,NA,"April 9, 2026 1:00","April 9, 2026 2:00",As Soon As Possible,NA,NA,NA,4/30/26 2:05,1h,1h,0h,0,0,0,0,0,1.2.5.2.7.5,500,No,No,No,,,Black,,,,,,,,0,0,0,0d,0d,0d,No,No,No,No,No,No,No,No,No,No,No,0,0,0,0,0,
1815,4205,Yes,Auto Scheduled,Post Load Validation,2h,Fixed Units,6,0.25d,1814,"September 30, 2026 2:01","September 30, 2026 4:01",9/30/26 2:01,9/30/26 4:01,6/3/26 2:00,6/3/26 4:00,0h,-680.02h,0ed,0,NA,NA,"April 9, 2026 2:00","April 9, 2026 4:00",As Soon As Possible,NA,NA,NA,4/30/26 2:05,2h,2h,0h,0,0,0,0,0,1.2.5.2.7.6,500,No,No,No,,Brian Wagner,Black,,,,,,,,0,0,0,0d,0d,0d,No,No,No,No,No,No,No,No,No,No,No,0,0,0,0,0,
1816,4206,Yes,Auto Scheduled,RTR_CM12_Activity Rates,1.13d,Fixed Duration,5,1.13d,,"September 25, 2026 1:31","September 28, 2026 2:31",9/25/26 1:31,9/28/26 2:31,6/2/26 3:00,6/3/26 4:00,0d,-82.81d,0ed,0,NA,NA,"April 7, 2026 1:15","April 8, 2026 2:15",As Soon As Possible,NA,NA,NA,4/30/26 2:05,9h,9h,0h,0,0,0,0,0,1.2.5.2.8,500,No,Yes,Yes,,,Black,,,,,,,,0,0,0,0d,0d,0d,No,No,No,No,No,No,No,No,No,No,No,0,0,0,0,0,
1817,4207,Yes,Auto Scheduled,"Load File Staged and Posted ""Ready""",1h,Fixed Units,6,0.13d,1780,"September 25, 2026 1:31","September 25, 2026 2:31",9/25/26 1:31,9/25/26 2:31,6/2/26 3:00,6/2/26 4:00,0h,-662.52h,0ed,0,NA,NA,"April 7, 2026 1:15","April 7, 2026 2:15",As Soon As Possible,NA,NA,NA,4/30/26 2:05,1h,1h,0h,0,0,0,0,0,1.2.5.2.8.1,500,No,No,No,,,Black,,,,,,,,0,0,0,0d,0d,0d,No,No,No,No,No,No,No,No,No,No,No,0,0,0,0,0,
1818,4208,Yes,Auto Scheduled,Pre Load Validation,2h,Fixed Units,6,0.25d,1817,"September 25, 2026 2:31","September 25, 2026 4:31",9/25/26 2:31,9/25/26 4:31,6/2/26 4:00,6/3/26 9:00,0h,-662.52h,0ed,0,NA,NA,"April 7, 2026 2:15","April 7, 2026 4:15",As Soon As Possible,NA,NA,NA,4/30/26 2:05,2h,2h,0h,0,0,0,0,0,1.2.5.2.8.2,500,No,No,No,,Brian Wagner,Black,,,,,,,,0,0,0,0d,0d,0d,No,No,No,No,No,No,No,No,No,No,No,0,0,0,0,0,
1819,4209,Yes,Auto Scheduled,Simulate Load,1h,Fixed Units,6,0.13d,1818,"September 25, 2026 4:31","September 28, 2026 8:31",9/25/26 4:31,9/28/26 8:31,6/3/26 9:00,6/3/26 10:00,0h,-662.52h,0ed,0,NA,NA,"April 7, 2026 4:15","April 8, 2026 8:15",As Soon As Possible,NA,NA,NA,4/30/26 2:05,1h,1h,0h,0,0,0,0,0,1.2.5.2.8.3,500,No,No,No,,,Black,,,,,,,,0,0,0,0d,0d,0d,No,No,No,No,No,No,No,No,No,No,No,0,0,0,0,0,
1820,4210,Yes,Auto Scheduled,Error and Defect Mitigation,2h,Fixed Units,6,0.25d,1819,"September 28, 2026 8:31","September 28, 2026 10:31",9/28/26 8:31,9/28/26 10:31,6/3/26 10:00,6/3/26 12:00,0h,-662.52h,0ed,0,NA,NA,"April 8, 2026 8:15","April 8, 2026 10:15",As Soon As Possible,NA,NA,NA,4/30/26 2:05,2h,2h,0h,0,0,0,0,0,1.2.5.2.8.4,500,No,No,No,,Brian Wagner,Black,,,,,,,,0,0,0,0d,0d,0d,No,No,No,No,No,No,No,No,No,No,No,0,0,0,0,0,
1821,4211,Yes,Auto Scheduled,Load,1h,Fixed Units,6,0.13d,1820,"September 28, 2026 10:31","September 28, 2026 11:31",9/28/26 10:31,9/28/26 11:31,6/3/26 1:00,6/3/26 2:00,0h,-662.52h,0ed,0,NA,NA,"April 8, 2026 10:15","April 8, 2026 11:15",As Soon As Possible,NA,NA,NA,4/30/26 2:05,1h,1h,0h,0,0,0,0,0,1.2.5.2.8.5,500,No,No,No,,,Black,,,,,,,,0,0,0,0d,0d,0d,No,No,No,No,No,No,No,No,No,No,No,0,0,0,0,0,
1822,4212,Yes,Auto Scheduled,Post Load Validation,2h,Fixed Units,6,0.25d,1821,"September 28, 2026 11:31","September 28, 2026 2:31",9/28/26 11:31,9/28/26 2:31,6/3/26 2:00,6/3/26 4:00,0h,-662.52h,0ed,0,NA,NA,"April 8, 2026 11:15","April 8, 2026 2:15",As Soon As Possible,NA,NA,NA,4/30/26 2:05,2h,2h,0h,0,0,0,0,0,1.2.5.2.8.6,500,No,No,No,,Brian Wagner,Black,,,,,,,,0,0,0,0d,0d,0d,No,No,No,No,No,No,No,No,No,No,No,0,0,0,0,0,
1823,4213,Yes,Auto Scheduled,RTR_CM06_Bank_master,3.81d,Fixed Duration,5,1.22d,,"September 24, 2026 8:31","September 29, 2026 4:01",9/24/26 8:31,9/29/26 4:01,5/26/26 3:00,6/3/26 4:00,0d,-86.31d,0ed,0,NA,NA,"April 8, 2026 2:15","April 9, 2026 4:00",As Soon As Possible,NA,NA,NA,4/30/26 2:05,13h,9h,0h,0,0,0,0,0,1.2.5.2.9,500,No,Yes,Yes,,,Black,,,,,,,,0,0,0,0d,0d,0d,No,No,No,No,No,No,No,No,No,No,No,0,0,0,0,0,
1824,4214,Yes,Auto Scheduled,"Load File Staged and Posted ""Ready""",1h,Fixed Units,6,0.13d,1787,"September 29, 2026 1:01","September 29, 2026 2:01",9/29/26 1:01,9/29/26 2:01,6/3/26 1:00,6/3/26 2:00,0h,-672.02h,0ed,0,NA,NA,"April 8, 2026 2:15","April 8, 2026 4:30",As Soon As Possible,NA,NA,NA,4/30/26 2:05,1h,1h,0h,0,0,0,0,0,1.2.5.2.9.1,500,No,No,No,,,Black,,,,,,,,0,0,0,0d,0d,0d,No,No,No,No,No,No,No,No,No,No,No,0,0,0,0,0,
1825,4215,Yes,Auto Scheduled,Pre Load Validation,2h,Fixed Units,6,0.25d,1824,"September 29, 2026 2:01","September 29, 2026 4:01",9/29/26 2:01,9/29/26 4:01,6/3/26 2:00,6/3/26 4:00,0h,-672.02h,0ed,0,NA,NA,"April 8, 2026 4:30","April 9, 2026 9:30",As Soon As Possible,NA,NA,NA,4/30/26 2:05,2h,2h,0h,0,0,0,0,0,1.2.5.2.9.2,500,No,No,No,,Brian Wagner,Black,,,,,,,,0,0,0,0d,0d,0d,No,No,No,No,No,No,No,No,No,No,No,0,0,0,0,0,
1826,4216,Yes,Auto Scheduled,Simulate Load,1h,Fixed Units,6,0.13d,,"September 24, 2026 8:31","September 24, 2026 9:31",9/24/26 8:31,9/24/26 9:31,5/26/26 3:00,5/26/26 4:00,0h,-690.52h,0ed,0,NA,NA,"April 9, 2026 9:30","April 9, 2026 10:30",Start No Earlier Than,4/15/26 8:00,NA,NA,4/30/26 2:05,1h,1h,0h,0,0,0,0,0,1.2.5.2.9.3,500,No,No,No,,,Black,,,,,,,,0,0,0,0d,0d,0d,No,No,No,No,No,No,No,No,No,No,No,0,0,0,0,0,
1827,4217,Yes,Auto Scheduled,Error and Defect Mitigation,2h,Fixed Units,6,0.25d,1826,"September 24, 2026 9:31","September 24, 2026 11:31",9/24/26 9:31,9/24/26 11:31,5/26/26 4:00,5/27/26 9:00,0h,-690.52h,0ed,0,NA,NA,"April 9, 2026 10:30","April 9, 2026 1:30",As Soon As Possible,NA,NA,NA,4/30/26 2:05,2h,2h,0h,0,0,0,0,0,1.2.5.2.9.4,500,No,No,No,,Brian Wagner,Black,,,,,,,,0,0,0,0d,0d,0d,No,No,No,No,No,No,No,No,No,No,No,0,0,0,0,0,
1828,4218,Yes,Auto Scheduled,Load,5h,Fixed Units,6,0.13d,1827,"September 24, 2026 11:31","September 25, 2026 8:31",9/24/26 11:31,9/25/26 8:31,5/27/26 9:00,5/27/26 3:00,0h,-690.52h,0ed,0,NA,NA,"April 9, 2026 1:30","April 9, 2026 2:30",Finish No Earlier Than,4/15/26 5:00,NA,NA,4/30/26 2:05,5h,1h,0h,0,0,0,0,0,1.2.5.2.9.5,500,No,No,No,,,Black,,,,,,,,0,0,0,0d,0d,0d,No,No,No,No,No,No,No,No,No,No,No,0,0,0,0,0,
1829,4219,Yes,Auto Scheduled,Post Load Validation,2h,Fixed Units,6,0.25d,1828,"September 25, 2026 8:31","September 25, 2026 3:01",9/25/26 8:31,9/25/26 3:01,5/27/26 3:00,5/28/26 11:30,0h,-690.52h,0ed,0,NA,NA,"April 9, 2026 8:00","April 9, 2026 4:00",Finish No Earlier Than,4/14/26 5:00,NA,NA,4/30/26 2:05,2h,2h,0h,0,0,0,0,0,1.2.5.2.9.6,500,No,No,No,,Brian Wagner,Black,,,,,,,,0,0,0,0d,0d,0d,No,No,No,No,No,No,No,No,No,No,No,0,0,0,0,0,
1830,4220,Yes,Auto Scheduled,RTR_CM08_Exchange_Rates,1.13d,Fixed Duration,5,1.13d,,"September 25, 2026 8:31","September 28, 2026 9:31",9/25/26 8:31,9/28/26 9:31,6/2/26 3:00,6/3/26 4:00,0d,-82.31d,0ed,0,NA,NA,"April 9, 2026 2:30","April 10, 2026 3:30",As Soon As Possible,NA,NA,NA,4/30/26 2:05,9h,9h,0h,0,0,0,0,0,1.2.5.2.10,500,No,Yes,Yes,,,Black,,,,,,,,0,0,0,0d,0d,0d,No,No,No,No,No,No,No,No,No,No,No,0,0,0,0,0,
1831,4221,Yes,Auto Scheduled,"Load File Staged and Posted ""Ready""",1h,Fixed Units,6,0.13d,1828,"September 25, 2026 8:31","September 25, 2026 9:31",9/25/26 8:31,9/25/26 9:31,6/2/26 3:00,6/2/26 4:00,0h,-658.52h,0ed,0,NA,NA,"April 9, 2026 2:30","April 9, 2026 3:30",As Soon As Possible,NA,NA,NA,4/30/26 2:05,1h,1h,0h,0,0,0,0,0,1.2.5.2.10.1,500,No,No,No,,,Black,,,,,,,,0,0,0,0d,0d,0d,No,No,No,No,No,No,No,No,No,No,No,0,0,0,0,0,
1832,4222,Yes,Auto Scheduled,Pre Load Validation,2h,Fixed Units,6,0.25d,1831,"September 25, 2026 9:31","September 25, 2026 11:31",9/25/26 9:31,9/25/26 11:31,6/2/26 4:00,6/3/26 9:00,0h,-658.52h,0ed,0,NA,NA,"April 9, 2026 3:30","April 10, 2026 8:30",As Soon As Possible,NA,NA,NA,4/30/26 2:05,2h,2h,0h,0,0,0,0,0,1.2.5.2.10.2,500,No,No,No,,Brian Wagner,Black,,,,,,,,0,0,0,0d,0d,0d,No,No,No,No,No,No,No,No,No,No,No,0,0,0,0,0,
1833,4223,Yes,Auto Scheduled,Simulate Load,1h,Fixed Units,6,0.13d,1832,"September 25, 2026 11:31","September 25, 2026 1:31",9/25/26 11:31,9/25/26 1:31,6/3/26 9:00,6/3/26 10:00,0h,-658.52h,0ed,0,NA,NA,"April 10, 2026 8:30","April 10, 2026 9:30",As Soon As Possible,NA,NA,NA,4/30/26 2:05,1h,1h,0h,0,0,0,0,0,1.2.5.2.10.3,500,No,No,No,,,Black,,,,,,,,0,0,0,0d,0d,0d,No,No,No,No,No,No,No,No,No,No,No,0,0,0,0,0,
1834,4224,Yes,Auto Scheduled,Error and Defect Mitigation,2h,Fixed Units,6,0.25d,1833,"September 25, 2026 1:31","September 25, 2026 3:31",9/25/26 1:31,9/25/26 3:31,6/3/26 10:00,6/3/26 12:00,0h,-658.52h,0ed,0,NA,NA,"April 10, 2026 9:30","April 10, 2026 11:30",As Soon As Possible,NA,NA,NA,4/30/26 2:05,2h,2h,0h,0,0,0,0,0,1.2.5.2.10.4,500,No,No,No,,Brian Wagner,Black,,,,,,,,0,0,0,0d,0d,0d,No,No,No,No,No,No,No,No,No,No,No,0,0,0,0,0,
1835,4225,Yes,Auto Scheduled,Load,1h,Fixed Units,6,0.13d,1834,"September 25, 2026 3:31","September 25, 2026 4:31",9/25/26 3:31,9/25/26 4:31,6/3/26 1:00,6/3/26 2:00,0h,-658.52h,0ed,0,NA,NA,"April 10, 2026 11:30","April 10, 2026 1:30",As Soon As Possible,NA,NA,NA,4/30/26 2:05,1h,1h,0h,0,0,0,0,0,1.2.5.2.10.5,500,No,No,No,,,Black,,,,,,,,0,0,0,0d,0d,0d,No,No,No,No,No,No,No,No,No,No,No,0,0,0,0,0,
1836,4226,Yes,Auto Scheduled,Post Load Validation,2h,Fixed Units,6,0.25d,1835,"September 25, 2026 4:31","September 28, 2026 9:31",9/25/26 4:31,9/28/26 9:31,6/3/26 2:00,6/3/26 4:00,0h,-658.52h,0ed,0,NA,NA,"April 10, 2026 1:30","April 10, 2026 3:30",As Soon As Possible,NA,NA,NA,4/30/26 2:05,2h,2h,0h,0,0,0,0,0,1.2.5.2.10.6,500,No,No,No,,Brian Wagner,Black,,,,,,,,0,0,0,0d,0d,0d,No,No,No,No,No,No,No,No,No,No,No,0,0,0,0,0,
1837,4227,Yes,Auto Scheduled,RTR_CM14_Cost Element_Group,4.44d,Fixed Duration,5,4.78d,,"September 29, 2026 1:01","October 5, 2026 4:31",9/29/26 1:01,10/5/26 4:31,5/28/26 11:30,6/3/26 4:00,0d,-88.06d,0ed,0,NA,NA,"April 8, 2026 3:45","April 15, 2026 2:00",As Soon As Possible,NA,NA,NA,4/30/26 2:05,35.5h,38.25h,0h,0,0,0,0,0,1.2.5.2.11,500,No,Yes,Yes,,Brian Wagner,Black,,,,,,,,0,0,0,0d,0d,0d,No,No,No,No,No,No,No,No,No,No,No,0,0,0,0,0,
1838,4228,Yes,Auto Scheduled,"Manual File Staged and Posted ""Ready""",30m,Fixed Units,6,4.16d,1787,"September 29, 2026 1:01","September 29, 2026 1:31",9/29/26 1:01,9/29/26 1:31,5/28/26 11:30,5/28/26 12:00,0m,-42271m,0ed,0,NA,NA,"April 8, 2026 3:45","April 14, 2026 5:00",Finish No Earlier Than,4/14/26 5:00,NA,NA,4/30/26 2:05,0.5h,33.25h,0h,0,0,0,0,0,1.2.5.2.11.1,500,No,No,No,,,Black,,,,,,,,0,0,0,0d,0d,0d,No,No,No,No,No,No,No,No,No,No,No,0,0,0,0,0,
1839,4229,Yes,Auto Scheduled,Load,32h,Fixed Units,6,0.25d,1838,"September 29, 2026 1:31","October 5, 2026 1:31",9/29/26 1:31,10/5/26 1:31,5/28/26 1:00,6/3/26 12:00,0h,-704.52h,0ed,0,NA,NA,"April 15, 2026 8:00","April 15, 2026 10:00",Finish No Earlier Than,4/21/26 5:00,NA,NA,4/30/26 2:05,32h,2h,0h,0,0,0,0,0,1.2.5.2.11.2,500,No,No,No,,,Black,2026-04-20 15:36 - jsw73 - Start ignored — already in progress,,,,,,,0,0,0,0d,0d,0d,No,No,No,No,No,No,No,No,No,No,No,0,0,0,0,0,
1840,4230,Yes,Auto Scheduled,Post Load Validation,3h,Fixed Units,6,0.38d,1839,"October 5, 2026 1:31","October 5, 2026 4:31",10/5/26 1:31,10/5/26 4:31,6/3/26 1:00,6/3/26 4:00,0h,-704.52h,0ed,0,NA,NA,"April 15, 2026 10:00","April 15, 2026 2:00",Start No Earlier Than,4/17/26 8:00,NA,NA,4/30/26 2:05,3h,3h,0h,0,0,0,0,0,1.2.5.2.11.3,500,No,No,No,,Brian Wagner,Black,,,,,,,,0,0,0,0d,0d,0d,No,No,No,No,No,No,No,No,No,No,No,0,0,0,0,0,
1841,4231,Yes,Auto Scheduled,OTC_CM19_Customer_Master - Bill-To,2h,Fixed Units,5,0d,,"September 24, 2026 8:31","September 24, 2026 10:31",9/24/26 8:31,9/24/26 10:31,6/3/26 2:00,6/3/26 4:00,0h,-643.52h,0ed,0,NA,NA,"April 16, 2025 8:00","April 16, 2025 8:00",As Soon As Possible,NA,NA,NA,4/30/26 2:05,0h,0h,0h,0,0,0,0,0,1.2.5.2.12,500,No,No,No,,,Black,,,,,,,,0,0,0,0d,0d,0d,No,No,No,No,No,No,No,No,No,No,No,0,0,0,0,0,
1842,4232,Yes,Auto Scheduled,OTC_CM19_Customer_Master - Ship-To,1.5d,Fixed Duration,5,3.13d,,"September 29, 2026 1:01","October 1, 2026 8:01",9/29/26 1:01,10/1/26 8:01,5/26/26 4:30,6/3/26 4:00,0d,-89.56d,0ed,0,NA,NA,"April 8, 2026 3:45","April 13, 2026 4:45",As Soon As Possible,NA,NA,NA,4/30/26 2:05,13.25h,36h,0h,0,0,0,0,0,1.2.5.2.13,500,No,Yes,Yes,,,Black,,,,,,,,0,0,0,0d,0d,0d,No,No,No,No,No,No,No,No,No,No,No,0,0,0,0,0,
1843,4233,Yes,Auto Scheduled,"Load File Staged and Posted ""Ready""",30m,Fixed Units,6,0.06d,1787,"September 29, 2026 1:01","September 29, 2026 1:31",9/29/26 1:01,9/29/26 1:31,5/26/26 4:30,5/26/26 5:00,0m,-42991m,0ed,0,NA,NA,"April 8, 2026 3:45","April 8, 2026 4:15",As Soon As Possible,NA,NA,NA,4/30/26 2:05,0.5h,0.5h,0h,0,0,0,0,0,1.2.5.2.13.1,500,No,No,No,,,Black,,,,,,,,0,0,0,0d,0d,0d,No,No,No,No,No,No,No,No,No,No,No,0,0,0,0,0,
1844,4234,Yes,Auto Scheduled,Pre Load Validation,30m,Fixed Units,6,0.06d,1843,"September 29, 2026 1:31","September 29, 2026 2:01",9/29/26 1:31,9/29/26 2:01,5/27/26 8:00,5/27/26 8:30,0m,-42991m,0ed,0,NA,NA,"April 8, 2026 4:15","April 8, 2026 4:45",As Soon As Possible,NA,NA,NA,4/30/26 2:05,0.5h,0.5h,0h,0,0,0,0,0,1.2.5.2.13.2,500,No,No,No,,Kim Kolesar,Black,,,,,,,,0,0,0,0d,0d,0d,No,No,No,No,No,No,No,No,No,No,No,0,0,0,0,0,
1845,4235,Yes,Auto Scheduled,Open client for BP number range update,30m,Fixed Units,6,1d,1844,"September 29, 2026 2:01","September 29, 2026 2:31",9/29/26 2:01,9/29/26 2:31,6/3/26 2:45,6/3/26 3:15,0m,-40276m,0ed,0,NA,NA,"April 8, 2026 4:45","April 9, 2026 4:45",As Soon As Possible,NA,NA,NA,4/30/26 2:05,0.5h,8h,0h,0,0,0,0,0,1.2.5.2.13.3,500,No,No,No,,,Black,,,,,,,,0,0,0,0d,0d,0d,No,No,No,No,No,No,No,No,No,No,No,0,0,0,0,0,
1846,4236,Yes,Auto Scheduled,Update number range BP02 from Internal to External,30m,Fixed Units,6,1d,1845,"September 29, 2026 2:31","September 29, 2026 3:01",9/29/26 2:31,9/29/26 3:01,6/3/26 3:15,6/3/26 3:45,0m,-40276m,0ed,0,NA,NA,"April 9, 2026 4:45","April 10, 2026 4:45",As Soon As Possible,NA,NA,NA,4/30/26 2:05,0.5h,8h,0h,0,0,0,0,0,1.2.5.2.13.4,500,No,No,No,,,Black,,,,,,,,0,0,0,0d,0d,0d,No,No,No,No,No,No,No,No,No,No,No,0,0,0,0,0,
1847,4237,Yes,Auto Scheduled,Close Client,15m,Fixed Units,6,1d,1846,"September 29, 2026 3:01","September 29, 2026 3:16",9/29/26 3:01,9/29/26 3:16,6/3/26 3:45,6/3/26 4:00,0m,-40276m,0ed,0,NA,NA,"April 10, 2026 4:45","April 13, 2026 4:45",As Soon As Possible,NA,NA,NA,4/30/26 2:05,0.25h,8h,0h,0,0,0,0,0,1.2.5.2.13.5,500,No,No,No,,,Black,,,,,,,,0,0,0,0d,0d,0d,No,No,No,No,No,No,No,No,No,No,No,0,0,0,0,0,
1848,4238,Yes,Auto Scheduled,Simulate Load,1h,Fixed Units,6,0.13d,1844,"September 29, 2026 2:01","September 29, 2026 3:01",9/29/26 2:01,9/29/26 3:01,5/27/26 8:30,5/27/26 9:30,0h,-716.52h,0ed,0,NA,NA,"April 8, 2026 4:45","April 9, 2026 8:45",As Soon As Possible,NA,NA,NA,4/30/26 2:05,1h,1h,0h,0,0,0,0,0,1.2.5.2.13.6,500,No,No,No,,,Black,,,,,,,,0,0,0,0d,0d,0d,No,No,No,No,No,No,No,No,No,No,No,0,0,0,0,0,
1849,4239,Yes,Auto Scheduled,Error and Defect Mitigation,4h,Fixed Units,6,0.5d,1848,"September 29, 2026 3:01","September 30, 2026 10:01",9/29/26 3:01,9/30/26 10:01,6/2/26 2:00,6/3/26 9:00,0h,-681.02h,0ed,0,NA,NA,"April 9, 2026 8:45","April 9, 2026 1:45",As Soon As Possible,NA,NA,NA,4/30/26 2:05,4h,4h,0h,0,0,0,0,0,1.2.5.2.13.7,500,No,No,No,,Kim Kolesar,Black,,,,,,,,0,0,0,0d,0d,0d,No,No,No,No,No,No,No,No,No,No,No,0,0,0,0,0,
1850,4240,Yes,Auto Scheduled,Load,3h,Fixed Units,6,0.38d,1849,"September 30, 2026 10:01","September 30, 2026 2:01",9/30/26 10:01,9/30/26 2:01,6/3/26 9:00,6/3/26 12:00,0h,-681.02h,0ed,0,NA,NA,"April 9, 2026 1:45","April 9, 2026 4:45",As Soon As Possible,NA,NA,NA,4/30/26 2:05,3h,3h,0h,0,0,0,0,0,1.2.5.2.13.8,500,No,No,No,,,Black,,,,,,,,0,0,0,0d,0d,0d,No,No,No,No,No,No,No,No,No,No,No,0,0,0,0,0,
1851,4241,Yes,Auto Scheduled,Post Load Validation,3h,Fixed Units,6,0.38d,1850,"September 30, 2026 2:01","October 1, 2026 8:01",9/30/26 2:01,10/1/26 8:01,6/3/26 1:00,6/3/26 4:00,0h,-681.02h,0ed,0,NA,NA,"April 9, 2026 4:45","April 10, 2026 10:45",As Soon As Possible,NA,NA,NA,4/30/26 2:05,3h,3h,0h,0,0,0,0,0,1.2.5.2.13.9,500,No,No,No,,Kim Kolesar,Black,,,,,,,,0,0,0,0d,0d,0d,No,No,No,No,No,No,No,No,No,No,No,0,0,0,0,0,
1852,4242,Yes,Auto Scheduled,OTC_CM19_Customer_Master - Sold-To,1.63d,Fixed Duration,5,1.63d,,"September 29, 2026 2:01","October 1, 2026 10:01",9/29/26 2:01,10/1/26 10:01,5/27/26 9:30,6/3/26 4:00,0d,-89.44d,0ed,0,NA,NA,"April 8, 2026 4:45","April 10, 2026 1:45",As Soon As Possible,NA,NA,NA,4/30/26 2:05,11.75h,11.75h,0h,0,0,0,0,0,1.2.5.2.14,500,No,Yes,Yes,,,Black,,,,,,,,0,0,0,0d,0d,0d,No,No,No,No,No,No,No,No,No,No,No,0,0,0,0,0,
1853,4243,Yes,Auto Scheduled,"Load File Staged and Posted ""Ready""",30m,Fixed Units,6,0.06d,1844,"September 29, 2026 2:01","September 29, 2026 2:31",9/29/26 2:01,9/29/26 2:31,6/3/26 3:00,6/3/26 3:30,0m,-40261m,0ed,0,NA,NA,"April 8, 2026 4:45","April 9, 2026 8:15",As Soon As Possible,NA,NA,NA,4/30/26 2:05,0.5h,0.5h,0h,0,0,0,0,0,1.2.5.2.14.1,500,No,No,No,,,Black,,,,,,,,0,0,0,0d,0d,0d,No,No,No,No,No,No,No,No,No,No,No,0,0,0,0,0,
1854,4244,Yes,Auto Scheduled,Pre Load Validation,30m,Fixed Units,6,0.06d,1853,"September 29, 2026 2:31","September 29, 2026 3:01",9/29/26 2:31,9/29/26 3:01,6/3/26 3:30,6/3/26 4:00,0m,-40261m,0ed,0,NA,NA,"April 9, 2026 8:15","April 9, 2026 8:45",As Soon As Possible,NA,NA,NA,4/30/26 2:05,0.5h,0.5h,0h,0,0,0,0,0,1.2.5.2.14.2,500,No,No,No,,Kim Kolesar,Black,,,,,,,,0,0,0,0d,0d,0d,No,No,No,No,No,No,No,No,No,No,No,0,0,0,0,0,
1855,4245,Yes,Auto Scheduled,Simulate Load,1h,Fixed Units,6,0.13d,"1789,1848","September 30, 2026 8:01","September 30, 2026 9:01",9/30/26 8:01,9/30/26 9:01,5/27/26 9:30,5/27/26 10:30,0h,-718.52h,0ed,0,NA,NA,"April 9, 2026 10:45","April 9, 2026 11:45",As Soon As Possible,NA,NA,NA,4/30/26 2:05,1h,1h,0h,0,0,0,0,0,1.2.5.2.14.3,500,No,No,No,,,Black,,,,,,,,0,0,0,0d,0d,0d,No,No,No,No,No,No,No,No,No,No,No,0,0,0,0,0,
1856,4246,Yes,Auto Scheduled,Error and Defect Mitigation,3h,Fixed Units,6,0.38d,1855,"September 30, 2026 9:01","September 30, 2026 1:01",9/30/26 9:01,9/30/26 1:01,5/27/26 10:30,5/27/26 2:30,0h,-718.52h,0ed,0,NA,NA,"April 9, 2026 11:45","April 9, 2026 3:45",As Soon As Possible,NA,NA,NA,4/30/26 2:05,3h,3h,0h,0,0,0,0,0,1.2.5.2.14.4,500,No,No,No,,Kim Kolesar,Black,,,,,,,,0,0,0,0d,0d,0d,No,No,No,No,No,No,No,No,No,No,No,0,0,0,0,0,
1857,4247,Yes,Auto Scheduled,Load,3h,Fixed Units,6,0.38d,1856,"September 30, 2026 1:01","September 30, 2026 4:01",9/30/26 1:01,9/30/26 4:01,5/27/26 2:30,5/28/26 8:30,0h,-718.52h,0ed,0,NA,NA,"April 9, 2026 3:45","April 10, 2026 9:45",As Soon As Possible,NA,NA,NA,4/30/26 2:05,3h,3h,0h,0,0,0,0,0,1.2.5.2.14.5,500,No,No,No,,,Black,,,,,,,,0,0,0,0d,0d,0d,No,No,No,No,No,No,No,No,No,No,No,0,0,0,0,0,
1858,4248,Yes,Auto Scheduled,Post Load Validation,3h,Fixed Units,6,0.38d,1857,"September 30, 2026 4:01","October 1, 2026 10:01",9/30/26 4:01,10/1/26 10:01,6/3/26 1:00,6/3/26 4:00,0h,-683.02h,0ed,0,NA,NA,"April 10, 2026 9:45","April 10, 2026 1:45",As Soon As Possible,NA,NA,NA,4/30/26 2:05,3h,3h,0h,0,0,0,0,0,1.2.5.2.14.6,500,No,No,No,,Kim Kolesar,Black,,,,,,,,0,0,0,0d,0d,0d,No,No,No,No,No,No,No,No,No,No,No,0,0,0,0,0,
1859,4249,Yes,Auto Scheduled,Open client for BP number range update,15m,Fixed Units,6,0.03d,1848,"September 29, 2026 3:01","September 29, 2026 3:16",9/29/26 3:01,9/29/26 3:16,6/3/26 3:15,6/3/26 3:30,0m,-40306m,0ed,0,NA,NA,"April 9, 2026 8:45","April 9, 2026 9:00",As Soon As Possible,NA,NA,NA,4/30/26 2:05,0.25h,0.25h,0h,0,0,0,0,0,1.2.5.2.14.7,500,No,No,No,,,Black,,,,,,,,0,0,0,0d,0d,0d,No,No,No,No,No,No,No,No,No,No,No,0,0,0,0,0,
1860,4250,Yes,Auto Scheduled,Update number range BP02 from Internal to External,15m,Fixed Units,6,0.03d,1859,"September 29, 2026 3:16","September 29, 2026 3:31",9/29/26 3:16,9/29/26 3:31,6/3/26 3:30,6/3/26 3:45,0m,-40306m,0ed,0,NA,NA,"April 9, 2026 9:00","April 9, 2026 9:15",As Soon As Possible,NA,NA,NA,4/30/26 2:05,0.25h,0.25h,0h,0,0,0,0,0,1.2.5.2.14.8,500,No,No,No,,,Black,,,,,,,,0,0,0,0d,0d,0d,No,No,No,No,No,No,No,No,No,No,No,0,0,0,0,0,
1861,4251,Yes,Auto Scheduled,Close Client,15m,Fixed Units,6,0.03d,1860,"September 29, 2026 3:31","September 29, 2026 3:46",9/29/26 3:31,9/29/26 3:46,6/3/26 3:45,6/3/26 4:00,0m,-40306m,0ed,0,NA,NA,"April 9, 2026 9:15","April 9, 2026 9:30",As Soon As Possible,NA,NA,NA,4/30/26 2:05,0.25h,0.25h,0h,0,0,0,0,0,1.2.5.2.14.9,500,No,No,No,,,Black,,,,,,,,0,0,0,0d,0d,0d,No,No,No,No,No,No,No,No,No,No,No,0,0,0,0,0,
1862,4252,Yes,Auto Scheduled,PTP_CM27_Vendor Master as Customer - FLCU01,4.81d,Fixed Duration,5,2.31d,,"September 30, 2026 4:01","October 7, 2026 2:31",9/30/26 4:01,10/7/26 2:31,5/28/26 8:30,6/3/26 4:00,0d,-89.81d,0ed,0,NA,NA,"April 10, 2026 9:45","April 14, 2026 1:15",As Soon As Possible,NA,NA,NA,4/30/26 2:05,19.25h,19.25h,0h,0,0,0,0,0,1.2.5.2.15,500,No,Yes,Yes,,,Black,,,,,,,,0,0,0,0d,0d,0d,No,No,No,No,No,No,No,No,No,No,No,0,0,0,0,0,
1863,4253,Yes,Auto Scheduled,Extract File,1h,Fixed Units,6,0.13d,1857,"September 30, 2026 4:01","October 1, 2026 8:01",9/30/26 4:01,10/1/26 8:01,5/28/26 8:30,5/28/26 9:30,0h,-718.52h,0ed,0,NA,NA,"April 10, 2026 9:45","April 10, 2026 10:45",As Soon As Possible,NA,NA,NA,4/30/26 2:05,1h,1h,0h,0,0,0,0,0,1.2.5.2.15.1,500,No,No,No,,,Black,,,,,,,,0,0,0,0d,0d,0d,No,No,No,No,No,No,No,No,No,No,No,0,0,0,0,0,
1864,4254,Yes,Auto Scheduled,Pre Load Validation,2h,Fixed Units,6,0.25d,1863,"October 1, 2026 8:01","October 1, 2026 10:01",10/1/26 8:01,10/1/26 10:01,5/28/26 9:30,5/28/26 11:30,0h,-718.52h,0ed,0,NA,NA,"April 10, 2026 10:45","April 10, 2026 1:45",As Soon As Possible,NA,NA,NA,4/30/26 2:05,2h,2h,0h,0,0,0,0,0,1.2.5.2.15.2,500,No,No,No,,Sam Houff,Black,,,,,,,,0,0,0,0d,0d,0d,No,No,No,No,No,No,No,No,No,No,No,0,0,0,0,0,
1865,4255,Yes,Auto Scheduled,Simulate Load,11.25h,Fixed Units,6,1.41d,"1829,1864","October 1, 2026 10:01","October 2, 2026 2:16",10/1/26 10:01,10/2/26 2:16,5/28/26 11:30,5/29/26 3:45,0h,-718.52h,0ed,0,NA,NA,"April 10, 2026 1:45","April 13, 2026 5:00",Finish No Earlier Than,4/13/26 5:00,NA,NA,4/30/26 2:05,11.25h,11.25h,0h,0,0,0,0,0,1.2.5.2.15.3,500,No,No,No,,,Black,,,,,,,,0,0,0,0d,0d,0d,No,No,No,No,No,No,No,No,No,No,No,0,0,0,0,0,
1866,4256,Yes,Auto Scheduled,Error and Defect Mitigation,2h,Fixed Units,6,0.25d,1865,"October 2, 2026 2:16","October 6, 2026 9:01",10/2/26 2:16,10/6/26 9:01,5/29/26 3:45,6/2/26 10:30,0h,-718.52h,0ed,0,NA,NA,"April 10, 2026 2:45","April 14, 2026 9:30",As Soon As Possible,NA,NA,NA,4/30/26 2:05,2h,2h,0h,0,0,0,0,0,1.2.5.2.15.4,500,No,No,No,,Sam Houff,Black,,,,,,,,0,0,0,0d,0d,0d,No,No,No,No,No,No,No,No,No,No,No,0,0,0,0,0,
1867,4257,Yes,Auto Scheduled,Load,1h,Fixed Units,6,0.13d,1866,"October 6, 2026 9:01","October 7, 2026 11:31",10/6/26 9:01,10/7/26 11:31,6/2/26 10:30,6/3/26 2:00,0h,-718.52h,0ed,0,NA,NA,"April 10, 2026 4:45","April 14, 2026 10:15",As Soon As Possible,NA,NA,NA,4/30/26 2:05,1h,1h,0h,0,0,0,0,0,1.2.5.2.15.5,500,No,No,No,,,Black,,,,,,,,0,0,0,0d,0d,0d,No,No,No,No,No,No,No,No,No,No,No,0,0,0,0,0,
1868,4258,Yes,Auto Scheduled,Post Load Validation,2h,Fixed Units,6,0.25d,1867,"October 7, 2026 11:31","October 7, 2026 2:31",10/7/26 11:31,10/7/26 2:31,6/3/26 2:00,6/3/26 4:00,0h,-718.52h,0ed,0,NA,NA,"April 14, 2026 10:15","April 14, 2026 1:15",As Soon As Possible,NA,NA,NA,4/30/26 2:05,2h,2h,0h,0,0,0,0,0,1.2.5.2.15.6,500,No,No,No,,Sam Houff,Black,,,,,,,,0,0,0,0d,0d,0d,No,No,No,No,No,No,No,No,No,No,No,0,0,0,0,0,
1869,4259,Yes,Auto Scheduled,OTC_CM23_Customer_Hierarchy,0.69d,Fixed Duration,5,0.69d,,"September 30, 2026 4:01","October 1, 2026 1:31",9/30/26 4:01,10/1/26 1:31,6/3/26 9:30,6/3/26 4:00,0d,-85.69d,0ed,0,NA,NA,"April 10, 2026 9:45","April 10, 2026 4:15",As Soon As Possible,NA,NA,NA,4/30/26 2:05,5.5h,5.5h,0h,0,0,0,0,0,1.2.5.2.16,500,No,Yes,Yes,,,Black,,,,,,,,0,0,0,0d,0d,0d,No,No,No,No,No,No,No,No,No,No,No,0,0,0,0,0,
1870,4260,Yes,Auto Scheduled,"Manual File Staged and Posted ""Ready""",30m,Fixed Units,6,0.06d,1857,"September 30, 2026 4:01","September 30, 2026 4:31",9/30/26 4:01,9/30/26 4:31,6/3/26 9:30,6/3/26 10:00,0m,-41131m,0ed,0,NA,NA,"April 10, 2026 9:45","April 10, 2026 10:15",Start No Earlier Than,4/6/26 8:00,NA,NA,4/30/26 2:05,0.5h,0.5h,0h,0,0,0,0,0,1.2.5.2.16.1,500,No,No,No,,Kim Kolesar,Black,,,,,,,,0,0,0,0d,0d,0d,No,No,No,No,No,No,No,No,No,No,No,0,0,0,0,0,
1871,4261,Yes,Auto Scheduled,Load,2h,Fixed Units,6,0.25d,1870,"September 30, 2026 4:31","October 1, 2026 9:31",9/30/26 4:31,10/1/26 9:31,6/3/26 10:00,6/3/26 12:00,0h,-685.52h,0ed,0,NA,NA,"April 10, 2026 10:15","April 10, 2026 1:15",Start No Earlier Than,4/15/26 8:00,NA,NA,4/30/26 2:05,2h,2h,0h,0,0,0,0,0,1.2.5.2.16.2,500,No,No,No,,,Black,,,,,,,,0,0,0,0d,0d,0d,No,No,No,No,No,No,No,No,No,No,No,0,0,0,0,0,
1872,4262,Yes,Auto Scheduled,Post Load Validation,3h,Fixed Units,6,0.38d,1871,"October 1, 2026 9:31","October 1, 2026 1:31",10/1/26 9:31,10/1/26 1:31,6/3/26 1:00,6/3/26 4:00,0h,-685.52h,0ed,0,NA,NA,"April 10, 2026 1:15","April 10, 2026 4:15",As Soon As Possible,NA,NA,NA,4/30/26 2:05,3h,3h,0h,0,0,0,0,0,1.2.5.2.16.3,500,No,No,No,,Kim Kolesar,Black,,,,,,,,0,0,0,0d,0d,0d,No,No,No,No,No,No,No,No,No,No,No,0,0,0,0,0,
1873,4263,Yes,Auto Scheduled,PTP_CM27_Vendor Master - Z001 - External Sales Rep,3.38d,Fixed Duration,5,1.13d,,"September 30, 2026 4:01","October 6, 2026 10:01",9/30/26 4:01,10/6/26 10:01,5/29/26 1:00,6/3/26 4:00,0d,-88.38d,0ed,0,NA,NA,"April 10, 2026 9:45","April 13, 2026 10:45",As Soon As Possible,NA,NA,NA,4/30/26 2:05,9h,9h,0h,0,0,0,0,0,1.2.5.2.17,500,No,Yes,Yes,,,Black,,,,,,,,0,0,0,0d,0d,0d,No,No,No,No,No,No,No,No,No,No,No,0,0,0,0,0,
1874,4264,Yes,Auto Scheduled,Extract File,1h,Fixed Units,6,0.13d,1857,"September 30, 2026 4:01","October 1, 2026 8:01",9/30/26 4:01,10/1/26 8:01,5/29/26 1:00,5/29/26 2:00,0h,-707.02h,0ed,0,NA,NA,"April 10, 2026 9:45","April 10, 2026 10:45",As Soon As Possible,NA,NA,NA,4/30/26 2:05,1h,1h,0h,0,0,0,0,0,1.2.5.2.17.1,500,No,No,No,,,Black,,,,,,,,0,0,0,0d,0d,0d,No,No,No,No,No,No,No,No,No,No,No,0,0,0,0,0,
1875,4265,Yes,Auto Scheduled,Pre Load Validation,2h,Fixed Units,6,0.25d,1874,"October 1, 2026 8:01","October 1, 2026 10:01",10/1/26 8:01,10/1/26 10:01,5/29/26 2:00,5/29/26 4:00,0h,-707.02h,0ed,0,NA,NA,"April 10, 2026 10:45","April 10, 2026 1:45",As Soon As Possible,NA,NA,NA,4/30/26 2:05,2h,2h,0h,0,0,0,0,0,1.2.5.2.17.2,500,No,No,No,,Sam Houff,Black,,,,,,,,0,0,0,0d,0d,0d,No,No,No,No,No,No,No,No,No,No,No,0,0,0,0,0,
1876,4266,Yes,Auto Scheduled,Simulate Load,1h,Fixed Units,6,0.13d,"1829,1875","October 1, 2026 10:01","October 1, 2026 11:01",10/1/26 10:01,10/1/26 11:01,5/29/26 4:00,5/29/26 5:00,0h,-707.02h,0ed,0,NA,NA,"April 10, 2026 1:45","April 10, 2026 2:45",As Soon As Possible,NA,NA,NA,4/30/26 2:05,1h,1h,0h,0,0,0,0,0,1.2.5.2.17.3,500,No,No,No,,,Black,,,,,,,,0,0,0,0d,0d,0d,No,No,No,No,No,No,No,No,No,No,No,0,0,0,0,0,
1877,4267,Yes,Auto Scheduled,Error and Defect Mitigation,2h,Fixed Units,6,0.25d,1876,"October 1, 2026 11:01","October 1, 2026 2:01",10/1/26 11:01,10/1/26 2:01,6/1/26 8:00,6/1/26 10:00,0h,-707.02h,0ed,0,NA,NA,"April 10, 2026 2:45","April 10, 2026 4:45",As Soon As Possible,NA,NA,NA,4/30/26 2:05,2h,2h,0h,0,0,0,0,0,1.2.5.2.17.4,500,No,No,No,,Sam Houff,Black,,,,,,,,0,0,0,0d,0d,0d,No,No,No,No,No,No,No,No,No,No,No,0,0,0,0,0,
1878,4268,Yes,Auto Scheduled,Load,1h,Fixed Units,6,0.13d,1877,"October 1, 2026 2:01","October 6, 2026 8:01",10/1/26 2:01,10/6/26 8:01,6/1/26 10:00,6/3/26 2:00,0h,-707.02h,0ed,0,NA,NA,"April 10, 2026 4:45","April 13, 2026 8:45",As Soon As Possible,NA,NA,NA,4/30/26 2:05,1h,1h,0h,0,0,0,0,0,1.2.5.2.17.5,500,No,No,No,,,Black,,,,,,,,0,0,0,0d,0d,0d,No,No,No,No,No,No,No,No,No,No,No,0,0,0,0,0,
1879,4269,Yes,Auto Scheduled,Post Load Validation,2h,Fixed Units,6,0.25d,1878,"October 6, 2026 8:01","October 6, 2026 10:01",10/6/26 8:01,10/6/26 10:01,6/3/26 2:00,6/3/26 4:00,0h,-707.02h,0ed,0,NA,NA,"April 13, 2026 8:45","April 13, 2026 10:45",As Soon As Possible,NA,NA,NA,4/30/26 2:05,2h,2h,0h,0,0,0,0,0,1.2.5.2.17.6,500,No,No,No,,Sam Houff,Black,,,,,,,,0,0,0,0d,0d,0d,No,No,No,No,No,No,No,No,No,No,No,0,0,0,0,0,
1880,4270,Yes,Auto Scheduled,RTR_CM10_Credit_Management_Role,1.84d,Fixed Duration,5,1.13d,,"September 30, 2026 4:01","October 2, 2026 2:46",9/30/26 4:01,10/2/26 2:46,6/1/26 10:15,6/3/26 9:00,0d,-87.6d,0ed,0,NA,NA,"April 10, 2026 9:45","April 13, 2026 10:45",As Soon As Possible,NA,NA,NA,4/30/26 2:05,9h,9h,0h,0,0,0,0,0,1.2.5.2.18,500,No,Yes,Yes,,,Black,,,,,,,,0,0,0,0d,0d,0d,No,No,No,No,No,No,No,No,No,No,No,0,0,0,0,0,
1881,4271,Yes,Auto Scheduled,"Load File Staged and Posted ""Ready""",30m,Fixed Units,6,0.06d,1857,"September 30, 2026 4:01","September 30, 2026 4:31",9/30/26 4:01,9/30/26 4:31,6/1/26 10:15,6/1/26 10:45,0m,-42046m,0ed,0,NA,NA,"April 10, 2026 9:45","April 10, 2026 10:15",As Soon As Possible,NA,NA,NA,4/30/26 2:05,0.5h,0.5h,0h,0,0,0,0,0,1.2.5.2.18.1,500,No,No,No,,,Black,,,,,,,,0,0,0,0d,0d,0d,No,No,No,No,No,No,No,No,No,No,No,0,0,0,0,0,
1882,4272,Yes,Auto Scheduled,Pre Load Validation,30m,Fixed Units,6,0.06d,1881,"September 30, 2026 4:31","October 1, 2026 8:01",9/30/26 4:31,10/1/26 8:01,6/1/26 10:45,6/1/26 11:15,0m,-42046m,0ed,0,NA,NA,"April 10, 2026 10:15","April 10, 2026 10:45",As Soon As Possible,NA,NA,NA,4/30/26 2:05,0.5h,0.5h,0h,0,0,0,0,0,1.2.5.2.18.2,500,No,No,No,,Brian Wagner,Black,,,,,,,,0,0,0,0d,0d,0d,No,No,No,No,No,No,No,No,No,No,No,0,0,0,0,0,
1883,4273,Yes,Auto Scheduled,Simulate Load,1h,Fixed Units,6,0.13d,1882,"October 1, 2026 8:01","October 1, 2026 9:01",10/1/26 8:01,10/1/26 9:01,6/1/26 11:15,6/1/26 1:15,0h,-700.77h,0ed,0,NA,NA,"April 10, 2026 10:45","April 10, 2026 11:45",As Soon As Possible,NA,NA,NA,4/30/26 2:05,1h,1h,0h,0,0,0,0,0,1.2.5.2.18.3,500,No,No,No,,,Black,,,,,,,,0,0,0,0d,0d,0d,No,No,No,No,No,No,No,No,No,No,No,0,0,0,0,0,
1884,4274,Yes,Auto Scheduled,Error and Defect Mitigation,2h,Fixed Units,6,0.25d,1883,"October 1, 2026 9:01","October 1, 2026 11:31",10/1/26 9:01,10/1/26 11:31,6/1/26 1:15,6/1/26 3:45,0h,-700.77h,0ed,0,NA,NA,"April 10, 2026 11:45","April 10, 2026 2:45",As Soon As Possible,NA,NA,NA,4/30/26 2:05,2h,2h,0h,0,0,0,0,0,1.2.5.2.18.4,500,No,No,No,,Brian Wagner,Black,,,,,,,,0,0,0,0d,0d,0d,No,No,No,No,No,No,No,No,No,No,No,0,0,0,0,0,
1885,4275,Yes,Auto Scheduled,Load,2h,Fixed Units,6,0.25d,1884,"October 1, 2026 11:31","October 1, 2026 4:31",10/1/26 11:31,10/1/26 4:31,6/1/26 3:45,6/2/26 10:45,0h,-700.77h,0ed,0,NA,NA,"April 10, 2026 2:45","April 10, 2026 4:45",As Soon As Possible,NA,NA,NA,4/30/26 2:05,2h,2h,0h,0,0,0,0,0,1.2.5.2.18.5,500,No,No,No,,,Black,,,,,,,,0,0,0,0d,0d,0d,No,No,No,No,No,No,No,No,No,No,No,0,0,0,0,0,
1886,4276,Yes,Auto Scheduled,Post Load Validation,3h,Fixed Units,6,0.38d,1885,"October 1, 2026 4:31","October 2, 2026 2:46",10/1/26 4:31,10/2/26 2:46,6/2/26 10:45,6/3/26 9:00,0h,-700.77h,0ed,0,NA,NA,"April 10, 2026 4:45","April 13, 2026 10:45",As Soon As Possible,NA,NA,NA,4/30/26 2:05,3h,3h,0h,0,0,0,0,0,1.2.5.2.18.6,500,No,No,No,,Brian Wagner,Black,,,,,,,,0,0,0,0d,0d,0d,No,No,No,No,No,No,No,No,No,No,No,0,0,0,0,0,
1887,4277,Yes,Auto Scheduled,PTP_CM27_Vendor Master,6.28d,Fixed Duration,5,2.91d,,"September 24, 2026 8:31","October 2, 2026 10:46",9/24/26 8:31,10/2/26 10:46,5/20/26 10:30,6/3/26 4:00,0d,-90.75d,0ed,0,NA,NA,"April 10, 2026 10:45","April 15, 2026 10:00",As Soon As Possible,NA,NA,NA,4/30/26 2:05,10.25h,9h,0h,0,0,0,0,0,1.2.5.2.19,500,No,Yes,Yes,,,Black,,,,,,,,0,0,0,0d,0d,0d,No,No,No,No,No,No,No,No,No,No,No,0,0,0,0,0,
1888,4278,Yes,Auto Scheduled,Extract File,1h,Fixed Units,6,0.13d,1874,"October 1, 2026 8:01","October 1, 2026 9:01",10/1/26 8:01,10/1/26 9:01,6/2/26 1:15,6/2/26 2:15,0h,-691.77h,0ed,0,NA,NA,"April 10, 2026 10:45","April 10, 2026 11:45",As Soon As Possible,NA,NA,NA,4/30/26 2:05,1h,1h,0h,0,0,0,0,0,1.2.5.2.19.1,500,No,No,No,,,Black,,,,,,,,0,0,0,0d,0d,0d,No,No,No,No,No,No,No,No,No,No,No,0,0,0,0,0,
1889,4279,Yes,Auto Scheduled,Pre Load Validation,2h,Fixed Units,6,0.25d,1888,"October 1, 2026 9:01","October 1, 2026 11:01",10/1/26 9:01,10/1/26 11:01,6/2/26 2:15,6/2/26 4:15,0h,-691.77h,0ed,0,NA,NA,"April 10, 2026 11:45","April 10, 2026 2:45",As Soon As Possible,NA,NA,NA,4/30/26 2:05,2h,2h,0h,0,0,0,0,0,1.2.5.2.19.2,500,No,No,No,,Sam Houff,Black,,,,,,,,0,0,0,0d,0d,0d,No,No,No,No,No,No,No,No,No,No,No,0,0,0,0,0,
1890,4280,Yes,Auto Scheduled,Simulate Load,2.25h,Fixed Units,6,0.13d,1889,"October 1, 2026 11:01","October 1, 2026 2:16",10/1/26 11:01,10/1/26 2:16,6/2/26 4:15,6/3/26 9:30,0h,-691.77h,0ed,0,NA,NA,"April 10, 2026 2:45","April 14, 2026 2:00",Finish No Earlier Than,4/10/26 5:00,NA,NA,4/30/26 2:05,2.25h,1h,0h,0,0,0,0,0,1.2.5.2.19.3,500,No,No,No,,,Black,,,,,,,,0,0,0,0d,0d,0d,No,No,No,No,No,No,No,No,No,No,No,0,0,0,0,0,
1891,4281,Yes,Auto Scheduled,Error and Defect Mitigation,2h,Fixed Units,6,0.25d,1890,"October 1, 2026 2:16","October 2, 2026 10:46",10/1/26 2:16,10/2/26 10:46,6/3/26 9:30,6/3/26 4:00,0h,-691.77h,0ed,0,NA,NA,"April 14, 2026 2:00","April 14, 2026 4:00",As Soon As Possible,NA,NA,NA,4/30/26 2:05,2h,2h,0h,0,0,0,0,0,1.2.5.2.19.4,500,No,No,No,,Sam Houff,Black,,,,,,,,0,0,0,0d,0d,0d,No,No,No,No,No,No,No,No,No,No,No,0,0,0,0,0,
1892,4282,Yes,Auto Scheduled,Load,1h,Fixed Units,6,0.13d,,"September 24, 2026 8:31","September 24, 2026 9:31",9/24/26 8:31,9/24/26 9:31,5/20/26 10:30,5/20/26 11:30,0h,-726.02h,0ed,0,NA,NA,"April 14, 2026 4:00","April 14, 2026 5:00",As Soon As Possible,NA,NA,NA,4/30/26 2:05,1h,1h,0h,0,0,0,0,0,1.2.5.2.19.5,500,No,No,No,,,Black,,,,,,,,0,0,0,0d,0d,0d,No,No,No,No,No,No,No,No,No,No,No,0,0,0,0,0,
1893,4283,Yes,Auto Scheduled,Post Load Validation,2h,Fixed Units,6,0.25d,1892,"September 24, 2026 9:31","September 24, 2026 11:31",9/24/26 9:31,9/24/26 11:31,5/20/26 11:30,5/20/26 2:30,0h,-726.02h,0ed,0,NA,NA,"April 15, 2026 8:00","April 15, 2026 10:00",As Soon As Possible,NA,NA,NA,4/30/26 2:05,2h,2h,0h,0,0,0,0,0,1.2.5.2.19.6,500,No,No,No,,Sam Houff,Black,,,,,,,,0,0,0,0d,0d,0d,No,No,No,No,No,No,No,No,No,No,No,0,0,0,0,0,
1894,4284,Yes,Auto Scheduled,PTP_CM27_Vendor Master - Mass Maintenance - LFA1-WERKR,0.88d,Fixed Duration,5,3.16d,,"September 24, 2026 8:31","September 24, 2026 4:31",9/24/26 8:31,9/24/26 4:31,6/2/26 11:00,6/3/26 4:00,0d,-81.69d,0ed,0,NA,NA,"April 10, 2026 11:45","April 15, 2026 2:00",As Soon As Possible,NA,NA,NA,4/30/26 2:05,9h,9h,0h,0,0,0,0,0,1.2.5.2.20,500,No,Yes,Yes,,,Black,,,,,,,,0,0,0,0d,0d,0d,No,No,No,No,No,No,No,No,No,No,No,0,0,0,0,0,
1895,4285,Yes,Auto Scheduled,Extract File(Will Extract from LFA1),1h,Fixed Units,6,0.13d,,"September 24, 2026 8:31","September 24, 2026 9:31",9/24/26 8:31,9/24/26 9:31,6/2/26 11:00,6/2/26 12:00,0h,-653.52h,0ed,0,NA,NA,"April 10, 2026 11:45","April 10, 2026 1:45",Start No Earlier Than,4/16/26 8:00,NA,NA,4/30/26 2:05,1h,1h,0h,0,0,0,0,0,1.2.5.2.20.1,500,No,No,No,,,Black,,,,,,,,0,0,0,0d,0d,0d,No,No,No,No,No,No,No,No,No,No,No,0,0,0,0,0,
1896,4286,Yes,Auto Scheduled,Pre Load Validation,2h,Fixed Units,6,0.25d,1895,"September 24, 2026 9:31","September 24, 2026 11:31",9/24/26 9:31,9/24/26 11:31,6/2/26 1:00,6/2/26 3:00,0h,-653.52h,0ed,0,NA,NA,"April 10, 2026 1:45","April 10, 2026 3:45",As Soon As Possible,NA,NA,NA,4/30/26 2:05,2h,2h,0h,0,0,0,0,0,1.2.5.2.20.2,500,No,No,No,,Sam Houff,Black,,,,,,,,0,0,0,0d,0d,0d,No,No,No,No,No,No,No,No,No,No,No,0,0,0,0,0,
1897,4287,Yes,Auto Scheduled,Simulate Load/ Not Needed,1h,Fixed Units,6,0.13d,1896,"September 24, 2026 11:31","September 24, 2026 1:31",9/24/26 11:31,9/24/26 1:31,6/2/26 3:00,6/2/26 4:00,0h,-653.52h,0ed,0,NA,NA,"April 10, 2026 3:45","April 10, 2026 4:45",As Soon As Possible,NA,NA,NA,4/30/26 2:05,1h,1h,0h,0,0,0,0,0,1.2.5.2.20.3,500,No,No,No,,,Black,,,,,,,,0,0,0,0d,0d,0d,No,No,No,No,No,No,No,No,No,No,No,0,0,0,0,0,
1898,4288,Yes,Auto Scheduled,Error and Defect Mitigation,2h,Fixed Units,6,0.25d,1897,"September 24, 2026 1:31","September 24, 2026 3:31",9/24/26 1:31,9/24/26 3:31,6/3/26 2:00,6/3/26 4:00,0h,-647.52h,0ed,0,NA,NA,"April 10, 2026 4:45","April 13, 2026 9:45",As Soon As Possible,NA,NA,NA,4/30/26 2:05,2h,2h,0h,0,0,0,0,0,1.2.5.2.20.4,500,No,No,No,,Sam Houff,Black,,,,,,,,0,0,0,0d,0d,0d,No,No,No,No,No,No,No,No,No,No,No,0,0,0,0,0,
1899,4289,Yes,Auto Scheduled,Load,1h,Fixed Units,6,0.13d,1897,"September 24, 2026 1:31","September 24, 2026 2:31",9/24/26 1:31,9/24/26 2:31,6/2/26 4:00,6/2/26 5:00,0h,-653.52h,0ed,0,NA,NA,"April 15, 2026 10:00","April 15, 2026 11:00",As Soon As Possible,NA,NA,NA,4/30/26 2:05,1h,1h,0h,0,0,0,0,0,1.2.5.2.20.5,500,No,No,No,,,Black,,,,,,,,0,0,0,0d,0d,0d,No,No,No,No,No,No,No,No,No,No,No,0,0,0,0,0,
1900,4290,Yes,Auto Scheduled,Post Load Validation,2h,Fixed Units,6,0.25d,1899,"September 24, 2026 2:31","September 24, 2026 4:31",9/24/26 2:31,9/24/26 4:31,6/3/26 8:00,6/3/26 10:00,0h,-653.52h,0ed,0,NA,NA,"April 15, 2026 11:00","April 15, 2026 2:00",As Soon As Possible,NA,NA,NA,4/30/26 2:05,2h,2h,0h,0,0,0,0,0,1.2.5.2.20.6,500,No,No,No,,Sam Houff,Black,,,,,,,,0,0,0,0d,0d,0d,No,No,No,No,No,No,No,No,No,No,No,0,0,0,0,0,
1901,4291,Yes,Auto Scheduled,RTR_****_Credit Hierarchy,1.91d,Fixed Duration,5,1.25d,,"October 1, 2026 11:31","October 5, 2026 10:46",10/1/26 11:31,10/5/26 10:46,6/3/26 10:00,6/3/26 4:00,0d,-87.47d,0ed,0,NA,NA,"April 10, 2026 2:45","April 13, 2026 4:45",As Soon As Possible,NA,NA,NA,4/30/26 2:05,5.5h,5.5h,0h,0,0,0,0,0,1.2.5.2.21,500,No,Yes,Yes,,,Black,,,,,,,,0,0,0,0d,0d,0d,No,No,No,No,No,No,No,No,No,No,No,0,0,0,0,0,
1902,4292,Yes,Auto Scheduled,"Manual File Staged and Posted ""Ready""",30m,Fixed Units,6,0.06d,1884,"October 1, 2026 11:31","October 1, 2026 1:01",10/1/26 11:31,10/1/26 1:01,6/3/26 3:30,6/3/26 4:00,0m,-41101m,0ed,0,NA,NA,"April 10, 2026 2:45","April 10, 2026 3:15",Start No Earlier Than,4/15/26 8:00,NA,NA,4/30/26 2:05,0.5h,0.5h,0h,0,0,0,0,0,1.2.5.2.21.1,500,No,No,No,,Brian Wagner,Black,,,,,,,,0,0,0,0d,0d,0d,No,No,No,No,No,No,No,No,No,No,No,0,0,0,0,0,
1903,4293,Yes,Auto Scheduled,Load,2h,Fixed Units,6,0.25d,1886,"October 2, 2026 2:46","October 2, 2026 4:46",10/2/26 2:46,10/2/26 4:46,6/3/26 10:00,6/3/26 12:00,0h,-699.77h,0ed,0,NA,NA,"April 13, 2026 10:45","April 13, 2026 1:45",As Soon As Possible,NA,NA,NA,4/30/26 2:05,2h,2h,0h,0,0,0,0,0,1.2.5.2.21.2,500,No,No,No,,,Black,,,,,,,,0,0,0,0d,0d,0d,No,No,No,No,No,No,No,No,No,No,No,0,0,0,0,0,
1904,4294,Yes,Auto Scheduled,Post Load Validation,3h,Fixed Units,6,0.38d,1903,"October 2, 2026 4:46","October 5, 2026 10:46",10/2/26 4:46,10/5/26 10:46,6/3/26 1:00,6/3/26 4:00,0h,-699.77h,0ed,0,NA,NA,"April 13, 2026 1:45","April 13, 2026 4:45",As Soon As Possible,NA,NA,NA,4/30/26 2:05,3h,3h,0h,0,0,0,0,0,1.2.5.2.21.3,500,No,No,No,,Brian Wagner,Black,,,,,,,,0,0,0,0d,0d,0d,No,No,No,No,No,No,No,No,No,No,No,0,0,0,0,0,
1905,4295,Yes,Auto Scheduled,PTP_CM27_BP_Intercompany Supplier,1.13d,Fixed Duration,5,1.13d,,"September 24, 2026 11:31","September 25, 2026 1:31",9/24/26 11:31,9/25/26 1:31,6/2/26 3:00,6/3/26 4:00,0d,-81.69d,0ed,0,NA,NA,"April 13, 2026 11:45","April 14, 2026 1:45",As Soon As Possible,NA,NA,NA,4/30/26 2:05,15h,15h,0h,0,0,0,0,0,1.2.5.2.22,500,No,Yes,Yes,,,Black,,,,,,,,0,0,0,0d,0d,0d,No,No,No,No,No,No,No,No,No,No,No,0,0,0,0,0,
1906,4296,Yes,Auto Scheduled,"Load File Staged and Posted ""Ready""",30m,Fixed Units,6,0.06d,1893,"September 24, 2026 11:31","September 24, 2026 1:01",9/24/26 11:31,9/24/26 1:01,6/2/26 3:00,6/2/26 3:30,0m,-39211m,0ed,0,NA,NA,"April 13, 2026 11:45","April 13, 2026 1:15",As Soon As Possible,NA,NA,NA,4/30/26 2:05,1h,1h,0h,0,0,0,0,0,1.2.5.2.22.1,500,No,No,No,,,Black,,,,,,,,0,0,0,0d,0d,0d,No,No,No,No,No,No,No,No,No,No,No,0,0,0,0,0,
1907,4297,Yes,Auto Scheduled,Pre Load Validation,30m,Fixed Units,6,0.06d,1906,"September 24, 2026 1:01","September 24, 2026 1:31",9/24/26 1:01,9/24/26 1:31,6/2/26 3:30,6/2/26 4:00,0m,-39211m,0ed,0,NA,NA,"April 13, 2026 1:15","April 13, 2026 1:45",As Soon As Possible,NA,NA,NA,4/30/26 2:05,1h,1h,0h,0,0,0,0,0,1.2.5.2.22.2,500,No,No,No,,"Sam Houff,Kim Kolesar",Black,,,,,,,,0,0,0,0d,0d,0d,No,No,No,No,No,No,No,No,No,No,No,0,0,0,0,0,
1908,4298,Yes,Auto Scheduled,Simulate Load,1h,Fixed Units,6,0.13d,1907,"September 24, 2026 1:31","September 24, 2026 2:31",9/24/26 1:31,9/24/26 2:31,6/2/26 4:00,6/2/26 5:00,0h,-653.52h,0ed,0,NA,NA,"April 13, 2026 1:45","April 13, 2026 2:45",As Soon As Possible,NA,NA,NA,4/30/26 2:05,1h,1h,0h,0,0,0,0,0,1.2.5.2.22.3,500,No,No,No,,,Black,,,,,,,,0,0,0,0d,0d,0d,No,No,No,No,No,No,No,No,No,No,No,0,0,0,0,0,
1909,4299,Yes,Auto Scheduled,Error and Defect Mitigation,2h,Fixed Units,6,0.25d,1908,"September 24, 2026 2:31","September 24, 2026 4:31",9/24/26 2:31,9/24/26 4:31,6/3/26 8:00,6/3/26 10:00,0h,-653.52h,0ed,0,NA,NA,"April 13, 2026 2:45","April 13, 2026 4:45",As Soon As Possible,NA,NA,NA,4/30/26 2:05,4h,4h,0h,0,0,0,0,0,1.2.5.2.22.4,500,No,No,No,,"Sam Houff,Kim Kolesar",Black,,,,,,,,0,0,0,0d,0d,0d,No,No,No,No,No,No,No,No,No,No,No,0,0,0,0,0,
1910,4300,Yes,Auto Scheduled,Load,2h,Fixed Units,6,0.25d,1909,"September 24, 2026 4:31","September 25, 2026 9:31",9/24/26 4:31,9/25/26 9:31,6/3/26 10:00,6/3/26 12:00,0h,-653.52h,0ed,0,NA,NA,"April 13, 2026 4:45","April 14, 2026 9:45",As Soon As Possible,NA,NA,NA,4/30/26 2:05,2h,2h,0h,0,0,0,0,0,1.2.5.2.22.5,500,No,No,No,,,Black,,,,,,,,0,0,0,0d,0d,0d,No,No,No,No,No,No,No,No,No,No,No,0,0,0,0,0,
1911,4301,Yes,Auto Scheduled,Post Load Validation,3h,Fixed Units,6,0.38d,1910,"September 25, 2026 9:31","September 25, 2026 1:31",9/25/26 9:31,9/25/26 1:31,6/3/26 1:00,6/3/26 4:00,0h,-653.52h,0ed,0,NA,NA,"April 14, 2026 9:45","April 14, 2026 1:45",As Soon As Possible,NA,NA,NA,4/30/26 2:05,6h,6h,0h,0,0,0,0,0,1.2.5.2.22.6,500,No,No,No,,"Sam Houff,Kim Kolesar",Black,,,,,,,,0,0,0,0d,0d,0d,No,No,No,No,No,No,No,No,No,No,No,0,0,0,0,0,
1912,4302,Yes,Auto Scheduled,PTP_CM27_BP_Intercompany Customer,1.06d,Fixed Duration,5,1.13d,,"September 24, 2026 8:31","September 25, 2026 9:01",9/24/26 8:31,9/25/26 9:01,6/2/26 3:30,6/3/26 4:00,0d,-81.25d,0ed,0,NA,NA,"April 13, 2026 11:45","April 14, 2026 1:45",As Soon As Possible,NA,NA,NA,4/30/26 2:05,15h,15h,0h,0,0,0,0,0,1.2.5.2.23,500,No,Yes,Yes,,,Black,,,,,,,,0,0,0,0d,0d,0d,No,No,No,No,No,No,No,No,No,No,No,0,0,0,0,0,
1913,4303,Yes,Auto Scheduled,"Load File Staged and Posted ""Ready""",30m,Fixed Units,6,0.06d,,"September 24, 2026 8:31","September 24, 2026 9:01",9/24/26 8:31,9/24/26 9:01,6/3/26 3:30,6/3/26 4:00,0m,-38521m,0ed,0,NA,NA,"April 13, 2026 11:45","April 13, 2026 1:15",As Soon As Possible,NA,NA,NA,4/30/26 2:05,1h,1h,0h,0,0,0,0,0,1.2.5.2.23.1,500,No,No,No,,,Black,,,,,,,,0,0,0,0d,0d,0d,No,No,No,No,No,No,No,No,No,No,No,0,0,0,0,0,
1914,4304,Yes,Auto Scheduled,Pre Load Validation,30m,Fixed Units,6,0.06d,,"September 24, 2026 8:31","September 24, 2026 9:01",9/24/26 8:31,9/24/26 9:01,6/2/26 3:30,6/2/26 4:00,0m,-39001m,0ed,0,NA,NA,"April 13, 2026 1:15","April 13, 2026 1:45",As Soon As Possible,NA,NA,NA,4/30/26 2:05,1h,1h,0h,0,0,0,0,0,1.2.5.2.23.2,500,No,No,No,,"Sam Houff,Kim Kolesar",Black,,,,,,,,0,0,0,0d,0d,0d,No,No,No,No,No,No,No,No,No,No,No,0,0,0,0,0,
1915,4305,Yes,Auto Scheduled,Simulate Load,1h,Fixed Units,6,0.13d,1914,"September 24, 2026 9:01","September 24, 2026 10:01",9/24/26 9:01,9/24/26 10:01,6/2/26 4:00,6/2/26 5:00,0h,-650.02h,0ed,0,NA,NA,"April 13, 2026 1:45","April 13, 2026 2:45",As Soon As Possible,NA,NA,NA,4/30/26 2:05,1h,1h,0h,0,0,0,0,0,1.2.5.2.23.3,500,No,No,No,,,Black,,,,,,,,0,0,0,0d,0d,0d,No,No,No,No,No,No,No,No,No,No,No,0,0,0,0,0,
1916,4306,Yes,Auto Scheduled,Error and Defect Mitigation,2h,Fixed Units,6,0.25d,1915,"September 24, 2026 10:01","September 24, 2026 1:01",9/24/26 10:01,9/24/26 1:01,6/3/26 8:00,6/3/26 10:00,0h,-650.02h,0ed,0,NA,NA,"April 13, 2026 2:45","April 13, 2026 4:45",As Soon As Possible,NA,NA,NA,4/30/26 2:05,4h,4h,0h,0,0,0,0,0,1.2.5.2.23.4,500,No,No,No,,"Sam Houff,Kim Kolesar",Black,,,,,,,,0,0,0,0d,0d,0d,No,No,No,No,No,No,No,No,No,No,No,0,0,0,0,0,
1917,4307,Yes,Auto Scheduled,Load,2h,Fixed Units,6,0.25d,1916,"September 24, 2026 1:01","September 24, 2026 3:01",9/24/26 1:01,9/24/26 3:01,6/3/26 10:00,6/3/26 12:00,0h,-650.02h,0ed,0,NA,NA,"April 13, 2026 4:45","April 14, 2026 9:45",As Soon As Possible,NA,NA,NA,4/30/26 2:05,2h,2h,0h,0,0,0,0,0,1.2.5.2.23.5,500,No,No,No,,,Black,,,,,,,,0,0,0,0d,0d,0d,No,No,No,No,No,No,No,No,No,No,No,0,0,0,0,0,
1918,4308,Yes,Auto Scheduled,Post Load Validation,3h,Fixed Units,6,0.38d,1917,"September 24, 2026 3:01","September 25, 2026 9:01",9/24/26 3:01,9/25/26 9:01,6/3/26 1:00,6/3/26 4:00,0h,-650.02h,0ed,0,NA,NA,"April 14, 2026 9:45","April 14, 2026 1:45",As Soon As Possible,NA,NA,NA,4/30/26 2:05,6h,6h,0h,0,0,0,0,0,1.2.5.2.23.6,500,No,No,No,,"Sam Houff,Kim Kolesar",Black,,,,,,,,0,0,0,0d,0d,0d,No,No,No,No,No,No,No,No,No,No,No,0,0,0,0,0,
1919,4309,Yes,Auto Scheduled,PTP_CM26_Material_Master - All Types,2.28d,Fixed Duration,5,3.16d,,"September 24, 2026 9:31","September 28, 2026 11:46",9/24/26 9:31,9/28/26 11:46,5/20/26 2:30,6/3/26 4:00,0d,-90.5d,0ed,0,NA,NA,"April 10, 2026 10:45","April 15, 2026 12:00",As Soon As Possible,NA,NA,NA,4/30/26 2:05,19h,19h,0h,0,0,0,0,0,1.2.5.2.24,500,No,Yes,Yes,,,Black,,,,,,,,0,0,0,0d,0d,0d,No,No,No,No,No,No,No,No,No,No,No,0,0,0,0,0,
1920,4310,Yes,Auto Scheduled,Extract File,5h,Fixed Units,6,0.63d,1895,"September 24, 2026 9:31","September 25, 2026 8:16",9/24/26 9:31,9/25/26 8:16,6/3/26 8:15,6/3/26 4:00,0h,-649.27h,0ed,0,NA,NA,"April 10, 2026 10:45","April 13, 2026 9:30",As Soon As Possible,NA,NA,NA,4/30/26 2:05,5h,5h,0h,0,0,0,0,0,1.2.5.2.24.1,500,No,No,No,,,Black,,,,,,,,0,0,0,0d,0d,0d,No,No,No,No,No,No,No,No,No,No,No,0,0,0,0,0,
1921,4311,Yes,Auto Scheduled,Pre Load Validation,2h,Fixed Units,6,0.25d,1893,"September 24, 2026 11:31","September 25, 2026 9:46",9/24/26 11:31,9/25/26 9:46,5/20/26 2:30,5/21/26 11:45,0h,-726.02h,0ed,0,NA,NA,"April 13, 2026 11:45","April 14, 2026 10:00",As Soon As Possible,NA,NA,NA,4/30/26 2:05,4h,4h,0h,0,0,0,0,0,1.2.5.2.24.2,500,No,No,No,,"Sam Houff,Kim Kolesar,Matt",Black,,,,,,,,0,0,0,0d,0d,0d,No,No,No,No,No,No,No,No,No,No,No,0,0,0,0,0,
1922,4312,Yes,Auto Scheduled,Simulate Load,1h,Fixed Units,6,0.13d,1921,"September 25, 2026 9:46","September 25, 2026 10:46",9/25/26 9:46,9/25/26 10:46,5/21/26 11:45,5/21/26 1:45,0h,-726.02h,0ed,0,NA,NA,"April 14, 2026 10:00","April 14, 2026 11:00",As Soon As Possible,NA,NA,NA,4/30/26 2:05,1h,1h,0h,0,0,0,0,0,1.2.5.2.24.3,500,No,No,No,,,Black,,,,,,,,0,0,0,0d,0d,0d,No,No,No,No,No,No,No,No,No,No,No,0,0,0,0,0,
1923,4313,Yes,Auto Scheduled,Error and Defect Mitigation,4h,Fixed Units,6,0.5d,1922,"September 25, 2026 10:46","September 25, 2026 3:46",9/25/26 10:46,9/25/26 3:46,5/21/26 1:45,5/22/26 8:45,0h,-726.02h,0ed,0,NA,NA,"April 14, 2026 11:00","April 14, 2026 4:00",As Soon As Possible,NA,NA,NA,4/30/26 2:05,4h,4h,0h,0,0,0,0,0,1.2.5.2.24.4,500,No,No,No,,"Sam Houff,Kim Kolesar,Matt",Black,,,,,,,,0,0,0,0d,0d,0d,No,No,No,No,No,No,No,No,No,No,No,0,0,0,0,0,
1924,4314,Yes,Auto Scheduled,Load,3h,Fixed Units,6,0.38d,1923,"September 25, 2026 3:46","September 28, 2026 9:46",9/25/26 3:46,9/28/26 9:46,5/22/26 8:45,5/22/26 11:45,0h,-726.02h,0ed,0,NA,NA,"April 14, 2026 4:00","April 15, 2026 10:00",As Soon As Possible,NA,NA,NA,4/30/26 2:05,3h,3h,0h,0,0,0,0,0,1.2.5.2.24.5,500,No,No,No,,,Black,,,,,,,,0,0,0,0d,0d,0d,No,No,No,No,No,No,No,No,No,No,No,0,0,0,0,0,
1925,4315,Yes,Auto Scheduled,Post Load Validation,2h,Fixed Units,6,0.25d,1924,"September 28, 2026 9:46","September 28, 2026 11:46",9/28/26 9:46,9/28/26 11:46,5/27/26 8:00,5/27/26 10:00,0h,-705.77h,0ed,0,NA,NA,"April 15, 2026 10:00","April 15, 2026 12:00",As Soon As Possible,NA,NA,NA,4/30/26 2:05,2h,2h,0h,0,0,0,0,0,1.2.5.2.24.6,500,No,No,No,,"Sam Houff,Kim Kolesar,Matt",Black,,,,,,,,0,0,0,0d,0d,0d,No,No,No,No,No,No,No,No,No,No,No,0,0,0,0,0,
1926,4316,Yes,Auto Scheduled,PTP_CM26_Material_Master - SERV - Service Materials,1.34d,Fixed Duration,5,5.88d,,"September 25, 2026 4:31","September 29, 2026 10:16",9/25/26 4:31,9/29/26 10:16,6/2/26 3:30,6/3/26 4:00,0d,-83.41d,0ed,0,NA,NA,"April 7, 2026 4:15","April 15, 2026 3:15",As Soon As Possible,NA,NA,NA,4/30/26 2:05,15h,15h,0h,0,0,0,0,0,1.2.5.2.25,500,No,Yes,Yes,,,Black,,,,,,,,0,0,0,0d,0d,0d,No,No,No,No,No,No,No,No,No,No,No,0,0,0,0,0,
1927,4317,Yes,Auto Scheduled,"Load File Staged and Posted ""Ready""",30m,Fixed Units,6,0.06d,1796,"September 25, 2026 4:31","September 28, 2026 8:01",9/25/26 4:31,9/28/26 8:01,6/3/26 3:30,6/3/26 4:00,0m,-39421m,0ed,0,NA,NA,"April 7, 2026 4:15","April 7, 2026 4:45",As Soon As Possible,NA,NA,NA,4/30/26 2:05,1h,1h,0h,0,0,0,0,0,1.2.5.2.25.1,500,No,No,No,,,Black,,,,,,,,0,0,0,0d,0d,0d,No,No,No,No,No,No,No,No,No,No,No,0,0,0,0,0,
1928,4318,Yes,Auto Scheduled,Pre Load Validation,30m,Fixed Units,6,0.06d,1924,"September 28, 2026 9:46","September 28, 2026 10:16",9/28/26 9:46,9/28/26 10:16,6/2/26 3:30,6/2/26 4:00,0m,-40036m,0ed,0,NA,NA,"April 14, 2026 2:45","April 14, 2026 3:15",As Soon As Possible,NA,NA,NA,4/30/26 2:05,1h,1h,0h,0,0,0,0,0,1.2.5.2.25.2,500,No,No,No,,"Sam Houff,Kim Kolesar",Black,,,,,,,,0,0,0,0d,0d,0d,No,No,No,No,No,No,No,No,No,No,No,0,0,0,0,0,
1929,4319,Yes,Auto Scheduled,Simulate Load,1h,Fixed Units,6,0.13d,1928,"September 28, 2026 10:16","September 28, 2026 11:16",9/28/26 10:16,9/28/26 11:16,6/2/26 4:00,6/2/26 5:00,0h,-667.27h,0ed,0,NA,NA,"April 14, 2026 3:15","April 14, 2026 4:15",As Soon As Possible,NA,NA,NA,4/30/26 2:05,1h,1h,0h,0,0,0,0,0,1.2.5.2.25.3,500,No,No,No,,,Black,,,,,,,,0,0,0,0d,0d,0d,No,No,No,No,No,No,No,No,No,No,No,0,0,0,0,0,
1930,4320,Yes,Auto Scheduled,Error and Defect Mitigation,2h,Fixed Units,6,0.25d,1929,"September 28, 2026 11:16","September 28, 2026 2:16",9/28/26 11:16,9/28/26 2:16,6/3/26 8:00,6/3/26 10:00,0h,-667.27h,0ed,0,NA,NA,"April 14, 2026 4:15","April 15, 2026 9:15",As Soon As Possible,NA,NA,NA,4/30/26 2:05,4h,4h,0h,0,0,0,0,0,1.2.5.2.25.4,500,No,No,No,,"Sam Houff,Kim Kolesar",Black,,,,,,,,0,0,0,0d,0d,0d,No,No,No,No,No,No,No,No,No,No,No,0,0,0,0,0,
1931,4321,Yes,Auto Scheduled,Load,2h,Fixed Units,6,0.25d,1930,"September 28, 2026 2:16","September 28, 2026 4:16",9/28/26 2:16,9/28/26 4:16,6/3/26 10:00,6/3/26 12:00,0h,-667.27h,0ed,0,NA,NA,"April 15, 2026 9:15","April 15, 2026 11:15",As Soon As Possible,NA,NA,NA,4/30/26 2:05,2h,2h,0h,0,0,0,0,0,1.2.5.2.25.5,500,No,No,No,,,Black,,,,,,,,0,0,0,0d,0d,0d,No,No,No,No,No,No,No,No,No,No,No,0,0,0,0,0,
1932,4322,Yes,Auto Scheduled,Post Load Validation,3h,Fixed Units,6,0.38d,1931,"September 28, 2026 4:16","September 29, 2026 10:16",9/28/26 4:16,9/29/26 10:16,6/3/26 1:00,6/3/26 4:00,0h,-667.27h,0ed,0,NA,NA,"April 15, 2026 11:15","April 15, 2026 3:15",As Soon As Possible,NA,NA,NA,4/30/26 2:05,6h,6h,0h,0,0,0,0,0,1.2.5.2.25.6,500,No,No,No,,"Sam Houff,Kim Kolesar",Black,,,,,,,,0,0,0,0d,0d,0d,No,No,No,No,No,No,No,No,No,No,No,0,0,0,0,0,
1933,4323,Yes,Auto Scheduled,PTP_CM26_Material_Master - KMAT - Configurable Materials,1.34d,Fixed Duration,5,5.88d,,"September 25, 2026 4:31","September 29, 2026 10:16",9/25/26 4:31,9/29/26 10:16,5/22/26 11:45,6/1/26 10:15,0d,-90.47d,0ed,0,NA,NA,"April 7, 2026 4:15","April 15, 2026 3:15",As Soon As Possible,NA,NA,NA,4/30/26 2:05,9h,9h,0h,0,0,0,0,0,1.2.5.2.26,500,No,Yes,Yes,,,Black,,,,,,,,0,0,0,0d,0d,0d,No,No,No,No,No,No,No,No,No,No,No,0,0,0,0,0,
1934,4324,Yes,Auto Scheduled,"Load File Staged and Posted ""Ready""",30m,Fixed Units,6,0.06d,1796,"September 25, 2026 4:31","September 28, 2026 8:01",9/25/26 4:31,9/28/26 8:01,6/1/26 9:45,6/1/26 10:15,0m,-40666m,0ed,0,NA,NA,"April 7, 2026 4:15","April 7, 2026 4:45",As Soon As Possible,NA,NA,NA,4/30/26 2:05,0.5h,0.5h,0h,0,0,0,0,0,1.2.5.2.26.1,500,No,No,No,,,Black,,,,,,,,0,0,0,0d,0d,0d,No,No,No,No,No,No,No,No,No,No,No,0,0,0,0,0,
1935,4325,Yes,Auto Scheduled,Pre Load Validation,30m,Fixed Units,6,0.06d,1924,"September 28, 2026 9:46","September 28, 2026 10:16",9/28/26 9:46,9/28/26 10:16,5/22/26 11:45,5/22/26 1:15,0m,-43561m,0ed,0,NA,NA,"April 14, 2026 2:45","April 14, 2026 3:15",As Soon As Possible,NA,NA,NA,4/30/26 2:05,0.5h,0.5h,0h,0,0,0,0,0,1.2.5.2.26.2,500,No,No,No,,"Sam Houff,Kim Kolesar,Matt",Black,,,,,,,,0,0,0,0d,0d,0d,No,No,No,No,No,No,No,No,No,No,No,0,0,0,0,0,
1936,4326,Yes,Auto Scheduled,Simulate Load,1h,Fixed Units,6,0.13d,1935,"September 28, 2026 10:16","September 28, 2026 11:16",9/28/26 10:16,9/28/26 11:16,5/22/26 1:15,5/22/26 2:15,0h,-726.02h,0ed,0,NA,NA,"April 14, 2026 3:15","April 14, 2026 4:15",As Soon As Possible,NA,NA,NA,4/30/26 2:05,1h,1h,0h,0,0,0,0,0,1.2.5.2.26.3,500,No,No,No,,,Black,,,,,,,,0,0,0,0d,0d,0d,No,No,No,No,No,No,No,No,No,No,No,0,0,0,0,0,
1937,4327,Yes,Auto Scheduled,Error and Defect Mitigation,2h,Fixed Units,6,0.25d,1936,"September 28, 2026 11:16","September 28, 2026 2:16",9/28/26 11:16,9/28/26 2:16,5/22/26 2:15,5/22/26 4:15,0h,-726.02h,0ed,0,NA,NA,"April 14, 2026 4:15","April 15, 2026 9:15",As Soon As Possible,NA,NA,NA,4/30/26 2:05,2h,2h,0h,0,0,0,0,0,1.2.5.2.26.4,500,No,No,No,,"Sam Houff,Kim Kolesar,Matt",Black,,,,,,,,0,0,0,0d,0d,0d,No,No,No,No,No,No,No,No,No,No,No,0,0,0,0,0,
1938,4328,Yes,Auto Scheduled,Load,2h,Fixed Units,6,0.25d,1937,"September 28, 2026 2:16","September 28, 2026 4:16",9/28/26 2:16,9/28/26 4:16,5/22/26 4:15,5/25/26 9:15,0h,-726.02h,0ed,0,NA,NA,"April 15, 2026 9:15","April 15, 2026 11:15",As Soon As Possible,NA,NA,NA,4/30/26 2:05,2h,2h,0h,0,0,0,0,0,1.2.5.2.26.5,500,No,No,No,,,Black,,,,,,,,0,0,0,0d,0d,0d,No,No,No,No,No,No,No,No,No,No,No,0,0,0,0,0,
1939,4329,Yes,Auto Scheduled,Post Load Validation,3h,Fixed Units,6,0.38d,1938,"September 28, 2026 4:16","September 29, 2026 10:16",9/28/26 4:16,9/29/26 10:16,5/25/26 9:15,5/25/26 1:15,0h,-726.02h,0ed,0,NA,NA,"April 15, 2026 11:15","April 15, 2026 3:15",As Soon As Possible,NA,NA,NA,4/30/26 2:05,3h,3h,0h,0,0,0,0,0,1.2.5.2.26.6,500,No,No,No,,"Sam Houff,Kim Kolesar,Matt",Black,,,,,,,,0,0,0,0d,0d,0d,No,No,No,No,No,No,No,No,No,No,No,0,0,0,0,0,
1940,4330,Yes,Auto Scheduled,PTP_CM28_Purchase_Info_Records,3.59d,Fixed Duration,5,1.28d,,"September 24, 2026 11:31","September 30, 2026 8:16",9/24/26 11:31,9/30/26 8:16,5/28/26 2:53,6/3/26 4:00,0d,-84.71d,0ed,0,NA,NA,"April 15, 2026 10:00","April 16, 2026 1:15",As Soon As Possible,NA,NA,NA,4/30/26 2:05,9h,9h,0h,0,0,0,0,0,1.2.5.2.27,500,No,Yes,Yes,,,Black,,,,,,,,0,0,0,0d,0d,0d,No,No,No,No,No,No,No,No,No,No,No,0,0,0,0,0,
1941,4331,Yes,Auto Scheduled,Extract File,1h,Fixed Units,6,0.13d,"1925,1939","September 29, 2026 10:16","September 29, 2026 11:16",9/29/26 10:16,9/29/26 11:16,5/28/26 2:53,5/28/26 3:53,0h,-700.39h,0ed,0,NA,NA,"April 15, 2026 3:15","April 15, 2026 4:15",As Soon As Possible,NA,NA,NA,4/30/26 2:05,1h,1h,0h,0,0,0,0,0,1.2.5.2.27.1,500,No,No,No,,,Black,,,,,,,,0,0,0,0d,0d,0d,No,No,No,No,No,No,No,No,No,No,No,0,0,0,0,0,
1942,4332,Yes,Auto Scheduled,Pre Load Validation,2h,Fixed Units,6,0.25d,1941,"September 29, 2026 11:16","September 29, 2026 2:16",9/29/26 11:16,9/29/26 2:16,6/3/26 10:00,6/3/26 12:00,0h,-673.27h,0ed,0,NA,NA,"April 15, 2026 4:15","April 16, 2026 9:15",As Soon As Possible,NA,NA,NA,4/30/26 2:05,2h,2h,0h,0,0,0,0,0,1.2.5.2.27.2,500,No,No,No,,Sam Houff,Black,,,,,,,,0,0,0,0d,0d,0d,No,No,No,No,No,No,No,No,No,No,No,0,0,0,0,0,
1943,4333,Yes,Auto Scheduled,Simulate Load,1h,Fixed Units,6,0.13d,1942,"September 29, 2026 2:16","September 29, 2026 3:16",9/29/26 2:16,9/29/26 3:16,6/3/26 1:00,6/3/26 2:00,0h,-673.27h,0ed,0,NA,NA,"April 16, 2026 9:15","April 16, 2026 10:15",As Soon As Possible,NA,NA,NA,4/30/26 2:05,1h,1h,0h,0,0,0,0,0,1.2.5.2.27.3,500,No,No,No,,,Black,,,,,,,,0,0,0,0d,0d,0d,No,No,No,No,No,No,No,No,No,No,No,0,0,0,0,0,
1944,4334,Yes,Auto Scheduled,Error and Defect Mitigation,2h,Fixed Units,6,0.25d,1943,"September 29, 2026 3:16","September 30, 2026 8:16",9/29/26 3:16,9/30/26 8:16,6/3/26 2:00,6/3/26 4:00,0h,-673.27h,0ed,0,NA,NA,"April 16, 2026 10:15","April 16, 2026 1:15",Start No Earlier Than,4/17/26 8:00,NA,NA,4/30/26 2:05,2h,2h,0h,0,0,0,0,0,1.2.5.2.27.4,500,No,No,No,,Sam Houff,Black,,,,,,,,0,0,0,0d,0d,0d,No,No,No,No,No,No,No,No,No,No,No,0,0,0,0,0,
1945,4335,Yes,Auto Scheduled,Load,1h,Fixed Units,6,0.13d,1893,"September 24, 2026 11:31","September 24, 2026 1:31",9/24/26 11:31,9/24/26 1:31,6/3/26 1:00,6/3/26 2:00,0h,-647.52h,0ed,0,NA,NA,"April 15, 2026 10:00","April 15, 2026 11:00",Start No Earlier Than,4/17/26 8:00,NA,NA,4/30/26 2:05,1h,1h,0h,0,0,0,0,0,1.2.5.2.27.5,500,No,No,No,,,Black,,,,,,,,0,0,0,0d,0d,0d,No,No,No,No,No,No,No,No,No,No,No,0,0,0,0,0,
1946,4336,Yes,Auto Scheduled,Post Load Validation,2h,Fixed Units,6,0.25d,1945,"September 24, 2026 1:31","September 24, 2026 3:31",9/24/26 1:31,9/24/26 3:31,6/3/26 2:00,6/3/26 4:00,0h,-647.52h,0ed,0,NA,NA,"April 15, 2026 11:00","April 15, 2026 2:00",Start No Earlier Than,4/17/26 8:00,NA,NA,4/30/26 2:05,2h,2h,0h,0,0,0,0,0,1.2.5.2.27.6,500,No,No,No,,Sam Houff,Black,,,,,,,,0,0,0,0d,0d,0d,No,No,No,No,No,No,No,No,No,No,No,0,0,0,0,0,
1947,4337,Yes,Auto Scheduled,PTP_CM28_Purchase_Info_Record External Processing,1.13d,Fixed Duration,5,1.13d,,"September 29, 2026 10:16","September 30, 2026 11:16",9/29/26 10:16,9/30/26 11:16,6/2/26 3:00,6/3/26 4:00,0d,-84.53d,0ed,0,NA,NA,"April 15, 2026 3:15","April 16, 2026 4:15",As Soon As Possible,NA,NA,NA,4/30/26 2:05,9h,9h,0h,0,0,0,0,0,1.2.5.2.28,500,No,Yes,Yes,,,Black,,,,,,,,0,0,0,0d,0d,0d,No,No,No,No,No,No,No,No,No,No,No,0,0,0,0,0,
1948,4338,Yes,Auto Scheduled,"Load File Staged and Posted ""Ready""",30m,Fixed Units,6,0.06d,"1925,1939","September 29, 2026 10:16","September 29, 2026 10:46",9/29/26 10:16,9/29/26 10:46,6/2/26 3:00,6/2/26 3:30,0m,-40576m,0ed,0,NA,NA,"April 15, 2026 3:15","April 15, 2026 3:45",As Soon As Possible,NA,NA,NA,4/30/26 2:05,0.5h,0.5h,0h,0,0,0,0,0,1.2.5.2.28.1,500,No,No,No,,,Black,,,,,,,,0,0,0,0d,0d,0d,No,No,No,No,No,No,No,No,No,No,No,0,0,0,0,0,
1949,4339,Yes,Auto Scheduled,Pre Load Validation,30m,Fixed Units,6,0.06d,1948,"September 29, 2026 10:46","September 29, 2026 11:16",9/29/26 10:46,9/29/26 11:16,6/2/26 3:30,6/2/26 4:00,0m,-40576m,0ed,0,NA,NA,"April 15, 2026 3:45","April 15, 2026 4:15",As Soon As Possible,NA,NA,NA,4/30/26 2:05,0.5h,0.5h,0h,0,0,0,0,0,1.2.5.2.28.2,500,No,No,No,,Sam Houff,Black,,,,,,,,0,0,0,0d,0d,0d,No,No,No,No,No,No,No,No,No,No,No,0,0,0,0,0,
1950,4340,Yes,Auto Scheduled,Simulate Load,1h,Fixed Units,6,0.13d,1949,"September 29, 2026 11:16","September 29, 2026 1:16",9/29/26 11:16,9/29/26 1:16,6/2/26 4:00,6/2/26 5:00,0h,-676.27h,0ed,0,NA,NA,"April 15, 2026 4:15","April 16, 2026 8:15",As Soon As Possible,NA,NA,NA,4/30/26 2:05,1h,1h,0h,0,0,0,0,0,1.2.5.2.28.3,500,No,No,No,,,Black,,,,,,,,0,0,0,0d,0d,0d,No,No,No,No,No,No,No,No,No,No,No,0,0,0,0,0,
1951,4341,Yes,Auto Scheduled,Error and Defect Mitigation,2h,Fixed Units,6,0.25d,1950,"September 29, 2026 1:16","September 29, 2026 3:16",9/29/26 1:16,9/29/26 3:16,6/3/26 8:00,6/3/26 10:00,0h,-676.27h,0ed,0,NA,NA,"April 16, 2026 8:15","April 16, 2026 10:15",As Soon As Possible,NA,NA,NA,4/30/26 2:05,2h,2h,0h,0,0,0,0,0,1.2.5.2.28.4,500,No,No,No,,Sam Houff,Black,,,,,,,,0,0,0,0d,0d,0d,No,No,No,No,No,No,No,No,No,No,No,0,0,0,0,0,
1952,4342,Yes,Auto Scheduled,Load,2h,Fixed Units,6,0.25d,1951,"September 29, 2026 3:16","September 30, 2026 8:16",9/29/26 3:16,9/30/26 8:16,6/3/26 10:00,6/3/26 12:00,0h,-676.27h,0ed,0,NA,NA,"April 16, 2026 10:15","April 16, 2026 1:15",As Soon As Possible,NA,NA,NA,4/30/26 2:05,2h,2h,0h,0,0,0,0,0,1.2.5.2.28.5,500,No,No,No,,,Black,,,,,,,,0,0,0,0d,0d,0d,No,No,No,No,No,No,No,No,No,No,No,0,0,0,0,0,
1953,4343,Yes,Auto Scheduled,Post Load Validation,3h,Fixed Units,6,0.38d,1952,"September 30, 2026 8:16","September 30, 2026 11:16",9/30/26 8:16,9/30/26 11:16,6/3/26 1:00,6/3/26 4:00,0h,-676.27h,0ed,0,NA,NA,"April 16, 2026 1:15","April 16, 2026 4:15",As Soon As Possible,NA,NA,NA,4/30/26 2:05,3h,3h,0h,0,0,0,0,0,1.2.5.2.28.6,500,No,No,No,,Sam Houff,Black,,,,,,,,0,0,0,0d,0d,0d,No,No,No,No,No,No,No,No,No,No,No,0,0,0,0,0,
1954,4344,Yes,Auto Scheduled,PTP_CM28_Purchase_Info_Record Subcontracting and Consignment,1.13d,Fixed Duration,5,1.13d,,"September 29, 2026 10:16","September 30, 2026 11:16",9/29/26 10:16,9/30/26 11:16,5/27/26 10:00,6/3/26 4:00,0d,-89.03d,0ed,0,NA,NA,"April 15, 2026 3:15","April 16, 2026 4:15",As Soon As Possible,NA,NA,NA,4/30/26 2:05,9h,9h,0h,0,0,0,0,0,1.2.5.2.29,500,No,Yes,Yes,,,Black,,,,,,,,0,0,0,0d,0d,0d,No,No,No,No,No,No,No,No,No,No,No,0,0,0,0,0,
1955,4345,Yes,Auto Scheduled,"Load File Staged and Posted ""Ready""",30m,Fixed Units,6,0.06d,"1925,1939","September 29, 2026 10:16","September 29, 2026 10:46",9/29/26 10:16,9/29/26 10:46,5/27/26 10:00,5/27/26 10:30,0m,-42736m,0ed,0,NA,NA,"April 15, 2026 3:15","April 15, 2026 3:45",As Soon As Possible,NA,NA,NA,4/30/26 2:05,0.5h,0.5h,0h,0,0,0,0,0,1.2.5.2.29.1,500,No,No,No,,,Black,,,,,,,,0,0,0,0d,0d,0d,No,No,No,No,No,No,No,No,No,No,No,0,0,0,0,0,
1956,4346,Yes,Auto Scheduled,Pre Load Validation,30m,Fixed Units,6,0.06d,1955,"September 29, 2026 10:46","September 29, 2026 11:16",9/29/26 10:46,9/29/26 11:16,5/27/26 10:30,5/27/26 11:00,0m,-42736m,0ed,0,NA,NA,"April 15, 2026 3:45","April 15, 2026 4:15",As Soon As Possible,NA,NA,NA,4/30/26 2:05,0.5h,0.5h,0h,0,0,0,0,0,1.2.5.2.29.2,500,No,No,No,,Sam Houff,Black,,,,,,,,0,0,0,0d,0d,0d,No,No,No,No,No,No,No,No,No,No,No,0,0,0,0,0,
1957,4347,Yes,Auto Scheduled,Simulate Load,1h,Fixed Units,6,0.13d,1956,"September 29, 2026 11:16","September 29, 2026 1:16",9/29/26 11:16,9/29/26 1:16,5/27/26 11:00,5/27/26 12:00,0h,-712.27h,0ed,0,NA,NA,"April 15, 2026 4:15","April 16, 2026 8:15",As Soon As Possible,NA,NA,NA,4/30/26 2:05,1h,1h,0h,0,0,0,0,0,1.2.5.2.29.3,500,No,No,No,,,Black,,,,,,,,0,0,0,0d,0d,0d,No,No,No,No,No,No,No,No,No,No,No,0,0,0,0,0,
1958,4348,Yes,Auto Scheduled,Error and Defect Mitigation,2h,Fixed Units,6,0.25d,1957,"September 29, 2026 1:16","September 29, 2026 3:16",9/29/26 1:16,9/29/26 3:16,6/3/26 8:00,6/3/26 10:00,0h,-676.27h,0ed,0,NA,NA,"April 16, 2026 8:15","April 16, 2026 10:15",As Soon As Possible,NA,NA,NA,4/30/26 2:05,2h,2h,0h,0,0,0,0,0,1.2.5.2.29.4,500,No,No,No,,Sam Houff,Black,,,,,,,,0,0,0,0d,0d,0d,No,No,No,No,No,No,No,No,No,No,No,0,0,0,0,0,
1959,4349,Yes,Auto Scheduled,Load,2h,Fixed Units,6,0.25d,1958,"September 29, 2026 3:16","September 30, 2026 8:16",9/29/26 3:16,9/30/26 8:16,6/3/26 10:00,6/3/26 12:00,0h,-676.27h,0ed,0,NA,NA,"April 16, 2026 10:15","April 16, 2026 1:15",As Soon As Possible,NA,NA,NA,4/30/26 2:05,2h,2h,0h,0,0,0,0,0,1.2.5.2.29.5,500,No,No,No,,,Black,,,,,,,,0,0,0,0d,0d,0d,No,No,No,No,No,No,No,No,No,No,No,0,0,0,0,0,
1960,4350,Yes,Auto Scheduled,Post Load Validation,3h,Fixed Units,6,0.38d,1959,"September 30, 2026 8:16","September 30, 2026 11:16",9/30/26 8:16,9/30/26 11:16,6/3/26 1:00,6/3/26 4:00,0h,-676.27h,0ed,0,NA,NA,"April 16, 2026 1:15","April 16, 2026 4:15",As Soon As Possible,NA,NA,NA,4/30/26 2:05,3h,3h,0h,0,0,0,0,0,1.2.5.2.29.6,500,No,No,No,,Sam Houff,Black,,,,,,,,0,0,0,0d,0d,0d,No,No,No,No,No,No,No,No,No,No,No,0,0,0,0,0,
1961,4351,Yes,Auto Scheduled,PTM_CM31_BOM Conversion,2.48d,Fixed Duration,5,1.13d,,"September 29, 2026 11:16","October 1, 2026 4:09",9/29/26 11:16,10/1/26 4:09,5/28/26 3:53,6/2/26 10:45,0d,-87.55d,0ed,0,NA,NA,"April 15, 2026 4:15","April 17, 2026 8:15",As Soon As Possible,NA,NA,NA,4/30/26 2:05,19h,9h,0h,0,0,0,0,0,1.2.5.2.30,500,No,Yes,Yes,,,Black,,,,,,,,0,0,0,0d,0d,0d,Yes,No,No,No,No,No,No,No,No,No,No,0,0,0,0,0,
1962,4352,Yes,Auto Scheduled,Extract File,1h,Fixed Units,6,0.13d,1941,"September 29, 2026 11:16","September 29, 2026 1:16",9/29/26 11:16,9/29/26 1:16,5/28/26 3:53,5/28/26 4:53,0h,-700.39h,0ed,0,NA,NA,"April 15, 2026 4:15","April 16, 2026 8:15",As Soon As Possible,NA,NA,NA,4/30/26 2:05,1h,1h,0h,0,0,0,0,0,1.2.5.2.30.1,500,No,No,No,,,Black,,,,,,,,0,0,0,0d,0d,0d,No,No,No,No,No,No,No,No,No,No,No,0,0,0,0,0,
1963,4353,Yes,Auto Scheduled,Pre Load Validation,0.5h,Fixed Units,6,0.25d,1962,"September 29, 2026 1:16","September 29, 2026 1:46",9/29/26 1:16,9/29/26 1:46,5/28/26 4:53,5/29/26 8:23,0h,-700.39h,0ed,0,NA,NA,"April 16, 2026 8:15","April 16, 2026 10:15",As Soon As Possible,NA,NA,NA,4/30/26 2:05,0.5h,2h,0h,0,0,0,0,0,1.2.5.2.30.2,500,No,No,No,,"Matt Palastro, Dave Duda",Black,,,,,,,,0,0,0,0d,0d,0d,No,No,No,No,No,No,No,No,No,No,No,0,0,0,0,0,
1964,4354,Yes,Auto Scheduled,Simulate Load,15.5h,Fixed Units,6,0.13d,1963,"September 29, 2026 1:46","October 1, 2026 1:46",9/29/26 1:46,10/1/26 1:46,5/29/26 8:23,6/2/26 8:23,0h,-700.39h,0ed,0,NA,NA,"April 16, 2026 10:15","April 16, 2026 11:15",Finish No Earlier Than,4/17/26 5:00,NA,NA,4/30/26 2:05,15.5h,1h,0h,0,0,0,0,0,1.2.5.2.30.3,500,No,No,No,,,Black,,,,,,,,0,0,0,0d,0d,0d,No,No,No,No,No,No,No,No,No,No,No,0,0,0,0,0,
1965,4355,Yes,Auto Scheduled,Error and Defect Mitigation,0.5h,Fixed Units,6,0.25d,1964,"October 1, 2026 1:46","October 1, 2026 2:16",10/1/26 1:46,10/1/26 2:16,6/2/26 8:23,6/2/26 8:53,0h,-700.39h,0ed,0,NA,NA,"April 16, 2026 11:15","April 16, 2026 2:15",Finish No Earlier Than,4/17/26 5:00,NA,NA,4/30/26 2:05,0.5h,2h,0h,0,0,0,0,0,1.2.5.2.30.4,500,No,No,No,,"Matt Palastro, Dave Duda",Black,,,,,,,,0,0,0,0d,0d,0d,No,No,No,No,No,No,No,No,No,No,No,0,0,0,0,0,
1966,4356,Yes,Auto Scheduled,Load,1h,Fixed Units,6,0.13d,1965,"October 1, 2026 2:16","October 1, 2026 3:31",10/1/26 2:16,10/1/26 3:31,6/2/26 8:53,6/2/26 10:08,0h,-700.39h,0ed,0,NA,NA,"April 16, 2026 2:15","April 16, 2026 3:15",As Soon As Possible,NA,NA,NA,4/30/26 2:05,1h,1h,0h,0,0,0,0,0,4/1,500,No,No,No,,,Black,,,,,,,,0,0,0,0d,0d,0d,No,No,No,No,No,No,No,No,No,No,No,0,0,0,0,0,
1967,4357,Yes,Auto Scheduled,Post Load Validation,0.5h,Fixed Units,6,0.25d,1966,"October 1, 2026 3:31","October 1, 2026 4:09",10/1/26 3:31,10/1/26 4:09,6/2/26 10:08,6/2/26 10:45,0h,-700.39h,0ed,0,NA,NA,"April 16, 2026 3:15","April 17, 2026 8:15",Finish No Earlier Than,4/16/26 5:00,NA,NA,4/30/26 2:05,0.5h,2h,0h,0,0,0,0,0,1.2.5.2.30.6,500,No,No,No,,"Matt Palastro, Dave Duda",Black,,,,,,,,0,0,0,0d,0d,0d,No,No,No,No,No,No,No,No,No,No,No,0,0,0,0,0,
1968,4358,Yes,Auto Scheduled,PTM_CM40_Work Center Conversion,3.08d,Fixed Duration,5,2d,,"September 29, 2026 1:16","October 2, 2026 1:54",9/29/26 1:16,10/2/26 1:54,5/29/26 1:30,6/3/26 8:30,0d,-87.55d,0ed,0,NA,NA,"April 16, 2026 8:15","April 20, 2026 8:15",As Soon As Possible,NA,NA,NA,4/30/26 2:05,6.75h,9h,0h,0,0,0,0,0,1.2.5.2.31,500,No,Yes,Yes,,,Black,,,,,,,,0,0,0,0d,0d,0d,No,No,No,No,No,No,No,No,No,No,No,0,0,0,0,0,
1969,4359,Yes,Auto Scheduled,Extract File,1h,Fixed Units,6,0.13d,1962,"September 29, 2026 1:16","September 29, 2026 2:16",9/29/26 1:16,9/29/26 2:16,5/29/26 1:30,5/29/26 2:30,0h,-695.77h,0ed,0,NA,NA,"April 16, 2026 8:15","April 16, 2026 9:15",As Soon As Possible,NA,NA,NA,4/30/26 2:05,1h,1h,0h,0,0,0,0,0,1.2.5.2.31.1,500,No,No,No,,,Black,,,,,,,,0,0,0,0d,0d,0d,No,No,No,No,No,No,No,No,No,No,No,0,0,0,0,0,
1970,4360,Yes,Auto Scheduled,Pre Load Validation,2h,Fixed Units,6,0.25d,1967,"October 1, 2026 4:09","October 2, 2026 9:09",10/1/26 4:09,10/2/26 9:09,6/2/26 10:45,6/2/26 1:45,0h,-700.39h,0ed,0,NA,NA,"April 17, 2026 8:15","April 17, 2026 10:15",As Soon As Possible,NA,NA,NA,4/30/26 2:05,2h,2h,0h,0,0,0,0,0,1.2.5.2.31.2,500,No,No,No,,"Matt Palastro, Dave Duda",Black,,,,,,,,0,0,0,0d,0d,0d,No,No,No,No,No,No,No,No,No,No,No,0,0,0,0,0,
1971,4361,Yes,Auto Scheduled,Simulate Load,0.25h,Fixed Units,6,0.13d,1970,"October 2, 2026 9:09","October 2, 2026 9:24",10/2/26 9:09,10/2/26 9:24,6/2/26 1:45,6/2/26 2:00,0h,-700.39h,0ed,0,NA,NA,"April 17, 2026 10:15","April 17, 2026 11:15",As Soon As Possible,NA,NA,NA,4/30/26 2:05,0.25h,1h,0h,0,0,0,0,0,1.2.5.2.31.3,500,No,No,No,,,Black,,,,,,,,0,0,0,0d,0d,0d,No,No,No,No,No,No,No,No,No,No,No,0,0,0,0,0,
1972,4362,Yes,Auto Scheduled,Error and Defect Mitigation,0.5h,Fixed Units,6,0.25d,1971,"October 2, 2026 9:24","October 2, 2026 9:54",10/2/26 9:24,10/2/26 9:54,6/2/26 2:00,6/2/26 2:30,0h,-700.39h,0ed,0,NA,NA,"April 17, 2026 11:15","April 17, 2026 2:15",As Soon As Possible,NA,NA,NA,4/30/26 2:05,0.5h,2h,0h,0,0,0,0,0,1.2.5.2.31.4,500,No,No,No,,"Matt Palastro, Dave Duda",Black,,,,,,,,0,0,0,0d,0d,0d,No,No,No,No,No,No,No,No,No,No,No,0,0,0,0,0,
1973,4363,Yes,Auto Scheduled,Load,1h,Fixed Units,6,0.13d,1972,"October 2, 2026 9:54","October 2, 2026 10:54",10/2/26 9:54,10/2/26 10:54,6/2/26 2:30,6/2/26 3:30,0h,-700.39h,0ed,0,NA,NA,"April 17, 2026 2:15","April 17, 2026 3:15",As Soon As Possible,NA,NA,NA,4/30/26 2:05,1h,1h,0h,0,0,0,0,0,1.2.5.2.31.5,500,No,No,No,,,Black,,,,,,,,0,0,0,0d,0d,0d,No,No,No,No,No,No,No,No,No,No,No,0,0,0,0,0,
1974,4364,Yes,Auto Scheduled,Post Load Validation,2h,Fixed Units,6,0.25d,1973,"October 2, 2026 10:54","October 2, 2026 1:54",10/2/26 10:54,10/2/26 1:54,6/2/26 3:30,6/3/26 8:30,0h,-700.39h,0ed,0,NA,NA,"April 17, 2026 3:15","April 20, 2026 8:15",As Soon As Possible,NA,NA,NA,4/30/26 2:05,2h,2h,0h,0,0,0,0,0,1.2.5.2.31.6,500,No,No,No,,"Matt Palastro, Dave Duda",Black,,,,,,,,0,0,0,0d,0d,0d,No,No,No,No,No,No,No,No,No,No,No,0,0,0,0,0,
1975,4365,Yes,Auto Scheduled,PTM_CM38_Routing Conversion,4.27d,Fixed Duration,5,2.88d,,"September 29, 2026 2:16","October 5, 2026 4:24",9/29/26 2:16,10/5/26 4:24,5/29/26 2:30,6/3/26 4:00,0d,-88.05d,0ed,0,NA,NA,"April 16, 2026 9:15","April 21, 2026 8:15",As Soon As Possible,NA,NA,NA,4/30/26 2:05,11h,9h,0h,0,0,0,0,0,1.2.5.2.32,500,No,Yes,Yes,,,Black,,,,,,,,0,0,0,0d,0d,0d,Yes,No,No,No,No,No,No,No,No,No,No,0,0,0,0,0,
1976,4366,Yes,Auto Scheduled,Extract File,1h,Fixed Units,6,0.13d,1969,"September 29, 2026 2:16","September 29, 2026 3:16",9/29/26 2:16,9/29/26 3:16,5/29/26 2:30,5/29/26 3:30,0h,-695.77h,0ed,0,NA,NA,"April 16, 2026 9:15","April 16, 2026 10:15",As Soon As Possible,NA,NA,NA,4/30/26 2:05,1h,1h,0h,0,0,0,0,0,1.2.5.2.32.1,500,No,No,No,,,Black,,,,,,,,0,0,0,0d,0d,0d,No,No,No,No,No,No,No,No,No,No,No,0,0,0,0,0,
1977,4367,Yes,Auto Scheduled,Pre Load Validation,2h,Fixed Units,6,0.25d,1974,"October 2, 2026 1:54","October 5, 2026 9:24",10/2/26 1:54,10/5/26 9:24,6/3/26 8:30,6/3/26 2:00,0h,-700.39h,0ed,0,NA,NA,"April 20, 2026 8:15","April 20, 2026 10:15",As Soon As Possible,NA,NA,NA,4/30/26 2:05,2h,2h,0h,0,0,0,0,0,1.2.5.2.32.2,500,No,No,No,,"Matt Palastro, Dave Duda",Black,,,,,,,,0,0,0,0d,0d,0d,No,No,No,No,No,No,No,No,No,No,No,0,0,0,0,0,
1978,4368,Yes,Auto Scheduled,Simulate Load,2h,Fixed Units,6,0.13d,1977,"October 5, 2026 9:24","October 5, 2026 11:24",10/5/26 9:24,10/5/26 11:24,6/3/26 2:00,6/3/26 4:00,0h,-700.39h,0ed,0,NA,NA,"April 20, 2026 10:15","April 20, 2026 11:15",Finish No Earlier Than,4/17/26 5:00,NA,NA,4/30/26 2:05,2h,1h,0h,0,0,0,0,0,1.2.5.2.32.3,500,No,No,No,,,Black,,,,,,,,0,0,0,0d,0d,0d,No,No,No,No,No,No,No,No,No,No,No,0,0,0,0,0,
1979,4369,Yes,Auto Scheduled,Error and Defect Mitigation,3h,Fixed Units,6,0.25d,1978SS,"October 5, 2026 9:24","October 5, 2026 1:24",10/5/26 9:24,10/5/26 1:24,6/3/26 9:00,6/3/26 12:00,0h,-704.39h,0ed,0,NA,NA,"April 20, 2026 11:15","April 20, 2026 2:15",Start No Earlier Than,4/17/26 8:00,NA,NA,4/30/26 2:05,3h,2h,0h,0,0,0,0,0,1.2.5.2.32.4,500,No,No,No,,"Matt Palastro, Dave Duda",Black,,,,,,,,0,0,0,0d,0d,0d,No,No,No,No,No,No,No,No,No,No,No,0,0,0,0,0,
1980,4370,Yes,Auto Scheduled,Load,1h,Fixed Units,6,0.13d,1979,"October 5, 2026 1:24","October 5, 2026 2:24",10/5/26 1:24,10/5/26 2:24,6/3/26 1:00,6/3/26 2:00,0h,-704.39h,0ed,0,NA,NA,"April 20, 2026 2:15","April 20, 2026 3:15",Start No Earlier Than,4/20/26 8:00,NA,NA,4/30/26 2:05,1h,1h,0h,0,0,0,0,0,1.2.5.2.32.5,500,No,No,No,,,Black,,,,,,,,0,0,0,0d,0d,0d,No,No,No,No,No,No,No,No,No,No,No,0,0,0,0,0,
1981,4371,Yes,Auto Scheduled,Post Load Validation,2h,Fixed Units,6,0.25d,1980,"October 5, 2026 2:24","October 5, 2026 4:24",10/5/26 2:24,10/5/26 4:24,6/3/26 2:00,6/3/26 4:00,0h,-704.39h,0ed,0,NA,NA,"April 20, 2026 3:15","April 21, 2026 8:15",Start No Earlier Than,4/20/26 8:00,NA,NA,4/30/26 2:05,2h,2h,0h,0,0,0,0,0,1.2.5.2.32.6,500,No,No,No,,"Matt Palastro, Dave Duda",Black,,,,,,,,0,0,0,0d,0d,0d,No,No,No,No,No,No,No,No,No,No,No,0,0,0,0,0,
1982,4372,Yes,Auto Scheduled,PTM_CM36_Production Version Conversion,1.13d,Fixed Duration,5,1.13d,,"September 29, 2026 3:16","September 30, 2026 4:16",9/29/26 3:16,9/30/26 4:16,5/29/26 3:30,6/1/26 4:30,0d,-86.97d,0ed,0,NA,NA,"April 16, 2026 10:15","April 17, 2026 11:15",As Soon As Possible,NA,NA,NA,4/30/26 2:05,9h,9h,0h,0,0,0,0,0,1.2.5.2.33,500,No,Yes,Yes,,,Black,,,,,,,,0,0,0,0d,0d,0d,Yes,No,No,No,No,No,No,No,No,No,No,0,0,0,0,0,
1983,4373,Yes,Auto Scheduled,"Load File Staged and Posted ""Ready""",30m,Fixed Units,6,0.06d,1976,"September 29, 2026 3:16","September 29, 2026 3:46",9/29/26 3:16,9/29/26 3:46,5/29/26 3:30,5/29/26 4:00,0m,-41746m,0ed,0,NA,NA,"April 16, 2026 10:15","April 16, 2026 10:45",Start No Earlier Than,4/20/26 8:00,NA,NA,4/30/26 2:05,0.5h,0.5h,0h,0,0,0,0,0,1.2.5.2.33.1,500,No,No,No,,,Black,,,,,,,,0,0,0,0d,0d,0d,No,No,No,No,No,No,No,No,No,No,No,0,0,0,0,0,
1984,4374,Yes,Auto Scheduled,Pre Load Validation,30m,Fixed Units,6,0.06d,1983,"September 29, 2026 3:46","September 29, 2026 4:16",9/29/26 3:46,9/29/26 4:16,5/29/26 4:00,5/29/26 4:30,0m,-41746m,0ed,0,NA,NA,"April 16, 2026 10:45","April 16, 2026 11:15",As Soon As Possible,NA,NA,NA,4/30/26 2:05,0.5h,0.5h,0h,0,0,0,0,0,1.2.5.2.33.2,500,No,No,No,,"Matt Palastro, Dave Duda",Black,,,,,,,,0,0,0,0d,0d,0d,No,No,No,No,No,No,No,No,No,No,No,0,0,0,0,0,
1985,4375,Yes,Auto Scheduled,Simulate Load,1h,Fixed Units,6,0.13d,1984,"September 29, 2026 4:16","September 30, 2026 8:16",9/29/26 4:16,9/30/26 8:16,5/29/26 4:30,6/1/26 8:30,0h,-695.77h,0ed,0,NA,NA,"April 16, 2026 11:15","April 16, 2026 1:15",As Soon As Possible,NA,NA,NA,4/30/26 2:05,1h,1h,0h,0,0,0,0,0,1.2.5.2.33.3,500,No,No,No,,,Black,,,,,,,,0,0,0,0d,0d,0d,No,No,No,No,No,No,No,No,No,No,No,0,0,0,0,0,
1986,4376,Yes,Auto Scheduled,Error and Defect Mitigation,2h,Fixed Units,6,0.25d,1985,"September 30, 2026 8:16","September 30, 2026 10:16",9/30/26 8:16,9/30/26 10:16,6/1/26 8:30,6/1/26 10:30,0h,-695.77h,0ed,0,NA,NA,"April 16, 2026 1:15","April 16, 2026 3:15",As Soon As Possible,NA,NA,NA,4/30/26 2:05,2h,2h,0h,0,0,0,0,0,1.2.5.2.33.4,500,No,No,No,,"Matt Palastro, Dave Duda",Black,,,,,,,,0,0,0,0d,0d,0d,No,No,No,No,No,No,No,No,No,No,No,0,0,0,0,0,
1987,4377,Yes,Auto Scheduled,Load,2h,Fixed Units,6,0.25d,1986,"September 30, 2026 10:16","September 30, 2026 1:16",9/30/26 10:16,9/30/26 1:16,6/1/26 10:30,6/1/26 1:30,0h,-695.77h,0ed,0,NA,NA,"April 16, 2026 3:15","April 17, 2026 8:15",As Soon As Possible,NA,NA,NA,4/30/26 2:05,2h,2h,0h,0,0,0,0,0,1.2.5.2.33.5,500,No,No,No,,,Black,,,,,,,,0,0,0,0d,0d,0d,No,No,No,No,No,No,No,No,No,No,No,0,0,0,0,0,
1988,4378,Yes,Auto Scheduled,Post Load Validation,3h,Fixed Units,6,0.38d,1987,"September 30, 2026 1:16","September 30, 2026 4:16",9/30/26 1:16,9/30/26 4:16,6/1/26 1:30,6/1/26 4:30,0h,-695.77h,0ed,0,NA,NA,"April 17, 2026 8:15","April 17, 2026 11:15",Finish No Earlier Than,4/17/26 5:00,NA,NA,4/30/26 2:05,3h,3h,0h,0,0,0,0,0,1.2.5.2.33.6,500,No,No,No,,"Matt Palastro, Dave Duda",Black,,,,,,,,0,0,0,0d,0d,0d,No,No,No,No,No,No,No,No,No,No,No,0,0,0,0,0,
1989,4379,Yes,Auto Scheduled,PTM_CM35_Inspection Plan,1.13d,Fixed Duration,5,1.13d,,"September 30, 2026 4:16","October 2, 2026 8:16",9/30/26 4:16,10/2/26 8:16,6/1/26 4:30,6/3/26 4:00,0d,-86.97d,0ed,0,NA,NA,"April 17, 2026 11:15","April 20, 2026 1:15",As Soon As Possible,NA,NA,NA,4/30/26 2:05,9h,9h,0h,0,0,0,0,0,1.2.5.2.34,500,No,Yes,Yes,,,Black,,,,,,,,0,0,0,0d,0d,0d,No,No,No,No,No,No,No,No,No,No,No,0,0,0,0,0,
1990,4380,Yes,Auto Scheduled,"Load File Staged and Posted ""Ready""",30m,Fixed Units,6,0.06d,1988,"September 30, 2026 4:16","September 30, 2026 4:46",9/30/26 4:16,9/30/26 4:46,6/1/26 4:30,6/1/26 5:00,0m,-41746m,0ed,0,NA,NA,"April 17, 2026 11:15","April 17, 2026 11:45",As Soon As Possible,NA,NA,NA,4/30/26 2:05,0.5h,0.5h,0h,0,0,0,0,0,1.2.5.2.34.1,500,No,No,No,,,Black,,,,,,,,0,0,0,0d,0d,0d,No,No,No,No,No,No,No,No,No,No,No,0,0,0,0,0,
1991,4381,Yes,Auto Scheduled,Pre Load Validation,30m,Fixed Units,6,0.06d,1990,"September 30, 2026 4:46","October 1, 2026 8:16",9/30/26 4:46,10/1/26 8:16,6/2/26 3:30,6/2/26 4:00,0m,-41356m,0ed,0,NA,NA,"April 17, 2026 11:45","April 17, 2026 1:15",As Soon As Possible,NA,NA,NA,4/30/26 2:05,0.5h,0.5h,0h,0,0,0,0,0,1.2.5.2.34.2,500,No,No,No,,"Matt Palastro, Dave Duda",Black,,,,,,,,0,0,0,0d,0d,0d,No,No,No,No,No,No,No,No,No,No,No,0,0,0,0,0,
1992,4382,Yes,Auto Scheduled,Simulate Load,1h,Fixed Units,6,0.13d,1991,"October 1, 2026 8:16","October 1, 2026 9:16",10/1/26 8:16,10/1/26 9:16,6/2/26 4:00,6/2/26 5:00,0h,-689.27h,0ed,0,NA,NA,"April 17, 2026 1:15","April 17, 2026 2:15",As Soon As Possible,NA,NA,NA,4/30/26 2:05,1h,1h,0h,0,0,0,0,0,1.2.5.2.34.3,500,No,No,No,,,Black,,,,,,,,0,0,0,0d,0d,0d,No,No,No,No,No,No,No,No,No,No,No,0,0,0,0,0,
1993,4383,Yes,Auto Scheduled,Error and Defect Mitigation,2h,Fixed Units,6,0.25d,1992,"October 1, 2026 9:16","October 1, 2026 11:16",10/1/26 9:16,10/1/26 11:16,6/3/26 8:00,6/3/26 10:00,0h,-689.27h,0ed,0,NA,NA,"April 17, 2026 2:15","April 17, 2026 4:15",As Soon As Possible,NA,NA,NA,4/30/26 2:05,2h,2h,0h,0,0,0,0,0,1.2.5.2.34.4,500,No,No,No,,"Matt Palastro, Dave Duda",Black,,,,,,,,0,0,0,0d,0d,0d,No,No,No,No,No,No,No,No,No,No,No,0,0,0,0,0,
1994,4384,Yes,Auto Scheduled,Load,2h,Fixed Units,6,0.25d,1993,"October 1, 2026 11:16","October 1, 2026 2:16",10/1/26 11:16,10/1/26 2:16,6/3/26 10:00,6/3/26 12:00,0h,-689.27h,0ed,0,NA,NA,"April 17, 2026 4:15","April 20, 2026 9:15",Finish No Earlier Than,4/17/26 5:00,NA,NA,4/30/26 2:05,2h,2h,0h,0,0,0,0,0,1.2.5.2.34.5,500,No,No,No,,,Black,,,,,,,,0,0,0,0d,0d,0d,No,No,No,No,No,No,No,No,No,No,No,0,0,0,0,0,
1995,4385,Yes,Auto Scheduled,Post Load Validation,3h,Fixed Units,6,0.38d,1994,"October 1, 2026 2:16","October 2, 2026 8:16",10/1/26 2:16,10/2/26 8:16,6/3/26 1:00,6/3/26 4:00,0h,-689.27h,0ed,0,NA,NA,"April 20, 2026 9:15","April 20, 2026 1:15",As Soon As Possible,NA,NA,NA,4/30/26 2:05,3h,3h,0h,0,0,0,0,0,1.2.5.2.34.6,500,No,No,No,,"Matt Palastro, Dave Duda",Black,,,,,,,,0,0,0,0d,0d,0d,No,No,No,No,No,No,No,No,No,No,No,0,0,0,0,0,
1996,4386,Yes,Auto Scheduled,PTM_CM48_Equipment_Master_Serial Numbers,1.13d,Fixed Duration,5,1.13d,,"September 30, 2026 4:46","October 2, 2026 8:46",9/30/26 4:46,10/2/26 8:46,6/2/26 8:00,6/3/26 9:00,0d,-86.97d,0ed,0,NA,NA,"April 17, 2026 11:45","April 20, 2026 1:45",As Soon As Possible,NA,NA,NA,4/30/26 2:05,9h,9h,0h,0,0,0,0,0,1.2.5.2.35,500,No,Yes,Yes,,,Black,,,,,,,,0,0,0,0d,0d,0d,No,No,No,No,No,No,No,No,No,No,No,0,0,0,0,0,
1997,4387,Yes,Auto Scheduled,"Load File Staged and Posted ""Ready""",30m,Fixed Units,6,0.06d,1990,"September 30, 2026 4:46","October 1, 2026 8:16",9/30/26 4:46,10/1/26 8:16,6/2/26 8:00,6/2/26 8:30,0m,-41746m,0ed,0,NA,NA,"April 17, 2026 11:45","April 17, 2026 1:15",As Soon As Possible,NA,NA,NA,4/30/26 2:05,0.5h,0.5h,0h,0,0,0,0,0,1.2.5.2.35.1,500,No,No,No,,,Black,,,,,,,,0,0,0,0d,0d,0d,No,No,No,No,No,No,No,No,No,No,No,0,0,0,0,0,
1998,4388,Yes,Auto Scheduled,Pre Load Validation,30m,Fixed Units,6,0.06d,1997,"October 1, 2026 8:16","October 1, 2026 8:46",10/1/26 8:16,10/1/26 8:46,6/2/26 8:30,6/2/26 9:00,0m,-41746m,0ed,0,NA,NA,"April 17, 2026 1:15","April 17, 2026 1:45",As Soon As Possible,NA,NA,NA,4/30/26 2:05,0.5h,0.5h,0h,0,0,0,0,0,1.2.5.2.35.2,500,No,No,No,,"Matt Palastro, Dave Duda",Black,,,,,,,,0,0,0,0d,0d,0d,No,No,No,No,No,No,No,No,No,No,No,0,0,0,0,0,
1999,4389,Yes,Auto Scheduled,Simulate Load,1h,Fixed Units,6,0.13d,1998,"October 1, 2026 8:46","October 1, 2026 9:46",10/1/26 8:46,10/1/26 9:46,6/2/26 9:00,6/2/26 10:00,0h,-695.77h,0ed,0,NA,NA,"April 17, 2026 1:45","April 17, 2026 2:45",As Soon As Possible,NA,NA,NA,4/30/26 2:05,1h,1h,0h,0,0,0,0,0,1.2.5.2.35.3,500,No,No,No,,,Black,,,,,,,,0,0,0,0d,0d,0d,No,No,No,No,No,No,No,No,No,No,No,0,0,0,0,0,
2000,4390,Yes,Auto Scheduled,Error and Defect Mitigation,2h,Fixed Units,6,0.25d,1999,"October 1, 2026 9:46","October 1, 2026 11:46",10/1/26 9:46,10/1/26 11:46,6/2/26 10:00,6/2/26 12:00,0h,-695.77h,0ed,0,NA,NA,"April 17, 2026 2:45","April 17, 2026 4:45",As Soon As Possible,NA,NA,NA,4/30/26 2:05,2h,2h,0h,0,0,0,0,0,1.2.5.2.35.4,500,No,No,No,,"Matt Palastro, Dave Duda",Black,,,,,,,,0,0,0,0d,0d,0d,No,No,No,No,No,No,No,No,No,No,No,0,0,0,0,0,
2001,4391,Yes,Auto Scheduled,Load,2h,Fixed Units,6,0.25d,2000,"October 1, 2026 11:46","October 1, 2026 2:46",10/1/26 11:46,10/1/26 2:46,6/2/26 1:00,6/2/26 3:00,0h,-695.77h,0ed,0,NA,NA,"April 17, 2026 4:45","April 20, 2026 9:45",As Soon As Possible,NA,NA,NA,4/30/26 2:05,2h,2h,0h,0,0,0,0,0,1.2.5.2.35.5,500,No,No,No,,,Black,,,,,,,,0,0,0,0d,0d,0d,No,No,No,No,No,No,No,No,No,No,No,0,0,0,0,0,
2002,4392,Yes,Auto Scheduled,Post Load Validation,3h,Fixed Units,6,0.38d,2001,"October 1, 2026 2:46","October 2, 2026 8:46",10/1/26 2:46,10/2/26 8:46,6/2/26 3:00,6/3/26 9:00,0h,-695.77h,0ed,0,NA,NA,"April 20, 2026 9:45","April 20, 2026 1:45",As Soon As Possible,NA,NA,NA,4/30/26 2:05,3h,3h,0h,0,0,0,0,0,1.2.5.2.35.6,500,No,No,No,,"Matt Palastro, Dave Duda",Black,,,,,,,,0,0,0,0d,0d,0d,No,No,No,No,No,No,No,No,No,No,No,0,0,0,0,0,
2003,4393,Yes,Auto Scheduled,PTM_CM48_Equipment_Master_Service,6.78d,Fixed Duration,5,1.13d,,"September 24, 2026 8:31","October 2, 2026 3:46",9/24/26 8:31,10/2/26 3:46,6/3/26 9:00,6/3/26 4:00,0d,-86.97d,0ed,0,NA,NA,"April 20, 2026 1:45","April 21, 2026 2:45",As Soon As Possible,NA,NA,NA,4/30/26 2:05,9h,9h,0h,0,0,0,0,0,1.2.5.2.36,500,No,Yes,Yes,,,Black,,,,,,,,0,0,0,0d,0d,0d,No,No,No,No,No,No,No,No,No,No,No,0,0,0,0,0,
2004,4394,Yes,Auto Scheduled,"Load File Staged and Posted ""Ready""",30m,Fixed Units,6,0.06d,2002,"October 2, 2026 8:46","October 2, 2026 9:16",10/2/26 8:46,10/2/26 9:16,6/3/26 9:00,6/3/26 9:30,0m,-41746m,0ed,0,NA,NA,"April 20, 2026 1:45","April 20, 2026 2:15",As Soon As Possible,NA,NA,NA,4/30/26 2:05,0.5h,0.5h,0h,0,0,0,0,0,1.2.5.2.36.1,500,No,No,No,,,Black,,,,,,,,0,0,0,0d,0d,0d,No,No,No,No,No,No,No,No,No,No,No,0,0,0,0,0,
2005,4395,Yes,Auto Scheduled,Pre Load Validation,30m,Fixed Units,6,0.06d,2004,"October 2, 2026 9:16","October 2, 2026 9:46",10/2/26 9:16,10/2/26 9:46,6/3/26 9:30,6/3/26 10:00,0m,-41746m,0ed,0,NA,NA,"April 20, 2026 2:15","April 20, 2026 2:45",As Soon As Possible,NA,NA,NA,4/30/26 2:05,0.5h,0.5h,0h,0,0,0,0,0,1.2.5.2.36.2,500,No,No,No,,"Matt Palastro, Dave Duda",Black,,,,,,,,0,0,0,0d,0d,0d,No,No,No,No,No,No,No,No,No,No,No,0,0,0,0,0,
2006,4396,Yes,Auto Scheduled,Simulate Load,1h,Fixed Units,6,0.13d,2005,"October 2, 2026 9:46","October 2, 2026 10:46",10/2/26 9:46,10/2/26 10:46,6/3/26 10:00,6/3/26 11:00,0h,-695.77h,0ed,0,NA,NA,"April 20, 2026 2:45","April 20, 2026 3:45",As Soon As Possible,NA,NA,NA,4/30/26 2:05,1h,1h,0h,0,0,0,0,0,1.2.5.2.36.3,500,No,No,No,,,Black,,,,,,,,0,0,0,0d,0d,0d,No,No,No,No,No,No,No,No,No,No,No,0,0,0,0,0,
2007,4397,Yes,Auto Scheduled,Error and Defect Mitigation,2h,Fixed Units,6,0.25d,2006,"October 2, 2026 10:46","October 2, 2026 1:46",10/2/26 10:46,10/2/26 1:46,6/3/26 11:00,6/3/26 2:00,0h,-695.77h,0ed,0,NA,NA,"April 20, 2026 3:45","April 21, 2026 8:45",As Soon As Possible,NA,NA,NA,4/30/26 2:05,2h,2h,0h,0,0,0,0,0,1.2.5.2.36.4,500,No,No,No,,"Matt Palastro, Dave Duda",Black,,,,,,,,0,0,0,0d,0d,0d,No,No,No,No,No,No,No,No,No,No,No,0,0,0,0,0,
2008,4398,Yes,Auto Scheduled,Load,2h,Fixed Units,6,0.25d,2007,"October 2, 2026 1:46","October 2, 2026 3:46",10/2/26 1:46,10/2/26 3:46,6/3/26 2:00,6/3/26 4:00,0h,-695.77h,0ed,0,NA,NA,"April 21, 2026 8:45","April 21, 2026 10:45",Finish No Earlier Than,4/21/26 5:00,NA,NA,4/30/26 2:05,2h,2h,0h,0,0,0,0,0,1.2.5.2.36.5,500,No,No,No,,,Black,,,,,,,,0,0,0,0d,0d,0d,No,No,No,No,No,No,No,No,No,No,No,0,0,0,0,0,
2009,4399,Yes,Auto Scheduled,Post Load Validation,3h,Fixed Units,6,0.38d,,"September 24, 2026 8:31","September 24, 2026 11:31",9/24/26 8:31,9/24/26 11:31,6/3/26 1:00,6/3/26 4:00,0h,-644.52h,0ed,0,NA,NA,"April 21, 2026 10:45","April 21, 2026 2:45",Start No Earlier Than,4/21/26 8:00,NA,NA,4/30/26 2:05,3h,3h,0h,0,0,0,0,0,1.2.5.2.36.6,500,No,No,No,,"Matt Palastro, Dave Duda",Black,,,,,,,,0,0,0,0d,0d,0d,No,No,No,No,No,No,No,No,No,No,No,0,0,0,0,0,
2010,4400,Yes,Auto Scheduled,VC_Object Dependencies,0.63d,Fixed Duration,5,0.63d,,"September 24, 2026 8:31","September 24, 2026 2:31",9/24/26 8:31,9/24/26 2:31,6/1/26 11:00,6/1/26 5:00,0d,-82.69d,0ed,0,NA,NA,"April 6, 2026 8:15","April 6, 2026 2:15",As Soon As Possible,NA,NA,NA,4/30/26 2:05,5h,5h,0h,0,0,0,0,0,1.2.5.2.37,500,No,Yes,Yes,,,Black,,,,,,,,0,0,0,0d,0d,0d,No,No,No,No,No,No,No,No,No,No,No,0,0,0,0,0,
2011,4401,Yes,Auto Scheduled,Run ALE Transaction to QS5 from DS4 130,2h,Fixed Units,6,0.25d,1771,"September 24, 2026 8:31","September 24, 2026 10:31",9/24/26 8:31,9/24/26 10:31,6/1/26 11:00,6/1/26 2:00,0h,-661.52h,0ed,0,NA,NA,"April 6, 2026 8:15","April 6, 2026 10:15",As Soon As Possible,NA,NA,NA,4/30/26 2:05,2h,2h,0h,0,0,0,0,0,1.2.5.2.37.1,500,No,No,No,,,Black,,,,,,,,0,0,0,0d,0d,0d,No,No,No,No,No,No,No,No,No,No,No,0,0,0,0,0,
2012,4402,Yes,Auto Scheduled,Post Load Validation,3h,Fixed Units,6,0.38d,2011,"September 24, 2026 10:31","September 24, 2026 2:31",9/24/26 10:31,9/24/26 2:31,6/1/26 2:00,6/1/26 5:00,0h,-661.52h,0ed,0,NA,NA,"April 6, 2026 10:15","April 6, 2026 2:15",As Soon As Possible,NA,NA,NA,4/30/26 2:05,3h,3h,0h,0,0,0,0,0,1.2.5.2.37.2,500,No,No,No,,"Matt Palastro, Dave Duda",Black,,,,,,,,0,0,0,0d,0d,0d,No,No,No,No,No,No,No,No,No,No,No,0,0,0,0,0,
2013,4403,Yes,Auto Scheduled,VC_Characteristics,0.63d,Fixed Duration,5,0.63d,,"September 24, 2026 2:31","September 25, 2026 10:31",9/24/26 2:31,9/25/26 10:31,6/2/26 8:00,6/2/26 2:00,0d,-82.69d,0ed,0,NA,NA,"April 6, 2026 2:15","April 7, 2026 10:15",As Soon As Possible,NA,NA,NA,4/30/26 2:05,5h,5h,0h,0,0,0,0,0,1.2.5.2.38,500,No,Yes,Yes,,,Black,,,,,,,,0,0,0,0d,0d,0d,No,No,No,No,No,No,No,No,No,No,No,0,0,0,0,0,
2014,4404,Yes,Auto Scheduled,Run ALE Transaction to QS5 from DS4 130,2h,Fixed Units,6,0.25d,2012,"September 24, 2026 2:31","September 24, 2026 4:31",9/24/26 2:31,9/24/26 4:31,6/2/26 8:00,6/2/26 10:00,0h,-661.52h,0ed,0,NA,NA,"April 6, 2026 2:15","April 6, 2026 4:15",As Soon As Possible,NA,NA,NA,4/30/26 2:05,2h,2h,0h,0,0,0,0,0,1.2.5.2.38.1,500,No,No,No,,,Black,,,,,,,,0,0,0,0d,0d,0d,No,No,No,No,No,No,No,No,No,No,No,0,0,0,0,0,
2015,4405,Yes,Auto Scheduled,Post Load Validation,3h,Fixed Units,6,0.38d,2014,"September 24, 2026 4:31","September 25, 2026 10:31",9/24/26 4:31,9/25/26 10:31,6/2/26 10:00,6/2/26 2:00,0h,-661.52h,0ed,0,NA,NA,"April 6, 2026 4:15","April 7, 2026 10:15",As Soon As Possible,NA,NA,NA,4/30/26 2:05,3h,3h,0h,0,0,0,0,0,1.2.5.2.38.2,500,No,No,No,,"Matt Palastro, Dave Duda",Black,,,,,,,,0,0,0,0d,0d,0d,No,No,No,No,No,No,No,No,No,No,No,0,0,0,0,0,
2016,4406,Yes,Auto Scheduled,VC_Classes,0.63d,Fixed Duration,5,0.63d,,"September 25, 2026 10:31","September 25, 2026 4:31",9/25/26 10:31,9/25/26 4:31,6/2/26 2:00,6/3/26 10:00,0d,-82.69d,0ed,0,NA,NA,"April 7, 2026 10:15","April 7, 2026 4:15",As Soon As Possible,NA,NA,NA,4/30/26 2:05,5h,5h,0h,0,0,0,0,0,1.2.5.2.39,500,No,Yes,Yes,,,Black,,,,,,,,0,0,0,0d,0d,0d,No,No,No,No,No,No,No,No,No,No,No,0,0,0,0,0,
2017,4407,Yes,Auto Scheduled,Run ALE Transaction to QS5 from DS4 130,2h,Fixed Units,6,0.25d,2015,"September 25, 2026 10:31","September 25, 2026 1:31",9/25/26 10:31,9/25/26 1:31,6/2/26 2:00,6/2/26 4:00,0h,-661.52h,0ed,0,NA,NA,"April 7, 2026 10:15","April 7, 2026 1:15",As Soon As Possible,NA,NA,NA,4/30/26 2:05,2h,2h,0h,0,0,0,0,0,1.2.5.2.39.1,500,No,No,No,,,Black,,,,,,,,0,0,0,0d,0d,0d,No,No,No,No,No,No,No,No,No,No,No,0,0,0,0,0,
2018,4408,Yes,Auto Scheduled,Post Load Validation,3h,Fixed Units,6,0.38d,2017,"September 25, 2026 1:31","September 25, 2026 4:31",9/25/26 1:31,9/25/26 4:31,6/2/26 4:00,6/3/26 10:00,0h,-661.52h,0ed,0,NA,NA,"April 7, 2026 1:15","April 7, 2026 4:15",As Soon As Possible,NA,NA,NA,4/30/26 2:05,3h,3h,0h,0,0,0,0,0,1.2.5.2.39.2,500,No,No,No,,"Matt Palastro, Dave Duda",Black,,,,,,,,0,0,0,0d,0d,0d,No,No,No,No,No,No,No,No,No,No,No,0,0,0,0,0,
2019,4409,Yes,Auto Scheduled,VC_Classification (Class Type 200),0.63d,Fixed Duration,5,0.63d,,"September 29, 2026 10:16","September 29, 2026 4:16",9/29/26 10:16,9/29/26 4:16,6/3/26 10:00,6/3/26 4:00,0d,-84.03d,0ed,0,NA,NA,"April 15, 2026 3:15","April 16, 2026 11:15",As Soon As Possible,NA,NA,NA,4/30/26 2:05,5h,5h,0h,0,0,0,0,0,1.2.5.2.40,500,No,Yes,Yes,,,Black,,,,,,,,0,0,0,0d,0d,0d,No,No,No,No,No,No,No,No,No,No,No,0,0,0,0,0,
2020,4410,Yes,Auto Scheduled,Run ALE Transaction to QS5 from DS4 130,2h,Fixed Units,6,0.25d,1939,"September 29, 2026 10:16","September 29, 2026 1:16",9/29/26 10:16,9/29/26 1:16,6/3/26 10:00,6/3/26 12:00,0h,-672.27h,0ed,0,NA,NA,"April 15, 2026 3:15","April 16, 2026 8:15",As Soon As Possible,NA,NA,NA,4/30/26 2:05,2h,2h,0h,0,0,0,0,0,1.2.5.2.40.1,500,No,No,No,,,Black,,,,,,,,0,0,0,0d,0d,0d,No,No,No,No,No,No,No,No,No,No,No,0,0,0,0,0,
2021,4411,Yes,Auto Scheduled,Post Load Validation,3h,Fixed Units,6,0.38d,2020,"September 29, 2026 1:16","September 29, 2026 4:16",9/29/26 1:16,9/29/26 4:16,6/3/26 1:00,6/3/26 4:00,0h,-672.27h,0ed,0,NA,NA,"April 16, 2026 8:15","April 16, 2026 11:15",As Soon As Possible,NA,NA,NA,4/30/26 2:05,3h,3h,0h,0,0,0,0,0,1.2.5.2.40.2,500,No,No,No,,"Matt Palastro, Dave Duda",Black,,,,,,,,0,0,0,0d,0d,0d,No,No,No,No,No,No,No,No,No,No,No,0,0,0,0,0,
2022,4412,Yes,Auto Scheduled,VC_Dependency Nets,0.63d,Fixed Duration,5,0.63d,,"September 29, 2026 10:16","September 29, 2026 4:16",9/29/26 10:16,9/29/26 4:16,6/3/26 10:00,6/3/26 4:00,0d,-84.03d,0ed,0,NA,NA,"April 15, 2026 3:15","April 16, 2026 11:15",As Soon As Possible,NA,NA,NA,4/30/26 2:05,5h,5h,0h,0,0,0,0,0,1.2.5.2.41,500,No,Yes,Yes,,,Black,,,,,,,,0,0,0,0d,0d,0d,No,No,No,No,No,No,No,No,No,No,No,0,0,0,0,0,
2023,4413,Yes,Auto Scheduled,Run ALE Transaction to QS5 from DS4 130,2h,Fixed Units,6,0.25d,"1933,2018","September 29, 2026 10:16","September 29, 2026 1:16",9/29/26 10:16,9/29/26 1:16,6/3/26 10:00,6/3/26 12:00,0h,-672.27h,0ed,0,NA,NA,"April 15, 2026 3:15","April 16, 2026 8:15",As Soon As Possible,NA,NA,NA,4/30/26 2:05,2h,2h,0h,0,0,0,0,0,1.2.5.2.41.1,500,No,No,No,,,Black,,,,,,,,0,0,0,0d,0d,0d,No,No,No,No,No,No,No,No,No,No,No,0,0,0,0,0,
2024,4414,Yes,Auto Scheduled,Post Load Validation,3h,Fixed Units,6,0.38d,2023,"September 29, 2026 1:16","September 29, 2026 4:16",9/29/26 1:16,9/29/26 4:16,6/3/26 1:00,6/3/26 4:00,0h,-672.27h,0ed,0,NA,NA,"April 16, 2026 8:15","April 16, 2026 11:15",As Soon As Possible,NA,NA,NA,4/30/26 2:05,3h,3h,0h,0,0,0,0,0,1.2.5.2.41.2,500,No,No,No,,"Matt Palastro, Dave Duda",Black,,,,,,,,0,0,0,0d,0d,0d,No,No,No,No,No,No,No,No,No,No,No,0,0,0,0,0,
2025,4415,Yes,Auto Scheduled,VC_Configuration Profiles,0.63d,Fixed Duration,5,0.63d,,"September 29, 2026 10:16","September 29, 2026 4:16",9/29/26 10:16,9/29/26 4:16,6/1/26 10:15,6/1/26 4:15,0d,-86d,0ed,0,NA,NA,"April 15, 2026 3:15","April 16, 2026 11:15",As Soon As Possible,NA,NA,NA,4/30/26 2:05,5h,5h,0h,0,0,0,0,0,1.2.5.2.42,500,No,Yes,Yes,,,Black,,,,,,,,0,0,0,0d,0d,0d,No,No,No,No,No,No,No,No,No,No,No,0,0,0,0,0,
2026,4416,Yes,Auto Scheduled,Run ALE Transaction to QS5 from DS4 130,2h,Fixed Units,6,0.25d,1933,"September 29, 2026 10:16","September 29, 2026 1:16",9/29/26 10:16,9/29/26 1:16,6/1/26 10:15,6/1/26 1:15,0h,-688.02h,0ed,0,NA,NA,"April 15, 2026 3:15","April 16, 2026 8:15",As Soon As Possible,NA,NA,NA,4/30/26 2:05,2h,2h,0h,0,0,0,0,0,1.2.5.2.42.1,500,No,No,No,,,Black,,,,,,,,0,0,0,0d,0d,0d,No,No,No,No,No,No,No,No,No,No,No,0,0,0,0,0,
2027,4417,Yes,Auto Scheduled,Post Load Validation,3h,Fixed Units,6,0.38d,2026,"September 29, 2026 1:16","September 29, 2026 4:16",9/29/26 1:16,9/29/26 4:16,6/1/26 1:15,6/1/26 4:15,0h,-688.02h,0ed,0,NA,NA,"April 16, 2026 8:15","April 16, 2026 11:15",As Soon As Possible,NA,NA,NA,4/30/26 2:05,3h,3h,0h,0,0,0,0,0,1.2.5.2.42.2,500,No,No,No,,"Matt Palastro, Dave Duda",Black,,,,,,,,0,0,0,0d,0d,0d,No,No,No,No,No,No,No,No,No,No,No,0,0,0,0,0,
2028,4418,Yes,Auto Scheduled,VC_Variant Tables,0.63d,Fixed Duration,5,0.63d,,"September 29, 2026 4:16","September 30, 2026 1:16",9/29/26 4:16,9/30/26 1:16,6/2/26 2:00,6/3/26 10:00,0d,-85.28d,0ed,0,NA,NA,"April 16, 2026 11:15","April 17, 2026 8:15",As Soon As Possible,NA,NA,NA,4/30/26 2:05,5h,5h,0h,0,0,0,0,0,1.2.5.2.43,500,No,Yes,Yes,,,Black,,,,,,,,0,0,0,0d,0d,0d,No,No,No,No,No,No,No,No,No,No,No,0,0,0,0,0,
2029,4419,Yes,Auto Scheduled,Run ALE Transaction to QS5 from DS4 130,2h,Fixed Units,6,0.25d,2027,"September 29, 2026 4:16","September 30, 2026 9:16",9/29/26 4:16,9/30/26 9:16,6/2/26 2:00,6/2/26 4:00,0h,-682.27h,0ed,0,NA,NA,"April 16, 2026 11:15","April 16, 2026 2:15",As Soon As Possible,NA,NA,NA,4/30/26 2:05,2h,2h,0h,0,0,0,0,0,1.2.5.2.43.1,500,No,No,No,,,Black,,,,,,,,0,0,0,0d,0d,0d,No,No,No,No,No,No,No,No,No,No,No,0,0,0,0,0,
2030,4420,Yes,Auto Scheduled,Post Load Validation,3h,Fixed Units,6,0.38d,2029,"September 30, 2026 9:16","September 30, 2026 1:16",9/30/26 9:16,9/30/26 1:16,6/2/26 4:00,6/3/26 10:00,0h,-682.27h,0ed,0,NA,NA,"April 16, 2026 2:15","April 17, 2026 8:15",As Soon As Possible,NA,NA,NA,4/30/26 2:05,3h,3h,0h,0,0,0,0,0,1.2.5.2.43.2,500,No,No,No,,"Matt Palastro, Dave Duda",Black,,,,,,,,0,0,0,0d,0d,0d,No,No,No,No,No,No,No,No,No,No,No,0,0,0,0,0,
2031,4421,Yes,Auto Scheduled,VC_Variant Tables Content,0.63d,Fixed Duration,5,0.63d,,"September 30, 2026 1:16","October 1, 2026 9:16",9/30/26 1:16,10/1/26 9:16,6/3/26 10:00,6/3/26 4:00,0d,-85.28d,0ed,0,NA,NA,"April 17, 2026 8:15","April 17, 2026 2:15",As Soon As Possible,NA,NA,NA,4/30/26 2:05,5h,5h,0h,0,0,0,0,0,1.2.5.2.44,500,No,Yes,Yes,,,Black,,,,,,,,0,0,0,0d,0d,0d,No,No,No,No,No,No,No,No,No,No,No,0,0,0,0,0,
2032,4422,Yes,Auto Scheduled,Run ALE Transaction to QS5 from DS4 130,2h,Fixed Units,6,0.25d,2030,"September 30, 2026 1:16","September 30, 2026 3:16",9/30/26 1:16,9/30/26 3:16,6/3/26 10:00,6/3/26 12:00,0h,-682.27h,0ed,0,NA,NA,"April 17, 2026 8:15","April 17, 2026 10:15",As Soon As Possible,NA,NA,NA,4/30/26 2:05,2h,2h,0h,0,0,0,0,0,1.2.5.2.44.1,500,No,No,No,,,Black,,,,,,,,0,0,0,0d,0d,0d,No,No,No,No,No,No,No,No,No,No,No,0,0,0,0,0,
2033,4423,Yes,Auto Scheduled,Post Load Validation,3h,Fixed Units,6,0.38d,2032,"September 30, 2026 3:16","October 1, 2026 9:16",9/30/26 3:16,10/1/26 9:16,6/3/26 1:00,6/3/26 4:00,0h,-682.27h,0ed,0,NA,NA,"April 17, 2026 10:15","April 17, 2026 2:15",As Soon As Possible,NA,NA,NA,4/30/26 2:05,3h,3h,0h,0,0,0,0,0,1.2.5.2.44.2,500,No,No,No,,"Matt Palastro, Dave Duda",Black,,,,,,,,0,0,0,0d,0d,0d,No,No,No,No,No,No,No,No,No,No,No,0,0,0,0,0,
2034,4424,Yes,Auto Scheduled,VC_Characteristic Groups,1.97d,Fixed Duration,5,0.63d,,"September 29, 2026 4:16","October 1, 2026 4:01",9/29/26 4:16,10/1/26 4:01,6/1/26 4:15,6/3/26 4:00,0d,-86d,0ed,0,NA,NA,"April 16, 2026 11:15","April 17, 2026 8:15",As Soon As Possible,NA,NA,NA,4/30/26 2:05,15.75h,5h,0h,0,0,0,0,0,1.2.5.2.45,500,No,Yes,Yes,,,Black,,,,,,,,0,0,0,0d,0d,0d,No,No,No,No,No,No,No,No,No,No,No,0,0,0,0,0,
2035,4425,Yes,Auto Scheduled,Run ALE Transaction to QS5 from DS4 130,12.75h,Fixed Units,6,0.25d,2027,"September 29, 2026 4:16","October 1, 2026 1:01",9/29/26 4:16,10/1/26 1:01,6/1/26 4:15,6/3/26 12:00,0h,-688.02h,0ed,0,NA,NA,"April 16, 2026 11:15","April 16, 2026 2:15",Finish No Earlier Than,4/17/26 5:00,NA,NA,4/30/26 2:05,12.75h,2h,0h,0,0,0,0,0,1.2.5.2.45.1,500,No,No,No,,,Black,,,,,,,,0,0,0,0d,0d,0d,No,No,No,No,No,No,No,No,No,No,No,0,0,0,0,0,
2036,4426,Yes,Auto Scheduled,Post Load Validation,3h,Fixed Units,6,0.38d,2035,"October 1, 2026 1:01","October 1, 2026 4:01",10/1/26 1:01,10/1/26 4:01,6/3/26 1:00,6/3/26 4:00,0h,-688.02h,0ed,0,NA,NA,"April 16, 2026 2:15","April 17, 2026 8:15",As Soon As Possible,NA,NA,NA,4/30/26 2:05,3h,3h,0h,0,0,0,0,0,1.2.5.2.45.2,500,No,No,No,,"Matt Palastro, Dave Duda",Black,,,,,,,,0,0,0,0d,0d,0d,No,No,No,No,No,No,No,No,No,No,No,0,0,0,0,0,
2037,4427,Yes,Auto Scheduled,PTM_CM52_Super_BOM,4.09d,Fixed Duration,5,1.13d,,"September 29, 2026 10:16","October 5, 2026 11:01",9/29/26 10:16,10/5/26 11:01,5/25/26 1:15,5/29/26 2:00,0d,-90.75d,0ed,0,NA,NA,"April 15, 2026 3:15","April 16, 2026 4:15",As Soon As Possible,NA,NA,NA,4/30/26 2:05,32.75h,9h,0h,0,0,0,0,0,1.2.5.2.46,500,No,Yes,Yes,,,Black,,,,,,,,0,0,0,0d,0d,0d,Yes,No,No,No,No,No,No,No,No,No,No,0,0,0,0,0,
2038,4428,Yes,Auto Scheduled,"Load File Staged and Posted ""Ready""",30m,Fixed Units,6,0.06d,1939,"September 29, 2026 10:16","September 29, 2026 10:46",9/29/26 10:16,9/29/26 10:46,5/25/26 1:15,5/25/26 1:45,0m,-43561m,0ed,0,NA,NA,"April 15, 2026 3:15","April 15, 2026 3:45",As Soon As Possible,NA,NA,NA,4/30/26 2:05,0.5h,0.5h,0h,0,0,0,0,0,1.2.5.2.46.1,500,No,No,No,,,Black,,,,,,,,0,0,0,0d,0d,0d,No,No,No,No,No,No,No,No,No,No,No,0,0,0,0,0,
2039,4429,Yes,Auto Scheduled,Pre Load Validation,30m,Fixed Units,6,0.06d,2038,"September 29, 2026 10:46","September 29, 2026 11:16",9/29/26 10:46,9/29/26 11:16,5/25/26 1:45,5/25/26 2:15,0m,-43561m,0ed,0,NA,NA,"April 15, 2026 3:45","April 15, 2026 4:15",As Soon As Possible,NA,NA,NA,4/30/26 2:05,0.5h,0.5h,0h,0,0,0,0,0,1.2.5.2.46.2,500,No,No,No,,"Matt Palastro, Dave Duda",Black,,,,,,,,0,0,0,0d,0d,0d,No,No,No,No,No,No,No,No,No,No,No,0,0,0,0,0,
2040,4430,Yes,Auto Scheduled,Simulate Load,24.75h,Fixed Units,6,0.13d,2039,"September 29, 2026 11:16","October 2, 2026 1:01",9/29/26 11:16,10/2/26 1:01,5/25/26 2:15,5/28/26 3:00,0h,-726.02h,0ed,0,NA,NA,"April 15, 2026 4:15","April 16, 2026 8:15",Finish No Earlier Than,4/20/26 5:00,NA,NA,4/30/26 2:05,24.75h,1h,0h,0,0,0,0,0,1.2.5.2.46.3,500,No,No,No,,"Matt Palastro, Dave Duda",Black,,,,,,,,0,0,0,0d,0d,0d,No,No,No,No,No,No,No,No,No,No,No,0,0,0,0,0,
2041,4431,Yes,Auto Scheduled,Error and Defect Mitigation,2h,Fixed Units,6,0.25d,2040,"October 2, 2026 1:01","October 2, 2026 3:01",10/2/26 1:01,10/2/26 3:01,5/28/26 3:00,5/28/26 5:00,0h,-726.02h,0ed,0,NA,NA,"April 16, 2026 8:15","April 16, 2026 10:15",Finish No Earlier Than,4/17/26 5:00,NA,NA,4/30/26 2:05,2h,2h,0h,0,0,0,0,0,1.2.5.2.46.4,500,No,No,No,,"Matt Palastro, Dave Duda",Black,,,,,,,,0,0,0,0d,0d,0d,No,No,No,No,No,No,No,No,No,No,No,0,0,0,0,0,
2042,4432,Yes,Auto Scheduled,Load,2h,Fixed Units,6,0.25d,2041,"October 2, 2026 3:01","October 5, 2026 8:01",10/2/26 3:01,10/5/26 8:01,5/29/26 8:00,5/29/26 10:00,0h,-726.02h,0ed,0,NA,NA,"April 16, 2026 10:15","April 16, 2026 1:15",Start No Earlier Than,4/17/26 8:00,NA,NA,4/30/26 2:05,2h,2h,0h,0,0,0,0,0,1.2.5.2.46.5,500,No,No,No,,,Black,,,,,,,,0,0,0,0d,0d,0d,No,No,No,No,No,No,No,No,No,No,No,0,0,0,0,0,
2043,4433,Yes,Auto Scheduled,Post Load Validation,3h,Fixed Units,6,0.38d,2042,"October 5, 2026 8:01","October 5, 2026 11:01",10/5/26 8:01,10/5/26 11:01,5/29/26 10:00,5/29/26 2:00,0h,-726.02h,0ed,0,NA,NA,"April 16, 2026 1:15","April 16, 2026 4:15",As Soon As Possible,NA,NA,NA,4/30/26 2:05,3h,3h,0h,0,0,0,0,0,1.2.5.2.46.6,500,No,No,No,,"Matt Palastro, Dave Duda",Black,,,,,,,,0,0,0,0d,0d,0d,No,No,No,No,No,No,No,No,No,No,No,0,0,0,0,0,
2044,4434,Yes,Auto Scheduled,PTM_CM53_Super_Routing,2.13d,Fixed Duration,5,1.13d,,"October 5, 2026 11:01","October 7, 2026 1:01",10/5/26 11:01,10/7/26 1:01,5/29/26 2:00,6/3/26 4:00,0d,-90.75d,0ed,0,NA,NA,"April 16, 2026 4:15","April 20, 2026 8:15",As Soon As Possible,NA,NA,NA,4/30/26 2:05,9h,9h,0h,0,0,0,0,0,1.2.5.2.47,500,No,Yes,Yes,,,Black,,,,,,,,0,0,0,0d,0d,0d,Yes,No,No,No,No,No,No,No,No,No,No,0,0,0,0,0,
2045,4435,Yes,Auto Scheduled,"Load File Staged and Posted ""Ready""",30m,Fixed Units,6,0.06d,2043,"October 5, 2026 11:01","October 5, 2026 11:31",10/5/26 11:01,10/5/26 11:31,5/29/26 2:00,5/29/26 2:30,0m,-43561m,0ed,0,NA,NA,"April 16, 2026 4:15","April 16, 2026 4:45",As Soon As Possible,NA,NA,NA,4/30/26 2:05,0.5h,0.5h,0h,0,0,0,0,0,1.2.5.2.47.1,500,No,No,No,,,Black,,,,,,,,0,0,0,0d,0d,0d,No,No,No,No,No,No,No,No,No,No,No,0,0,0,0,0,
2046,4436,Yes,Auto Scheduled,Pre Load Validation,30m,Fixed Units,6,0.06d,2045,"October 5, 2026 11:31","October 5, 2026 1:01",10/5/26 11:31,10/5/26 1:01,5/29/26 2:30,5/29/26 3:00,0m,-43561m,0ed,0,NA,NA,"April 16, 2026 4:45","April 17, 2026 8:15",As Soon As Possible,NA,NA,NA,4/30/26 2:05,0.5h,0.5h,0h,0,0,0,0,0,1.2.5.2.47.2,500,No,No,No,,"Matt Palastro, Dave Duda",Black,,,,,,,,0,0,0,0d,0d,0d,No,No,No,No,No,No,No,No,No,No,No,0,0,0,0,0,
2047,4437,Yes,Auto Scheduled,Simulate Load,1h,Fixed Units,6,0.13d,2046,"October 5, 2026 1:01","October 6, 2026 2:01",10/5/26 1:01,10/6/26 2:01,5/29/26 3:00,6/1/26 4:00,0h,-726.02h,0ed,0,NA,NA,"April 17, 2026 8:15","April 17, 2026 9:15",As Soon As Possible,NA,NA,NA,4/30/26 2:05,1h,1h,0h,0,0,0,0,0,1.2.5.2.47.3,500,No,No,No,,,Black,,,,,,,,0,0,0,0d,0d,0d,No,No,No,No,No,No,No,No,No,No,No,0,0,0,0,0,
2048,4438,Yes,Auto Scheduled,Error and Defect Mitigation,2h,Fixed Units,6,0.25d,2047,"October 6, 2026 2:01","October 6, 2026 4:01",10/6/26 2:01,10/6/26 4:01,6/1/26 4:00,6/2/26 9:00,0h,-726.02h,0ed,0,NA,NA,"April 17, 2026 9:15","April 17, 2026 11:15",As Soon As Possible,NA,NA,NA,4/30/26 2:05,2h,2h,0h,0,0,0,0,0,1.2.5.2.47.4,500,No,No,No,,"Matt Palastro, Dave Duda",Black,,,,,,,,0,0,0,0d,0d,0d,No,No,No,No,No,No,No,No,No,No,No,0,0,0,0,0,
2049,4439,Yes,Auto Scheduled,Load,2h,Fixed Units,6,0.25d,2048,"October 6, 2026 4:01","October 7, 2026 9:01",10/6/26 4:01,10/7/26 9:01,6/2/26 9:00,6/2/26 11:00,0h,-726.02h,0ed,0,NA,NA,"April 17, 2026 11:15","April 17, 2026 2:15",As Soon As Possible,NA,NA,NA,4/30/26 2:05,2h,2h,0h,0,0,0,0,0,1.2.5.2.47.5,500,No,No,No,,,Black,,,,,,,,0,0,0,0d,0d,0d,No,No,No,No,No,No,No,No,No,No,No,0,0,0,0,0,
2050,4440,Yes,Auto Scheduled,Post Load Validation,3h,Fixed Units,6,0.38d,2049,"October 7, 2026 9:01","October 7, 2026 1:01",10/7/26 9:01,10/7/26 1:01,6/3/26 1:00,6/3/26 4:00,0h,-717.02h,0ed,0,NA,NA,"April 17, 2026 2:15","April 20, 2026 8:15",As Soon As Possible,NA,NA,NA,4/30/26 2:05,3h,3h,0h,0,0,0,0,0,1.2.5.2.47.6,500,No,No,No,,"Matt Palastro, Dave Duda",Black,,,,,,,,0,0,0,0d,0d,0d,No,No,No,No,No,No,No,No,No,No,No,0,0,0,0,0,
2051,4441,Yes,Auto Scheduled,VC_VK30 Pricing Variant,0.69d,Fixed Duration,5,0.69d,,"October 7, 2026 9:01","October 7, 2026 3:31",10/7/26 9:01,10/7/26 3:31,6/2/26 11:00,6/3/26 8:30,0d,-90.75d,0ed,0,NA,NA,"April 17, 2026 2:15","April 20, 2026 10:45",As Soon As Possible,NA,NA,NA,4/30/26 2:05,5.5h,5.5h,0h,0,0,0,0,0,1.2.5.2.48,500,No,Yes,Yes,,,Black,,,,,,,,0,0,0,0d,0d,0d,No,No,No,No,No,No,No,No,No,No,No,0,0,0,0,0,
2052,4442,Yes,Auto Scheduled,"Manual File Staged and Posted ""Ready""",30m,Fixed Units,6,0.06d,2049,"October 7, 2026 9:01","October 7, 2026 9:31",10/7/26 9:01,10/7/26 9:31,6/2/26 11:00,6/2/26 11:30,0m,-43561m,0ed,0,NA,NA,"April 17, 2026 2:15","April 17, 2026 2:45",Start No Earlier Than,4/6/26 8:00,NA,NA,4/30/26 2:05,0.5h,0.5h,0h,0,0,0,0,0,1.2.5.2.48.1,500,No,No,No,,"Matt Palastro, Dave Duda",Black,,,,,,,,0,0,0,0d,0d,0d,No,No,No,No,No,No,No,No,No,No,No,0,0,0,0,0,
2053,4443,Yes,Auto Scheduled,Load,2h,Fixed Units,6,0.25d,2052,"October 7, 2026 9:31","October 7, 2026 11:31",10/7/26 9:31,10/7/26 11:31,6/2/26 11:30,6/2/26 2:30,0h,-726.02h,0ed,0,NA,NA,"April 17, 2026 2:45","April 17, 2026 4:45",As Soon As Possible,NA,NA,NA,4/30/26 2:05,2h,2h,0h,0,0,0,0,0,1.2.5.2.48.2,500,No,No,No,,,Black,,,,,,,,0,0,0,0d,0d,0d,No,No,No,No,No,No,No,No,No,No,No,0,0,0,0,0,
2054,4444,Yes,Auto Scheduled,Post Load Validation,3h,Fixed Units,6,0.38d,2053,"October 7, 2026 11:31","October 7, 2026 3:31",10/7/26 11:31,10/7/26 3:31,6/2/26 2:30,6/3/26 8:30,0h,-726.02h,0ed,0,NA,NA,"April 17, 2026 4:45","April 20, 2026 10:45",As Soon As Possible,NA,NA,NA,4/30/26 2:05,3h,3h,0h,0,0,0,0,0,1.2.5.2.48.3,500,No,No,No,,"Matt Palastro, Dave Duda",Black,,,,,,,,0,0,0,0d,0d,0d,No,No,No,No,No,No,No,No,No,No,No,0,0,0,0,0,
2055,4445,Yes,Auto Scheduled,OTC_CM22_Pricing_Condition,0.69d,Fixed Duration,5,0.69d,,"October 7, 2026 3:31","October 8, 2026 1:01",10/7/26 3:31,10/8/26 1:01,6/3/26 8:30,6/3/26 4:00,0d,-90.75d,0ed,0,NA,NA,"April 20, 2026 10:45","April 21, 2026 8:15",As Soon As Possible,NA,NA,NA,4/30/26 2:05,8.5h,5.5h,0h,0,0,0,0,0,1.2.5.2.49,500,No,Yes,Yes,,,Black,,,,,,,,0,0,0,0d,0d,0d,No,No,No,No,No,No,No,No,No,No,No,0,0,0,0,0,
2056,4446,Yes,Auto Scheduled,"Manual File Staged and Posted ""Ready""",30m,Fixed Units,6,0.06d,2054,"October 7, 2026 3:31","October 7, 2026 4:01",10/7/26 3:31,10/7/26 4:01,6/3/26 8:30,6/3/26 9:00,0m,-43561m,0ed,0,NA,NA,"April 20, 2026 10:45","April 20, 2026 11:15",Start No Earlier Than,4/6/26 8:00,NA,NA,4/30/26 2:05,0.5h,0.5h,0h,0,0,0,0,0,1.2.5.2.49.1,500,No,No,No,,"Matt Palastro, Dave Duda",Black,,,,,,,,0,0,0,0d,0d,0d,No,No,No,No,No,No,No,No,No,No,No,0,0,0,0,0,
2057,4447,Yes,Auto Scheduled,Load,2h,Fixed Units,6,0.25d,2056,"October 7, 2026 4:01","October 8, 2026 9:01",10/7/26 4:01,10/8/26 9:01,6/3/26 9:00,6/3/26 11:00,0h,-726.02h,0ed,0,NA,NA,"April 20, 2026 11:15","April 20, 2026 2:15",As Soon As Possible,NA,NA,NA,4/30/26 2:05,2h,2h,0h,0,0,0,0,0,1.2.5.2.49.2,500,No,No,No,,,Black,,,,,,,,0,0,0,0d,0d,0d,No,No,No,No,No,No,No,No,No,No,No,0,0,0,0,0,
2058,4448,Yes,Auto Scheduled,Post Load Validation,3h,Fixed Units,6,0.38d,2057,"October 8, 2026 9:01","October 8, 2026 1:01",10/8/26 9:01,10/8/26 1:01,6/3/26 1:00,6/3/26 4:00,0h,-725.02h,0ed,0,NA,NA,"April 20, 2026 2:15","April 21, 2026 8:15",As Soon As Possible,NA,NA,NA,4/30/26 2:05,6h,3h,0h,0,0,0,0,0,1.2.5.2.49.3,500,No,No,No,,"Matt Palastro, Dave Duda,kim",Black,,,,,,,,0,0,0,0d,0d,0d,No,No,No,No,No,No,No,No,No,No,No,0,0,0,0,0,
2059,4449,Yes,Auto Scheduled,OTC_CM21_CMIR,0.5d,Fixed Duration,5,1.13d,,"October 8, 2026 9:01","October 8, 2026 2:01",10/8/26 9:01,10/8/26 2:01,6/3/26 11:00,6/3/26 4:00,0d,-90.75d,0ed,0,NA,NA,"April 20, 2026 2:15","April 21, 2026 3:15",As Soon As Possible,NA,NA,NA,4/30/26 2:05,4h,9h,0h,0,0,0,0,0,1.2.5.2.50,500,No,Yes,Yes,,,Black,,,,,,,,0,0,0,0d,0d,0d,No,No,No,No,No,No,No,No,No,No,No,0,0,0,0,0,
2060,4450,Yes,Auto Scheduled,"Load File Staged and Posted ""Ready""",30m,Fixed Units,6,0.06d,"2057,2068","October 8, 2026 9:01","October 8, 2026 9:31",10/8/26 9:01,10/8/26 9:31,6/3/26 11:00,6/3/26 11:30,0m,-43561m,0ed,0,NA,NA,"April 20, 2026 2:15","April 20, 2026 2:45",As Soon As Possible,NA,NA,NA,4/30/26 2:05,0.5h,0.5h,0h,0,0,0,0,0,1.2.5.2.50.1,500,No,No,No,,,Black,,,,,,,,0,0,0,0d,0d,0d,No,No,No,No,No,No,No,No,No,No,No,0,0,0,0,0,
2061,4451,Yes,Auto Scheduled,Pre Load Validation,30m,Fixed Units,6,0.06d,2060,"October 8, 2026 9:31","October 8, 2026 10:01",10/8/26 9:31,10/8/26 10:01,6/3/26 11:30,6/3/26 12:00,0m,-43561m,0ed,0,NA,NA,"April 20, 2026 2:45","April 20, 2026 3:15",As Soon As Possible,NA,NA,NA,4/30/26 2:05,0.5h,0.5h,0h,0,0,0,0,0,1.2.5.2.50.2,500,No,No,No,,Kim,Black,,,,,,,,0,0,0,0d,0d,0d,No,No,No,No,No,No,No,No,No,No,No,0,0,0,0,0,
2062,4452,Yes,Auto Scheduled,Simulate Load,0h,Fixed Units,6,0.13d,2061,"October 8, 2026 10:01","October 8, 2026 10:01",10/8/26 10:01,10/8/26 10:01,6/3/26 1:00,6/3/26 1:00,0h,-726.02h,0ed,0,NA,NA,"April 20, 2026 3:15","April 20, 2026 4:15",As Soon As Possible,NA,NA,NA,4/30/26 2:05,0h,1h,0h,0,0,0,0,0,1.2.5.2.50.3,500,Yes,No,No,,,Black,,,,,,,,0,0,0,0d,0d,0d,No,No,No,No,No,No,No,No,No,No,No,0,0,0,0,0,
2063,4453,Yes,Auto Scheduled,Error and Defect Mitigation,0h,Fixed Units,6,0.25d,2062,"October 8, 2026 10:01","October 8, 2026 10:01",10/8/26 10:01,10/8/26 10:01,6/3/26 1:00,6/3/26 1:00,0h,-726.02h,0ed,0,NA,NA,"April 20, 2026 4:15","April 21, 2026 9:15",As Soon As Possible,NA,NA,NA,4/30/26 2:05,0h,2h,0h,0,0,0,0,0,1.2.5.2.50.4,500,Yes,No,No,,Kim,Black,,,,,,,,0,0,0,0d,0d,0d,No,No,No,No,No,No,No,No,No,No,No,0,0,0,0,0,
2064,4454,Yes,Auto Scheduled,Load,0h,Fixed Units,6,0.25d,2063,"October 8, 2026 10:01","October 8, 2026 10:01",10/8/26 10:01,10/8/26 10:01,6/3/26 1:00,6/3/26 1:00,0h,-726.02h,0ed,0,NA,NA,"April 21, 2026 9:15","April 21, 2026 11:15",As Soon As Possible,NA,NA,NA,4/30/26 2:05,0h,2h,0h,0,0,0,0,0,1.2.5.2.50.5,500,Yes,No,No,,,Black,,,,,,,,0,0,0,0d,0d,0d,No,No,No,No,No,No,No,No,No,No,No,0,0,0,0,0,
2065,4455,Yes,Auto Scheduled,Post Load Validation,3h,Fixed Units,6,0.38d,2064,"October 8, 2026 10:01","October 8, 2026 2:01",10/8/26 10:01,10/8/26 2:01,6/3/26 1:00,6/3/26 4:00,0h,-726.02h,0ed,0,NA,NA,"April 21, 2026 11:15","April 21, 2026 3:15",As Soon As Possible,NA,NA,NA,4/30/26 2:05,3h,3h,0h,0,0,0,0,0,1.2.5.2.50.6,500,No,No,No,,Kim,Black,,,,,,,,0,0,0,0d,0d,0d,No,No,No,No,No,No,No,No,No,No,No,0,0,0,0,0,
2066,4456,Yes,Auto Scheduled,PTP_CM29_Source_List,6.16d,Fixed Duration,5,0.94d,,"September 25, 2026 9:31","October 5, 2026 10:46",9/25/26 9:31,10/5/26 10:46,6/3/26 9:00,6/3/26 4:00,0d,-87.47d,0ed,0,NA,NA,"April 13, 2026 10:45","April 14, 2026 10:15",As Soon As Possible,NA,NA,NA,4/30/26 2:05,5.5h,5.5h,0h,0,0,0,0,0,1.2.5.2.51,500,No,Yes,Yes,,,Black,,,,,,,,0,0,0,0d,0d,0d,No,No,No,No,No,No,No,No,No,No,No,0,0,0,0,0,
2067,4457,Yes,Auto Scheduled,"Manual File Staged and Posted ""Ready""",30m,Fixed Units,6,0.06d,"1910,1917","September 25, 2026 9:31","September 25, 2026 10:01",9/25/26 9:31,9/25/26 10:01,6/3/26 3:30,6/3/26 4:00,0m,-39061m,0ed,0,NA,NA,"April 14, 2026 9:45","April 14, 2026 10:15",Start No Earlier Than,4/17/26 8:00,NA,NA,4/30/26 2:05,0.5h,0.5h,0h,0,0,0,0,0,1.2.5.2.51.1,500,No,No,No,,Sam,Black,,,,,,,,0,0,0,0d,0d,0d,No,No,No,No,No,No,No,No,No,No,No,0,0,0,0,0,
2068,4458,Yes,Auto Scheduled,Load,2h,Fixed Units,6,0.25d,1886,"October 2, 2026 2:46","October 2, 2026 4:46",10/2/26 2:46,10/2/26 4:46,6/3/26 9:00,6/3/26 11:00,0h,-700.77h,0ed,0,NA,NA,"April 13, 2026 10:45","April 13, 2026 1:45",Finish No Earlier Than,4/17/26 5:00,NA,NA,4/30/26 2:05,2h,2h,0h,0,0,0,0,0,1.2.5.2.51.2,500,No,No,No,,,Black,,,,,,,,0,0,0,0d,0d,0d,No,No,No,No,No,No,No,No,No,No,No,0,0,0,0,0,
2069,4459,Yes,Auto Scheduled,Post Load Validation,3h,Fixed Units,6,0.38d,2068,"October 2, 2026 4:46","October 5, 2026 10:46",10/2/26 4:46,10/5/26 10:46,6/3/26 1:00,6/3/26 4:00,0h,-699.77h,0ed,0,NA,NA,"April 13, 2026 1:45","April 13, 2026 4:45",As Soon As Possible,NA,NA,NA,4/30/26 2:05,3h,3h,0h,0,0,0,0,0,1.2.5.2.51.3,500,No,No,No,,Sam,Black,,,,,,,,0,0,0,0d,0d,0d,No,No,No,No,No,No,No,No,No,No,No,0,0,0,0,0,
2070,4460,Yes,Auto Scheduled,RTR_CM11_Asset_Master,6.63d,Fixed Duration,5,1.13d,,"September 24, 2026 8:31","October 2, 2026 2:31",9/24/26 8:31,10/2/26 2:31,5/26/26 10:00,6/3/26 4:00,0d,-86.81d,0ed,0,NA,NA,"April 10, 2026 9:45","April 13, 2026 10:45",As Soon As Possible,NA,NA,NA,4/30/26 2:05,53.5h,9h,0h,0,0,0,0,0,1.2.5.2.52,500,No,Yes,Yes,,,Black,,,,,,,,0,0,0,0d,0d,0d,No,No,No,No,No,No,No,No,No,No,No,0,0,0,0,0,
2071,4461,Yes,Auto Scheduled,"Load File Staged and Posted ""Ready""",30m,Fixed Units,6,0.06d,,"September 24, 2026 8:31","September 24, 2026 9:01",9/24/26 8:31,9/24/26 9:01,5/26/26 10:00,5/26/26 10:30,0m,-41671m,0ed,0,NA,NA,"April 10, 2026 9:45","April 10, 2026 10:15",Start No Earlier Than,4/15/26 8:00,NA,NA,4/30/26 2:05,0.5h,0.5h,0h,0,0,0,0,0,1.2.5.2.52.1,500,No,No,No,,,Black,,,,,,,,0,0,0,0d,0d,0d,No,No,No,No,No,No,No,No,No,No,No,0,0,0,0,0,
2072,4462,Yes,Auto Scheduled,Pre Load Validation,30m,Fixed Units,6,0.06d,2071,"September 24, 2026 9:01","September 24, 2026 9:31",9/24/26 9:01,9/24/26 9:31,5/26/26 10:30,5/26/26 11:00,0m,-41671m,0ed,0,NA,NA,"April 10, 2026 10:15","April 10, 2026 10:45",As Soon As Possible,NA,NA,NA,4/30/26 2:05,1h,0.5h,0h,0,0,0,0,0,1.2.5.2.52.2,500,No,No,No,,Brian Wagner,Black,,,,,,,,0,0,0,0d,0d,0d,No,No,No,No,No,No,No,No,No,No,No,0,0,0,0,0,
2073,4463,Yes,Auto Scheduled,Simulate Load,31h,Fixed Units,6,0.13d,2072,"September 24, 2026 9:31","September 30, 2026 8:31",9/24/26 9:31,9/30/26 8:31,5/26/26 11:00,6/1/26 10:00,0h,-694.52h,0ed,0,NA,NA,"April 10, 2026 10:45","April 10, 2026 11:45",Finish No Earlier Than,4/20/26 5:00,NA,NA,4/30/26 2:05,31h,1h,0h,0,0,0,0,0,1.2.5.2.52.3,500,No,No,No,,,Black,,,,,,,,0,0,0,0d,0d,0d,No,No,No,No,No,No,No,No,No,No,No,0,0,0,0,0,
2074,4464,Yes,Auto Scheduled,Error and Defect Mitigation,16h,Fixed Units,6,0.25d,2073,"September 30, 2026 8:31","October 2, 2026 8:31",9/30/26 8:31,10/2/26 8:31,6/1/26 10:00,6/3/26 10:00,0h,-694.52h,0ed,0,NA,NA,"April 10, 2026 11:45","April 10, 2026 2:45",Finish No Earlier Than,4/17/26 5:00,NA,NA,4/30/26 2:05,16h,2h,0h,0,0,0,0,0,1.2.5.2.52.4,500,No,No,No,,Brian Wagner,Black,,,,,,,,0,0,0,0d,0d,0d,No,No,No,No,No,No,No,No,No,No,No,0,0,0,0,0,
2075,4465,Yes,Auto Scheduled,Load,2h,Fixed Units,6,0.25d,2074,"October 2, 2026 8:31","October 2, 2026 10:31",10/2/26 8:31,10/2/26 10:31,6/3/26 10:00,6/3/26 12:00,0h,-694.52h,0ed,0,NA,NA,"April 10, 2026 2:45","April 10, 2026 4:45",Start No Earlier Than,4/17/26 8:00,NA,NA,4/30/26 2:05,2h,2h,0h,0,0,0,0,0,1.2.5.2.52.5,500,No,No,No,,,Black,,,,,,,,0,0,0,0d,0d,0d,No,No,No,No,No,No,No,No,No,No,No,0,0,0,0,0,
2076,4466,Yes,Auto Scheduled,Post Load Validation,3h,Fixed Units,6,0.38d,2075,"October 2, 2026 10:31","October 2, 2026 2:31",10/2/26 10:31,10/2/26 2:31,6/3/26 1:00,6/3/26 4:00,0h,-694.52h,0ed,0,NA,NA,"April 10, 2026 4:45","April 13, 2026 10:45",As Soon As Possible,NA,NA,NA,4/30/26 2:05,3h,3h,0h,0,0,0,0,0,1.2.5.2.52.6,500,No,No,No,,Brian Wagner,Black,,,,,,,,0,0,0,0d,0d,0d,No,No,No,No,No,No,No,No,No,No,No,0,0,0,0,0,
2077,4467,Yes,Auto Scheduled,PTM_CM50_Material Class,2.13d,Fixed Duration,5,0.25d,,"September 29, 2026 3:46","October 1, 2026 4:46",9/29/26 3:46,10/1/26 4:46,6/1/26 3:00,6/3/26 4:00,0d,-86.1d,0ed,0,NA,NA,"April 16, 2026 10:45","April 16, 2026 1:45",As Soon As Possible,NA,NA,NA,4/30/26 2:05,17h,2h,0h,0,0,0,0,0,1.2.5.2.53,500,No,Yes,Yes,,,Black,,,,,,,,0,0,0,0d,0d,0d,No,No,No,No,No,No,No,No,No,No,No,0,0,0,0,0,
2078,4468,Yes,Auto Scheduled,"Manual File Staged and Posted ""Ready""",30m,Fixed Units,6,0.06d,1983,"September 29, 2026 3:46","September 29, 2026 4:16",9/29/26 3:46,9/29/26 4:16,6/1/26 3:00,6/1/26 3:30,0m,-41326m,0ed,0,NA,NA,"April 16, 2026 10:45","April 16, 2026 11:15",As Soon As Possible,NA,NA,NA,4/30/26 2:05,0.5h,0.5h,0h,0,0,0,0,0,1.2.5.2.53.1,500,No,No,No,,,Black,,,,,,,,0,0,0,0d,0d,0d,No,No,No,No,No,No,No,No,No,No,No,0,0,0,0,0,
2079,4469,Yes,Auto Scheduled,Load,30m,Fixed Units,6,0.06d,2078,"September 29, 2026 4:16","September 29, 2026 4:46",9/29/26 4:16,9/29/26 4:46,6/1/26 3:30,6/1/26 4:00,0m,-41326m,0ed,0,NA,NA,"April 16, 2026 11:15","April 16, 2026 11:45",As Soon As Possible,NA,NA,NA,4/30/26 2:05,0.5h,0.5h,0h,0,0,0,0,0,1.2.5.2.53.2,500,No,No,No,,"Matt Palastro, Dave Duda",Black,,,,,,,,0,0,0,0d,0d,0d,No,No,No,No,No,No,No,No,No,No,No,0,0,0,0,0,
2080,4470,Yes,Auto Scheduled,Post Load Validation,16h,Fixed Units,6,0.13d,2079,"September 29, 2026 4:46","October 1, 2026 4:46",9/29/26 4:46,10/1/26 4:46,6/1/26 4:00,6/3/26 4:00,0h,-688.77h,0ed,0,NA,NA,"April 16, 2026 11:45","April 16, 2026 1:45",Finish No Earlier Than,4/20/26 5:00,NA,NA,4/30/26 2:05,16h,1h,0h,0,0,0,0,0,1.2.5.2.53.3,500,No,No,No,,brad,Black,,,,,,,,0,0,0,0d,0d,0d,No,No,No,No,No,No,No,No,No,No,No,0,0,0,0,0,
2081,4471,Yes,Auto Scheduled,PTM_CM55_Class assignment to materials,1.13d,Fixed Duration,5,1.13d,,"September 29, 2026 4:16","October 1, 2026 8:16",9/29/26 4:16,10/1/26 8:16,6/2/26 3:00,6/3/26 4:00,0d,-85.16d,0ed,0,NA,NA,"April 16, 2026 11:15","April 17, 2026 1:15",As Soon As Possible,NA,NA,NA,4/30/26 2:05,9h,9h,0h,0,0,0,0,0,1.2.5.2.54,500,No,Yes,Yes,,,Black,,,,,,,,0,0,0,0d,0d,0d,No,No,No,No,No,No,No,No,No,No,No,0,0,0,0,0,
2082,4472,Yes,Auto Scheduled,"Load File Staged and Posted ""Ready""",30m,Fixed Units,6,0.06d,2078,"September 29, 2026 4:16","September 29, 2026 4:46",9/29/26 4:16,9/29/26 4:46,6/2/26 3:00,6/2/26 3:30,0m,-40876m,0ed,0,NA,NA,"April 16, 2026 11:15","April 16, 2026 11:45",As Soon As Possible,NA,NA,NA,4/30/26 2:05,0.5h,0.5h,0h,0,0,0,0,0,1.2.5.2.54.1,500,No,No,No,,,Black,,,,,,,,0,0,0,0d,0d,0d,No,No,No,No,No,No,No,No,No,No,No,0,0,0,0,0,
2083,4473,Yes,Auto Scheduled,Pre Load Validation,30m,Fixed Units,6,0.06d,2082,"September 29, 2026 4:46","September 30, 2026 8:16",9/29/26 4:46,9/30/26 8:16,6/2/26 3:30,6/2/26 4:00,0m,-40876m,0ed,0,NA,NA,"April 16, 2026 11:45","April 16, 2026 1:15",As Soon As Possible,NA,NA,NA,4/30/26 2:05,0.5h,0.5h,0h,0,0,0,0,0,1.2.5.2.54.2,500,No,No,No,,"Matt Palastro, Dave Duda",Black,,,,,,,,0,0,0,0d,0d,0d,No,No,No,No,No,No,No,No,No,No,No,0,0,0,0,0,
2084,4474,Yes,Auto Scheduled,Simulate Load,1h,Fixed Units,6,0.13d,2083,"September 30, 2026 8:16","September 30, 2026 9:16",9/30/26 8:16,9/30/26 9:16,6/2/26 4:00,6/2/26 5:00,0h,-681.27h,0ed,0,NA,NA,"April 16, 2026 1:15","April 16, 2026 2:15",As Soon As Possible,NA,NA,NA,4/30/26 2:05,1h,1h,0h,0,0,0,0,0,1.2.5.2.54.3,500,No,No,No,,,Black,,,,,,,,0,0,0,0d,0d,0d,No,No,No,No,No,No,No,No,No,No,No,0,0,0,0,0,
2085,4475,Yes,Auto Scheduled,Error and Defect Mitigation,2h,Fixed Units,6,0.25d,2084,"September 30, 2026 9:16","September 30, 2026 11:16",9/30/26 9:16,9/30/26 11:16,6/3/26 8:00,6/3/26 10:00,0h,-681.27h,0ed,0,NA,NA,"April 16, 2026 2:15","April 16, 2026 4:15",As Soon As Possible,NA,NA,NA,4/30/26 2:05,2h,2h,0h,0,0,0,0,0,1.2.5.2.54.4,500,No,No,No,,"Matt Palastro, Dave Duda",Black,,,,,,,,0,0,0,0d,0d,0d,No,No,No,No,No,No,No,No,No,No,No,0,0,0,0,0,
2086,4476,Yes,Auto Scheduled,Load,2h,Fixed Units,6,0.25d,2085,"September 30, 2026 11:16","September 30, 2026 2:16",9/30/26 11:16,9/30/26 2:16,6/3/26 10:00,6/3/26 12:00,0h,-681.27h,0ed,0,NA,NA,"April 16, 2026 4:15","April 17, 2026 9:15",As Soon As Possible,NA,NA,NA,4/30/26 2:05,2h,2h,0h,0,0,0,0,0,1.2.5.2.54.5,500,No,No,No,,,Black,,,,,,,,0,0,0,0d,0d,0d,No,No,No,No,No,No,No,No,No,No,No,0,0,0,0,0,
2087,4477,Yes,Auto Scheduled,Post Load Validation,3h,Fixed Units,6,0.38d,2086,"September 30, 2026 2:16","October 1, 2026 8:16",9/30/26 2:16,10/1/26 8:16,6/3/26 1:00,6/3/26 4:00,0h,-681.27h,0ed,0,NA,NA,"April 17, 2026 9:15","April 17, 2026 1:15",As Soon As Possible,NA,NA,NA,4/30/26 2:05,3h,3h,0h,0,0,0,0,0,1.2.5.2.54.6,500,No,No,No,,"Matt Palastro, Dave Duda",Black,,,,,,,,0,0,0,0d,0d,0d,No,No,No,No,No,No,No,No,No,No,No,0,0,0,0,0,
2088,4478,Yes,Auto Scheduled,GTS - Material initial load from S4 (Run Interface),2.09d,Fixed Duration,5,0.25d,,"September 29, 2026 1:16","October 1, 2026 2:01",9/29/26 1:16,10/1/26 2:01,5/27/26 1:00,5/29/26 1:45,0d,-89.03d,0ed,0,NA,NA,"April 16, 2026 8:15","April 16, 2026 10:15",As Soon As Possible,NA,NA,NA,4/30/26 2:05,16.75h,2h,0h,0,0,0,0,0,1.2.5.2.55,500,No,Yes,Yes,,,Black,,,,,,,,0,0,0,0d,0d,0d,No,No,No,No,No,No,No,No,No,No,No,0,0,0,0,0,
2089,4479,Yes,Auto Scheduled,Run material interface to GTS,15.75h,Fixed Units,6,0.13d,1957,"September 29, 2026 1:16","October 1, 2026 1:01",9/29/26 1:16,10/1/26 1:01,5/27/26 1:00,5/29/26 11:45,0h,-712.27h,0ed,0,NA,NA,"April 16, 2026 8:15","April 16, 2026 9:15",Finish No Earlier Than,4/17/26 5:00,NA,NA,4/30/26 2:05,15.75h,1h,0h,0,0,0,0,0,1.2.5.2.55.1,500,No,No,No,,,Black,,,,,,,,0,0,0,0d,0d,0d,No,No,No,No,No,No,No,No,No,No,No,0,0,0,0,0,
2090,4480,Yes,Auto Scheduled,Post Load Validation,1h,Fixed Units,6,0.13d,2089,"October 1, 2026 1:01","October 1, 2026 2:01",10/1/26 1:01,10/1/26 2:01,5/29/26 11:45,5/29/26 1:45,0h,-712.27h,0ed,0,NA,NA,"April 16, 2026 9:15","April 16, 2026 10:15",As Soon As Possible,NA,NA,NA,4/30/26 2:05,1h,1h,0h,0,0,0,0,0,1.2.5.2.55.2,500,No,No,No,,Kim Kolesar,Black,,,,,,,,0,0,0,0d,0d,0d,No,No,No,No,No,No,No,No,No,No,No,0,0,0,0,0,
2091,4481,Yes,Auto Scheduled,GTS - Customers  initial load from S4 (Run Interface),0.25d,Fixed Duration,5,0.25d,,"September 24, 2026 8:31","September 24, 2026 10:31",9/24/26 8:31,9/24/26 10:31,6/3/26 2:00,6/3/26 4:00,0d,-80.44d,0ed,0,NA,NA,"April 10, 2026 1:45","April 10, 2026 3:45",As Soon As Possible,NA,NA,NA,4/30/26 2:05,2h,2h,0h,0,0,0,0,0,1.2.5.2.56,500,No,Yes,Yes,,,Black,,,,,,,,0,0,0,0d,0d,0d,No,No,No,No,No,No,No,No,No,No,No,0,0,0,0,0,
2092,4482,Yes,Auto Scheduled,Run material interface to GTS,1h,Fixed Units,6,0.13d,,"September 24, 2026 8:31","September 24, 2026 9:31",9/24/26 8:31,9/24/26 9:31,6/3/26 2:00,6/3/26 3:00,0h,-643.52h,0ed,0,NA,NA,"April 10, 2026 1:45","April 10, 2026 2:45",Start No Earlier Than,4/15/26 8:00,NA,NA,4/30/26 2:05,1h,1h,0h,0,0,0,0,0,1.2.5.2.56.1,500,No,No,No,,,Black,,,,,,,,0,0,0,0d,0d,0d,No,No,No,No,No,No,No,No,No,No,No,0,0,0,0,0,
2093,4483,Yes,Auto Scheduled,Post Load Validation,1h,Fixed Units,6,0.13d,2092,"September 24, 2026 9:31","September 24, 2026 10:31",9/24/26 9:31,9/24/26 10:31,6/3/26 3:00,6/3/26 4:00,0h,-643.52h,0ed,0,NA,NA,"April 10, 2026 2:45","April 10, 2026 3:45",Finish No Earlier Than,4/20/26 5:00,NA,NA,4/30/26 2:05,1h,1h,0h,0,0,0,0,0,1.2.5.2.56.2,500,No,No,No,,Kim Kolesar,Black,,,,,,,,0,0,0,0d,0d,0d,No,No,No,No,No,No,No,No,No,No,No,0,0,0,0,0,
2094,4484,Yes,Auto Scheduled,GTS - Vendors  initial load from S4 (Run Interface),0.25d,Fixed Duration,5,0.25d,,"September 24, 2026 4:31","September 25, 2026 9:31",9/24/26 4:31,9/25/26 9:31,6/3/26 10:00,6/3/26 4:00,0d,-81.69d,0ed,0,NA,NA,"April 15, 2026 2:00","April 15, 2026 4:00",As Soon As Possible,NA,NA,NA,4/30/26 2:05,2h,2h,0h,0,0,0,0,0,1.2.5.2.57,500,No,Yes,Yes,,,Black,,,,,,,,0,0,0,0d,0d,0d,No,No,No,No,No,No,No,No,No,No,No,0,0,0,0,0,
2095,4485,Yes,Auto Scheduled,Run material interface to GTS,1h,Fixed Units,6,0.13d,1900,"September 24, 2026 4:31","September 25, 2026 8:31",9/24/26 4:31,9/25/26 8:31,6/3/26 10:00,6/3/26 11:00,0h,-653.52h,0ed,0,NA,NA,"April 15, 2026 2:00","April 15, 2026 3:00",As Soon As Possible,NA,NA,NA,4/30/26 2:05,1h,1h,0h,0,0,0,0,0,1.2.5.2.57.1,500,No,No,No,,,Black,,,,,,,,0,0,0,0d,0d,0d,No,No,No,No,No,No,No,No,No,No,No,0,0,0,0,0,
2096,4486,Yes,Auto Scheduled,Post Load Validation,1h,Fixed Units,6,0.13d,2095,"September 25, 2026 8:31","September 25, 2026 9:31",9/25/26 8:31,9/25/26 9:31,6/3/26 3:00,6/3/26 4:00,0h,-650.52h,0ed,0,NA,NA,"April 15, 2026 3:00","April 15, 2026 4:00",As Soon As Possible,NA,NA,NA,4/30/26 2:05,1h,1h,0h,0,0,0,0,0,1.2.5.2.57.2,500,No,No,No,,Kim Kolesar,Black,,,,,,,,0,0,0,0d,0d,0d,No,No,No,No,No,No,No,No,No,No,No,0,0,0,0,0,
2097,4487,Yes,Auto Scheduled,GTS - ECCN - Create,1.13d,Fixed Duration,5,5.63d,,"September 24, 2026 8:31","September 25, 2026 9:31",9/24/26 8:31,9/25/26 9:31,6/3/26 11:00,6/3/26 4:00,0d,-81.31d,0ed,0,NA,NA,"April 6, 2026 8:15","April 13, 2026 2:15",As Soon As Possible,NA,NA,NA,4/30/26 2:05,2h,2h,0h,0,0,0,0,0,1.2.5.2.58,500,No,Yes,Yes,,,Black,,,,,,,,0,0,0,0d,0d,0d,No,No,No,No,No,No,No,No,No,No,No,0,0,0,0,0,
2098,4488,Yes,Auto Scheduled,Load Descartes XML File,1h,Fixed Units,6,0.13d,1771,"September 24, 2026 8:31","September 24, 2026 9:31",9/24/26 8:31,9/24/26 9:31,6/3/26 3:00,6/3/26 4:00,0h,-642.52h,0ed,0,NA,NA,"April 6, 2026 8:15","April 6, 2026 9:15",As Soon As Possible,NA,NA,NA,4/30/26 2:05,1h,1h,0h,0,0,0,0,0,1.2.5.2.58.1,500,No,No,No,,,Black,,,,,,,,0,0,0,0d,0d,0d,No,No,No,No,No,No,No,No,No,No,No,0,0,0,0,0,
2099,4489,Yes,Auto Scheduled,Post Load Validation,1h,Fixed Units,6,0.13d,2095,"September 25, 2026 8:31","September 25, 2026 9:31",9/25/26 8:31,9/25/26 9:31,6/3/26 11:00,6/3/26 12:00,0h,-653.52h,0ed,0,NA,NA,"April 13, 2026 1:15","April 13, 2026 2:15",As Soon As Possible,NA,NA,NA,4/30/26 2:05,1h,1h,0h,0,0,0,0,0,1.2.5.2.58.2,500,No,No,No,,Kim Kolesar,Black,,,,,,,,0,0,0,0d,0d,0d,No,No,No,No,No,No,No,No,No,No,No,0,0,0,0,0,
2100,4490,Yes,Auto Scheduled,GTS - ECCN - Assign,0.25d,Fixed Duration,5,0.25d,,"October 1, 2026 2:01","October 1, 2026 4:01",10/1/26 2:01,10/1/26 4:01,5/29/26 1:45,5/29/26 3:45,0d,-89.03d,0ed,0,NA,NA,"April 16, 2026 10:15","April 16, 2026 1:15",As Soon As Possible,NA,NA,NA,4/30/26 2:05,2h,2h,0h,0,0,0,0,0,1.2.5.2.59,500,No,Yes,Yes,,,Black,,,,,,,,0,0,0,0d,0d,0d,No,No,No,No,No,No,No,No,No,No,No,0,0,0,0,0,
2101,4491,Yes,Auto Scheduled,Load Descartes XML File,1h,Fixed Units,6,0.13d,2090,"October 1, 2026 2:01","October 1, 2026 3:01",10/1/26 2:01,10/1/26 3:01,5/29/26 1:45,5/29/26 2:45,0h,-712.27h,0ed,0,NA,NA,"April 16, 2026 10:15","April 16, 2026 11:15",Finish No Earlier Than,4/17/26 5:00,NA,NA,4/30/26 2:05,1h,1h,0h,0,0,0,0,0,1.2.5.2.59.1,500,No,No,No,,,Black,,,,,,,,0,0,0,0d,0d,0d,No,No,No,No,No,No,No,No,No,No,No,0,0,0,0,0,
2102,4492,Yes,Auto Scheduled,Post Load Validation,1h,Fixed Units,6,0.13d,2101,"October 1, 2026 3:01","October 1, 2026 4:01",10/1/26 3:01,10/1/26 4:01,5/29/26 2:45,5/29/26 3:45,0h,-712.27h,0ed,0,NA,NA,"April 16, 2026 11:15","April 16, 2026 1:15",As Soon As Possible,NA,NA,NA,4/30/26 2:05,1h,1h,0h,0,0,0,0,0,1.2.5.2.59.2,500,No,No,No,,Kim Kolesar,Black,,,,,,,,0,0,0,0d,0d,0d,No,No,No,No,No,No,No,No,No,No,No,0,0,0,0,0,
2103,4493,Yes,Auto Scheduled,GTS - HTS - Create,0.25d,Fixed Duration,5,0.25d,,"September 24, 2026 8:31","September 24, 2026 10:31",9/24/26 8:31,9/24/26 10:31,6/3/26 2:00,6/3/26 4:00,0d,-80.44d,0ed,0,NA,NA,"April 6, 2026 8:15","April 6, 2026 10:15",As Soon As Possible,NA,NA,NA,4/30/26 2:05,2h,2h,0h,0,0,0,0,0,1.2.5.2.60,500,No,Yes,Yes,,,Black,,,,,,,,0,0,0,0d,0d,0d,No,No,No,No,No,No,No,No,No,No,No,0,0,0,0,0,
2104,4494,Yes,Auto Scheduled,Load Descartes XML File,1h,Fixed Units,6,0.13d,1771,"September 24, 2026 8:31","September 24, 2026 9:31",9/24/26 8:31,9/24/26 9:31,6/3/26 2:00,6/3/26 3:00,0h,-643.52h,0ed,0,NA,NA,"April 6, 2026 8:15","April 6, 2026 9:15",As Soon As Possible,NA,NA,NA,4/30/26 2:05,1h,1h,0h,0,0,0,0,0,1.2.5.2.60.1,500,No,No,No,,,Black,,,,,,,,0,0,0,0d,0d,0d,No,No,No,No,No,No,No,No,No,No,No,0,0,0,0,0,
2105,4495,Yes,Auto Scheduled,Post Load Validation,1h,Fixed Units,6,0.13d,2104,"September 24, 2026 9:31","September 24, 2026 10:31",9/24/26 9:31,9/24/26 10:31,6/3/26 3:00,6/3/26 4:00,0h,-643.52h,0ed,0,NA,NA,"April 6, 2026 9:15","April 6, 2026 10:15",As Soon As Possible,NA,NA,NA,4/30/26 2:05,1h,1h,0h,0,0,0,0,0,1.2.5.2.60.2,500,No,No,No,,Kim Kolesar,Black,,,,,,,,0,0,0,0d,0d,0d,No,No,No,No,No,No,No,No,No,No,No,0,0,0,0,0,
2106,4496,Yes,Auto Scheduled,GTS - HTS - Assign,0.25d,Fixed Duration,5,0.25d,,"October 1, 2026 4:01","October 2, 2026 9:01",10/1/26 4:01,10/2/26 9:01,5/29/26 3:45,6/1/26 8:45,0d,-89.03d,0ed,0,NA,NA,"April 16, 2026 8:45","April 16, 2026 10:45",As Soon As Possible,NA,NA,NA,4/30/26 2:05,2h,2h,0h,0,0,0,0,0,1.2.5.2.61,500,No,Yes,Yes,,,Black,,,,,,,,0,0,0,0d,0d,0d,No,No,No,No,No,No,No,No,No,No,No,0,0,0,0,0,
2107,4497,Yes,Auto Scheduled,Load Descartes XML File,1h,Fixed Units,6,0.13d,2102,"October 1, 2026 4:01","October 2, 2026 8:01",10/1/26 4:01,10/2/26 8:01,5/29/26 3:45,5/29/26 4:45,0h,-712.27h,0ed,0,NA,NA,"April 16, 2026 8:45","April 16, 2026 9:45",As Soon As Possible,NA,NA,NA,4/30/26 2:05,1h,1h,0h,0,0,0,0,0,1.2.5.2.61.1,500,No,No,No,,,Black,,,,,,,,0,0,0,0d,0d,0d,No,No,No,No,No,No,No,No,No,No,No,0,0,0,0,0,
2108,4498,Yes,Auto Scheduled,Post Load Validation,1h,Fixed Units,6,0.13d,2107,"October 2, 2026 8:01","October 2, 2026 9:01",10/2/26 8:01,10/2/26 9:01,5/29/26 4:45,6/1/26 8:45,0h,-712.27h,0ed,0,NA,NA,"April 16, 2026 9:45","April 16, 2026 10:45",As Soon As Possible,NA,NA,NA,4/30/26 2:05,1h,1h,0h,0,0,0,0,0,1.2.5.2.61.2,500,No,No,No,,Kim Kolesar,Black,,,,,,,,0,0,0,0d,0d,0d,No,No,No,No,No,No,No,No,No,No,No,0,0,0,0,0,
2109,4499,Yes,Auto Scheduled,GTS - License - Create,0.25d,Fixed Duration,5,0.25d,,"October 2, 2026 10:01","October 2, 2026 1:01",10/2/26 10:01,10/2/26 1:01,6/3/26 2:00,6/3/26 4:00,0d,-86.63d,0ed,0,NA,NA,"April 16, 2026 11:45","April 16, 2026 2:45",As Soon As Possible,NA,NA,NA,4/30/26 2:05,2h,2h,0h,0,0,0,0,0,1.2.5.2.62,500,No,Yes,Yes,,,Black,,,,,,,,0,0,0,0d,0d,0d,No,No,No,No,No,No,No,No,No,No,No,0,0,0,0,0,
2110,4500,Yes,Auto Scheduled,Load Descartes XML File,1h,Fixed Units,6,0.13d,"2107,2123","October 2, 2026 10:01","October 2, 2026 11:01",10/2/26 10:01,10/2/26 11:01,6/3/26 2:00,6/3/26 3:00,0h,-693.02h,0ed,0,NA,NA,"April 16, 2026 11:45","April 16, 2026 1:45",As Soon As Possible,NA,NA,NA,4/30/26 2:05,1h,1h,0h,0,0,0,0,0,1.2.5.2.62.1,500,No,No,No,,,Black,,,,,,,,0,0,0,0d,0d,0d,No,No,No,No,No,No,No,No,No,No,No,0,0,0,0,0,
2111,4501,Yes,Auto Scheduled,Post Load Validation,1h,Fixed Units,6,0.13d,2110,"October 2, 2026 11:01","October 2, 2026 1:01",10/2/26 11:01,10/2/26 1:01,6/3/26 3:00,6/3/26 4:00,0h,-693.02h,0ed,0,NA,NA,"April 16, 2026 1:45","April 16, 2026 2:45",As Soon As Possible,NA,NA,NA,4/30/26 2:05,1h,1h,0h,0,0,0,0,0,1.2.5.2.62.2,500,No,No,No,,Kim Kolesar,Black,,,,,,,,0,0,0,0d,0d,0d,No,No,No,No,No,No,No,No,No,No,No,0,0,0,0,0,
2112,4502,Yes,Auto Scheduled,Commodity Code/Tarif,2.78d,Fixed Duration,5,0.25d,,"October 2, 2026 9:01","October 6, 2026 4:16",10/2/26 9:01,10/6/26 4:16,6/1/26 8:45,6/3/26 4:00,0d,-89.03d,0ed,0,NA,NA,"April 16, 2026 10:45","April 16, 2026 1:45",As Soon As Possible,NA,NA,NA,4/30/26 2:05,22.25h,2h,0h,0,0,0,0,0,1.2.5.2.63,500,No,Yes,Yes,,,Black,,,,,,,,0,0,0,0d,0d,0d,No,No,No,No,No,No,No,No,No,No,No,0,0,0,0,0,
2113,4503,Yes,Auto Scheduled,Load,21.25h,Fixed Units,6,0.13d,2108,"October 2, 2026 9:01","October 6, 2026 3:16",10/2/26 9:01,10/6/26 3:16,6/1/26 8:45,6/3/26 3:00,0h,-712.27h,0ed,0,NA,NA,"April 16, 2026 10:45","April 16, 2026 11:45",Finish No Earlier Than,4/20/26 5:00,NA,NA,4/30/26 2:05,21.25h,1h,0h,0,0,0,0,0,1.2.5.2.63.1,500,No,No,No,,,Black,,,,,,,,0,0,0,0d,0d,0d,No,No,No,No,No,No,No,No,No,No,No,0,0,0,0,0,
2114,4504,Yes,Auto Scheduled,Post Load Validation,1h,Fixed Units,6,0.13d,2113,"October 6, 2026 3:16","October 6, 2026 4:16",10/6/26 3:16,10/6/26 4:16,6/3/26 3:00,6/3/26 4:00,0h,-712.27h,0ed,0,NA,NA,"April 16, 2026 11:45","April 16, 2026 1:45",Start No Earlier Than,4/17/26 8:00,NA,NA,4/30/26 2:05,1h,1h,0h,0,0,0,0,0,1.2.5.2.63.2,500,No,No,No,,Kim Kolesar,Black,,,,,,,,0,0,0,0d,0d,0d,No,No,No,No,No,No,No,No,No,No,No,0,0,0,0,0,
2115,4505,Yes,Auto Scheduled,SPL Master File,0.25d,Fixed Duration,5,0.25d,,"October 2, 2026 8:01","October 2, 2026 10:01",10/2/26 8:01,10/2/26 10:01,6/3/26 2:00,6/3/26 4:00,0d,-86.38d,0ed,0,NA,NA,"March 13, 2025 8:00","March 13, 2025 10:00",As Soon As Possible,NA,NA,NA,4/30/26 2:05,2h,2h,0h,0,0,0,0,0,1.2.5.2.64,500,No,Yes,Yes,,,Black,,,,,,,,0,0,0,0d,0d,0d,No,No,No,No,No,No,No,No,No,No,No,0,0,0,0,0,
2116,4506,Yes,Auto Scheduled,Load,1h,Fixed Units,6,0.13d,2107,"October 2, 2026 8:01","October 2, 2026 9:01",10/2/26 8:01,10/2/26 9:01,6/3/26 2:00,6/3/26 3:00,0h,-691.02h,0ed,0,NA,NA,"March 13, 2025 8:00","March 13, 2025 9:00",As Soon As Possible,NA,NA,NA,4/30/26 2:05,1h,1h,0h,0,0,0,0,0,1.2.5.2.64.1,500,No,No,No,,,Black,,,,,,,,0,0,0,0d,0d,0d,No,No,No,No,No,No,No,No,No,No,No,0,0,0,0,0,
2117,4507,Yes,Auto Scheduled,Post Load Validation,1h,Fixed Units,6,0.13d,2116,"October 2, 2026 9:01","October 2, 2026 10:01",10/2/26 9:01,10/2/26 10:01,6/3/26 3:00,6/3/26 4:00,0h,-691.02h,0ed,0,NA,NA,"March 13, 2025 9:00","March 13, 2025 10:00",As Soon As Possible,NA,NA,NA,4/30/26 2:05,1h,1h,0h,0,0,0,0,0,1.2.5.2.64.2,500,No,No,No,,Kim Kolesar,Black,,,,,,,,0,0,0,0d,0d,0d,No,No,No,No,No,No,No,No,No,No,No,0,0,0,0,0,
2118,4508,Yes,Auto Scheduled,Initialize Embargo situation,0.38d,Fixed Duration,5,0.38d,,"September 25, 2026 9:31","September 25, 2026 1:31",9/25/26 9:31,9/25/26 1:31,6/3/26 1:00,6/3/26 4:00,0d,-81.69d,0ed,0,NA,NA,"April 13, 2026 2:15","April 14, 2026 8:15",As Soon As Possible,NA,NA,NA,4/30/26 2:05,3h,3h,0h,0,0,0,0,0,1.2.5.2.65,500,No,Yes,Yes,,,Black,,,,,,,,0,0,0,0d,0d,0d,No,No,No,No,No,No,No,No,No,No,No,0,0,0,0,0,
2119,4509,Yes,Auto Scheduled,Run report /SAPSLL/EMB_CNTRY_INIT,1h,Fixed Units,6,0.13d,2099,"September 25, 2026 9:31","September 25, 2026 10:31",9/25/26 9:31,9/25/26 10:31,6/3/26 1:00,6/3/26 2:00,0h,-653.52h,0ed,0,NA,NA,"April 13, 2026 2:15","April 13, 2026 3:15",As Soon As Possible,NA,NA,NA,4/30/26 2:05,1h,1h,0h,0,0,0,0,0,1.2.5.2.65.1,500,No,No,No,,,Black,,,,,,,,0,0,0,0d,0d,0d,No,No,No,No,No,No,No,No,No,No,No,0,0,0,0,0,
2120,4510,Yes,Auto Scheduled,Set Embargo situations,1h,Fixed Units,6,0.13d,2119,"September 25, 2026 10:31","September 25, 2026 11:31",9/25/26 10:31,9/25/26 11:31,6/3/26 2:00,6/3/26 3:00,0h,-653.52h,0ed,0,NA,NA,"April 13, 2026 3:15","April 13, 2026 4:15",As Soon As Possible,NA,NA,NA,4/30/26 2:05,1h,1h,0h,0,0,0,0,0,1.2.5.2.65.2,500,No,No,No,,,Black,,,,,,,,0,0,0,0d,0d,0d,No,No,No,No,No,No,No,No,No,No,No,0,0,0,0,0,
2121,4511,Yes,Auto Scheduled,Post Load Validation,1h,Fixed Units,6,0.13d,2120,"September 25, 2026 11:31","September 25, 2026 1:31",9/25/26 11:31,9/25/26 1:31,6/3/26 3:00,6/3/26 4:00,0h,-653.52h,0ed,0,NA,NA,"April 13, 2026 4:15","April 14, 2026 8:15",As Soon As Possible,NA,NA,NA,4/30/26 2:05,1h,1h,0h,0,0,0,0,0,1.2.5.2.65.3,500,No,No,No,,Kim Kolesar,Black,,,,,,,,0,0,0,0d,0d,0d,No,No,No,No,No,No,No,No,No,No,No,0,0,0,0,0,
2122,4512,Yes,Auto Scheduled,GTS - SPL (Sanctioned party list),0.25d,Fixed Duration,5,0.25d,,"October 2, 2026 9:01","October 2, 2026 11:01",10/2/26 9:01,10/2/26 11:01,6/3/26 1:00,6/3/26 4:00,0d,-86.63d,0ed,0,NA,NA,"April 16, 2026 10:45","April 16, 2026 1:45",As Soon As Possible,NA,NA,NA,4/30/26 2:05,2h,2h,0h,0,0,0,0,0,1.2.5.2.66,500,No,Yes,Yes,,,Black,,,,,,,,0,0,0,0d,0d,0d,No,No,No,No,No,No,No,No,No,No,No,0,0,0,0,0,
2123,4513,Yes,Auto Scheduled,Load Descartes XML File,1h,Fixed Units,6,0.13d,2108,"October 2, 2026 9:01","October 2, 2026 10:01",10/2/26 9:01,10/2/26 10:01,6/3/26 1:00,6/3/26 2:00,0h,-693.02h,0ed,0,NA,NA,"April 16, 2026 10:45","April 16, 2026 11:45",As Soon As Possible,NA,NA,NA,4/30/26 2:05,1h,1h,0h,0,0,0,0,0,1.2.5.2.66.1,500,No,No,No,,,Black,,,,,,,,0,0,0,0d,0d,0d,No,No,No,No,No,No,No,No,No,No,No,0,0,0,0,0,
2124,4514,Yes,Auto Scheduled,Post Load Validation,1h,Fixed Units,6,0.13d,2123,"October 2, 2026 10:01","October 2, 2026 11:01",10/2/26 10:01,10/2/26 11:01,6/3/26 3:00,6/3/26 4:00,0h,-692.02h,0ed,0,NA,NA,"April 16, 2026 11:45","April 16, 2026 1:45",As Soon As Possible,NA,NA,NA,4/30/26 2:05,1h,1h,0h,0,0,0,0,0,1.2.5.2.66.2,500,No,No,No,,Kim Kolesar,Black,,,,,,,,0,0,0,0d,0d,0d,No,No,No,No,No,No,No,No,No,No,No,0,0,0,0,0,
2125,4515,Yes,Auto Scheduled,RTR_CM17_Project Definition / Builder,1.13d,Fixed Duration,5,5.38d,,"September 24, 2026 9:01","September 25, 2026 10:01",9/24/26 9:01,9/25/26 10:01,6/2/26 2:30,6/3/26 4:00,0d,-81.44d,0ed,0,NA,NA,"April 10, 2026 10:15","April 17, 2026 2:15",As Soon As Possible,NA,NA,NA,4/30/26 2:05,9h,9h,0h,0,0,0,0,0,1.2.5.2.67,500,No,Yes,Yes,,,Black,,,,,,,,0,0,0,0d,0d,0d,No,No,No,No,No,No,No,No,No,No,No,0,0,0,0,0,
2126,4516,Yes,Auto Scheduled,"Load File Staged and Posted ""Ready""",30m,Fixed Units,6,0.06d,2071,"September 24, 2026 9:01","September 24, 2026 9:31",9/24/26 9:01,9/24/26 9:31,6/2/26 2:30,6/2/26 3:00,0m,-39091m,0ed,0,NA,NA,"April 10, 2026 10:15","April 10, 2026 10:45",Start No Earlier Than,4/20/26 8:00,NA,NA,4/30/26 2:05,0.5h,0.5h,0h,0,0,0,0,0,1.2.5.2.67.1,500,No,No,No,,,Black,,,,,,,,0,0,0,0d,0d,0d,No,No,No,No,No,No,No,No,No,No,No,0,0,0,0,0,
2127,4517,Yes,Auto Scheduled,Pre Load Validation,30m,Fixed Units,6,0.06d,2126,"September 24, 2026 9:31","September 24, 2026 10:01",9/24/26 9:31,9/24/26 10:01,6/2/26 3:30,6/2/26 4:00,0m,-39061m,0ed,0,NA,NA,"April 10, 2026 10:45","April 10, 2026 11:15",As Soon As Possible,NA,NA,NA,4/30/26 2:05,0.5h,0.5h,0h,0,0,0,0,0,1.2.5.2.67.2,500,No,No,No,,Brian Wagner,Black,,,,,,,,0,0,0,0d,0d,0d,No,No,No,No,No,No,No,No,No,No,No,0,0,0,0,0,
2128,4518,Yes,Auto Scheduled,Simulate Load,1h,Fixed Units,6,0.13d,2127,"September 24, 2026 10:01","September 24, 2026 11:01",9/24/26 10:01,9/24/26 11:01,6/2/26 4:00,6/2/26 5:00,0h,-651.02h,0ed,0,NA,NA,"April 16, 2026 2:15","April 16, 2026 3:15",As Soon As Possible,NA,NA,NA,4/30/26 2:05,1h,1h,0h,0,0,0,0,0,1.2.5.2.67.3,500,No,No,No,,,Black,,,,,,,,0,0,0,0d,0d,0d,No,No,No,No,No,No,No,No,No,No,No,0,0,0,0,0,
2129,4519,Yes,Auto Scheduled,Error and Defect Mitigation,2h,Fixed Units,6,0.25d,2128,"September 24, 2026 11:01","September 24, 2026 2:01",9/24/26 11:01,9/24/26 2:01,6/3/26 8:00,6/3/26 10:00,0h,-651.02h,0ed,0,NA,NA,"April 16, 2026 3:15","April 17, 2026 8:15",As Soon As Possible,NA,NA,NA,4/30/26 2:05,2h,2h,0h,0,0,0,0,0,1.2.5.2.67.4,500,No,No,No,,Brian Wagner,Black,,,,,,,,0,0,0,0d,0d,0d,No,No,No,No,No,No,No,No,No,No,No,0,0,0,0,0,
2130,4520,Yes,Auto Scheduled,Load,2h,Fixed Units,6,0.25d,2129,"September 24, 2026 2:01","September 24, 2026 4:01",9/24/26 2:01,9/24/26 4:01,6/3/26 10:00,6/3/26 12:00,0h,-651.02h,0ed,0,NA,NA,"April 17, 2026 8:15","April 17, 2026 10:15",As Soon As Possible,NA,NA,NA,4/30/26 2:05,2h,2h,0h,0,0,0,0,0,1.2.5.2.67.5,500,No,No,No,,,Black,,,,,,,,0,0,0,0d,0d,0d,No,No,No,No,No,No,No,No,No,No,No,0,0,0,0,0,
2131,4521,Yes,Auto Scheduled,Post Load Validation,3h,Fixed Units,6,0.38d,2130,"September 24, 2026 4:01","September 25, 2026 10:01",9/24/26 4:01,9/25/26 10:01,6/3/26 1:00,6/3/26 4:00,0h,-651.02h,0ed,0,NA,NA,"April 17, 2026 10:15","April 17, 2026 2:15",As Soon As Possible,NA,NA,NA,4/30/26 2:05,3h,3h,0h,0,0,0,0,0,1.2.5.2.67.6,500,No,No,No,,Brian Wagner,Black,,,,,,,,0,0,0,0d,0d,0d,No,No,No,No,No,No,No,No,No,No,No,0,0,0,0,0,
2132,4522,Yes,Auto Scheduled,RTR_CM18_WBS Element,1.25d,Fixed Duration,5,5.44d,,"September 24, 2026 8:31","September 25, 2026 10:31",9/24/26 8:31,9/25/26 10:31,6/2/26 3:00,6/3/26 4:00,0d,-81.44d,0ed,0,NA,NA,"April 10, 2026 10:45","April 17, 2026 3:15",As Soon As Possible,NA,NA,NA,4/30/26 2:05,9.25h,9h,0h,0,0,0,0,0,1.2.5.2.68,500,No,Yes,Yes,,,Black,,,,,,,,0,0,0,0d,0d,0d,No,No,No,No,No,No,No,No,No,No,No,0,0,0,0,0,
2133,4523,Yes,Auto Scheduled,"Load File Staged and Posted ""Ready""",30m,Fixed Units,6,0.06d,2126,"September 24, 2026 9:31","September 24, 2026 10:01",9/24/26 9:31,9/24/26 10:01,6/2/26 3:00,6/2/26 3:30,0m,-39091m,0ed,0,NA,NA,"April 10, 2026 10:45","April 10, 2026 11:15",Start No Earlier Than,4/17/26 8:00,NA,NA,4/30/26 2:05,0.5h,0.5h,0h,0,0,0,0,0,1.2.5.2.68.1,500,No,No,No,,,Black,,,,,,,,0,0,0,0d,0d,0d,No,No,No,No,No,No,No,No,No,No,No,0,0,0,0,0,
2134,4524,Yes,Auto Scheduled,Pre Load Validation,30m,Fixed Units,6,0.06d,2133,"September 24, 2026 10:01","September 24, 2026 10:31",9/24/26 10:01,9/24/26 10:31,6/2/26 3:30,6/2/26 4:00,0m,-39091m,0ed,0,NA,NA,"April 10, 2026 11:15","April 10, 2026 11:45",As Soon As Possible,NA,NA,NA,4/30/26 2:05,0.5h,0.5h,0h,0,0,0,0,0,1.2.5.2.68.2,500,No,No,No,,Brian Wagner,Black,,,,,,,,0,0,0,0d,0d,0d,No,No,No,No,No,No,No,No,No,No,No,0,0,0,0,0,
2135,4525,Yes,Auto Scheduled,Simulate Load,1h,Fixed Units,6,0.13d,2134,"September 24, 2026 10:31","September 24, 2026 11:31",9/24/26 10:31,9/24/26 11:31,6/2/26 4:00,6/2/26 5:00,0h,-651.52h,0ed,0,NA,NA,"April 16, 2026 3:15","April 16, 2026 4:15",As Soon As Possible,NA,NA,NA,4/30/26 2:05,1h,1h,0h,0,0,0,0,0,1.2.5.2.68.3,500,No,No,No,,,Black,,,,,,,,0,0,0,0d,0d,0d,No,No,No,No,No,No,No,No,No,No,No,0,0,0,0,0,
2136,4526,Yes,Auto Scheduled,Error and Defect Mitigation,2h,Fixed Units,6,0.25d,2135,"September 24, 2026 11:31","September 24, 2026 2:31",9/24/26 11:31,9/24/26 2:31,6/3/26 8:00,6/3/26 10:00,0h,-651.52h,0ed,0,NA,NA,"April 16, 2026 4:15","April 17, 2026 9:15",As Soon As Possible,NA,NA,NA,4/30/26 2:05,2h,2h,0h,0,0,0,0,0,1.2.5.2.68.4,500,No,No,No,,Brian Wagner,Black,,,,,,,,0,0,0,0d,0d,0d,No,No,No,No,No,No,No,No,No,No,No,0,0,0,0,0,
2137,4527,Yes,Auto Scheduled,Load,2h,Fixed Units,6,0.25d,2136,"September 24, 2026 2:31","September 24, 2026 4:31",9/24/26 2:31,9/24/26 4:31,6/3/26 10:00,6/3/26 12:00,0h,-651.52h,0ed,0,NA,NA,"April 17, 2026 9:15","April 17, 2026 11:15",As Soon As Possible,NA,NA,NA,4/30/26 2:05,2h,2h,0h,0,0,0,0,0,1.2.5.2.68.5,500,No,No,No,,,Black,,,,,,,,0,0,0,0d,0d,0d,No,No,No,No,No,No,No,No,No,No,No,0,0,0,0,0,
2138,4528,Yes,Auto Scheduled,Post Load Validation,3h,Fixed Units,6,0.38d,2137,"September 24, 2026 4:31","September 25, 2026 10:31",9/24/26 4:31,9/25/26 10:31,6/3/26 1:00,6/3/26 4:00,0h,-651.52h,0ed,0,NA,NA,"April 17, 2026 11:15","April 17, 2026 3:15",As Soon As Possible,NA,NA,NA,4/30/26 2:05,3h,3h,0h,0,0,0,0,0,1.2.5.2.68.6,500,No,No,No,,Brian Wagner,Black,,,,,,,,0,0,0,0d,0d,0d,No,No,No,No,No,No,No,No,No,No,No,0,0,0,0,0,
2139,4529,Yes,Auto Scheduled,UAT Mock Data Loads Complete,15m,Fixed Units,6,0.03d,,"September 24, 2026 8:31","September 24, 2026 8:46",9/24/26 8:31,9/24/26 8:46,6/3/26 3:45,6/3/26 4:00,0m,-38506m,0ed,0,NA,NA,"April 21, 2026 3:15","April 21, 2026 3:30",As Soon As Possible,NA,NA,NA,4/30/26 2:05,0.25h,0.25h,0h,0,0,0,0,0,1.2.5.2.68.7,500,Yes,No,No,,,Black,,,,,,,,0,0,0,0d,0d,0d,No,No,No,No,No,No,No,No,No,No,No,0,0,0,0,0,
2140,4530,Yes,Auto Scheduled,PROD Master Data Loads Complete,0m,Fixed Units,4,0d,1772,"October 1, 2026 8:31","October 1, 2026 8:31",10/1/26 8:31,10/1/26 8:31,6/3/26 4:00,6/3/26 4:00,0m,-40891m,0ed,0,NA,NA,NA,NA,As Soon As Possible,NA,NA,NA,4/30/26 2:05,0h,0h,0h,0,0,0,0,0,1.2.5.3,500,Yes,No,No,,,Black,,,,,,,,0,0,0,0d,0d,0d,No,No,No,No,No,No,No,No,No,No,No,0,0,0,0,0,
2141,4531,Yes,Auto Scheduled,Mock Transactional Data,2d,Fixed Duration,4,0d,2140,"October 1, 2026 8:31","October 5, 2026 8:31",10/1/26 8:31,10/5/26 8:31,8/12/26 3:45,8/14/26 3:45,0d,-35.22d,0ed,0,NA,NA,NA,NA,As Soon As Possible,NA,NA,NA,4/30/26 2:05,0h,0h,0h,0,0,0,0,0,1.2.5.4,500,No,Yes,Yes,,,Black,,,,,,,,0,0,0,0d,0d,0d,No,No,No,No,No,No,No,No,No,No,No,0,0,0,0,0,
2142,4532,Yes,Auto Scheduled,Inventory,4h,Fixed Units,5,0d,"2140SS,998SS","October 1, 2026 8:31","October 1, 2026 1:31",10/1/26 8:31,10/1/26 1:31,8/12/26 3:45,8/13/26 10:45,0h,-281.77h,0ed,0,NA,NA,NA,NA,As Soon As Possible,NA,NA,NA,4/30/26 2:05,0h,0h,0h,0,0,0,0,0,1.2.5.4.1,500,No,No,No,,,Black,,,,,,,,0,0,0,0d,0d,0d,No,No,No,No,No,No,No,No,No,No,No,0,0,0,0,0,
2143,4533,Yes,Auto Scheduled,Open AR,4h,Fixed Units,5,0d,2142,"October 1, 2026 1:31","October 2, 2026 8:31",10/1/26 1:31,10/2/26 8:31,8/13/26 10:45,8/13/26 3:45,0h,-281.77h,0ed,0,NA,NA,NA,NA,As Soon As Possible,NA,NA,NA,4/30/26 2:05,0h,0h,0h,0,0,0,0,0,1.2.5.4.2,500,No,No,No,,,Black,,,,,,,,0,0,0,0d,0d,0d,No,No,No,No,No,No,No,No,No,No,No,0,0,0,0,0,
2144,4534,Yes,Auto Scheduled,Open AP,4h,Fixed Units,5,0d,2143,"October 2, 2026 8:31","October 2, 2026 1:31",10/2/26 8:31,10/2/26 1:31,8/13/26 3:45,8/14/26 10:45,0h,-281.77h,0ed,0,NA,NA,NA,NA,As Soon As Possible,NA,NA,NA,4/30/26 2:05,0h,0h,0h,0,0,0,0,0,1.2.5.4.3,500,No,No,No,,,Black,,,,,,,,0,0,0,0d,0d,0d,No,No,No,No,No,No,No,No,No,No,No,0,0,0,0,0,
2145,4535,Yes,Auto Scheduled,Bank and Cash,4h,Fixed Units,5,0d,2144,"October 2, 2026 1:31","October 5, 2026 8:31",10/2/26 1:31,10/5/26 8:31,8/14/26 10:45,8/14/26 3:45,0h,-281.77h,0ed,0,NA,NA,NA,NA,As Soon As Possible,NA,NA,NA,4/30/26 2:05,0h,0h,0h,0,0,0,0,0,1.2.5.4.4,500,No,No,No,,,Black,,,,,,,,0,0,0,0d,0d,0d,No,No,No,No,No,No,No,No,No,No,No,0,0,0,0,0,
2146,4536,Yes,Auto Scheduled,Open Purchase Orders(Manual),1d,Fixed Units,5,0d,2142,"October 1, 2026 1:31","October 2, 2026 1:31",10/1/26 1:31,10/2/26 1:31,8/13/26 3:45,8/14/26 3:45,0d,-34.72d,0ed,0,NA,NA,NA,NA,As Soon As Possible,NA,NA,NA,4/30/26 2:05,0h,0h,0h,0,0,0,0,0,1.2.5.4.5,500,No,No,No,,,Black,,,,,,,,0,0,0,0d,0d,0d,No,No,No,No,No,No,No,No,No,No,No,0,0,0,0,0,
2147,4537,Yes,Auto Scheduled,Open Sales Orders(Manual),1d,Fixed Units,5,0d,2142,"October 1, 2026 1:31","October 2, 2026 1:31",10/1/26 1:31,10/2/26 1:31,8/13/26 3:45,8/14/26 3:45,0d,-34.72d,0ed,0,NA,NA,NA,NA,As Soon As Possible,NA,NA,NA,4/30/26 2:05,0h,0h,0h,0,0,0,0,0,1.2.5.4.6,500,No,No,No,,,Black,,,,,,,,0,0,0,0d,0d,0d,No,No,No,No,No,No,No,No,No,No,No,0,0,0,0,0,
2148,4538,Yes,Auto Scheduled,Service Orders(Manual),0.5d,Fixed Units,5,0d,2142,"October 1, 2026 1:31","October 2, 2026 8:31",10/1/26 1:31,10/2/26 8:31,8/14/26 10:45,8/14/26 3:45,0d,-34.22d,0ed,0,NA,NA,NA,NA,As Soon As Possible,NA,NA,NA,4/30/26 2:05,0h,0h,0h,0,0,0,0,0,1.2.5.4.7,500,No,No,No,,,Black,,,,,,,,0,0,0,0d,0d,0d,No,No,No,No,No,No,No,No,No,No,No,0,0,0,0,0,
2149,4539,Yes,Auto Scheduled,Open Production Orders(Manual),1d,Fixed Units,5,0d,2142,"October 1, 2026 1:31","October 2, 2026 1:31",10/1/26 1:31,10/2/26 1:31,8/13/26 3:45,8/14/26 3:45,0d,-34.72d,0ed,0,NA,NA,NA,NA,As Soon As Possible,NA,NA,NA,4/30/26 2:05,0h,0h,0h,0,0,0,0,0,1.2.5.4.8,500,No,No,No,,,Black,,,,,,,,0,0,0,0d,0d,0d,No,No,No,No,No,No,No,No,No,No,No,0,0,0,0,0,
2150,4540,Yes,Auto Scheduled,PRO Data Loads Complete,15m,Fixed Units,4,0.03d,2141,"October 5, 2026 8:31","October 5, 2026 8:46",10/5/26 8:31,10/5/26 8:46,8/14/26 3:45,8/14/26 4:00,0m,-16906m,0ed,0,NA,NA,"April 21, 2026 3:15","April 21, 2026 3:30",As Soon As Possible,NA,NA,NA,4/30/26 2:05,0.25h,0.25h,0h,0,0,0,0,0,1.2.5.5,500,Yes,No,No,,,Black,,,,,,,,0,0,0,0d,0d,0d,No,No,No,No,No,No,No,No,No,No,No,0,0,0,0,0,
2151,681,Yes,Auto Scheduled,Solution Readniess,131.5d,Fixed Duration,2,100.13d,,"April 16, 2026 8:00","October 16, 2026 12:00",4/16/26 8:00,10/16/26 12:00,4/16/26 8:00,11/9/26 5:00,16.5d,16.5d,0ed,2.9999999999999999E-2,4/16/26 8:00,NA,"April 16, 2026 8:00","September 3, 2026 9:00",As Soon As Possible,NA,4/16/26 8:15,4/16/26 10:00,3/24/26 6:38,136h,89h,1h,0,0,0,0,0,1.3,500,No,Yes,Yes,,,GreenCircle,,,,,,,,0,0,0,0d,0d,0d,No,No,No,No,No,No,No,No,No,No,No,0,0,0,0,0,
2152,843,Yes,Auto Scheduled,Business Process Design Documentation,20d,Fixed Duration,3,1d,,"May 4, 2026 8:00","May 29, 2026 5:00",5/4/26 8:00,5/29/26 5:00,5/4/26 8:00,11/9/26 5:00,116d,116d,0ed,4.0000000000000001E-2,5/4/26 8:00,NA,"May 22, 2026 8:00","May 22, 2026 5:00",As Soon As Possible,NA,5/4/26 1:48,5/4/26 1:48,3/30/26 3:42,0h,0h,0h,0,0,0,0,0,1.3.1,500,No,Yes,Yes,,,GreenCircle,,,,,,,,0,0,0,0d,0d,0d,No,No,No,No,No,No,No,No,No,No,No,0,0,0,0,0,
2153,844,Yes,Auto Scheduled,FICO,20d,Fixed Units,4,1d,,"May 4, 2026 8:00","May 29, 2026 5:00",5/4/26 8:00,5/29/26 5:00,5/4/26 8:00,11/9/26 5:00,116d,116d,0ed,2.9999999999999999E-2,5/4/26 8:00,NA,"May 22, 2026 8:00","May 22, 2026 5:00",As Soon As Possible,NA,5/4/26 1:48,5/4/26 1:48,3/30/26 3:42,0h,0h,0h,0,0,0,0,0,1.3.1.1,500,No,No,No,,,GreenCircle,,,,,,,,0,0,0,0d,0d,0d,No,No,No,No,No,No,No,No,No,No,No,0,0,0,0,0,
2154,845,Yes,Auto Scheduled,Order to Cash,20d,Fixed Units,4,1d,,"May 4, 2026 8:00","May 29, 2026 5:00",5/4/26 8:00,5/29/26 5:00,5/4/26 8:00,11/9/26 5:00,116d,116d,0ed,4.0000000000000001E-2,5/4/26 8:00,NA,"May 22, 2026 8:00","May 22, 2026 5:00",As Soon As Possible,NA,5/4/26 3:48,5/4/26 3:48,3/30/26 3:42,0h,0h,0h,0,0,0,0,0,1.3.1.2,500,No,No,No,,,GreenCircle,,,,,,,,0,0,0,0d,0d,0d,No,No,No,No,No,No,No,No,No,No,No,0,0,0,0,0,
2155,846,Yes,Auto Scheduled,Procure to Pay,20d,Fixed Units,4,1d,,"May 4, 2026 8:00","May 29, 2026 5:00",5/4/26 8:00,5/29/26 5:00,5/4/26 8:00,11/9/26 5:00,116d,116d,0ed,4.0000000000000001E-2,5/4/26 8:00,NA,"May 22, 2026 8:00","May 22, 2026 5:00",As Soon As Possible,NA,5/4/26 3:48,5/4/26 3:48,3/30/26 3:42,0h,0h,0h,0,0,0,0,0,1.3.1.3,500,No,No,No,,,GreenCircle,,,,,,,,0,0,0,0d,0d,0d,No,No,No,No,No,No,No,No,No,No,No,0,0,0,0,0,
2156,847,Yes,Auto Scheduled,Plan to Make,20d,Fixed Units,4,1d,,"May 4, 2026 8:00","May 29, 2026 5:00",5/4/26 8:00,5/29/26 5:00,5/4/26 8:00,11/9/26 5:00,116d,116d,0ed,5.0000000000000003E-2,5/4/26 8:00,NA,"May 22, 2026 8:00","May 22, 2026 5:00",As Soon As Possible,NA,5/4/26 4:36,5/4/26 4:36,3/30/26 3:42,0h,0h,0h,0,0,0,0,0,1.3.1.4,500,No,No,No,,,GreenCircle,,,,,,,,0,0,0,0d,0d,0d,No,No,No,No,No,No,No,No,No,No,No,0,0,0,0,0,
2157,835,Yes,Auto Scheduled,Development RICEFW,75d,Fixed Duration,3,1d,,"May 4, 2026 8:00","August 14, 2026 5:00",5/4/26 8:00,8/14/26 5:00,5/4/26 8:00,11/9/26 5:00,61d,61d,0ed,0,5/4/26 8:00,NA,"May 22, 2026 8:00","May 22, 2026 5:00",As Soon As Possible,NA,5/4/26 8:00,5/4/26 8:00,3/30/26 3:34,0h,0h,0h,0,0,0,0,0,1.3.2,500,No,Yes,Yes,,,,,,,,,,,0,0,0,0d,0d,0d,No,No,No,No,No,No,No,No,No,No,No,0,0,0,0,0,
2158,836,Yes,Auto Scheduled,Reports,75d,Fixed Units,4,1d,,"May 4, 2026 8:00","August 14, 2026 5:00",5/4/26 8:00,8/14/26 5:00,7/28/26 8:00,11/9/26 5:00,61d,61d,0ed,0,NA,NA,"May 22, 2026 8:00","May 22, 2026 5:00",Finish No Earlier Than,8/14/26 5:00,NA,NA,3/30/26 3:34,0h,0h,0h,0,0,0,0,0,1.3.2.1,500,No,No,No,,,,,,,,,,,0,0,0,0d,0d,0d,No,No,No,No,No,No,No,No,No,No,No,0,0,0,0,0,
2159,837,Yes,Auto Scheduled,Interfaces,75d,Fixed Units,4,1d,,"May 4, 2026 8:00","August 14, 2026 5:00",5/4/26 8:00,8/14/26 5:00,7/28/26 8:00,11/9/26 5:00,61d,61d,0ed,0,NA,NA,"May 22, 2026 8:00","May 22, 2026 5:00",Start No Earlier Than,5/4/26 8:00,NA,NA,3/30/26 3:34,0h,0h,0h,0,0,0,0,0,1.3.2.2,500,No,No,No,,,,,,,,,,,0,0,0,0d,0d,0d,No,No,No,No,No,No,No,No,No,No,No,0,0,0,0,0,
2160,838,Yes,Auto Scheduled,Enhanchments,61d,Fixed Units,4,1d,,"May 4, 2026 8:00","August 14, 2026 5:00",5/4/26 8:00,8/14/26 5:00,5/4/26 8:00,11/9/26 5:00,61d,61d,0ed,0,5/4/26 8:00,NA,"May 22, 2026 8:00","May 22, 2026 5:00",Finish No Earlier Than,8/14/26 5:00,5/4/26 10:24,5/22/26 10:24,3/30/26 3:34,0h,0h,0h,0,0,0,0,0,1.3.2.3,500,No,No,No,,,,,,,,,,,0,0,0,0d,0d,0d,No,No,No,No,No,No,No,No,No,No,No,0,0,0,0,0,
2161,839,Yes,Auto Scheduled,Workflow,75d,Fixed Units,4,1d,,"May 4, 2026 8:00","August 14, 2026 5:00",5/4/26 8:00,8/14/26 5:00,7/28/26 8:00,11/9/26 5:00,61d,61d,0ed,0,NA,NA,"May 22, 2026 8:00","May 22, 2026 5:00",Start No Earlier Than,5/4/26 8:00,NA,NA,3/30/26 3:34,0h,0h,0h,0,0,0,0,0,1.3.2.4,500,No,No,No,,,,,,,,,,,0,0,0,0d,0d,0d,No,No,No,No,No,No,No,No,No,No,No,0,0,0,0,0,
2162,840,Yes,Auto Scheduled,Forms,0d,Fixed Units,4,1d,,"August 14, 2026 5:00","August 14, 2026 5:00",8/14/26 5:00,8/14/26 5:00,11/9/26 5:00,11/9/26 5:00,61d,61d,0ed,0,NA,NA,"May 22, 2026 8:00","May 22, 2026 5:00",Finish No Earlier Than,8/14/26 5:00,NA,NA,3/30/26 3:35,0h,0h,0h,0,0,0,0,0,1.3.2.5,500,Yes,No,No,,,Black,,,,,,,,0,0,0,0d,0d,0d,No,No,No,No,No,No,No,No,No,No,No,0,0,0,0,0,
2163,18,Yes,Auto Scheduled,Testing Cycles,131.5d,Fixed Duration,3,100.13d,,"April 16, 2026 8:00","October 16, 2026 12:00",4/16/26 8:00,10/16/26 12:00,4/16/26 8:00,11/9/26 5:00,16.5d,16.5d,0ed,0.13,4/16/26 8:00,NA,"April 16, 2026 8:00","September 3, 2026 9:00",As Soon As Possible,NA,4/16/26 8:15,4/16/26 10:00,3/13/25 11:09,136h,89h,1h,0,0,0,0,0,1.3.3,500,No,Yes,Yes,,,GreenCircle,,,,,,,,0,0,0,0d,0d,0d,No,No,No,No,No,No,No,No,No,No,No,0,0,0,0,0,
2164,932,Yes,Auto Scheduled,Test Readiness Review (TRR) - ITC 1,1h,Fixed Units,4,0.13d,628,"April 16, 2026 8:00","May 1, 2026 8:45",4/16/26 8:00,5/1/26 8:45,4/16/26 8:00,4/16/26 9:00,0h,-87.75h,0ed,0.25,4/16/26 8:00,NA,"April 16, 2026 8:00","April 16, 2026 9:00",Start No Earlier Than,4/16/26 8:00,4/16/26 8:15,5/1/26 8:00,3/31/26 9:21,0h,0h,0h,0,0,0,0,0,1.3.3.1,500,No,No,No,,,Red,,,,,,,,0,0,0,0d,0d,0d,No,No,No,No,No,No,No,No,No,No,No,0,0,0,0,0,
2165,2799,Yes,Auto Scheduled,Test Readiness Review (TRR) - ITC 2,1h,Fixed Units,4,0.13d,"1008,2180","October 12, 2026 2:00","October 12, 2026 3:00",10/12/26 2:00,10/12/26 3:00,6/5/26 4:00,6/5/26 5:00,0h,-726h,0ed,0,NA,NA,"June 18, 2026 8:00","June 18, 2026 9:00",As Soon As Possible,NA,NA,NA,4/23/26 11:05,0h,0h,0h,0,0,0,0,0,1.3.3.2,500,No,No,No,,,Black,,,,,,,,0,0,0,0d,0d,0d,No,No,No,No,No,No,No,No,No,No,No,0,0,0,0,0,
2166,931,Yes,Auto Scheduled,Test Readiness Review (TRR) - ITC 3,1h,Fixed Units,4,0.13d,"2190,1388","June 30, 2026 11:00","June 30, 2026 12:00",6/30/26 11:00,6/30/26 12:00,7/10/26 4:00,7/10/26 5:00,68h,68h,0ed,0,NA,NA,"June 18, 2026 8:00","June 18, 2026 9:00",As Soon As Possible,NA,NA,NA,3/31/26 9:21,0h,0h,0h,0,0,0,0,0,1.3.3.3,500,No,No,No,,,Black,,,,,,,,0,0,0,0d,0d,0d,No,No,No,No,No,No,No,No,No,No,No,0,0,0,0,0,
2167,690,Yes,Auto Scheduled,Test Readiness Review (TRR) - UAT,1h,Fixed Units,4,0.13d,"1769,2199,2150","October 16, 2026 11:00","October 16, 2026 12:00",10/16/26 11:00,10/16/26 12:00,8/14/26 4:00,8/14/26 5:00,0h,-356h,0ed,0,NA,NA,"August 6, 2026 8:00","August 6, 2026 9:00",As Soon As Possible,NA,NA,NA,3/24/26 6:53,0h,0h,0h,0,0,0,0,0,1.3.3.4,500,No,No,No,,,Black,,,,,,,,0,0,0,0d,0d,0d,No,No,No,No,No,No,No,No,No,No,No,0,0,0,0,0,
2168,19,Yes,Auto Scheduled,ITC-1,23.88d,Fixed Duration,4,70d,2164,"April 16, 2026 9:00","May 19, 2026 5:00",4/16/26 9:00,5/19/26 5:00,4/16/26 9:00,11/9/26 5:00,124d,124d,0ed,0.37,4/16/26 9:00,NA,"April 16, 2026 9:00","July 23, 2026 9:00",As Soon As Possible,NA,4/16/26 10:00,4/16/26 10:00,3/13/25 11:10,1h,1h,1h,0,0,0,0,0,1.3.3.5,500,No,Yes,Yes,,,GreenCircle,,,,,,,,0,0,0,0d,0d,0d,No,No,No,No,No,No,No,No,No,No,No,0,0,0,0,0,
2169,834,Yes,Auto Scheduled,Testing expectations,1h,Fixed Units,5,0.13d,2164,"April 16, 2026 9:00","April 16, 2026 10:00",4/16/26 9:00,4/16/26 10:00,4/16/26 9:00,4/16/26 10:00,0h,0h,0ed,1,4/16/26 9:00,4/16/26 10:00,"April 16, 2026 9:00","April 16, 2026 10:00",Start No Earlier Than,4/8/26 8:00,4/16/26 10:00,4/16/26 10:00,3/30/26 2:44,1h,1h,1h,0,0,0,0,0,1.3.3.5.1,500,No,No,No,,,GreenSquare,,,,,,,,0,0,0,0d,0d,0d,No,No,No,No,No,No,No,No,No,No,No,0,0,0,0,0,
2170,685,Yes,Auto Scheduled,Functional Smoke Testing,5d,Fixed Units,5,5d,2169,"April 20, 2026 8:00","April 29, 2026 12:00",4/20/26 8:00,4/29/26 12:00,4/20/26 8:00,4/29/26 12:00,0d,0d,0ed,1,4/20/26 8:00,4/29/26 12:00,"April 20, 2026 8:00","April 24, 2026 5:00",Start No Earlier Than,4/20/26 8:00,4/29/26 12:00,4/29/26 12:00,3/24/26 6:46,0h,0h,0h,0,0,0,0,0,1.3.3.5.2,500,No,No,No,,,GreenSquare,,,,,,,,0,0,0,0d,0d,0d,No,No,No,No,No,No,No,No,No,No,No,0,0,0,0,0,
2171,684,Yes,Auto Scheduled,Assign Tester ID's,2h,Fixed Units,5,0.25d,2164,"April 16, 2026 9:00","April 23, 2026 4:30",4/16/26 9:00,4/23/26 4:30,4/16/26 9:00,4/23/26 4:30,0h,0h,0ed,1,4/16/26 9:00,4/23/26 4:30,"April 16, 2026 9:00","April 16, 2026 11:00",Finish No Earlier Than,3/13/25 5:00,4/23/26 4:30,4/23/26 4:30,3/24/26 6:45,0h,0h,0h,0,0,0,0,0,1.3.3.5.3,500,No,No,No,,,GreenSquare,,,,,,,,0,0,0,0d,0d,0d,No,No,No,No,No,No,No,No,No,No,No,0,0,0,0,0,
2172,686,Yes,Auto Scheduled,ITC-1 Team Testing,15d,Fixed Units,5,15d,2171,"April 27, 2026 8:00","May 18, 2026 10:45",4/27/26 8:00,5/18/26 10:45,4/27/26 8:00,11/9/26 5:00,3d,125.66d,0ed,0.25,4/27/26 8:00,NA,"April 27, 2026 8:00","May 15, 2026 5:00",Start No Earlier Than,4/27/26 8:00,4/30/26 3:00,5/1/26 8:45,3/24/26 6:47,0h,0h,0h,0,0,0,0,0,1.3.3.5.4,500,No,No,No,,,GreenCircle,,,,,,,,0,0,0,0d,0d,0d,No,No,No,No,No,No,No,No,No,No,No,0,0,0,0,0,
2173,688,Yes,Auto Scheduled,ITC-1 Defect Correction / Retesting / Mitigation / Close,10d,Fixed Units,5,10d,2172SS+4d,"May 6, 2026 8:00","May 19, 2026 5:00",5/6/26 8:00,5/19/26 5:00,5/6/26 8:00,11/9/26 5:00,0d,124d,0ed,0.25,5/6/26 8:00,NA,"May 18, 2026 8:00","May 29, 2026 5:00",As Soon As Possible,NA,5/8/26 12:00,5/8/26 1:00,3/24/26 6:49,0h,0h,0h,0,0,0,0,0,1.3.3.5.5,500,No,No,No,,,GreenCircle,,,,,,,,0,0,0,0d,0d,0d,No,No,No,No,No,No,No,No,No,No,No,0,0,0,0,0,
2174,689,Yes,Auto Scheduled,ITC-1 Gate Review,8h,Fixed Units,5,0.13d,2173FS-3d,"May 15, 2026 8:00","May 15, 2026 5:00",5/15/26 8:00,5/15/26 5:00,11/9/26 8:00,11/9/26 5:00,1008h,1008h,0ed,0,NA,NA,"July 23, 2026 8:00","July 23, 2026 9:00",As Soon As Possible,NA,NA,NA,3/24/26 6:52,0h,0h,0h,0,0,0,0,0,1.3.3.5.6,500,No,No,No,,,Black,,,,,,,,0,0,0,0d,0d,0d,No,No,No,No,No,No,No,No,No,No,No,0,0,0,0,0,
2175,2791,Yes,Auto Scheduled,ITC-2,15.13d,Fixed Duration,4,62d,,"May 29, 2026 4:00","June 19, 2026 5:00",5/29/26 4:00,6/19/26 5:00,5/28/26 11:00,11/9/26 5:00,0d,-1.5d,0ed,0,NA,NA,"April 30, 2026 8:00","July 24, 2026 5:00",As Soon As Possible,NA,NA,NA,4/23/26 11:05,45h,44h,0h,0,0,0,0,0,1.3.3.6,500,No,Yes,Yes,,,Black,,,,,,,,0,0,0,0d,0d,0d,No,No,No,No,No,No,No,No,No,No,No,0,0,0,0,0,
2176,2792,Yes,Auto Scheduled,Assign Resources to Depolyment 1 locations,2h,Fixed Units,5,0.13d,998,"May 29, 2026 4:00","June 1, 2026 9:00",5/29/26 4:00,6/1/26 9:00,5/28/26 11:00,5/28/26 2:00,0h,-12h,0ed,0,NA,NA,"April 30, 2026 8:00","April 30, 2026 9:00",As Soon As Possible,NA,NA,NA,4/23/26 11:05,2h,1h,0h,0,0,0,0,0,1.3.3.6.1,500,No,No,No,,,Black,,,,,,,,0,0,0,0d,0d,0d,No,No,No,No,No,No,No,No,No,No,No,0,0,0,0,0,
2177,2795,Yes,Auto Scheduled,Assign Tester ID's,2h,Fixed Units,5,0.25d,2176SS,"May 29, 2026 4:00","June 1, 2026 9:00",5/29/26 4:00,6/1/26 9:00,5/28/26 11:00,5/28/26 2:00,0h,-12h,0ed,0,NA,NA,"June 18, 2026 10:00","June 18, 2026 12:00",As Soon As Possible,NA,NA,NA,4/23/26 11:05,2h,2h,0h,0,0,0,0,0,1.3.3.6.2,500,No,No,No,,,Black,,,,,,,,0,0,0,0d,0d,0d,No,No,No,No,No,No,No,No,No,No,No,0,0,0,0,0,
2178,2948,Yes,Auto Scheduled,Identify Data and Processes for ITC,1d,Fixed Units,5,0d,2177SS,"May 29, 2026 4:00","June 1, 2026 4:00",5/29/26 4:00,6/1/26 4:00,5/28/26 11:00,5/29/26 11:00,0d,-1.5d,0ed,0,NA,NA,NA,NA,As Soon As Possible,NA,NA,NA,4/28/26 4:18,0h,0h,0h,0,0,0,0,0,1.3.3.6.3,500,No,No,No,,,Black,,,,,,,,0,0,0,0d,0d,0d,No,No,No,No,No,No,No,No,No,No,No,0,0,0,0,0,
2179,2949,Yes,Auto Scheduled,Run Costing for Data Identified(or ALL),4h,Fixed Units,5,0d,2178,"June 1, 2026 4:00","June 2, 2026 11:00",6/1/26 4:00,6/2/26 11:00,5/29/26 11:00,5/29/26 4:00,0h,-12h,0ed,0,NA,NA,NA,NA,As Soon As Possible,NA,NA,NA,4/28/26 4:19,0h,0h,0h,0,0,0,0,0,1.3.3.6.4,500,No,No,No,,,Black,,,,,,,,0,0,0,0d,0d,0d,No,No,No,No,No,No,No,No,No,No,No,0,0,0,0,0,
2180,2794,Yes,Auto Scheduled,Functional Smoke Testing,5d,Fixed Units,5,5d,2179,"June 2, 2026 11:00","June 9, 2026 11:00",6/2/26 11:00,6/9/26 11:00,5/29/26 4:00,6/5/26 4:00,0d,-1.5d,0ed,0,NA,NA,"June 18, 2026 9:00","June 25, 2026 9:00",As Soon As Possible,NA,NA,NA,4/23/26 11:05,40h,40h,0h,0,0,0,0,0,1.3.3.6.5,500,No,No,No,,,Black,,,,,,,,0,0,0,0d,0d,0d,No,No,No,No,No,No,No,No,No,No,No,0,0,0,0,0,
2181,2793,Yes,Auto Scheduled,Test Kickoff,1h,Fixed Units,5,0.13d,2165,"June 8, 2026 8:00","June 8, 2026 9:00",6/8/26 8:00,6/8/26 9:00,6/8/26 8:00,6/8/26 9:00,0h,-726h,0ed,0,NA,NA,"June 18, 2026 9:00","June 18, 2026 10:00",Must Start On,6/8/26 8:00,NA,NA,4/23/26 11:05,1h,1h,0h,0,0,0,0,0,1.3.3.6.6,500,No,No,No,,,Black,,,,,,,,0,0,0,0d,0d,0d,No,No,No,No,No,No,No,No,No,No,No,0,0,0,0,0,
2182,2796,Yes,Auto Scheduled,Team Testing,10d,Fixed Units,5,20d,2181SS,"June 8, 2026 8:00","June 19, 2026 5:00",6/8/26 8:00,6/19/26 5:00,10/27/26 8:00,11/9/26 5:00,0d,101d,0ed,0,NA,NA,"June 22, 2026 8:00","July 17, 2026 5:00",As Soon As Possible,NA,NA,NA,4/23/26 11:05,0h,0h,0h,0,0,0,0,0,1.3.3.6.7,500,No,No,No,,,Black,,,,,,,,0,0,0,0d,0d,0d,No,No,No,No,No,No,No,No,No,No,No,0,0,0,0,0,
2183,2797,Yes,Auto Scheduled,Defect Correction / Retesting / Mitigation / Close,5d,Fixed Units,5,5d,2182SS+3d,"June 11, 2026 8:00","June 17, 2026 5:00",6/11/26 8:00,6/17/26 5:00,11/3/26 8:00,11/9/26 5:00,0d,103d,0ed,0,NA,NA,"July 20, 2026 8:00","July 24, 2026 5:00",As Soon As Possible,NA,NA,NA,4/23/26 11:05,0h,0h,0h,0,0,0,0,0,1.3.3.6.8,500,No,No,No,,,Black,,,,,,,,0,0,0,0d,0d,0d,No,No,No,No,No,No,No,No,No,No,No,0,0,0,0,0,
2184,2798,Yes,Auto Scheduled,Gate Review,1h,Fixed Units,5,0.13d,2183SS+4d,"June 17, 2026 8:00","June 17, 2026 9:00",6/17/26 8:00,6/17/26 9:00,11/9/26 4:00,11/9/26 5:00,831h,831h,0ed,0,NA,NA,"July 23, 2026 8:00","July 23, 2026 9:00",As Soon As Possible,NA,NA,NA,4/23/26 11:05,0h,0h,0h,0,0,0,0,0,1.3.3.6.9,500,No,No,No,,,Black,,,,,,,,0,0,0,0d,0d,0d,No,No,No,No,No,No,No,No,No,No,No,0,0,0,0,0,
2185,915,Yes,Auto Scheduled,ITC-3,25.13d,Fixed Duration,4,62d,,"June 19, 2026 4:00","July 24, 2026 5:00",6/19/26 4:00,7/24/26 5:00,7/2/26 11:00,11/9/26 5:00,8.5d,8.5d,0ed,0,NA,NA,"April 30, 2026 8:00","July 24, 2026 5:00",As Soon As Possible,NA,NA,NA,3/31/26 8:55,45h,44h,0h,0,0,0,0,0,1.3.3.7,500,No,Yes,Yes,,,Black,,,,,,,,0,0,0,0d,0d,0d,No,No,No,No,No,No,No,No,No,No,No,0,0,0,0,0,
2186,922,Yes,Auto Scheduled,Assign Resources to Depolyment 1 locations,2h,Fixed Units,5,0.13d,1378,"June 19, 2026 4:00","June 22, 2026 9:00",6/19/26 4:00,6/22/26 9:00,7/2/26 11:00,7/2/26 2:00,0h,68h,0ed,0,NA,NA,"April 30, 2026 8:00","April 30, 2026 9:00",As Soon As Possible,NA,NA,NA,3/31/26 9:02,2h,1h,0h,0,0,0,0,0,1.3.3.7.1,500,No,No,No,,,Black,,,,,,,,0,0,0,0d,0d,0d,No,No,No,No,No,No,No,No,No,No,No,0,0,0,0,0,
2187,918,Yes,Auto Scheduled,Assign Tester ID's,2h,Fixed Units,5,0.25d,2186SS,"June 19, 2026 4:00","June 22, 2026 9:00",6/19/26 4:00,6/22/26 9:00,7/2/26 11:00,7/2/26 2:00,0h,68h,0ed,0,NA,NA,"June 18, 2026 10:00","June 18, 2026 12:00",As Soon As Possible,NA,NA,NA,3/31/26 8:55,2h,2h,0h,0,0,0,0,0,1.3.3.7.2,500,No,No,No,,,Black,,,,,,,,0,0,0,0d,0d,0d,No,No,No,No,No,No,No,No,No,No,No,0,0,0,0,0,
2188,2950,Yes,Auto Scheduled,Identify Data and Processes for ITC,1d,Fixed Units,5,0d,2187SS,"June 19, 2026 4:00","June 22, 2026 4:00",6/19/26 4:00,6/22/26 4:00,7/2/26 11:00,7/3/26 11:00,0d,8.5d,0ed,0,NA,NA,NA,NA,As Soon As Possible,NA,NA,NA,4/28/26 4:32,0h,0h,0h,0,0,0,0,0,1.3.3.7.3,500,No,No,No,,,Black,,,,,,,,0,0,0,0d,0d,0d,No,No,No,No,No,No,No,No,No,No,No,0,0,0,0,0,
2189,2951,Yes,Auto Scheduled,Run Costing for Data Identified,4h,Fixed Units,5,0d,2188,"June 22, 2026 4:00","June 23, 2026 11:00",6/22/26 4:00,6/23/26 11:00,7/3/26 11:00,7/3/26 4:00,0h,68h,0ed,0,NA,NA,NA,NA,As Soon As Possible,NA,NA,NA,4/28/26 4:32,0h,0h,0h,0,0,0,0,0,1.3.3.7.4,500,No,No,No,,,Black,,,,,,,,0,0,0,0d,0d,0d,No,No,No,No,No,No,No,No,No,No,No,0,0,0,0,0,
2190,917,Yes,Auto Scheduled,Functional Smoke Testing,5d,Fixed Units,5,5d,2189,"June 23, 2026 11:00","June 30, 2026 11:00",6/23/26 11:00,6/30/26 11:00,7/3/26 4:00,7/10/26 4:00,0d,8.5d,0ed,0,NA,NA,"June 18, 2026 9:00","June 25, 2026 9:00",As Soon As Possible,NA,NA,NA,3/31/26 8:55,40h,40h,0h,0,0,0,0,0,1.3.3.7.5,500,No,No,No,,,Black,,,,,,,,0,0,0,0d,0d,0d,No,No,No,No,No,No,No,No,No,No,No,0,0,0,0,0,
2191,916,Yes,Auto Scheduled,Test Kickoff,1h,Fixed Units,5,0.13d,2166,"July 13, 2026 8:00","July 13, 2026 9:00",7/13/26 8:00,7/13/26 9:00,7/13/26 8:00,7/13/26 9:00,0h,0h,0ed,0,NA,NA,"June 18, 2026 9:00","June 18, 2026 10:00",Must Start On,7/13/26 8:00,NA,NA,3/31/26 8:55,1h,1h,0h,0,0,0,0,0,1.3.3.7.6,500,No,No,No,,,Black,,,,,,,,0,0,0,0d,0d,0d,No,No,No,No,No,No,No,No,No,No,No,0,0,0,0,0,
2192,919,Yes,Auto Scheduled,Team Testing,10d,Fixed Units,5,20d,2191SS,"July 13, 2026 8:00","July 24, 2026 5:00",7/13/26 8:00,7/24/26 5:00,10/27/26 8:00,11/9/26 5:00,0d,76d,0ed,0,NA,NA,"June 22, 2026 8:00","July 17, 2026 5:00",As Soon As Possible,NA,NA,NA,3/31/26 8:55,0h,0h,0h,0,0,0,0,0,1.3.3.7.7,500,No,No,No,,,Black,,,,,,,,0,0,0,0d,0d,0d,No,No,No,No,No,No,No,No,No,No,No,0,0,0,0,0,
2193,923,Yes,Auto Scheduled,Defect Correction / Retesting / Mitigation / Close,5d,Fixed Units,5,5d,2192SS+3d,"July 16, 2026 8:00","July 22, 2026 5:00",7/16/26 8:00,7/22/26 5:00,11/3/26 8:00,11/9/26 5:00,0d,78d,0ed,0,NA,NA,"July 20, 2026 8:00","July 24, 2026 5:00",As Soon As Possible,NA,NA,NA,3/31/26 9:09,0h,0h,0h,0,0,0,0,0,1.3.3.7.8,500,No,No,No,,,Black,,,,,,,,0,0,0,0d,0d,0d,No,No,No,No,No,No,No,No,No,No,No,0,0,0,0,0,
2194,921,Yes,Auto Scheduled,Gate Review,0h,Fixed Units,5,0.13d,2193SS+4d,"July 21, 2026 5:00","July 21, 2026 5:00",7/21/26 5:00,7/21/26 5:00,11/9/26 5:00,11/9/26 5:00,632h,632h,0ed,0,NA,NA,"July 23, 2026 8:00","July 23, 2026 9:00",As Soon As Possible,NA,NA,NA,3/31/26 8:55,0h,0h,0h,0,0,0,0,0,1.3.3.7.9,500,Yes,No,No,,,Black,,,,,,,,0,0,0,0d,0d,0d,No,No,No,No,No,No,No,No,No,No,No,0,0,0,0,0,
2195,22,Yes,Auto Scheduled,UAT (DR),44.38d,Fixed Duration,4,90.13d,,"August 17, 2026 8:00","October 16, 2026 11:00",8/17/26 8:00,10/16/26 11:00,8/7/26 9:00,11/9/26 5:00,0d,-5.88d,0ed,0,NA,NA,"April 30, 2026 8:00","September 3, 2026 9:00",As Soon As Possible,NA,NA,NA,3/13/25 11:10,45h,44h,0h,0,0,0,0,0,1.3.3.8,500,No,Yes,Yes,,,Black,,,,,,,,0,0,0,0d,0d,0d,No,No,No,No,No,No,No,No,No,No,No,0,0,0,0,0,
2196,924,Yes,Auto Scheduled,Assign Resources to Depolyment 1 locations,2h,Fixed Units,5,0.13d,"1759,2140","October 8, 2026 2:00","October 8, 2026 4:00",10/8/26 2:00,10/8/26 4:00,8/7/26 9:00,8/7/26 11:00,0h,-356h,0ed,0,NA,NA,"April 30, 2026 8:00","April 30, 2026 9:00",As Soon As Possible,NA,NA,NA,3/31/26 9:16,2h,1h,0h,0,0,0,0,0,1.3.3.8.1,500,No,No,No,,,Black,,,,,,,,0,0,0,0d,0d,0d,No,No,No,No,No,No,No,No,No,No,No,0,0,0,0,0,
2197,927,Yes,Auto Scheduled,Assign Tester ID's,2h,Fixed Units,5,0.25d,2196,"October 8, 2026 4:00","October 9, 2026 9:00",10/8/26 4:00,10/9/26 9:00,8/7/26 11:00,8/7/26 2:00,0h,-356h,0ed,0,NA,NA,"August 6, 2026 10:00","August 6, 2026 12:00",As Soon As Possible,NA,NA,NA,3/31/26 9:16,2h,2h,0h,0,0,0,0,0,1.3.3.8.2,500,No,No,No,,,Black,,,,,,,,0,0,0,0d,0d,0d,No,No,No,No,No,No,No,No,No,No,No,0,0,0,0,0,
2198,3361,Yes,Auto Scheduled,Run Costing for Data Identified,4h,Fixed Units,5,0d,2197SS,"October 8, 2026 4:00","October 9, 2026 11:00",10/8/26 4:00,10/9/26 11:00,8/7/26 11:00,8/7/26 4:00,0h,-356h,0ed,0,NA,NA,NA,NA,As Soon As Possible,NA,NA,NA,4/30/26 7:54,0h,0h,0h,0,0,0,0,0,1.3.3.8.3,500,No,No,No,,,Black,,,,,,,,0,0,0,0d,0d,0d,No,No,No,No,No,No,No,No,No,No,No,0,0,0,0,0,
2199,926,Yes,Auto Scheduled,Functional Smoke Testing,5d,Fixed Units,5,5d,2198,"October 9, 2026 11:00","October 16, 2026 11:00",10/9/26 11:00,10/16/26 11:00,8/7/26 4:00,8/14/26 4:00,0d,-44.5d,0ed,0,NA,NA,"August 3, 2026 8:00","August 7, 2026 5:00",As Soon As Possible,NA,NA,NA,3/31/26 9:16,40h,40h,0h,0,0,0,0,0,1.3.3.8.4,500,No,No,No,,,Black,,,,,,,,0,0,0,0d,0d,0d,No,No,No,No,No,No,No,No,No,No,No,0,0,0,0,0,
2200,925,Yes,Auto Scheduled,Test Kickoff,1h,Fixed Units,5,0.13d,2167,"August 17, 2026 8:00","August 17, 2026 9:00",8/17/26 8:00,8/17/26 9:00,8/17/26 8:00,8/17/26 9:00,0h,-356h,0ed,0,NA,NA,"August 6, 2026 9:00","August 6, 2026 10:00",Must Start On,8/17/26 8:00,NA,NA,3/31/26 9:16,1h,1h,0h,0,0,0,0,0,1.3.3.8.5,500,No,No,No,,,Black,,,,,,,,0,0,0,0d,0d,0d,No,No,No,No,No,No,No,No,No,No,No,0,0,0,0,0,
2201,928,Yes,Auto Scheduled,Team Testing,10d,Fixed Units,5,15d,2200SS,"August 17, 2026 8:00","August 28, 2026 5:00",8/17/26 8:00,8/28/26 5:00,10/27/26 8:00,11/9/26 5:00,0d,51d,0ed,0,NA,NA,"August 10, 2026 8:00","August 28, 2026 5:00",As Soon As Possible,NA,NA,NA,3/31/26 9:16,0h,0h,0h,0,0,0,0,0,1.3.3.8.6,500,No,No,No,,,Black,,,,,,,,0,0,0,0d,0d,0d,No,No,No,No,No,No,No,No,No,No,No,0,0,0,0,0,
2202,3362,Yes,Auto Scheduled,Defect Correction / Retesting / Mitigation / Close,0d,Fixed Units,5,5d,2201SS+3d,"August 19, 2026 5:00","August 19, 2026 5:00",8/19/26 5:00,8/19/26 5:00,11/4/26 8:00,11/4/26 8:00,0d,54d,0ed,0,NA,NA,"July 20, 2026 8:00","July 24, 2026 5:00",As Soon As Possible,NA,NA,NA,4/30/26 7:56,0h,0h,0h,0,0,0,0,0,1.3.3.8.7,500,Yes,No,No,,,Black,,,,,,,,0,0,0,0d,0d,0d,No,No,No,No,No,No,No,No,No,No,No,0,0,0,0,0,
2203,930,Yes,Auto Scheduled,Gate Review,0h,Fixed Units,5,0.13d,2202SS+4d,"August 25, 2026 5:00","August 25, 2026 5:00",8/25/26 5:00,8/25/26 5:00,11/9/26 5:00,11/9/26 5:00,432h,432h,0ed,0,NA,NA,"September 3, 2026 8:00","September 3, 2026 9:00",As Soon As Possible,NA,NA,NA,3/31/26 9:16,0h,0h,0h,0,0,0,0,0,1.3.3.8.8,500,Yes,No,No,,,Black,,,,,,,,0,0,0,0d,0d,0d,No,No,No,No,No,No,No,No,No,No,No,0,0,0,0,0,
2204,683,Yes,Auto Scheduled,Business Readniess,191d,Fixed Duration,2,175d,,"February 16, 2026 8:00","November 9, 2026 5:00",2/16/26 8:00,11/9/26 5:00,2/16/26 8:00,11/9/26 5:00,0d,0d,0ed,0.38,2/16/26 8:00,NA,"February 16, 2026 8:00","October 16, 2026 5:00",As Soon As Possible,NA,5/26/26 3:00,5/26/26 3:00,3/24/26 6:44,"4,584h","4,200h","1,746h",0,0,0,0,0,1.4,500,No,Yes,Yes,,,GreenCircle,,,,,,,,0,0,0,0d,0d,0d,No,No,No,No,No,No,No,No,No,No,No,0,0,0,0,0,
2205,215,Yes,Auto Scheduled,Training Readiness,191d,Fixed Duration,3,175d,,"February 16, 2026 8:00","November 9, 2026 5:00",2/16/26 8:00,11/9/26 5:00,2/16/26 8:00,11/9/26 5:00,0d,0d,0ed,0.38,2/16/26 8:00,NA,"February 16, 2026 8:00","October 16, 2026 5:00",As Soon As Possible,NA,5/26/26 3:00,5/26/26 3:00,6/18/25 8:06,"4,584h","4,200h","1,746h",0,0,0,0,0,1.4.1,500,No,Yes,Yes,,,GreenCircle,,,,,,,,0,0,0,0d,0d,0d,No,No,No,No,No,No,No,No,No,No,No,0,0,0,0,0,
2206,216,Yes,Auto Scheduled,Content Development,191d,Fixed Duration,4,126d,,"February 16, 2026 8:00","November 9, 2026 5:00",2/16/26 8:00,11/9/26 5:00,2/16/26 8:00,11/9/26 5:00,0d,0d,0ed,0.44,2/16/26 8:00,NA,"February 16, 2026 8:00","August 10, 2026 5:00",As Soon As Possible,NA,5/26/26 3:00,5/26/26 3:00,6/18/25 8:06,"4,008h","3,752h","1,746h",0,0,0,0,0,1.4.1.1,500,No,Yes,Yes,,,GreenCircle,,,,,,,,0,0,0,0d,0d,0d,No,No,No,No,No,No,No,No,No,No,No,0,0,0,0,0,
2207,232,Yes,Auto Scheduled,Verify Role Mapping Complete,66d,Fixed Units,5,121d,,"May 1, 2026 8:00","July 31, 2026 5:00",5/1/26 8:00,7/31/26 5:00,5/1/26 8:00,11/9/26 5:00,0d,71d,0ed,0.46000000000000002,5/1/26 8:00,NA,"February 16, 2026 8:00","August 3, 2026 5:00",Finish No Earlier Than,7/31/26 5:00,6/12/26 10:00,6/12/26 10:00,6/18/25 8:36,528h,968h,242h,0,0,0,0,0,1.4.1.1.1,500,No,No,No,,,GreenCircle,,,,,,,,0,0,0,0d,0d,0d,No,No,No,No,No,No,No,No,No,No,No,0,0,0,0,0,
2208,225,Yes,Auto Scheduled,Develop Curriculum,66d,Fixed Units,5,80d,2207SS,"May 1, 2026 8:00","July 31, 2026 5:00",5/1/26 8:00,7/31/26 5:00,5/1/26 8:00,7/31/26 5:00,0d,0d,0ed,0.29999999999999999,5/1/26 8:00,NA,"February 16, 2026 8:00","June 5, 2026 5:00",Finish No Earlier Than,7/31/26 5:00,5/28/26 5:00,5/29/26 8:00,6/18/25 8:36,528h,640h,160h,0,0,0,0,0,1.4.1.1.2,500,No,No,No,,,GreenCircle,,,,,,,,0,0,0,0d,0d,0d,No,No,No,No,No,No,No,No,No,No,No,0,0,0,0,0,
2209,4542,Yes,Auto Scheduled,Develop Course ppts,86d,Fixed Units,5,121d,2208SS,"May 1, 2026 8:00","August 28, 2026 5:00",5/1/26 8:00,8/28/26 5:00,5/1/26 8:00,10/30/26 5:00,0d,45d,0ed,0.34999999999999998,5/1/26 8:00,NA,"February 16, 2026 8:00","August 3, 2026 5:00",Finish No Earlier Than,8/28/26 5:00,6/12/26 10:00,6/12/26 10:00,5/4/26 2:12,688h,968h,242h,0,0,0,0,0,1.4.1.1.3,500,No,No,No,,,GreenCircle,,,,,,,,0,0,0,0d,0d,0d,No,No,No,No,No,No,No,No,No,No,No,0,0,0,0,0,
2210,233,Yes,Auto Scheduled,Develop Work Instructions,86d,Fixed Units,5,71d,2209SS,"May 1, 2026 8:00","August 28, 2026 5:00",5/1/26 8:00,8/28/26 5:00,5/1/26 8:00,11/9/26 5:00,51d,51d,0ed,0.20999999999999999,5/1/26 8:00,NA,"April 27, 2026 8:00","August 3, 2026 5:00",Finish No Earlier Than,8/28/26 5:00,5/26/26 3:00,5/26/26 3:00,6/18/25 8:36,688h,568h,142h,0,0,0,0,0,1.4.1.1.4,500,No,No,No,,,GreenCircle,,,,,,,,0,0,0,0d,0d,0d,No,No,No,No,No,No,No,No,No,No,No,0,0,0,0,0,
2211,217,Yes,Auto Scheduled,Develop Training Data Sheets (Testing/Training),71d,Fixed Units,5,71d,2208,"August 3, 2026 8:00","November 9, 2026 5:00",8/3/26 8:00,11/9/26 5:00,8/3/26 8:00,11/9/26 5:00,0d,0d,0ed,0,NA,NA,"April 27, 2026 8:00","August 3, 2026 5:00",Start No Earlier Than,4/30/26 5:00,NA,NA,6/18/25 8:06,568h,568h,0h,0,0,0,0,0,1.4.1.1.5,500,No,No,No,,,Black,,,,,,,,0,0,0,0d,0d,0d,No,No,No,No,No,No,No,No,No,No,No,0,0,0,0,0,
2212,218,Yes,Auto Scheduled,Develop Train the Trainer,120d,Fixed Units,5,120d,2207SS,"February 16, 2026 8:00","July 31, 2026 5:00",2/16/26 8:00,7/31/26 5:00,2/16/26 8:00,7/31/26 5:00,0d,0d,0ed,1,2/16/26 8:00,7/31/26 5:00,"February 16, 2026 8:00","July 31, 2026 5:00",Finish No Earlier Than,7/31/26 5:00,7/31/26 5:00,7/31/26 5:00,6/18/25 8:06,960h,960h,960h,0,0,0,0,0,1.4.1.1.6,500,No,No,No,,,GreenSquare,,,,,,,,0,0,0,0d,0d,0d,No,No,No,No,No,No,No,No,No,No,No,0,0,0,0,0,
2213,220,Yes,Auto Scheduled,Publish Training Materials to SP/LMS,6d,Fixed Units,5,6d,2209,"August 31, 2026 8:00","September 7, 2026 5:00",8/31/26 8:00,9/7/26 5:00,11/2/26 8:00,11/9/26 5:00,45d,45d,0ed,0,NA,NA,"August 3, 2026 8:00","August 10, 2026 5:00",Finish No Earlier Than,8/28/26 5:00,NA,NA,6/18/25 8:06,48h,48h,0h,0,0,0,0,0,1.4.1.1.7,500,No,No,No,,,Black,,,,,,,,0,0,0,0d,0d,0d,No,No,No,No,No,No,No,No,No,No,No,0,0,0,0,0,
2214,221,Yes,Auto Scheduled,Talent LMS Application Setup,1d,Fixed Units,4,1d,2209,"August 31, 2026 8:00","August 31, 2026 5:00",8/31/26 8:00,8/31/26 5:00,11/9/26 8:00,11/9/26 5:00,50d,50d,0ed,0,NA,NA,"August 10, 2026 8:00","August 10, 2026 5:00",Finish No Earlier Than,8/28/26 5:00,NA,NA,6/18/25 8:06,0h,0h,0h,0,0,0,0,0,1.4.1.2,500,No,No,No,,,Black,,,,,,,,0,0,0,0d,0d,0d,No,No,No,No,No,No,No,No,No,No,No,0,0,0,0,0,
2215,241,Yes,Auto Scheduled,Train the Trainer,20d,Fixed Duration,4,20d,,"August 3, 2026 8:00","August 28, 2026 5:00",8/3/26 8:00,8/28/26 5:00,8/25/26 8:00,9/21/26 5:00,16d,16d,0ed,0,NA,NA,"August 3, 2026 8:00","August 28, 2026 5:00",As Soon As Possible,NA,NA,NA,6/18/25 9:20,160h,160h,0h,0,0,0,0,0,1.4.1.3,500,No,Yes,Yes,,,Black,,,,,,,,0,0,0,0d,0d,0d,No,No,No,No,No,No,No,No,No,No,No,0,0,0,0,0,
2216,247,Yes,Auto Scheduled,Deliver Train the Trainer (BPL->SME),20d,Fixed Units,5,20d,2212,"August 3, 2026 8:00","August 28, 2026 5:00",8/3/26 8:00,8/28/26 5:00,8/25/26 8:00,9/21/26 5:00,0d,16d,0ed,0,NA,NA,"August 3, 2026 8:00","August 28, 2026 5:00",Finish No Earlier Than,8/28/26 5:00,NA,NA,6/18/25 9:32,160h,160h,0h,0,0,0,0,0,1.4.1.3.1,500,No,No,No,,,Black,,,,,,,,0,0,0,0d,0d,0d,No,No,No,No,No,No,No,No,No,No,No,0,0,0,0,0,
2217,242,Yes,Auto Scheduled,End User Training Exeuction,71d,Fixed Duration,4,71d,,"July 10, 2026 8:00","October 16, 2026 5:00",7/10/26 8:00,10/16/26 5:00,9/22/26 8:00,11/9/26 5:00,16d,16d,0ed,0,NA,NA,"July 10, 2026 8:00","October 16, 2026 5:00",As Soon As Possible,NA,NA,NA,6/18/25 9:20,416h,288h,0h,0,0,0,0,0,1.4.1.4,500,No,Yes,Yes,,,Black,,,,,,,,0,0,0,0d,0d,0d,No,No,No,No,No,No,No,No,No,No,No,0,0,0,0,0,
2218,913,Yes,Auto Scheduled,User Training Plan and Schedule,136h,Fixed Units,5,1d,,"July 10, 2026 8:00","August 3, 2026 5:00",7/10/26 8:00,8/3/26 5:00,10/16/26 8:00,11/9/26 5:00,560h,560h,0ed,0,NA,NA,"July 10, 2026 8:00","July 10, 2026 5:00",Finish No Earlier Than,8/3/26 5:00,NA,NA,3/31/26 8:45,136h,8h,0h,0,0,0,0,0,1.4.1.4.1,500,No,No,No,,,Black,,,,,,,,0,0,0,0d,0d,0d,No,No,No,No,No,No,No,No,No,No,No,0,0,0,0,0,
2219,246,Yes,Auto Scheduled,Deliver End User Training,35d,Fixed Units,5,35d,2216,"August 31, 2026 8:00","October 16, 2026 5:00",8/31/26 8:00,10/16/26 5:00,9/22/26 8:00,11/9/26 5:00,16d,16d,0ed,0,NA,NA,"August 31, 2026 8:00","October 16, 2026 5:00",Start No Earlier Than,3/9/26 8:00,NA,NA,6/18/25 9:26,280h,280h,0h,0,0,0,0,0,1.4.1.4.2,500,No,No,No,,,Black,,,,,,,,0,0,0,0d,0d,0d,No,No,No,No,No,No,No,No,No,No,No,0,0,0,0,0,
