| id | uid | name | workstream | outlineNumber | wbs | start | finish | baselineFinish | pct | outlineLevel | parentUid | predCount | sucCount | predIds | sucIds | totalSlackDaysRaw | freeSlackDaysRaw | constraintType | taskMode | mspSourceFile | mspImportVersion | assignedTo | slipDays | isSlipped | isDue14 | status | cpm | scheduleQuality | constraintDate | childUids | isSummary | isOverdueStart |
| --- | --- | --- | --- | --- | --- | --- | --- | --- | --- | --- | --- | --- | --- | --- | --- | --- | --- | --- | --- | --- | --- | --- | --- | --- | --- | --- | --- | --- | --- | --- | --- | --- |
| 357ae9be-8a60-8100-80e4-db51325be5c4 | 2046 | Load File Staged and Posted "Ready" | Finance | 1.2.2.2.68.1 | 1.2.2.2.68.1 | 2026-05-18 | 2026-05-18 | 2026-04-10 | 0 | 6 | 2045 | 1 | 1 | 357ae9be-8a60-8103-8329-f20784da45ca | 357ae9be-8a60-81b7-84de-f4ceefa9feeb | -571 | 0 | As Soon As Possible | Auto Scheduled | AMETEK SAP XXL Project Plan Replan MSP Task.csv | AMETEK SAP XXL Project Plan Replan MSP Task.csv__2f0764ccac__2026-05-05T02-44-15-662Z | Kasey Hughes | 38 | True | True | Not started | True  -571 0 1 0 0 0 26 | Wrong Dependency, Negative Float Critical 5 1 0  |  |  |  |  |
| 357ae9be-8a60-8100-838c-f8aa75091c8f | 2686 | Run ALE Transaction to QS5 from DS4 130 | PTM | 1.2.4.2.45.1 | 1.2.4.2.45.1 | 2026-09-29 | 2026-10-01 | 2026-04-16 | 0 | 6 | 2685 | 1 | 1 | 357ae9be-8a60-81a8-b353-cfe1d84027a4 | 357ae9be-8a60-81bf-9459-dc652a23da67 | -688 | 0 | Finish No Earlier Than | Auto Scheduled | AMETEK SAP XXL Project Plan Replan MSP Task.csv | AMETEK SAP XXL Project Plan Replan MSP Task.csv__2f0764ccac__2026-05-05T02-44-15-662Z | Eric Heisler | 168 | True |  | Not started | True  -688 0 1 0 0 0 26 | Wrong Dependency, Negative Float Critical 5 1 0 True | 2026-04-17 |  |  |  |
| 357ae9be-8a60-8100-85d1-eab373d86bef | 4465 | Load | Data | 1.2.5.2.52.5 | 1.2.5.2.52.5 | 2026-10-02 | 2026-10-02 | 2026-04-10 | 0 | 6 | 4460 | 1 | 1 | 357ae9be-8a60-81e1-bb8c-eb223e9a2b07 | 357ae9be-8a60-81a8-97af-fbba80a4b163 | -694.52 | 0 | Start No Earlier Than | Auto Scheduled | AMETEK SAP XXL Project Plan Replan MSP Task.csv | AMETEK SAP XXL Project Plan Replan MSP Task.csv__2f0764ccac__2026-05-05T02-44-15-662Z | Jyoti Nain | 175 | True |  | Not started | True  -694.52 0 1 0 0 0 26 | Negative Float Critical 2 0 0 True | 2026-04-17 |  |  |  |
| 357ae9be-8a60-8100-8dcc-dbb8060e4ac9 | 1296 | Validate Fiori | Basis | 1.1.1.6.1.10 | 1.1.1.6.1.10 | 2026-05-22 | 2026-05-22 | 2026-05-19 | 0 | 6 | 3339 | 1 | 1 | 357ae9be-8a60-814d-b14c-ff7f7174130b | 357ae9be-8a60-8175-9bc5-d3ee8da00162 | -241.52 | 0 | As Soon As Possible | Auto Scheduled | AMETEK SAP XXL Project Plan Replan MSP Task.csv | AMETEK SAP XXL Project Plan Replan MSP Task.csv__2f0764ccac__2026-05-05T02-44-15-662Z | Lokchetan Meghavath | 3 | True |  | Not started | True  -241.52 0 1 0 0 0 26 | Negative Float Critical 2 0 0  |  |  |  |  |
| 357ae9be-8a60-8100-8e82-dc74ce10b200 | 2654 | PTM_CM48_Equipment_Master_Service | PTM | 1.2.4.2.36 | 1.2.4.2.36 | 2026-09-24 | 2026-10-02 | 2026-04-21 | 0 | 5 | 2898 | 0 | 0 |  |  | -86.97 | 0 | As Soon As Possible | Auto Scheduled | AMETEK SAP XXL Project Plan Replan MSP Task.csv | AMETEK SAP XXL Project Plan Replan MSP Task.csv__2f0764ccac__2026-05-05T02-44-15-662Z | Brad Meseck | 164 | True |  | Not started | True  -86.97 0 0 0 0 0 20 | Negative Float Critical 2 0 0  |  | 2655, 2660, 2658, 2659, 2656, 2657 | True |  |
| 357ae9be-8a60-8100-9743-e21288c70c43 | 2435 | Simulate Load | Data | 1.2.4.2.3.3 | 1.2.4.2.3.3 | 2026-09-25 | 2026-09-28 | 2026-04-08 | 0 | 6 | 2432 | 1 | 1 | 357ae9be-8a60-811e-8bd6-c6fafb841a8a | 357ae9be-8a60-81ff-8fa4-da3fbefd464f | -718.5 | 0 | As Soon As Possible | Auto Scheduled | AMETEK SAP XXL Project Plan Replan MSP Task.csv | AMETEK SAP XXL Project Plan Replan MSP Task.csv__2f0764ccac__2026-05-05T02-44-15-662Z | Jyoti Nain | 173 | True |  | Not started | True  -718.5 0 1 0 0 0 26 | Negative Float Critical 2 0 0  |  |  |  |  |
| 357ae9be-8a60-8100-a0f6-f6136a80f8ad | 3130 | Simulate Load | Data | 1.2.3.2.27.3 | 1.2.3.2.27.3 | 2026-06-11 | 2026-06-11 | 2026-04-16 | 0 | 6 | 3127 | 1 | 1 | 357ae9be-8a60-81ed-9812-d1a16beef340 | 357ae9be-8a60-81ff-9287-f5c8b548cdd7 | -151.27 | 0 | As Soon As Possible | Auto Scheduled | AMETEK SAP XXL Project Plan Replan MSP Task.csv | AMETEK SAP XXL Project Plan Replan MSP Task.csv__2f0764ccac__2026-05-05T02-44-15-662Z | Jyoti Nain | 56 | True |  | Not started | True  -151.27 0 1 0 0 0 26 | Negative Float Critical 2 0 0  |  |  |  |  |
| 357ae9be-8a60-8100-bcdd-c12830fbb159 | 2504 | Load File Staged and Posted "Ready" | OTC | 1.2.4.2.14.1 | 1.2.4.2.14.1 | 2026-09-29 | 2026-09-29 | 2026-04-09 | 0 | 6 | 2503 | 1 | 1 | 357ae9be-8a60-8125-970d-fc892cccb65b | 357ae9be-8a60-81e4-9de4-e6e7c17c4453 | -40260 | 0 | As Soon As Possible | Auto Scheduled | AMETEK SAP XXL Project Plan Replan MSP Task.csv | AMETEK SAP XXL Project Plan Replan MSP Task.csv__2f0764ccac__2026-05-05T02-44-15-662Z | Ric Haraida | 173 | True |  | Not started | True  -40260 0 1 0 0 0 26 | Wrong Dependency, Negative Float Critical 5 1 0  |  |  |  |  |
| 357ae9be-8a60-8100-bdcf-cb2f255750e1 | 1211 | Set Embargo situations | OTC | 1.2.1.66.2 | 1.2.1.66.2 | 2026-04-14 | 2026-04-14 | 2026-04-13 | 100 | 5 | 1209 | 1 | 1 | 357ae9be-8a60-812a-be7b-e2ffe4bd4e80 | 357ae9be-8a60-8147-b970-fe2d829ad4fc | 0 | 0 | As Soon As Possible | Auto Scheduled | AMETEK SAP XXL Project Plan Replan MSP Task.csv | AMETEK SAP XXL Project Plan Replan MSP Task.csv__2f0764ccac__2026-05-05T02-44-15-662Z | James VanRiper |  |  |  | Done | True  0 0 1 0 0 0 18 | Low 0 0 0  |  |  |  |  |
| 357ae9be-8a60-8101-8ec8-f2861b9b8301 | 1709 | Post Load Validation | Finance | 1.2.2.2.4.6 | 1.2.2.2.4.6 | 2026-05-19 | 2026-05-20 | 2026-04-07 | 0 | 6 | 1703 | 1 | 1 | 357ae9be-8a60-81af-89dd-d525f332804f | 357ae9be-8a60-8192-9469-c48bb15ac471 | -63.52 | 0 | As Soon As Possible | Auto Scheduled | AMETEK SAP XXL Project Plan Replan MSP Task.csv | AMETEK SAP XXL Project Plan Replan MSP Task.csv__2f0764ccac__2026-05-05T02-44-15-662Z | Kasey Hughes | 43 | True | True | Not started | True  -63.52 0 1 1 16 0 31 | Wrong Successor, Negative Float Critical 5 0 1  |  |  |  |  |
| 357ae9be-8a60-8101-9503-e80b40c482cd | 2583 | Post Load Validation | PTP;OTC | 1.2.4.2.25.6 | 1.2.4.2.25.6 | 2026-09-28 | 2026-09-29 | 2026-04-15 | 0 | 6 | 2577 | 1 | 0 | 357ae9be-8a60-815d-83c2-c9d7bba0f5ca |  | -667.25 | 0 | As Soon As Possible | Auto Scheduled | AMETEK SAP XXL Project Plan Replan MSP Task.csv | AMETEK SAP XXL Project Plan Replan MSP Task.csv__2f0764ccac__2026-05-05T02-44-15-662Z | Nevin Varkey | 167 | True |  | Not started | True  -667.25 0 0 0 0 0 20 | Negative Float, Open Finish Critical 3 0 0  |  |  |  |  |
| 357ae9be-8a60-8101-a382-e8a212fb3518 | 19 | ITC-1 | (Unassigned) | 1.3.3.5 | 1.3.3.5 | 2026-04-16 | 2026-05-19 | 2026-07-23 | 37 | 4 | 18 | 1 | 0 | 357ae9be-8a60-8145-abcf-ead9952da254 |  | 124 | 124 | As Soon As Possible | Auto Scheduled | AMETEK SAP XXL Project Plan Replan MSP Task.csv | AMETEK SAP XXL Project Plan Replan MSP Task.csv__2f0764ccac__2026-05-05T02-44-15-662Z | COULD NOT BE DETERMINED |  |  | True | In progress |   124 124 0 0 0 1 0 | Low 0 0 0  |  | 689, 684, 685, 688, 834, 686 | True |  |
| 357ae9be-8a60-8101-a3f5-fec79702f828 | 4331 | Extract File | Data | 1.2.5.2.27.1 | 1.2.5.2.27.1 | 2026-09-29 | 2026-09-29 | 2026-04-15 | 0 | 6 | 4330 | 2 | 2 | 357ae9be-8a60-815a-88f7-ce4ab477ce7a, 357ae9be-8a60-8183-a0d2-d2ac8860e8c6 | 357ae9be-8a60-810e-befc-ccddeb6e62cb, 357ae9be-8a60-81d2-8e99-d2e4ba649c85 | -700.39 | 0 | As Soon As Possible | Auto Scheduled | AMETEK SAP XXL Project Plan Replan MSP Task.csv | AMETEK SAP XXL Project Plan Replan MSP Task.csv__2f0764ccac__2026-05-05T02-44-15-662Z | Jyoti Nain | 167 | True |  | Not started | True  -700.39 0 2 0 0 0 32 | Negative Float Critical 2 0 0  |  |  |  |  |
| 357ae9be-8a60-8101-a823-ff7b777a40ad | 3252 | Post Load Validation | OTC | 1.2.3.2.50.6 | 1.2.3.2.50.6 | 2026-06-18 | 2026-06-18 | 2026-04-21 | 0 | 6 | 3246 | 1 | 0 | 357ae9be-8a60-8189-aca6-c0214ba15331 |  | -187.27 | 0 | As Soon As Possible | Auto Scheduled | AMETEK SAP XXL Project Plan Replan MSP Task.csv | AMETEK SAP XXL Project Plan Replan MSP Task.csv__2f0764ccac__2026-05-05T02-44-15-662Z | Ric Haraida | 58 | True |  | Not started | True  -187.27 0 0 0 0 0 20 | Negative Float, Open Finish Critical 3 0 0  |  |  |  |  |
| 357ae9be-8a60-8101-ab0f-e94ffe0140fd | 3031 | Pre Load Validation | OTC | 1.2.3.2.13.2 | 1.2.3.2.13.2 | 2026-06-11 | 2026-06-11 | 2026-04-08 | 0 | 6 | 3029 | 1 | 2 | 357ae9be-8a60-813e-83db-f9a25488072f | 357ae9be-8a60-8199-9d45-f8c46d2bf52e, 357ae9be-8a60-8108-90f1-c7a2d99193b6 | -11671 | 0 | As Soon As Possible | Auto Scheduled | AMETEK SAP XXL Project Plan Replan MSP Task.csv | AMETEK SAP XXL Project Plan Replan MSP Task.csv__2f0764ccac__2026-05-05T02-44-15-662Z | Ric Haraida | 64 | True |  | Not started | True  -11671 0 2 2 871 0 37 | Wrong Successor, Negative Float Critical 5 0 2  |  |  |  |  |
| 357ae9be-8a60-8101-af29-f859a40bad95 | 4522 | RTR_CM18_WBS Element | (Unassigned) | 1.2.5.2.68 | 1.2.5.2.68 | 2026-09-24 | 2026-09-25 | 2026-04-17 | 0 | 5 | 4162 | 0 | 0 |  |  | -81.44 | 0 | As Soon As Possible | Auto Scheduled | AMETEK SAP XXL Project Plan Replan MSP Task.csv | AMETEK SAP XXL Project Plan Replan MSP Task.csv__2f0764ccac__2026-05-05T02-44-15-662Z | COULD NOT BE DETERMINED | 161 | True |  | Not started | True  -81.44 0 0 0 0 0 20 | Negative Float Critical 2 0 0  |  | 4525, 4523, 4528, 4529, 4527, 4524, 4526 | True |  |
| 357ae9be-8a60-8101-b089-ed4fc8b721c9 | 1807 | PTP_CM27_Vendor Master - Mass Maintenance - LFA1-WERKR | PTP | 1.2.2.2.20 | 1.2.2.2.20 | 2026-05-18 | 2026-05-19 | 2026-04-15 | 0 | 5 | 2800 | 0 | 0 |  |  | -1.44 | 0 | As Soon As Possible | Auto Scheduled | AMETEK SAP XXL Project Plan Replan MSP Task.csv | AMETEK SAP XXL Project Plan Replan MSP Task.csv__2f0764ccac__2026-05-05T02-44-15-662Z | Muniraju Surappachari | 34 | True | True | Not started | True  -1.44 0 0 0 0 0 20 | Negative Float High 2 0 0  |  | 1810, 1808, 1812, 1811, 1809, 1813 | True |  |
| 357ae9be-8a60-8102-810b-ffb76e852364 | 1911 | Pre Load Validation | PTM | 1.2.2.2.35.2 | 1.2.2.2.35.2 | 2026-05-25 | 2026-05-25 | 2026-04-17 | 0 | 6 | 1909 | 1 | 1 | 357ae9be-8a60-8175-910f-dade95c57ddd | 357ae9be-8a60-81ec-9cd6-f7198da0b33b | -3226 | 0 | As Soon As Possible | Auto Scheduled | AMETEK SAP XXL Project Plan Replan MSP Task.csv | AMETEK SAP XXL Project Plan Replan MSP Task.csv__2f0764ccac__2026-05-05T02-44-15-662Z | Brad Meseck | 38 | True |  | Not started | True  -3226 0 1 0 0 0 26 | Negative Float Critical 2 0 0  |  |  |  |  |
| 357ae9be-8a60-8102-8cfc-effae7c18089 | 1730 | Load File Staged and Posted "Ready" | Finance | 1.2.2.2.8.1 | 1.2.2.2.8.1 | 2026-05-19 | 2026-05-19 | 2026-04-07 | 0 | 6 | 1729 | 1 | 1 | 357ae9be-8a60-81bf-95c0-f8387cea4efe | 357ae9be-8a60-81d0-a6cc-eb33168f1f1d | -20.52 | 0 | As Soon As Possible | Auto Scheduled | AMETEK SAP XXL Project Plan Replan MSP Task.csv | AMETEK SAP XXL Project Plan Replan MSP Task.csv__2f0764ccac__2026-05-05T02-44-15-662Z | Kasey Hughes | 42 | True | True | Not started | True  -20.52 0 1 0 0 0 26 | Wrong Dependency, Negative Float Critical 5 1 0  |  |  |  |  |
| 357ae9be-8a60-8102-9c7a-df91720f2329 | 1037 | Post Load Validation | PTM | 1.2.1.27.6 | 1.2.1.27.6 | 2026-04-15 | 2026-04-15 | 2026-04-15 | 100 | 5 | 749 | 1 | 0 | 357ae9be-8a60-8116-a89f-e32fe30423ef |  | 0 | 0 | As Soon As Possible | Auto Scheduled | AMETEK SAP XXL Project Plan Replan MSP Task.csv | AMETEK SAP XXL Project Plan Replan MSP Task.csv__2f0764ccac__2026-05-05T02-44-15-662Z | Eric Heisler |  |  |  | Done | True  0 0 0 0 0 0 12 | Low 0 0 0  |  |  |  |  |
| 357ae9be-8a60-8102-a170-d93158f002a3 | 1867 | PTP_CM28_Purchase_Info_Record Subcontracting and Consignment | PTP | 1.2.2.2.29 | 1.2.2.2.29 | 2026-05-21 | 2026-05-22 | 2026-04-16 | 0 | 5 | 2800 | 0 | 0 |  |  | -8.78 | 0 | As Soon As Possible | Auto Scheduled | AMETEK SAP XXL Project Plan Replan MSP Task.csv | AMETEK SAP XXL Project Plan Replan MSP Task.csv__2f0764ccac__2026-05-05T02-44-15-662Z | Muniraju Surappachari | 36 | True |  | Not started | True  -8.78 0 0 0 0 0 20 | Negative Float High 2 0 0  |  | 1872, 1869, 1870, 1873, 1871, 1868 | True |  |
| 357ae9be-8a60-8102-a94c-cdab647a33ea | 101 | Security Role for Functional Team | Security | 1.1.1.2.2 | 1.1.1.2.2 | 2025-05-08 | 2025-05-08 | 2025-05-08 | 100 | 5 | 86 | 1 | 0 | 357ae9be-8a60-8155-a76e-dae87ee9ca51 |  | 0 | 0 | As Soon As Possible | Auto Scheduled | AMETEK SAP XXL Project Plan Replan MSP Task.csv | AMETEK SAP XXL Project Plan Replan MSP Task.csv__2f0764ccac__2026-05-05T02-44-15-662Z | Manjunatha Umesha |  |  |  | Done | True  0 0 0 0 0 0 12 | Low 0 0 0  |  |  |  |  |
| 357ae9be-8a60-8102-a957-c18983a4a1c0 | 2008 | Run material interface to GTS | OTC | 1.2.2.2.57.1 | 1.2.2.2.57.1 | 2026-05-19 | 2026-05-19 | 2026-04-15 | 0 | 6 | 2007 | 1 | 0 | 357ae9be-8a60-81fa-ad59-c999a2973d64 |  | -11.52 | 0 | As Soon As Possible | Auto Scheduled | AMETEK SAP XXL Project Plan Replan MSP Task.csv | AMETEK SAP XXL Project Plan Replan MSP Task.csv__2f0764ccac__2026-05-05T02-44-15-662Z | James VanRiper | 34 | True | True | Not started | True  -11.52 0 0 0 0 0 20 | Negative Float, Open Finish Critical 3 0 0  |  |  |  |  |
| 357ae9be-8a60-8102-b1a9-c70123a074e7 | 1860 | PTP_CM28_Purchase_Info_Record External Processing | PTP | 1.2.2.2.28 | 1.2.2.2.28 | 2026-05-21 | 2026-05-22 | 2026-04-16 | 0 | 5 | 2800 | 0 | 0 |  |  | -4.28 | 0 | As Soon As Possible | Auto Scheduled | AMETEK SAP XXL Project Plan Replan MSP Task.csv | AMETEK SAP XXL Project Plan Replan MSP Task.csv__2f0764ccac__2026-05-05T02-44-15-662Z | Muniraju Surappachari | 36 | True |  | Not started | True  -4.28 0 0 0 0 0 20 | Negative Float High 2 0 0  |  | 1864, 1866, 1865, 1862, 1863, 1861 | True |  |
| 357ae9be-8a60-8102-b889-c4be1d9cd8cc | 2634 | Load File Staged and Posted "Ready" | PTM | 1.2.4.2.33.1 | 1.2.4.2.33.1 | 2026-09-29 | 2026-09-29 | 2026-04-16 | 0 | 6 | 2633 | 1 | 1 | 357ae9be-8a60-81d6-b0c9-c03cefd7efae | 357ae9be-8a60-81bf-bd43-c94da4989471 | -41745 | 0 | Start No Earlier Than | Auto Scheduled | AMETEK SAP XXL Project Plan Replan MSP Task.csv | AMETEK SAP XXL Project Plan Replan MSP Task.csv__2f0764ccac__2026-05-05T02-44-15-662Z | Brad Meseck | 166 | True |  | Not started | True  -41745 0 1 1 540 0 31 | Wrong Successor, Negative Float Critical 5 0 1 True | 2026-04-20 |  |  |  |
| 357ae9be-8a60-8102-b891-f8c2520cbdb9 | 3350 | Mock Transactional Data | Data | 1.2.4.4 | 1.2.4.4 | 2026-10-08 | 2026-10-12 | 2026-10-12 | 0 | 4 | 2422 | 1 | 1 | 357ae9be-8a60-8186-82d7-dea6d97c0abb | 357ae9be-8a60-8127-84ad-c3095bc3fc8f | -40.66 | 0 | As Soon As Possible | Auto Scheduled | AMETEK SAP XXL Project Plan Replan MSP Task.csv | AMETEK SAP XXL Project Plan Replan MSP Task.csv__2f0764ccac__2026-05-05T02-44-15-662Z | Jyoti Nain |  |  |  | Not started | True  -40.66 0 1 0 0 0 18 | Negative Float Critical 2 0 0  |  | 3358, 3353, 3357, 3354, 3356, 3351, 3352, 3355 | True |  |
| 357ae9be-8a60-8103-8329-f20784da45ca | 2039 | Load File Staged and Posted "Ready" | Finance | 1.2.2.2.67.1 | 1.2.2.2.67.1 | 2026-05-18 | 2026-05-18 | 2026-04-10 | 0 | 6 | 2038 | 1 | 0 | 357ae9be-8a60-81f2-8bb8-ed649deb57d8 |  | -571 | 0 | As Soon As Possible | Auto Scheduled | AMETEK SAP XXL Project Plan Replan MSP Task.csv | AMETEK SAP XXL Project Plan Replan MSP Task.csv__2f0764ccac__2026-05-05T02-44-15-662Z | Kasey Hughes | 38 | True | True | Not started | True  -571 0 0 0 0 0 20 | Wrong Dependency, Negative Float, Open Finish Critical 6 1 0  |  |  |  |  |
| 357ae9be-8a60-8103-9794-dcd4ba73d36f | 1713 | Simulate Load | Data | 1.2.2.2.5.3 | 1.2.2.2.5.3 | 2026-05-20 | 2026-05-20 | 2026-04-08 | 0 | 6 | 1710 | 1 | 1 | 357ae9be-8a60-813b-b0a5-d96f44c48a8f | 357ae9be-8a60-81e4-b98f-e3a1bf01b4fb | -63.52 | 0 | As Soon As Possible | Auto Scheduled | AMETEK SAP XXL Project Plan Replan MSP Task.csv | AMETEK SAP XXL Project Plan Replan MSP Task.csv__2f0764ccac__2026-05-05T02-44-15-662Z | Jyoti Nain | 42 | True | True | Not started | True  -63.52 0 1 0 0 0 26 | Negative Float Critical 2 0 0  |  |  |  |  |
| 357ae9be-8a60-8103-9bfa-c60d55e284c8 | 4201 | Pre Load Validation | Finance | 1.2.5.2.7.2 | 1.2.5.2.7.2 | 2026-09-29 | 2026-09-30 | 2026-04-09 | 0 | 6 | 4199 | 1 | 1 | 357ae9be-8a60-81ac-8c42-edec7d97a293 | 357ae9be-8a60-8184-817a-f551e3acc57a | -680.02 | 0 | As Soon As Possible | Auto Scheduled | AMETEK SAP XXL Project Plan Replan MSP Task.csv | AMETEK SAP XXL Project Plan Replan MSP Task.csv__2f0764ccac__2026-05-05T02-44-15-662Z | Kasey Hughes | 174 | True |  | Not started | True  -680.02 0 1 0 0 0 26 | Negative Float Critical 2 0 0  |  |  |  |  |
| 357ae9be-8a60-8103-b053-d03d7ab94ca3 | 3296 | GTS - License - Create | (Unassigned) | 1.2.3.2.62 | 1.2.3.2.62 | 2026-06-16 | 2026-06-16 | 2026-04-16 | 0 | 5 | 2959 | 0 | 0 |  |  | -21.38 | 0 | As Soon As Possible | Auto Scheduled | AMETEK SAP XXL Project Plan Replan MSP Task.csv | AMETEK SAP XXL Project Plan Replan MSP Task.csv__2f0764ccac__2026-05-05T02-44-15-662Z | COULD NOT BE DETERMINED | 61 | True |  | Not started | True  -21.38 0 0 0 0 0 20 | Negative Float Critical 2 0 0  |  | 3298, 3297 | True |  |
| 357ae9be-8a60-8103-b2bc-ed218fbc500d | 2610 | Load | Data | 1.2.4.2.29.5 | 1.2.4.2.29.5 | 2026-09-29 | 2026-09-30 | 2026-04-16 | 0 | 6 | 2605 | 1 | 1 | 357ae9be-8a60-816d-ba63-fb2912a24ed2 | 357ae9be-8a60-81c4-b2a4-eebbdd96f8ff | -676.25 | 0 | As Soon As Possible | Auto Scheduled | AMETEK SAP XXL Project Plan Replan MSP Task.csv | AMETEK SAP XXL Project Plan Replan MSP Task.csv__2f0764ccac__2026-05-05T02-44-15-662Z | Jyoti Nain | 167 | True |  | Not started | True  -676.25 0 1 0 0 0 26 | Negative Float Critical 2 0 0  |  |  |  |  |
| 357ae9be-8a60-8103-b813-dcacfa5ba781 | 2571 | Extract File | Data | 1.2.4.2.24.1 | 1.2.4.2.24.1 | 2026-09-24 | 2026-09-25 | 2026-04-13 | 0 | 6 | 2570 | 1 | 0 | 357ae9be-8a60-81aa-a2d2-d1d178af9866 |  | -649.25 | 0 | As Soon As Possible | Auto Scheduled | AMETEK SAP XXL Project Plan Replan MSP Task.csv | AMETEK SAP XXL Project Plan Replan MSP Task.csv__2f0764ccac__2026-05-05T02-44-15-662Z | Jyoti Nain | 165 | True |  | Not started | True  -649.25 0 0 0 0 0 20 | Wrong Dependency, Negative Float, Open Finish Critical 6 1 0  |  |  |  |  |
| 357ae9be-8a60-8104-851b-fc233a971a51 | 862 | Fiori App Activation | Development | 1.1.1.5.1.11 | 1.1.1.5.1.11 | 2026-05-05 | 2026-05-05 | 2026-05-19 | 0 | 6 | 3340 | 1 | 0 | 357ae9be-8a60-8187-9d2b-ce8f2dad5d54 |  | -202.02 | 0 | As Soon As Possible | Auto Scheduled | AMETEK SAP XXL Project Plan Replan MSP Task.csv | AMETEK SAP XXL Project Plan Replan MSP Task.csv__2f0764ccac__2026-05-05T02-44-15-662Z | Bijoykrishna Das |  |  |  | Not started | True  -202.02 0 0 0 0 0 12 | Negative Float, Open Finish Critical 3 0 0  |  |  |  | True |
| 357ae9be-8a60-8104-8856-f915637f2752 | 1080 | Post Load Validation | PTM | 1.2.1.33.6 | 1.2.1.33.6 | 2026-04-20 | 2026-04-20 | 2026-04-21 | 100 | 5 | 707 | 1 | 0 | 357ae9be-8a60-81b7-b8cc-c219c0f042fc |  | 0 | 0 | Start No Earlier Than | Auto Scheduled | AMETEK SAP XXL Project Plan Replan MSP Task.csv | AMETEK SAP XXL Project Plan Replan MSP Task.csv__2f0764ccac__2026-05-05T02-44-15-662Z | Brad Meseck |  |  |  | Done | True  0 0 0 0 0 0 12 | Low 0 0 0 True | 2026-04-20 |  |  |  |
| 357ae9be-8a60-8104-a9e1-c0c8b58732fd | 2051 | Post Load Validation | Finance | 1.2.2.2.68.6 | 1.2.2.2.68.6 | 2026-05-19 | 2026-05-19 | 2026-04-17 | 0 | 6 | 2045 | 1 | 0 | 357ae9be-8a60-81e3-a5fe-efe30551231a |  | -9.52 | 0 | As Soon As Possible | Auto Scheduled | AMETEK SAP XXL Project Plan Replan MSP Task.csv | AMETEK SAP XXL Project Plan Replan MSP Task.csv__2f0764ccac__2026-05-05T02-44-15-662Z | Kasey Hughes | 32 | True | True | Not started | True  -9.52 0 0 0 0 0 20 | Negative Float, Open Finish High 3 0 0  |  |  |  |  |
| 357ae9be-8a60-8104-b8e3-e89dc44950c7 | 3154 | Post Load Validation | PTM | 1.2.3.2.30.6 | 1.2.3.2.30.6 | 2026-06-16 | 2026-06-16 | 2026-04-17 | 0 | 6 | 3148 | 1 | 1 | 357ae9be-8a60-8166-8550-d154be0a3717 | 357ae9be-8a60-81cc-b9c6-f02be067db6f | -182.39 | 0 | As Soon As Possible | Auto Scheduled | AMETEK SAP XXL Project Plan Replan MSP Task.csv | AMETEK SAP XXL Project Plan Replan MSP Task.csv__2f0764ccac__2026-05-05T02-44-15-662Z | Brad Meseck | 60 | True |  | Not started | True  -182.39 0 1 0 0 0 26 | Negative Float Critical 2 0 0  |  |  |  |  |
| 357ae9be-8a60-8105-8688-e90a0baaa353 | 1045 | Pre Load Validation | PTP | 1.2.1.29.2 | 1.2.1.29.2 | 2026-04-15 | 2026-04-15 | 2026-04-15 | 100 | 5 | 936 | 1 | 1 | 357ae9be-8a60-81f2-a976-d35078878785 | 357ae9be-8a60-813d-9938-fa516e5f46b5 | 0 | 0 | As Soon As Possible | Auto Scheduled | AMETEK SAP XXL Project Plan Replan MSP Task.csv | AMETEK SAP XXL Project Plan Replan MSP Task.csv__2f0764ccac__2026-05-05T02-44-15-662Z | Nevin Varkey |  |  |  | Done | True  0 0 1 0 0 0 18 | Low 0 0 0  |  |  |  |  |
| 357ae9be-8a60-8105-8cfe-fe1ae1dee1d6 | 2515 | Pre Load Validation | PTP | 1.2.4.2.15.2 | 1.2.4.2.15.2 | 2026-10-01 | 2026-10-01 | 2026-04-10 | 0 | 6 | 2513 | 1 | 1 | 357ae9be-8a60-8187-94fd-f9d41d3c248e | 357ae9be-8a60-81d6-a791-e5766a44b129 | -718.5 | 0 | As Soon As Possible | Auto Scheduled | AMETEK SAP XXL Project Plan Replan MSP Task.csv | AMETEK SAP XXL Project Plan Replan MSP Task.csv__2f0764ccac__2026-05-05T02-44-15-662Z | Nevin Varkey | 174 | True |  | Not started | True  -718.5 0 1 0 0 0 26 | Wrong Successor, Negative Float Critical 5 0 1  |  |  |  |  |
| 357ae9be-8a60-8105-8ebe-e88a086ba9ef | 3265 | Manual File Staged and Posted "Ready" | PTM | 1.2.3.2.53.1 | 1.2.3.2.53.1 | 2026-06-12 | 2026-06-12 | 2026-04-16 | 0 | 6 | 3264 | 1 | 3 | 357ae9be-8a60-8197-9653-c90ab86a2f12 | 357ae9be-8a60-8108-90f1-c7a2d99193b6, 357ae9be-8a60-81af-8a8a-c45cecf52a2e, 357ae9be-8a60-8129-858a-d04f4c744c5c | -10006 | 0 | As Soon As Possible | Auto Scheduled | AMETEK SAP XXL Project Plan Replan MSP Task.csv | AMETEK SAP XXL Project Plan Replan MSP Task.csv__2f0764ccac__2026-05-05T02-44-15-662Z | Sam Penrod | 57 | True |  | Not started | True  -10006 0 3 3 764 0 43 | Wrong Dependency, Wrong Successor, Negative Float Critical 8 1 3  |  |  |  |  |
| 357ae9be-8a60-8105-92af-c01eef9c0556 | 4264 | Extract File | Data | 1.2.5.2.17.1 | 1.2.5.2.17.1 | 2026-09-30 | 2026-10-01 | 2026-04-10 | 0 | 6 | 4263 | 1 | 2 | 357ae9be-8a60-81d1-8841-f9e0052c8453 | 357ae9be-8a60-81fc-a289-cab796f302c2, 357ae9be-8a60-819c-a1b7-f223e0d785fc | -707.02 | 0 | As Soon As Possible | Auto Scheduled | AMETEK SAP XXL Project Plan Replan MSP Task.csv | AMETEK SAP XXL Project Plan Replan MSP Task.csv__2f0764ccac__2026-05-05T02-44-15-662Z | Jyoti Nain | 174 | True |  | Not started | True  -707.02 0 2 0 0 0 32 | Negative Float Critical 2 0 0  |  |  |  |  |
| 357ae9be-8a60-8105-92f6-c1b9adcc0335 | 4300 | Load | Data | 1.2.5.2.22.5 | 1.2.5.2.22.5 | 2026-09-24 | 2026-09-25 | 2026-04-14 | 0 | 6 | 4295 | 1 | 2 | 357ae9be-8a60-8107-bd8d-e1378475df2b | 357ae9be-8a60-8181-afe5-ebf136a78e18, 357ae9be-8a60-819c-b395-e0dd1355c63d | -653.52 | 0 | As Soon As Possible | Auto Scheduled | AMETEK SAP XXL Project Plan Replan MSP Task.csv | AMETEK SAP XXL Project Plan Replan MSP Task.csv__2f0764ccac__2026-05-05T02-44-15-662Z | Jyoti Nain | 164 | True |  | Not started | True  -653.52 0 2 0 0 0 32 | Negative Float Critical 2 0 0  |  |  |  |  |
| 357ae9be-8a60-8105-9b49-c564cfe33656 | 2762 | Post Load Validation | OTC | 1.2.4.2.62.2 | 1.2.4.2.62.2 | 2026-10-02 | 2026-10-02 | 2026-04-16 | 0 | 6 | 2760 | 1 | 0 | 357ae9be-8a60-819a-9806-c9f4f4cb26c7 |  | -693 | 0 | As Soon As Possible | Auto Scheduled | AMETEK SAP XXL Project Plan Replan MSP Task.csv | AMETEK SAP XXL Project Plan Replan MSP Task.csv__2f0764ccac__2026-05-05T02-44-15-662Z | James VanRiper | 169 | True |  | Not started | True  -693 0 0 0 0 0 20 | Negative Float, Open Finish Critical 3 0 0  |  |  |  |  |
| 357ae9be-8a60-8105-a7d5-d83259d25803 | 3270 | Pre Load Validation | PTM | 1.2.3.2.54.2 | 1.2.3.2.54.2 | 2026-06-12 | 2026-06-12 | 2026-04-16 | 0 | 6 | 3268 | 1 | 1 | 357ae9be-8a60-8161-8be1-c073a0f7c658 | 357ae9be-8a60-81ea-9f38-fa509422ad1c | -9556 | 0 | As Soon As Possible | Auto Scheduled | AMETEK SAP XXL Project Plan Replan MSP Task.csv | AMETEK SAP XXL Project Plan Replan MSP Task.csv__2f0764ccac__2026-05-05T02-44-15-662Z | Brad Meseck | 57 | True |  | Not started | True  -9556 0 1 0 0 0 26 | Negative Float Critical 2 0 0  |  |  |  |  |
| 357ae9be-8a60-8105-a93a-fa62de0be317 | 38 | Complete - Ready for Security Review | Security | 1.1.2.9.1.5.2 | 1.1.2.9.1.5.2 | 2025-04-21 | 2025-08-01 | 2025-08-01 | 100 | 7 | 29 | 0 | 1 |  | 357ae9be-8a60-814f-badb-cb3326e3f148 | 0 | 0 | Start No Earlier Than | Auto Scheduled | AMETEK SAP XXL Project Plan Replan MSP Task.csv | AMETEK SAP XXL Project Plan Replan MSP Task.csv__2f0764ccac__2026-05-05T02-44-15-662Z | Manjunatha Umesha |  |  |  | Done | True  0 0 0 0 0 0 14 | Low 0 0 0 True | 2025-04-21 |  |  |  |
| 357ae9be-8a60-8105-aab0-da7c089be7c3 | 4224 | Error and Defect Mitigation | Finance | 1.2.5.2.10.4 | 1.2.5.2.10.4 | 2026-09-25 | 2026-09-25 | 2026-04-10 | 0 | 6 | 4220 | 1 | 1 | 357ae9be-8a60-81bd-9758-e36d07e44e6d | 357ae9be-8a60-81fc-b415-d56b1db04f11 | -658.52 | 0 | As Soon As Possible | Auto Scheduled | AMETEK SAP XXL Project Plan Replan MSP Task.csv | AMETEK SAP XXL Project Plan Replan MSP Task.csv__2f0764ccac__2026-05-05T02-44-15-662Z | Kasey Hughes | 168 | True |  | Not started | True  -658.52 0 1 0 0 0 26 | Negative Float Critical 2 0 0  |  |  |  |  |
| 357ae9be-8a60-8105-b287-efa1280d878d | 1822 | Error and Defect Mitigation | PTP;OTC | 1.2.2.2.22.4 | 1.2.2.2.22.4 | 2026-05-18 | 2026-05-19 | 2026-04-13 | 0 | 6 | 1818 | 1 | 1 | 357ae9be-8a60-814c-abc1-e95862a80c5b | 357ae9be-8a60-81cb-9ee1-f5e17e4f3e95 | -11.52 | 0 | As Soon As Possible | Auto Scheduled | AMETEK SAP XXL Project Plan Replan MSP Task.csv | AMETEK SAP XXL Project Plan Replan MSP Task.csv__2f0764ccac__2026-05-05T02-44-15-662Z | Nevin Varkey | 36 | True | True | Not started | True  -11.52 0 1 0 0 0 26 | Negative Float Critical 2 0 0  |  |  |  |  |
| 357ae9be-8a60-8105-ba5f-ebd07a24e4f3 | 3134 | PTP_CM28_Purchase_Info_Record External Processing | PTP | 1.2.3.2.28 | 1.2.3.2.28 | 2026-06-11 | 2026-06-12 | 2026-04-16 | 0 | 5 | 2959 | 0 | 0 |  |  | -19.28 | 0 | As Soon As Possible | Auto Scheduled | AMETEK SAP XXL Project Plan Replan MSP Task.csv | AMETEK SAP XXL Project Plan Replan MSP Task.csv__2f0764ccac__2026-05-05T02-44-15-662Z | Muniraju Surappachari | 57 | True |  | Not started | True  -19.28 0 0 0 0 0 20 | Negative Float Critical 2 0 0  |  | 3137, 3140, 3139, 3138, 3136, 3135 | True |  |
| 357ae9be-8a60-8105-bb11-e5515e5ce67b | 4238 | Simulate Load | Data | 1.2.5.2.13.6 | 1.2.5.2.13.6 | 2026-09-29 | 2026-09-29 | 2026-04-09 | 0 | 6 | 4232 | 1 | 3 | 357ae9be-8a60-81d0-ba9b-fac3ecf31398 | 357ae9be-8a60-8107-b6bb-ce8be9fd0afd, 357ae9be-8a60-815f-9331-ea71dfc6716a, 357ae9be-8a60-81d2-9618-efcd201d3cb7 | -716.52 | 0 | As Soon As Possible | Auto Scheduled | AMETEK SAP XXL Project Plan Replan MSP Task.csv | AMETEK SAP XXL Project Plan Replan MSP Task.csv__2f0764ccac__2026-05-05T02-44-15-662Z | Jyoti Nain | 173 | True |  | Not started | True  -716.52 0 3 0 0 0 38 | Negative Float Critical 2 0 0  |  |  |  |  |
| 357ae9be-8a60-8105-bb38-e08078c47fab | 3320 | Load File Staged and Posted "Ready" | Finance | 1.2.3.2.68.1 | 1.2.3.2.68.1 | 2026-06-08 | 2026-06-08 | 2026-04-10 | 0 | 6 | 3319 | 1 | 1 | 357ae9be-8a60-81a7-b33d-c5c762d49420 | 357ae9be-8a60-8121-8c65-d2805e95b73a | -7771 | 0 | As Soon As Possible | Auto Scheduled | AMETEK SAP XXL Project Plan Replan MSP Task.csv | AMETEK SAP XXL Project Plan Replan MSP Task.csv__2f0764ccac__2026-05-05T02-44-15-662Z | Kasey Hughes | 59 | True |  | Not started | True  -7771 0 1 0 0 0 26 | Wrong Dependency, Negative Float Critical 5 1 0  |  |  |  |  |
| 357ae9be-8a60-8105-bf78-d7b328b4d427 | 217 | Develop Training Data Sheets (Testing/Training) | Training | 1.4.1.1.5 | 1.4.1.1.5 | 2026-08-03 | 2026-11-09 | 2026-08-03 | 0 | 5 | 216 | 1 | 0 | 357ae9be-8a60-81d3-9b0d-f6bfadfdb00a |  | 0 | 0 | Start No Earlier Than | Auto Scheduled | AMETEK SAP XXL Project Plan Replan MSP Task.csv | AMETEK SAP XXL Project Plan Replan MSP Task.csv__2f0764ccac__2026-05-05T02-44-15-662Z | Karen Zalnis | 98 | True |  | Not started | True  0 0 0 0 0 0 20 | Open Finish Medium 1 0 0 True | 2026-04-30 |  |  |  |
| 357ae9be-8a60-8105-bfbf-f9abbf39743e | 2975 | Extend GL to all Company Codes | Finance | 1.2.3.2.3.7 | 1.2.3.2.3.7 | 2026-06-11 | 2026-06-11 | 2026-04-09 | 0 | 6 | 2968 | 1 | 1 | 357ae9be-8a60-8185-8ff0-e7244c64b7d0 | 357ae9be-8a60-8143-8341-db85e96fecbe | -196.52 | 0 | As Soon As Possible | Auto Scheduled | AMETEK SAP XXL Project Plan Replan MSP Task.csv | AMETEK SAP XXL Project Plan Replan MSP Task.csv__2f0764ccac__2026-05-05T02-44-15-662Z | Kasey Hughes | 63 | True |  | Not started | True  -196.52 0 1 0 0 0 26 | Wrong Dependency, Negative Float Critical 5 1 0  |  |  |  |  |
| 357ae9be-8a60-8106-803e-e6f54de69a42 | 2033 | Set Embargo situations | OTC | 1.2.2.2.65.2 | 1.2.2.2.65.2 | 2026-05-19 | 2026-05-19 | 2026-04-13 | 0 | 6 | 2031 | 1 | 1 | 357ae9be-8a60-812e-887f-fcb8605465dd | 357ae9be-8a60-81ff-ab2f-d1e89ba12c5b | -11.52 | 0 | As Soon As Possible | Auto Scheduled | AMETEK SAP XXL Project Plan Replan MSP Task.csv | AMETEK SAP XXL Project Plan Replan MSP Task.csv__2f0764ccac__2026-05-05T02-44-15-662Z | James VanRiper | 36 | True | True | Not started | True  -11.52 0 1 0 0 0 26 | Negative Float Critical 2 0 0  |  |  |  |  |
| 357ae9be-8a60-8106-8e95-ef21f3d46477 | 3185 | Pre Load Validation | PTM | 1.2.3.2.35.2 | 1.2.3.2.35.2 | 2026-06-15 | 2026-06-15 | 2026-04-17 | 0 | 6 | 3183 | 1 | 1 | 357ae9be-8a60-81e9-a9ee-c15d3e1414ed | 357ae9be-8a60-810d-8ed4-d0f8b0591acd | -10426 | 0 | As Soon As Possible | Auto Scheduled | AMETEK SAP XXL Project Plan Replan MSP Task.csv | AMETEK SAP XXL Project Plan Replan MSP Task.csv__2f0764ccac__2026-05-05T02-44-15-662Z | Brad Meseck | 59 | True |  | Not started | True  -10426 0 1 0 0 0 26 | Negative Float Critical 2 0 0  |  |  |  |  |
| 357ae9be-8a60-8106-8f7f-c64bc1b3bcc3 | 1908 | Post Load Validation | PTM | 1.2.2.2.34.6 | 1.2.2.2.34.6 | 2026-05-25 | 2026-05-26 | 2026-04-20 | 0 | 6 | 1902 | 1 | 0 | 357ae9be-8a60-819f-8912-cf402a06af87 |  | -47.27 | 0 | As Soon As Possible | Auto Scheduled | AMETEK SAP XXL Project Plan Replan MSP Task.csv | AMETEK SAP XXL Project Plan Replan MSP Task.csv__2f0764ccac__2026-05-05T02-44-15-662Z | Brad Meseck | 36 | True |  | Not started | True  -47.27 0 0 0 0 0 20 | Negative Float, Open Finish Critical 3 0 0  |  |  |  |  |
| 357ae9be-8a60-8106-a4d1-cf1c1647971d | 752 | PTP_CM27_Vendor Master | PTP | 1.2.1.20 | 1.2.1.20 | 2026-04-10 | 2026-04-16 | 2026-04-15 | 100 | 4 | 425 | 1 | 1 | 357ae9be-8a60-819f-823c-d89a761bc010 | 357ae9be-8a60-8199-8452-dbd4be1c21ee | 0 | 0 | As Soon As Possible | Auto Scheduled | AMETEK SAP XXL Project Plan Replan MSP Task.csv | AMETEK SAP XXL Project Plan Replan MSP Task.csv__2f0764ccac__2026-05-05T02-44-15-662Z | Muniraju Surappachari |  |  |  | Done | True  0 0 1 0 0 1 18 | Low 0 0 0  |  | 1004, 1000, 1002, 999, 1003, 1001 | True |  |
| 357ae9be-8a60-8106-b0ff-ceb12add4d9b | 4390 | Error and Defect Mitigation | PTM | 1.2.5.2.35.4 | 1.2.5.2.35.4 | 2026-10-01 | 2026-10-01 | 2026-04-17 | 0 | 6 | 4386 | 1 | 1 | 357ae9be-8a60-815e-b092-ff91aeade286 | 357ae9be-8a60-81a8-8b49-d5d8b46a4a8e | -695.77 | 0 | As Soon As Possible | Auto Scheduled | AMETEK SAP XXL Project Plan Replan MSP Task.csv | AMETEK SAP XXL Project Plan Replan MSP Task.csv__2f0764ccac__2026-05-05T02-44-15-662Z | Brad Meseck | 167 | True |  | Not started | True  -695.77 0 1 0 0 0 26 | Negative Float Critical 2 0 0  |  |  |  |  |
| 357ae9be-8a60-8106-bf02-f6239a221934 | 1049 | Post Load Validation | PTP | 1.2.1.29.6 | 1.2.1.29.6 | 2026-04-16 | 2026-04-16 | 2026-04-16 | 100 | 5 | 936 | 1 | 0 | 357ae9be-8a60-81dc-b77b-ff004ab7e813 |  | 0 | 0 | As Soon As Possible | Auto Scheduled | AMETEK SAP XXL Project Plan Replan MSP Task.csv | AMETEK SAP XXL Project Plan Replan MSP Task.csv__2f0764ccac__2026-05-05T02-44-15-662Z | Nevin Varkey |  |  |  | Done | True  0 0 0 0 0 0 12 | Low 0 0 0  |  |  |  |  |
| 357ae9be-8a60-8107-8adf-efd48587411b | 4515 | RTR_CM17_Project Definition / Builder | (Unassigned) | 1.2.5.2.67 | 1.2.5.2.67 | 2026-09-24 | 2026-09-25 | 2026-04-17 | 0 | 5 | 4162 | 0 | 0 |  |  | -81.44 | 0 | As Soon As Possible | Auto Scheduled | AMETEK SAP XXL Project Plan Replan MSP Task.csv | AMETEK SAP XXL Project Plan Replan MSP Task.csv__2f0764ccac__2026-05-05T02-44-15-662Z | COULD NOT BE DETERMINED | 161 | True |  | Not started | True  -81.44 0 0 0 0 0 20 | Negative Float Critical 2 0 0  |  | 4521, 4517, 4516, 4519, 4520, 4518 | True |  |
| 357ae9be-8a60-8107-8de5-cbde720ca998 | 1844 | Load | Data | 1.2.2.2.25.5 | 1.2.2.2.25.5 | 2026-05-20 | 2026-05-21 | 2026-04-15 | 0 | 6 | 1839 | 1 | 1 | 357ae9be-8a60-8185-af98-e5cb8df2cf96 | 357ae9be-8a60-8154-a356-c518b37732a5 | -25.27 | 0 | As Soon As Possible | Auto Scheduled | AMETEK SAP XXL Project Plan Replan MSP Task.csv | AMETEK SAP XXL Project Plan Replan MSP Task.csv__2f0764ccac__2026-05-05T02-44-15-662Z | Jyoti Nain | 36 | True |  | Not started | True  -25.27 0 1 0 0 0 26 | Negative Float Critical 2 0 0  |  |  |  |  |
| 357ae9be-8a60-8107-98b3-f4cc76359af3 | 4303 | Load File Staged and Posted "Ready" | PTP;OTC | 1.2.5.2.23.1 | 1.2.5.2.23.1 | 2026-09-24 | 2026-09-24 | 2026-04-13 | 0 | 6 | 4302 | 0 | 0 |  |  | -38521 | 0 | As Soon As Possible | Auto Scheduled | AMETEK SAP XXL Project Plan Replan MSP Task.csv | AMETEK SAP XXL Project Plan Replan MSP Task.csv__2f0764ccac__2026-05-05T02-44-15-662Z | Nevin Varkey | 164 | True |  | Not started | True  -38521 0 0 0 0 0 20 | Negative Float, Open Start, Open Finish Critical 4 0 0  |  |  |  |  |
| 357ae9be-8a60-8107-a54a-e0365bc24d18 | 1921 | Load | Data | 1.2.2.2.36.5 | 1.2.2.2.36.5 | 2026-05-26 | 2026-05-27 | 2026-04-21 | 0 | 6 | 1916 | 1 | 0 | 357ae9be-8a60-8114-987c-ec5e2f105b71 |  | -53.77 | 0 | As Soon As Possible | Auto Scheduled | AMETEK SAP XXL Project Plan Replan MSP Task.csv | AMETEK SAP XXL Project Plan Replan MSP Task.csv__2f0764ccac__2026-05-05T02-44-15-662Z | Jyoti Nain | 36 | True |  | Not started | True  -53.77 0 0 0 0 0 20 | Negative Float, Open Finish Critical 3 0 0  |  |  |  |  |
| 357ae9be-8a60-8107-a8b1-cb3fa3e7fe9a | 1127 | Manual File Staged and Posted "Ready" | PTM | 1.2.1.54.1 | 1.2.1.54.1 | 2026-04-16 | 2026-04-16 | 2026-04-16 | 100 | 5 | 712 | 1 | 2 | 357ae9be-8a60-818c-a935-e82610089ed2 | 357ae9be-8a60-8178-be83-e2f18afdb588, 357ae9be-8a60-81aa-8fb9-d9d0f029be12 | 0 | 0 | As Soon As Possible | Auto Scheduled | AMETEK SAP XXL Project Plan Replan MSP Task.csv | AMETEK SAP XXL Project Plan Replan MSP Task.csv__2f0764ccac__2026-05-05T02-44-15-662Z | Sam Penrod |  |  |  | Done | True  0 0 2 2 452 1 29 | Wrong Dependency, Wrong Successor Critical 6 1 2  |  |  |  |  |
| 357ae9be-8a60-8107-aa17-f273fe579d03 | 3106 | PTP_CM26_Material_Master - All Types | PTP | 1.2.3.2.24 | 1.2.3.2.24 | 2026-06-08 | 2026-06-10 | 2026-04-15 | 0 | 5 | 2959 | 0 | 0 |  |  | -23.53 | 0 | As Soon As Possible | Auto Scheduled | AMETEK SAP XXL Project Plan Replan MSP Task.csv | AMETEK SAP XXL Project Plan Replan MSP Task.csv__2f0764ccac__2026-05-05T02-44-15-662Z | Muniraju Surappachari | 56 | True |  | Not started | True  -23.53 0 0 0 0 0 20 | Negative Float Critical 2 0 0  |  | 3110, 3109, 3107, 3112, 3108, 3111 | True |  |
| 357ae9be-8a60-8107-ad19-eb3f9a8b23bc | 2423 | PMO Authorization to Start Data Loads | PMO | 1.2.4.1 | 1.2.4.1 | 2026-06-22 | 2026-06-22 | 2026-04-06 | 0 | 4 | 2422 | 1 | 5 | 357ae9be-8a60-81a7-9700-c986f6127f18 | 357ae9be-8a60-8145-9194-de4910f8b1a0, 357ae9be-8a60-817d-8c66-d73c1a869d3c, 357ae9be-8a60-81a4-8da8-f0ce83bfef06, 357ae9be-8a60-81a6-8302-fbf64c690d1f, 357ae9be-8a60-81a5-8ac3-d07ad90f4d64 | -32670 | 0 | Start No Later Than | Auto Scheduled | AMETEK SAP XXL Project Plan Replan MSP Task.csv | AMETEK SAP XXL Project Plan Replan MSP Task.csv__2f0764ccac__2026-05-05T02-44-15-662Z | Mark George | 77 | True |  | Not started | True  -32670 0 4 4 699 0 51 | Wrong Dependency, Wrong Successor, Negative Float Critical 8 1 5 True | 2026-06-22 |  |  |  |
| 357ae9be-8a60-8107-b5dd-e39e8a613c14 | 985 | Load | OTC | 1.2.1.17.2 | 1.2.1.17.2 | 2026-04-15 | 2026-04-15 | 2026-04-10 | 100 | 5 | 771 | 1 | 1 | 357ae9be-8a60-816f-86bb-ffc92c6c01e6 | 357ae9be-8a60-8113-ba84-d5504b32b7b1 | 0 | 0 | Start No Earlier Than | Auto Scheduled | AMETEK SAP XXL Project Plan Replan MSP Task.csv | AMETEK SAP XXL Project Plan Replan MSP Task.csv__2f0764ccac__2026-05-05T02-44-15-662Z | Ric Haraida |  |  |  | Done | True  0 0 1 1 5 0 23 | Low 0 0 0 True | 2026-04-15 |  |  |  |
| 357ae9be-8a60-8107-b681-d1e32581f4d5 | 1932 | VC_Classification (Class Type 200) | (Unassigned) | 1.2.2.2.40 | 1.2.2.2.40 | 2026-05-21 | 2026-05-22 | 2026-04-16 | 0 | 5 | 2800 | 0 | 0 |  |  | -3.78 | 0 | As Soon As Possible | Auto Scheduled | AMETEK SAP XXL Project Plan Replan MSP Task.csv | AMETEK SAP XXL Project Plan Replan MSP Task.csv__2f0764ccac__2026-05-05T02-44-15-662Z | COULD NOT BE DETERMINED | 36 | True |  | Not started | True  -3.78 0 0 0 0 0 20 | Negative Float High 2 0 0  |  | 1933, 1934 | True |  |
| 357ae9be-8a60-8107-b6bb-ce8be9fd0afd | 4239 | Error and Defect Mitigation | OTC | 1.2.5.2.13.7 | 1.2.5.2.13.7 | 2026-09-29 | 2026-09-30 | 2026-04-09 | 0 | 6 | 4232 | 1 | 1 | 357ae9be-8a60-8105-bb11-e5515e5ce67b | 357ae9be-8a60-81df-8be0-c95206558dcf | -681.02 | 0 | As Soon As Possible | Auto Scheduled | AMETEK SAP XXL Project Plan Replan MSP Task.csv | AMETEK SAP XXL Project Plan Replan MSP Task.csv__2f0764ccac__2026-05-05T02-44-15-662Z | Ric Haraida | 174 | True |  | Not started | True  -681.02 0 1 0 0 0 26 | Negative Float Critical 2 0 0  |  |  |  |  |
| 357ae9be-8a60-8107-bd8d-e1378475df2b | 4299 | Error and Defect Mitigation | PTP;OTC | 1.2.5.2.22.4 | 1.2.5.2.22.4 | 2026-09-24 | 2026-09-24 | 2026-04-13 | 0 | 6 | 4295 | 1 | 1 | 357ae9be-8a60-81cf-967c-e3879f0970ff | 357ae9be-8a60-8105-92f6-c1b9adcc0335 | -653.52 | 0 | As Soon As Possible | Auto Scheduled | AMETEK SAP XXL Project Plan Replan MSP Task.csv | AMETEK SAP XXL Project Plan Replan MSP Task.csv__2f0764ccac__2026-05-05T02-44-15-662Z | Nevin Varkey | 164 | True |  | Not started | True  -653.52 0 1 0 0 0 26 | Negative Float Critical 2 0 0  |  |  |  |  |
| 357ae9be-8a60-8108-821a-c6d8a9d2ac67 | 2449 | Load File Staged and Posted "Ready" | Finance | 1.2.4.2.5.1 | 1.2.4.2.5.1 | 2026-09-25 | 2026-09-28 | 2026-04-08 | 0 | 6 | 2448 | 1 | 1 | 357ae9be-8a60-81d9-97a1-d8800c6089d8 | 357ae9be-8a60-810c-8c73-e2097e3635cb | -665.5 | 0 | As Soon As Possible | Auto Scheduled | AMETEK SAP XXL Project Plan Replan MSP Task.csv | AMETEK SAP XXL Project Plan Replan MSP Task.csv__2f0764ccac__2026-05-05T02-44-15-662Z | Kasey Hughes | 173 | True |  | Not started | True  -665.5 0 1 0 0 0 26 | Wrong Dependency, Negative Float Critical 5 1 0  |  |  |  |  |
| 357ae9be-8a60-8108-8304-fe9dc6d28665 | 4474 | Simulate Load | Data | 1.2.5.2.54.3 | 1.2.5.2.54.3 | 2026-09-30 | 2026-09-30 | 2026-04-16 | 0 | 6 | 4471 | 1 | 1 | 357ae9be-8a60-81d5-bfab-ef2dcb2b56ec | 357ae9be-8a60-816a-bdbe-d3030aeb2e33 | -681.27 | 0 | As Soon As Possible | Auto Scheduled | AMETEK SAP XXL Project Plan Replan MSP Task.csv | AMETEK SAP XXL Project Plan Replan MSP Task.csv__2f0764ccac__2026-05-05T02-44-15-662Z | Jyoti Nain | 167 | True |  | Not started | True  -681.27 0 1 0 0 0 26 | Negative Float Critical 2 0 0  |  |  |  |  |

| id | uid | name | workstream | outlineNumber | wbs | start | finish | baselineFinish | pct | outlineLevel | parentUid | predCount | sucCount | predIds | sucIds | totalSlackDaysRaw | freeSlackDaysRaw | constraintType | taskMode | mspSourceFile | mspImportVersion | assignedTo | slipDays | isSlipped | isDue14 | status | cpm | scheduleQuality | constraintDate | childUids | isSummary | isOverdueStart |
| --- | --- | --- | --- | --- | --- | --- | --- | --- | --- | --- | --- | --- | --- | --- | --- | --- | --- | --- | --- | --- | --- | --- | --- | --- | --- | --- | --- | --- | --- | --- | --- | --- |
| 357ae9be-8a60-8108-8584-eeec48be6efb | 1004 | Post Load Validation | PTP | 1.2.1.20.6 | 1.2.1.20.6 | 2026-04-15 | 2026-04-16 | 2026-04-15 | 100 | 5 | 752 | 1 | 1 | 357ae9be-8a60-818b-9728-c96906c645be | 357ae9be-8a60-8102-a94c-cdab647a33ea | 0 | 0 | As Soon As Possible | Auto Scheduled | AMETEK SAP XXL Project Plan Replan MSP Task.csv | AMETEK SAP XXL Project Plan Replan MSP Task.csv__2f0764ccac__2026-05-05T02-44-15-662Z | Nevin Varkey |  |  |  | Done | True  0 0 1 1 343 0 23 | Wrong Successor High 3 0 1  |  |  |  |  |
| 357ae9be-8a60-8108-90f1-c7a2d99193b6 | 32 | Complete - Ready for Security Review | Security | 1.1.2.9.1.2.2 | 1.1.2.9.1.2.2 | 2025-04-21 | 2025-08-08 | 2025-08-08 | 100 | 7 | 26 | 0 | 1 |  | 357ae9be-8a60-818f-a887-f248eeb84d65 | 0 | 0 | Start No Earlier Than | Auto Scheduled | AMETEK SAP XXL Project Plan Replan MSP Task.csv | AMETEK SAP XXL Project Plan Replan MSP Task.csv__2f0764ccac__2026-05-05T02-44-15-662Z | Manjunatha Umesha |  |  |  | Done | True  0 0 0 0 0 0 14 | Low 0 0 0 True | 2025-04-21 |  |  |  |
| 357ae9be-8a60-8108-9978-f6a1aa687a24 | 2637 | Error and Defect Mitigation | PTM | 1.2.4.2.33.4 | 1.2.4.2.33.4 | 2026-09-30 | 2026-09-30 | 2026-04-16 | 0 | 6 | 2633 | 1 | 1 | 357ae9be-8a60-8127-9ded-c31899ec108f | 357ae9be-8a60-8159-9197-c77bcd09f22a | -695.75 | 0 | As Soon As Possible | Auto Scheduled | AMETEK SAP XXL Project Plan Replan MSP Task.csv | AMETEK SAP XXL Project Plan Replan MSP Task.csv__2f0764ccac__2026-05-05T02-44-15-662Z | Brad Meseck | 167 | True |  | Not started | True  -695.75 0 1 0 0 0 26 | Negative Float Critical 2 0 0  |  |  |  |  |
| 357ae9be-8a60-8108-9b1b-c3ffa160b043 | 689 | ITC-1 Gate Review | (Unassigned) | 1.3.3.5.6 | 1.3.3.5.6 | 2026-05-15 | 2026-05-15 | 2026-07-23 | 0 | 5 | 19 | 1 | 0 | 357ae9be-8a60-8168-8aa8-e9b4122475fc |  | 1008 | 1008 | As Soon As Possible | Auto Scheduled | AMETEK SAP XXL Project Plan Replan MSP Task.csv | AMETEK SAP XXL Project Plan Replan MSP Task.csv__2f0764ccac__2026-05-05T02-44-15-662Z | COULD NOT BE DETERMINED |  |  | True | Not started |   1008 1008 0 0 0 1 0 | Open Finish Medium 1 0 0  |  |  |  |  |
| 357ae9be-8a60-8108-a3f9-e0e30d6cc8b9 | 2961 | Manual File Staged and Posted "Ready" | Finance | 1.2.3.2.1.1 | 1.2.3.2.1.1 | 2026-06-08 | 2026-06-08 | 2026-04-06 | 0 | 6 | 2960 | 0 | 1 |  | 357ae9be-8a60-8162-8574-fe26fc0fd6f4 | -196.52 | 0 | As Soon As Possible | Auto Scheduled | AMETEK SAP XXL Project Plan Replan MSP Task.csv | AMETEK SAP XXL Project Plan Replan MSP Task.csv__2f0764ccac__2026-05-05T02-44-15-662Z | Kasey Hughes | 63 | True |  | Not started | True  -196.52 0 1 0 0 0 26 | Negative Float, Open Start Critical 3 0 0  |  |  |  |  |
| 357ae9be-8a60-8108-ae01-ffbbdc191886 | 1864 | Error and Defect Mitigation | PTP | 1.2.2.2.28.4 | 1.2.2.2.28.4 | 2026-05-21 | 2026-05-21 | 2026-04-16 | 0 | 6 | 1860 | 1 | 1 | 357ae9be-8a60-81ea-bd71-c090833600e6 | 357ae9be-8a60-8173-8708-cc60de47cf76 | -34.27 | 0 | As Soon As Possible | Auto Scheduled | AMETEK SAP XXL Project Plan Replan MSP Task.csv | AMETEK SAP XXL Project Plan Replan MSP Task.csv__2f0764ccac__2026-05-05T02-44-15-662Z | Nevin Varkey | 35 | True |  | Not started | True  -34.27 0 1 0 0 0 26 | Negative Float Critical 2 0 0  |  |  |  |  |
| 357ae9be-8a60-8108-b4e6-d20455b939d8 | 1185 | Post Load Validation | OTC | 1.2.1.62.2 | 1.2.1.62.2 | 2026-04-16 | 2026-04-16 | 2026-04-16 | 100 | 5 | 701 | 1 | 1 | 357ae9be-8a60-81be-bdd7-f6be26ecc566 | 357ae9be-8a60-81f0-be29-f141e36af1c4 | 0 | 0 | As Soon As Possible | Auto Scheduled | AMETEK SAP XXL Project Plan Replan MSP Task.csv | AMETEK SAP XXL Project Plan Replan MSP Task.csv__2f0764ccac__2026-05-05T02-44-15-662Z | James VanRiper |  |  |  | Done | True  0 0 1 1 10 0 23 | Wrong Dependency, Wrong Successor Critical 6 1 1  |  |  |  |  |
| 357ae9be-8a60-8109-878a-f172140a78ad | 3386 | Manual activities group 1 | Development;PTM;Finance;PMO;Europe IT lead;OTC;TESTING | 1.1.1.8.2.2 | 1.1.1.8.2.2 | 2026-09-16 | 2026-09-18 | 2026-07-10 | 0 | 6 | 3384 | 1 | 1 | 357ae9be-8a60-81a3-9891-d9caeb46e3c9 | 357ae9be-8a60-8146-8fa4-fb1a4de29f47 | -726.02 | 0 | Finish No Earlier Than | Auto Scheduled | AMETEK SAP XXL Project Plan Replan MSP Task.csv | AMETEK SAP XXL Project Plan Replan MSP Task.csv__2f0764ccac__2026-05-05T02-44-15-662Z | Bijoykrishna Das | 70 | True |  | Not started | True  -726.02 0 1 0 0 0 26 | Negative Float Critical 2 0 0 True | 2026-02-11 |  |  |  |
| 357ae9be-8a60-8109-8bba-fbeacfa92210 | 1967 | Post Load Validation | PTM | 1.2.2.2.48.3 | 1.2.2.2.48.3 | 2026-05-27 | 2026-05-27 | 2026-04-20 | 0 | 6 | 1964 | 1 | 1 | 357ae9be-8a60-811a-9ecf-f1007ff9b81d | 357ae9be-8a60-81ea-85c9-e53b26da28d6 | -67.27 | 0 | As Soon As Possible | Auto Scheduled | AMETEK SAP XXL Project Plan Replan MSP Task.csv | AMETEK SAP XXL Project Plan Replan MSP Task.csv__2f0764ccac__2026-05-05T02-44-15-662Z | Eric Heisler | 37 | True |  | Not started | True  -67.27 0 1 0 0 0 26 | Negative Float Critical 2 0 0  |  |  |  |  |
| 357ae9be-8a60-8109-90cf-c808e2ac3b5a | 1147 | Simulate Load | Data | 1.2.1.69.3 | 1.2.1.69.3 | 2026-04-20 | 2026-04-20 | 2026-04-16 | 100 | 5 | 754 | 1 | 1 | 357ae9be-8a60-810d-a588-db17e8f7a773 | 357ae9be-8a60-816e-8516-c6a67a0ab091 | 0 | 0 | As Soon As Possible | Auto Scheduled | AMETEK SAP XXL Project Plan Replan MSP Task.csv | AMETEK SAP XXL Project Plan Replan MSP Task.csv__2f0764ccac__2026-05-05T02-44-15-662Z | Jyoti Nain |  |  |  | Done | True  0 0 1 0 0 0 18 | Low 0 0 0  |  |  |  |  |
| 357ae9be-8a60-8109-a034-e299dbbc467e | 4305 | Simulate Load | Data | 1.2.5.2.23.3 | 1.2.5.2.23.3 | 2026-09-24 | 2026-09-24 | 2026-04-13 | 0 | 6 | 4302 | 1 | 1 | 357ae9be-8a60-8115-b45b-d3fcf3c0f8f2 | 357ae9be-8a60-8199-922d-f14badcd8e7a | -650.02 | 0 | As Soon As Possible | Auto Scheduled | AMETEK SAP XXL Project Plan Replan MSP Task.csv | AMETEK SAP XXL Project Plan Replan MSP Task.csv__2f0764ccac__2026-05-05T02-44-15-662Z | Jyoti Nain | 164 | True |  | Not started | True  -650.02 0 1 0 0 0 26 | Negative Float Critical 2 0 0  |  |  |  |  |
| 357ae9be-8a60-8109-a714-c4f93295c3df | 2049 | Error and Defect Mitigation | Finance | 1.2.2.2.68.4 | 1.2.2.2.68.4 | 2026-05-18 | 2026-05-18 | 2026-04-17 | 0 | 6 | 2045 | 1 | 1 | 357ae9be-8a60-812a-82db-dbcd9c2b6c29 | 357ae9be-8a60-81e3-a5fe-efe30551231a | -9.52 | 0 | As Soon As Possible | Auto Scheduled | AMETEK SAP XXL Project Plan Replan MSP Task.csv | AMETEK SAP XXL Project Plan Replan MSP Task.csv__2f0764ccac__2026-05-05T02-44-15-662Z | Kasey Hughes | 31 | True | True | Not started | True  -9.52 0 1 0 0 0 26 | Negative Float High 2 0 0  |  |  |  |  |
| 357ae9be-8a60-8109-ac2b-f06010902d10 | 1159 | Post Load Validation | PTM | 1.2.1.41.2 | 1.2.1.41.2 | 2026-04-16 | 2026-04-16 | 2026-04-16 | 100 | 5 | 941 | 1 | 0 | 357ae9be-8a60-81e2-acc3-f42d713bfa87 |  | 0 | 0 | As Soon As Possible | Auto Scheduled | AMETEK SAP XXL Project Plan Replan MSP Task.csv | AMETEK SAP XXL Project Plan Replan MSP Task.csv__2f0764ccac__2026-05-05T02-44-15-662Z | Eric Heisler |  |  |  | Done | True  0 0 0 0 0 0 12 | Low 0 0 0  |  |  |  |  |
| 357ae9be-8a60-8109-b501-c9b07636d775 | 3056 | OTC_CM23_Customer_Hierarchy | OTC | 1.2.3.2.16 | 1.2.3.2.16 | 2026-06-15 | 2026-06-15 | 2026-04-10 | 0 | 5 | 2959 | 0 | 0 |  |  | -20.44 | 0 | As Soon As Possible | Auto Scheduled | AMETEK SAP XXL Project Plan Replan MSP Task.csv | AMETEK SAP XXL Project Plan Replan MSP Task.csv__2f0764ccac__2026-05-05T02-44-15-662Z | Anitha Jothi | 66 | True |  | Not started | True  -20.44 0 0 0 0 0 20 | Negative Float Critical 2 0 0  |  | 3058, 3057, 3059 | True |  |
| 357ae9be-8a60-8109-b78d-fb9671d400c0 | 3326 | Mock Transactional Data | Data | 1.2.3.4 | 1.2.3.4 | 2026-06-19 | 2026-06-23 | 2026-06-23 | 0 | 4 | 2053 | 1 | 1 | 357ae9be-8a60-8199-92ae-eda8830268bf | 357ae9be-8a60-81cb-bfeb-d91fb3ac3c84 | -24.56 | 0 | As Soon As Possible | Auto Scheduled | AMETEK SAP XXL Project Plan Replan MSP Task.csv | AMETEK SAP XXL Project Plan Replan MSP Task.csv__2f0764ccac__2026-05-05T02-44-15-662Z | Jyoti Nain |  |  |  | Not started | True  -24.56 0 1 0 0 0 18 | Wrong Dependency, Negative Float Critical 5 1 0  |  | 3330, 3332, 3333, 3331, 3334, 3337, 3336, 3335 | True |  |
| 357ae9be-8a60-8109-ba5c-c56ecdf6a68d | 869 | Manual activities group 1 | Development;PTM;Finance;PMO;Europe IT lead;OTC;TESTING | 1.1.1.5.2.2 | 1.1.1.5.2.2 | 2026-05-06 | 2026-05-08 | 2026-05-22 | 0 | 6 | 867 | 1 | 1 | 357ae9be-8a60-8147-adb8-d246f38105c1 | 357ae9be-8a60-81c0-98b0-e5b24aa79782 | -204.02 | 0 | As Soon As Possible | Auto Scheduled | AMETEK SAP XXL Project Plan Replan MSP Task.csv | AMETEK SAP XXL Project Plan Replan MSP Task.csv__2f0764ccac__2026-05-05T02-44-15-662Z | Bijoykrishna Das |  |  | True | Not started | True  -204.02 0 1 0 0 0 18 | Negative Float Critical 2 0 0  |  |  |  | True |
| 357ae9be-8a60-8109-bc85-e8fdc818bcc9 | 1030 | Load | Data | 1.2.1.26.5 | 1.2.1.26.5 | 2026-04-15 | 2026-04-15 | 2026-04-15 | 100 | 5 | 748 | 1 | 1 | 357ae9be-8a60-81c2-a74f-c364563ab045 | 357ae9be-8a60-8166-a82e-c64493562d3e | 0 | 0 | As Soon As Possible | Auto Scheduled | AMETEK SAP XXL Project Plan Replan MSP Task.csv | AMETEK SAP XXL Project Plan Replan MSP Task.csv__2f0764ccac__2026-05-05T02-44-15-662Z | Jyoti Nain |  |  |  | Done | True  0 0 1 0 0 0 18 | Low 0 0 0  |  |  |  |  |
| 357ae9be-8a60-8109-bf36-ccc7a3f01302 | 1691 | Manual File Staged and Posted "Ready" | Finance | 1.2.2.2.2.1 | 1.2.2.2.2.1 | 2026-05-19 | 2026-05-19 | 2026-04-06 | 0 | 6 | 1690 | 1 | 1 | 357ae9be-8a60-815e-bb84-e90438d3fdc9 | 357ae9be-8a60-8194-b3bd-cf5513088f2f | -76.52 | 0 | As Soon As Possible | Auto Scheduled | AMETEK SAP XXL Project Plan Replan MSP Task.csv | AMETEK SAP XXL Project Plan Replan MSP Task.csv__2f0764ccac__2026-05-05T02-44-15-662Z | Kasey Hughes | 43 | True | True | Not started | True  -76.52 0 1 0 0 0 26 | Wrong Dependency, Negative Float Critical 5 1 0  |  |  |  |  |
| 357ae9be-8a60-810a-831d-fec95a9bb847 | 3117 | Error and Defect Mitigation | PTP;OTC | 1.2.3.2.25.4 | 1.2.3.2.25.4 | 2026-06-10 | 2026-06-10 | 2026-04-15 | 0 | 6 | 3113 | 1 | 1 | 357ae9be-8a60-81d9-860d-cccba81b40f8 | 357ae9be-8a60-8153-8e48-e73b72b653ee | -145.27 | 0 | As Soon As Possible | Auto Scheduled | AMETEK SAP XXL Project Plan Replan MSP Task.csv | AMETEK SAP XXL Project Plan Replan MSP Task.csv__2f0764ccac__2026-05-05T02-44-15-662Z | Nevin Varkey | 56 | True |  | Not started | True  -145.27 0 1 0 0 0 26 | Negative Float Critical 2 0 0  |  |  |  |  |
| 357ae9be-8a60-810a-970a-e5819cd25b1b | 2604 | Post Load Validation | PTP | 1.2.4.2.28.6 | 1.2.4.2.28.6 | 2026-09-30 | 2026-09-30 | 2026-04-16 | 0 | 6 | 2598 | 1 | 0 | 357ae9be-8a60-813e-ac7a-e527c6540992 |  | -676.25 | 0 | As Soon As Possible | Auto Scheduled | AMETEK SAP XXL Project Plan Replan MSP Task.csv | AMETEK SAP XXL Project Plan Replan MSP Task.csv__2f0764ccac__2026-05-05T02-44-15-662Z | Nevin Varkey | 167 | True |  | Not started | True  -676.25 0 0 0 0 0 20 | Negative Float, Open Finish Critical 3 0 0  |  |  |  |  |
| 357ae9be-8a60-810a-9aaa-c8027866138a | 56 | Master Data | Data | 1.1.2.9.1.1 | 1.1.2.9.1.1 | 2025-06-16 | 2025-09-04 | 2025-09-04 | 100 | 6 | 25 | 0 | 0 |  |  | 0 | 0 | As Soon As Possible | Auto Scheduled | AMETEK SAP XXL Project Plan Replan MSP Task.csv | AMETEK SAP XXL Project Plan Replan MSP Task.csv__2f0764ccac__2026-05-05T02-44-15-662Z | Jyoti Nain |  |  |  | Done | True  0 0 0 0 0 0 12 | Low 0 0 0  |  | 57, 58, 133 | True |  |
| 357ae9be-8a60-810a-9fa2-cf71f3578f1b | 2799 | Test Readiness Review (TRR) - ITC 2 | (Unassigned) | 1.3.3.2 | 1.3.3.2 | 2026-10-12 | 2026-10-12 | 2026-06-18 | 0 | 4 | 18 | 2 | 1 | 357ae9be-8a60-81e5-994b-f3a88ec32bb8, 357ae9be-8a60-814a-b929-eb87b46ac659 | 357ae9be-8a60-818e-8f34-de8741a5d2b6 | -726 | 0 | As Soon As Possible | Auto Scheduled | AMETEK SAP XXL Project Plan Replan MSP Task.csv | AMETEK SAP XXL Project Plan Replan MSP Task.csv__2f0764ccac__2026-05-05T02-44-15-662Z | COULD NOT BE DETERMINED | 116 | True |  | Not started | True  -726 0 1 1 126 0 31 | Negative Float Critical 2 0 0  |  |  |  |  |
| 357ae9be-8a60-810a-a25f-f62b02b25c9c | 2655 | Load File Staged and Posted "Ready" | PTM | 1.2.4.2.36.1 | 1.2.4.2.36.1 | 2026-10-02 | 2026-10-02 | 2026-04-20 | 0 | 6 | 2654 | 1 | 1 | 357ae9be-8a60-8187-a71f-cc08520b9433 | 357ae9be-8a60-81dc-a39c-ce06bb1197b8 | -41745 | 0 | As Soon As Possible | Auto Scheduled | AMETEK SAP XXL Project Plan Replan MSP Task.csv | AMETEK SAP XXL Project Plan Replan MSP Task.csv__2f0764ccac__2026-05-05T02-44-15-662Z | Brad Meseck | 165 | True |  | Not started | True  -41745 0 1 0 0 0 26 | Negative Float Critical 2 0 0  |  |  |  |  |
| 357ae9be-8a60-810a-ab36-e6cf95be2d2c | 4280 | Simulate Load | Data | 1.2.5.2.19.3 | 1.2.5.2.19.3 | 2026-10-01 | 2026-10-01 | 2026-04-14 | 0 | 6 | 4277 | 1 | 1 | 357ae9be-8a60-8115-8ba1-d2a890dcdcda | 357ae9be-8a60-8150-a01f-e0fc8adf6143 | -691.77 | 0 | Finish No Earlier Than | Auto Scheduled | AMETEK SAP XXL Project Plan Replan MSP Task.csv | AMETEK SAP XXL Project Plan Replan MSP Task.csv__2f0764ccac__2026-05-05T02-44-15-662Z | Jyoti Nain | 170 | True |  | Not started | True  -691.77 0 1 0 0 0 26 | Negative Float Critical 2 0 0 True | 2026-04-10 |  |  |  |
| 357ae9be-8a60-810a-b074-e99362abbfb2 | 3132 | Load | Data | 1.2.3.2.27.5 | 1.2.3.2.27.5 | 2026-06-08 | 2026-06-08 | 2026-04-15 | 0 | 6 | 3127 | 1 | 1 | 357ae9be-8a60-81d2-837d-fa4d8a880bdd | 357ae9be-8a60-8171-9374-ee1be1168ab7 | -125.52 | 0 | As Soon As Possible | Auto Scheduled | AMETEK SAP XXL Project Plan Replan MSP Task.csv | AMETEK SAP XXL Project Plan Replan MSP Task.csv__2f0764ccac__2026-05-05T02-44-15-662Z | Jyoti Nain | 54 | True |  | Not started | True  -125.52 0 1 0 0 0 26 | Wrong Dependency, Negative Float Critical 5 1 0  |  |  |  |  |
| 357ae9be-8a60-810a-b585-d08a4025ce52 | 3304 | Post Load Validation | OTC | 1.2.3.2.64.2 | 1.2.3.2.64.2 | 2026-06-16 | 2026-06-16 | 2025-03-13 | 0 | 6 | 3302 | 1 | 0 | 357ae9be-8a60-819e-ab5c-dc8efd5cc435 |  | -169.02 | 0 | As Soon As Possible | Auto Scheduled | AMETEK SAP XXL Project Plan Replan MSP Task.csv | AMETEK SAP XXL Project Plan Replan MSP Task.csv__2f0764ccac__2026-05-05T02-44-15-662Z | James VanRiper | 460 | True |  | Not started | True  -169.02 0 0 0 0 0 20 | Negative Float, Open Finish Critical 3 0 0  |  |  |  |  |
| 357ae9be-8a60-810a-bd4a-c1b875eb1c60 | 883 | Intercompany Business Partner Setup | Development;PTM;Finance;PMO;Europe IT lead;OTC;TESTING | 1.2.1.7.4 | 1.2.1.7.4 | 2026-04-08 | 2026-04-09 | 2026-04-09 | 100 | 5 | 881 | 0 | 0 |  |  | 0 | 0 | As Soon As Possible | Auto Scheduled | AMETEK SAP XXL Project Plan Replan MSP Task.csv | AMETEK SAP XXL Project Plan Replan MSP Task.csv__2f0764ccac__2026-05-05T02-44-15-662Z | Bijoykrishna Das |  |  |  | Done | True  0 0 0 0 0 0 12 | Low 0 0 0  |  |  |  |  |
| 357ae9be-8a60-810b-80ad-d89acec7683f | 2488 | RTR_CM14_Cost Element_Group | Finance | 1.2.4.2.11 | 1.2.4.2.11 | 2026-09-29 | 2026-10-05 | 2026-04-15 | 0 | 5 | 2898 | 0 | 0 |  |  | -88.06 | 0 | As Soon As Possible | Auto Scheduled | AMETEK SAP XXL Project Plan Replan MSP Task.csv | AMETEK SAP XXL Project Plan Replan MSP Task.csv__2f0764ccac__2026-05-05T02-44-15-662Z | Kasey Hughes | 173 | True |  | Not started | True  -88.06 0 0 0 0 0 20 | Negative Float Critical 2 0 0  |  | 2490, 2489, 2491 | True |  |
| 357ae9be-8a60-810b-85ac-eb1beed67247 | 1879 | Load | Data | 1.2.2.2.30.5 | 1-Apr | 2026-05-25 | 2026-05-25 | 2026-04-16 | 0 | 6 | 1874 | 1 | 1 | 357ae9be-8a60-8195-bbcf-f741998e7807 | 357ae9be-8a60-8155-978f-efec5572fc84 | -62.39 | 0 | As Soon As Possible | Auto Scheduled | AMETEK SAP XXL Project Plan Replan MSP Task.csv | AMETEK SAP XXL Project Plan Replan MSP Task.csv__2f0764ccac__2026-05-05T02-44-15-662Z | Jyoti Nain | 39 | True |  | Not started | True  -62.39 0 1 0 0 0 26 | Negative Float Critical 2 0 0  |  |  |  |  |
| 357ae9be-8a60-810b-91ed-f3fcb9b602d4 | 804 | Simulate Load | Data | 1.2.1.5.3 | 1.2.1.5.3 | 2026-04-07 | 2026-04-07 | 2026-04-07 | 100 | 5 | 759 | 1 | 1 | 357ae9be-8a60-81f0-9870-df7773002bb7 | 357ae9be-8a60-8124-9005-e815c5ae627c | 0 | 0 | As Soon As Possible | Auto Scheduled | AMETEK SAP XXL Project Plan Replan MSP Task.csv | AMETEK SAP XXL Project Plan Replan MSP Task.csv__2f0764ccac__2026-05-05T02-44-15-662Z | Jyoti Nain |  |  |  | Done | True  0 0 1 0 0 0 18 | Low 0 0 0  |  |  |  |  |
| 357ae9be-8a60-810b-926e-f8e31e39917f | 1876 | Pre Load Validation | PTM | 1.2.2.2.30.2 | 1.2.2.2.30.2 | 2026-05-21 | 2026-05-21 | 2026-04-16 | 0 | 6 | 1874 | 1 | 1 | 357ae9be-8a60-816a-bb31-c440e596cfae | 357ae9be-8a60-81ca-817f-ded15e75ea27 | -62.39 | 0 | As Soon As Possible | Auto Scheduled | AMETEK SAP XXL Project Plan Replan MSP Task.csv | AMETEK SAP XXL Project Plan Replan MSP Task.csv__2f0764ccac__2026-05-05T02-44-15-662Z | Brad Meseck | 35 | True |  | Not started | True  -62.39 0 1 0 0 0 26 | Wrong Dependency, Negative Float Critical 5 1 0  |  |  |  |  |
| 357ae9be-8a60-810b-9484-d92f9c8decda | 2564 | Load File Staged and Posted "Ready" | PTP;OTC | 1.2.4.2.23.1 | 1.2.4.2.23.1 | 2026-09-24 | 2026-09-24 | 2026-04-13 | 0 | 6 | 2563 | 0 | 0 |  |  | -38520 | 0 | As Soon As Possible | Auto Scheduled | AMETEK SAP XXL Project Plan Replan MSP Task.csv | AMETEK SAP XXL Project Plan Replan MSP Task.csv__2f0764ccac__2026-05-05T02-44-15-662Z | Nevin Varkey | 164 | True |  | Not started | True  -38520 0 0 0 0 0 20 | Negative Float, Open Start, Open Finish Critical 4 0 0  |  |  |  |  |
| 357ae9be-8a60-810b-a038-c6bb1649ba05 | 3373 | Connect Systems and Validate | Basis | 1.1.1.8.1.5 | 1.1.1.8.1.5 | 2026-09-14 | 2026-09-15 | 2026-07-02 | 0 | 6 | 3368 | 1 | 1 | 357ae9be-8a60-81fc-928e-d443bbc5cf56 | 357ae9be-8a60-8111-a2e7-c7306861610b | -85.69 | 0 | As Soon As Possible | Auto Scheduled | AMETEK SAP XXL Project Plan Replan MSP Task.csv | AMETEK SAP XXL Project Plan Replan MSP Task.csv__2f0764ccac__2026-05-05T02-44-15-662Z | Lokchetan Meghavath | 75 | True |  | Not started | True  -85.69 0 1 0 0 0 26 | Wrong Dependency, Negative Float Critical 5 1 0  |  |  |  |  |
| 357ae9be-8a60-810b-a047-e61b7750fd00 | 3339 | System Setup | (Unassigned) | 1.1.1.6.1 | 1.1.1.6.1 | 2026-05-18 | 2026-05-27 | 2026-05-27 | 0 | 5 | 1284 | 1 | 0 | 357ae9be-8a60-8140-9dea-def2d309ec0b |  | -27.19 | 0 | As Soon As Possible | Auto Scheduled | AMETEK SAP XXL Project Plan Replan MSP Task.csv | AMETEK SAP XXL Project Plan Replan MSP Task.csv__2f0764ccac__2026-05-05T02-44-15-662Z | COULD NOT BE DETERMINED |  |  |  | Not started | True  -27.19 0 0 0 0 0 12 | Negative Float Critical 2 0 0  |  | 1296, 1301, 1300, 1295, 1294, 1290, 1297, 1293, 1288, 1298, 1299, 1291, 1285, 1292, 1289 | True |  |
| 357ae9be-8a60-810b-ae6c-e77ada18665c | 107 | List of functional users | (Unassigned) | 1.1.1.3.1 | 1.1.1.3.1 | 2025-05-08 | 2025-05-08 | 2025-05-08 | 100 | 5 | 87 | 1 | 1 | 357ae9be-8a60-8147-b369-c3aedf60ac25 | 357ae9be-8a60-8130-9242-df0d4936c181 | 0 | 0 | As Soon As Possible | Auto Scheduled | AMETEK SAP XXL Project Plan Replan MSP Task.csv | AMETEK SAP XXL Project Plan Replan MSP Task.csv__2f0764ccac__2026-05-05T02-44-15-662Z | COULD NOT BE DETERMINED |  |  |  | Done | True  0 0 1 0 0 0 18 | Low 0 0 0  |  |  |  |  |
| 357ae9be-8a60-810b-b32f-e4ac09ffff99 | 2698 | Simulate Load | Data | 1.2.4.2.47.3 | 1.2.4.2.47.3 | 2026-10-05 | 2026-10-06 | 2026-04-17 | 0 | 6 | 2695 | 1 | 1 | 357ae9be-8a60-8158-b5a6-edd1fd7be2fc | 357ae9be-8a60-8137-afc0-f798d63990a8 | -726 | 0 | As Soon As Possible | Auto Scheduled | AMETEK SAP XXL Project Plan Replan MSP Task.csv | AMETEK SAP XXL Project Plan Replan MSP Task.csv__2f0764ccac__2026-05-05T02-44-15-662Z | Jyoti Nain | 172 | True |  | Not started | True  -726 0 1 0 0 0 26 | Negative Float Critical 2 0 0  |  |  |  |  |
| 357ae9be-8a60-810b-b4a9-d061cfd26cf9 | 1161 | Post Load Validation | PTM | 1.2.1.42.2 | 1.2.1.42.2 | 2026-04-16 | 2026-04-16 | 2026-04-16 | 100 | 5 | 942 | 1 | 0 | 357ae9be-8a60-818f-9cfa-fddbf4c6cdda |  | 0 | 0 | As Soon As Possible | Auto Scheduled | AMETEK SAP XXL Project Plan Replan MSP Task.csv | AMETEK SAP XXL Project Plan Replan MSP Task.csv__2f0764ccac__2026-05-05T02-44-15-662Z | Eric Heisler |  |  |  | Done | True  0 0 0 0 0 0 12 | Low 0 0 0  |  |  |  |  |
| 357ae9be-8a60-810b-badd-fe5adebc3401 | 2547 | Pre Load Validation | PTP | 1.2.4.2.20.2 | 1.2.4.2.20.2 | 2026-09-24 | 2026-09-24 | 2026-04-10 | 0 | 6 | 2545 | 1 | 1 | 357ae9be-8a60-81aa-a2d2-d1d178af9866 | 357ae9be-8a60-8146-adac-e46b743e3b20 | -653.5 | 0 | As Soon As Possible | Auto Scheduled | AMETEK SAP XXL Project Plan Replan MSP Task.csv | AMETEK SAP XXL Project Plan Replan MSP Task.csv__2f0764ccac__2026-05-05T02-44-15-662Z | Nevin Varkey | 167 | True |  | Not started | True  -653.5 0 1 0 0 0 26 | Wrong Dependency, Negative Float Critical 5 1 0  |  |  |  |  |
| 357ae9be-8a60-810c-81c2-c317d1f71b3e | 1026 | Load File Staged and Posted "Ready" | PTP;OTC | 1.2.1.26.1 | 1.2.1.26.1 | 2026-04-07 | 2026-04-07 | 2026-04-07 | 100 | 5 | 748 | 1 | 0 | 357ae9be-8a60-8149-b297-f48afb2a029f |  | 0 | 0 | As Soon As Possible | Auto Scheduled | AMETEK SAP XXL Project Plan Replan MSP Task.csv | AMETEK SAP XXL Project Plan Replan MSP Task.csv__2f0764ccac__2026-05-05T02-44-15-662Z | Nevin Varkey |  |  |  | Done | True  0 0 0 0 0 0 12 | Wrong Dependency High 3 1 0  |  |  |  |  |
| 357ae9be-8a60-810c-82e9-ffc16aba0440 | 1896 | Load File Staged and Posted "Ready" | PTM | 1.2.2.2.33.1 | 1.2.2.2.33.1 | 2026-05-21 | 2026-05-22 | 2026-04-16 | 0 | 6 | 1895 | 1 | 2 | 357ae9be-8a60-8160-bb55-efe4c5e15469 | 357ae9be-8a60-811c-a632-c761fdfa4cc5, 357ae9be-8a60-8166-97d3-c4b7d93ac49c | -3226 | 0 | As Soon As Possible | Auto Scheduled | AMETEK SAP XXL Project Plan Replan MSP Task.csv | AMETEK SAP XXL Project Plan Replan MSP Task.csv__2f0764ccac__2026-05-05T02-44-15-662Z | Brad Meseck | 36 | True |  | Not started | True  -3226 0 2 2 78 0 37 | Wrong Successor, Negative Float Critical 5 0 2  |  |  |  |  |
| 357ae9be-8a60-810c-8c73-e2097e3635cb | 2450 | Pre Load Validation | Finance | 1.2.4.2.5.2 | 1.2.4.2.5.2 | 2026-09-28 | 2026-09-28 | 2026-04-08 | 0 | 6 | 2448 | 1 | 1 | 357ae9be-8a60-8108-821a-c6d8a9d2ac67 | 357ae9be-8a60-81c0-9c6a-c86a7b5a12ef | -665.5 | 0 | As Soon As Possible | Auto Scheduled | AMETEK SAP XXL Project Plan Replan MSP Task.csv | AMETEK SAP XXL Project Plan Replan MSP Task.csv__2f0764ccac__2026-05-05T02-44-15-662Z | Kasey Hughes | 173 | True |  | Not started | True  -665.5 0 1 0 0 0 26 | Negative Float Critical 2 0 0  |  |  |  |  |
| 357ae9be-8a60-810c-a03f-cb615070c344 | 835 | Development RICEFW | Development | 1.3.2 | 1.3.2 | 2026-05-04 | 2026-08-14 | 2026-05-22 | 0 | 3 | 681 | 0 | 0 |  |  | 61 | 61 | As Soon As Possible | Auto Scheduled | AMETEK SAP XXL Project Plan Replan MSP Task.csv | AMETEK SAP XXL Project Plan Replan MSP Task.csv__2f0764ccac__2026-05-05T02-44-15-662Z | Bijoykrishna Das | 84 | True |  | Not started |   61 61 0 0 0 0 8 | Low 0 0 0  |  | 840, 836, 837, 839, 838 | True | True |
| 357ae9be-8a60-810c-a4a6-d7c773947001 | 846 | Procure to Pay | (Unassigned) | 1.3.1.3 | 1.3.1.3 | 2026-05-04 | 2026-05-29 | 2026-05-22 | 4 | 4 | 843 | 0 | 0 |  |  | 116 | 116 | As Soon As Possible | Auto Scheduled | AMETEK SAP XXL Project Plan Replan MSP Task.csv | AMETEK SAP XXL Project Plan Replan MSP Task.csv__2f0764ccac__2026-05-05T02-44-15-662Z | COULD NOT BE DETERMINED | 7 | True |  | Not started |   116 116 0 0 0 0 8 | Open Start, Open Finish Medium 2 0 0  |  |  |  |  |
| 357ae9be-8a60-810c-aa8a-f5acbd240466 | 87 | DS4-120 Data Dev Client | Data | 1.1.1.3 | 1.1.1.3 | 2025-05-08 | 2025-05-08 | 2025-05-08 | 100 | 4 | 5 | 0 | 0 |  |  | 0 | 0 | As Soon As Possible | Auto Scheduled | AMETEK SAP XXL Project Plan Replan MSP Task.csv | AMETEK SAP XXL Project Plan Replan MSP Task.csv__2f0764ccac__2026-05-05T02-44-15-662Z | Jyoti Nain |  |  |  | Done | True  0 0 0 0 0 0 12 | Low 0 0 0  |  | 107, 104 | True |  |
| 357ae9be-8a60-810c-b32f-e0ad826d8800 | 1140 | Pre Load Validation | Finance | 1.2.1.68.2 | 1.2.1.68.2 | 2026-04-20 | 2026-04-20 | 2026-04-10 | 100 | 5 | 950 | 1 | 1 | 357ae9be-8a60-815d-978b-dd09365dc99c | 357ae9be-8a60-814b-a818-d663be665793 | 0 | 0 | As Soon As Possible | Auto Scheduled | AMETEK SAP XXL Project Plan Replan MSP Task.csv | AMETEK SAP XXL Project Plan Replan MSP Task.csv__2f0764ccac__2026-05-05T02-44-15-662Z | Kasey Hughes |  |  |  | Done | True  0 0 1 0 0 0 18 | Wrong Dependency High 3 1 0  |  |  |  |  |
| 357ae9be-8a60-810c-b6ec-c614044f2851 | 2555 | Post Load Validation | Finance | 1.2.4.2.21.3 | 1.2.4.2.21.3 | 2026-10-02 | 2026-10-05 | 2026-04-13 | 0 | 6 | 2552 | 1 | 0 | 357ae9be-8a60-8178-b1f6-f869bc288b6e |  | -699.75 | 0 | As Soon As Possible | Auto Scheduled | AMETEK SAP XXL Project Plan Replan MSP Task.csv | AMETEK SAP XXL Project Plan Replan MSP Task.csv__2f0764ccac__2026-05-05T02-44-15-662Z | Kasey Hughes | 175 | True |  | Not started | True  -699.75 0 0 0 0 0 20 | Negative Float, Open Finish Critical 3 0 0  |  |  |  |  |
| 357ae9be-8a60-810c-bfc1-e1ed72e3fc33 | 4490 | GTS - ECCN - Assign | (Unassigned) | 1.2.5.2.59 | 1.2.5.2.59 | 2026-10-01 | 2026-10-01 | 2026-04-16 | 0 | 5 | 4162 | 0 | 0 |  |  | -89.03 | 0 | As Soon As Possible | Auto Scheduled | AMETEK SAP XXL Project Plan Replan MSP Task.csv | AMETEK SAP XXL Project Plan Replan MSP Task.csv__2f0764ccac__2026-05-05T02-44-15-662Z | COULD NOT BE DETERMINED | 168 | True |  | Not started | True  -89.03 0 0 0 0 0 20 | Negative Float Critical 2 0 0  |  | 4492, 4491 | True |  |
| 357ae9be-8a60-810d-8813-eba71e9a6e9c | 1249 | Error and Defect Mitigation | PTP;OTC | 1.2.1.24.4 | 1.2.1.24.4 | 2026-04-13 | 2026-04-13 | 2026-04-13 | 100 | 5 | 1245 | 1 | 1 | 357ae9be-8a60-81ad-a0c5-ca29d8c150ef | 357ae9be-8a60-81d0-8b99-d51a46959c2c | 0 | 0 | As Soon As Possible | Auto Scheduled | AMETEK SAP XXL Project Plan Replan MSP Task.csv | AMETEK SAP XXL Project Plan Replan MSP Task.csv__2f0764ccac__2026-05-05T02-44-15-662Z | Nevin Varkey |  |  |  | Done | True  0 0 1 0 0 0 18 | Low 0 0 0  |  |  |  |  |
| 357ae9be-8a60-810d-8ed4-d0f8b0591acd | 3186 | Simulate Load | Data | 1.2.3.2.35.3 | 1.2.3.2.35.3 | 2026-06-15 | 2026-06-15 | 2026-04-17 | 0 | 6 | 3183 | 1 | 1 | 357ae9be-8a60-8106-8e95-ef21f3d46477 | 357ae9be-8a60-81b4-a50f-e0d917d4f024 | -173.77 | 0 | As Soon As Possible | Auto Scheduled | AMETEK SAP XXL Project Plan Replan MSP Task.csv | AMETEK SAP XXL Project Plan Replan MSP Task.csv__2f0764ccac__2026-05-05T02-44-15-662Z | Jyoti Nain | 59 | True |  | Not started | True  -173.77 0 1 0 0 0 26 | Negative Float Critical 2 0 0  |  |  |  |  |
| 357ae9be-8a60-810d-a330-e49fbe094eeb | 4215 | Pre Load Validation | Finance | 1.2.5.2.9.2 | 1.2.5.2.9.2 | 2026-09-29 | 2026-09-29 | 2026-04-09 | 0 | 6 | 4213 | 1 | 0 | 357ae9be-8a60-81a2-861f-c22aa97163f8 |  | -672.02 | 0 | As Soon As Possible | Auto Scheduled | AMETEK SAP XXL Project Plan Replan MSP Task.csv | AMETEK SAP XXL Project Plan Replan MSP Task.csv__2f0764ccac__2026-05-05T02-44-15-662Z | Kasey Hughes | 173 | True |  | Not started | True  -672.02 0 0 0 0 0 20 | Negative Float, Open Finish Critical 3 0 0  |  |  |  |  |
| 357ae9be-8a60-810d-a588-db17e8f7a773 | 1146 | Pre Load Validation | Finance | 1.2.1.69.2 | 1.2.1.69.2 | 2026-04-20 | 2026-04-20 | 2026-04-10 | 100 | 5 | 754 | 1 | 1 | 357ae9be-8a60-8163-b3a8-c3261f7d7cb0 | 357ae9be-8a60-8109-90cf-c808e2ac3b5a | 0 | 0 | As Soon As Possible | Auto Scheduled | AMETEK SAP XXL Project Plan Replan MSP Task.csv | AMETEK SAP XXL Project Plan Replan MSP Task.csv__2f0764ccac__2026-05-05T02-44-15-662Z | Kasey Hughes |  |  |  | Done | True  0 0 1 0 0 0 18 | Low 0 0 0  |  |  |  |  |
| 357ae9be-8a60-810d-a7cd-f8b22e40f471 | 4336 | Post Load Validation | PTP | 1.2.5.2.27.6 | 1.2.5.2.27.6 | 2026-09-24 | 2026-09-24 | 2026-04-15 | 0 | 6 | 4330 | 1 | 0 | 357ae9be-8a60-8145-b40c-d35c88561209 |  | -647.52 | 0 | Start No Earlier Than | Auto Scheduled | AMETEK SAP XXL Project Plan Replan MSP Task.csv | AMETEK SAP XXL Project Plan Replan MSP Task.csv__2f0764ccac__2026-05-05T02-44-15-662Z | Nevin Varkey | 162 | True |  | Not started | True  -647.52 0 0 0 0 0 20 | Negative Float, Open Finish Critical 3 0 0 True | 2026-04-17 |  |  |  |
| 357ae9be-8a60-810d-b302-cdf5fa9f1423 | 1787 | Extract File | Data | 1.2.2.2.17.1 | 1.2.2.2.17.1 | 2026-05-25 | 2026-05-25 | 2026-04-10 | 0 | 6 | 1786 | 1 | 2 | 357ae9be-8a60-8122-b5a7-f52bb4b3e2ef | 357ae9be-8a60-81f0-be29-f141e36af1c4, 357ae9be-8a60-813f-80d4-e47fa8c9241d | -65.02 | 0 | As Soon As Possible | Auto Scheduled | AMETEK SAP XXL Project Plan Replan MSP Task.csv | AMETEK SAP XXL Project Plan Replan MSP Task.csv__2f0764ccac__2026-05-05T02-44-15-662Z | Jyoti Nain | 45 | True |  | Not started | True  -65.02 0 2 2 94 0 37 | Wrong Dependency, Wrong Successor, Negative Float Critical 8 1 2  |  |  |  |  |
| 357ae9be-8a60-810e-935f-ea6407202b2b | 1702 | Post GL Extention Validation | (Unassigned) | 1.2.2.2.3.8 | 1.2.2.2.3.8 | 2026-05-21 | 2026-05-22 | 2026-04-09 | 0 | 6 | 1694 | 1 | 1 | 357ae9be-8a60-81b7-9315-ea2b5f994564 | 357ae9be-8a60-81de-9c27-db4a5c7927c0 | -76.52 | 0 | As Soon As Possible | Auto Scheduled | AMETEK SAP XXL Project Plan Replan MSP Task.csv | AMETEK SAP XXL Project Plan Replan MSP Task.csv__2f0764ccac__2026-05-05T02-44-15-662Z | COULD NOT BE DETERMINED | 43 | True |  | Not started | True  -76.52 0 1 1 36 0 31 | Wrong Successor, Negative Float Critical 5 0 1  |  |  |  |  |
| 357ae9be-8a60-810e-9450-fd86510ffc0f | 3368 | System Setup | (Unassigned) | 1.1.1.8.1 | 1.1.1.8.1 | 2026-09-07 | 2026-09-16 | 2026-09-16 | 0 | 5 | 3367 | 1 | 0 | 357ae9be-8a60-8137-a5b2-e958ef031700 |  | -88.75 | 0 | As Soon As Possible | Auto Scheduled | AMETEK SAP XXL Project Plan Replan MSP Task.csv | AMETEK SAP XXL Project Plan Replan MSP Task.csv__2f0764ccac__2026-05-05T02-44-15-662Z | COULD NOT BE DETERMINED |  |  |  | Not started | True  -88.75 0 0 0 0 0 12 | Negative Float Critical 2 0 0  |  | 3373, 3374, 3381, 3380, 3371, 3379, 3382, 3377, 3369, 3376, 3375, 3370, 3383, 3372, 3378 | True |  |
| 357ae9be-8a60-810e-9543-c436e324efc4 | 3300 | Load | OTC | 1.2.3.2.63.1 | 1.2.3.2.63.1 | 2026-06-16 | 2026-06-18 | 2026-04-16 | 0 | 6 | 3299 | 1 | 1 | 357ae9be-8a60-81cc-965d-c842e3af70a7 | 357ae9be-8a60-8179-9b45-e1f8f495ccb7 | -190.27 | 0 | As Soon As Possible | Auto Scheduled | AMETEK SAP XXL Project Plan Replan MSP Task.csv | AMETEK SAP XXL Project Plan Replan MSP Task.csv__2f0764ccac__2026-05-05T02-44-15-662Z | James VanRiper | 63 | True |  | Not started | True  -190.27 0 1 0 0 0 26 | Wrong Dependency, Negative Float Critical 5 1 0  |  |  |  |  |
| 357ae9be-8a60-810e-acb6-fae0cda074c9 | 2475 | Load File Staged and Posted "Ready" | Data | 1.2.4.2.9.1 | 1.2.4.2.9.1 | 2026-09-29 | 2026-09-29 | 2026-04-08 | 0 | 6 | 2474 | 1 | 1 | 357ae9be-8a60-814f-9909-dc7f6a9040f5 | 357ae9be-8a60-81b5-9929-e6a7c23ee7ec | -672 | 0 | As Soon As Possible | Auto Scheduled | AMETEK SAP XXL Project Plan Replan MSP Task.csv | AMETEK SAP XXL Project Plan Replan MSP Task.csv__2f0764ccac__2026-05-05T02-44-15-662Z | Jyoti Nain | 174 | True |  | Not started | True  -672 0 1 0 0 0 26 | Wrong Dependency, Negative Float Critical 5 1 0  |  |  |  |  |
| 357ae9be-8a60-810e-af55-f5cf31093190 | 1061 | Post Load Validation | PTM | 1.2.1.31.6 | 1.2.1.31.6 | 2026-04-17 | 2026-04-17 | 2026-04-17 | 100 | 5 | 694 | 1 | 1 | 357ae9be-8a60-8110-91c5-d8b49c47576f | 357ae9be-8a60-8191-9731-e98e31822550 | 0 | 0 | Finish No Earlier Than | Auto Scheduled | AMETEK SAP XXL Project Plan Replan MSP Task.csv | AMETEK SAP XXL Project Plan Replan MSP Task.csv__2f0764ccac__2026-05-05T02-44-15-662Z | Brad Meseck |  |  |  | Done | True  0 0 1 1 1 0 23 | Low 0 0 0 True | 2026-04-16 |  |  |  |
| 357ae9be-8a60-810e-b17d-c7adcf52dba7 | 946 | VC_Characteristic Groups | (Unassigned) | 1.2.1.46 | 1.2.1.46 | 2026-04-17 | 2026-04-20 | 2026-04-17 | 100 | 4 | 425 | 0 | 0 |  |  | 0 | 0 | As Soon As Possible | Auto Scheduled | AMETEK SAP XXL Project Plan Replan MSP Task.csv | AMETEK SAP XXL Project Plan Replan MSP Task.csv__2f0764ccac__2026-05-05T02-44-15-662Z | COULD NOT BE DETERMINED |  |  |  | Done | True  0 0 0 0 0 0 12 | Low 0 0 0  |  | 1169, 1168 | True |  |
| 357ae9be-8a60-810e-befc-ccddeb6e62cb | 4332 | Pre Load Validation | PTP | 1.2.5.2.27.2 | 1.2.5.2.27.2 | 2026-09-29 | 2026-09-29 | 2026-04-16 | 0 | 6 | 4330 | 1 | 1 | 357ae9be-8a60-8101-a3f5-fec79702f828 | 357ae9be-8a60-8147-8434-c1ad0381f972 | -673.27 | 0 | As Soon As Possible | Auto Scheduled | AMETEK SAP XXL Project Plan Replan MSP Task.csv | AMETEK SAP XXL Project Plan Replan MSP Task.csv__2f0764ccac__2026-05-05T02-44-15-662Z | Nevin Varkey | 166 | True |  | Not started | True  -673.27 0 1 0 0 0 26 | Negative Float Critical 2 0 0  |  |  |  |  |
| 357ae9be-8a60-810f-84e3-dc108ebaacd6 | 5 | Environment Schedule | (Unassigned) | 1.1.1 | 1.1.1 | 2025-03-13 | 2026-09-29 | 2026-07-16 | 21 | 3 | 2 | 0 | 0 |  |  | 29 | 29 | As Soon As Possible | Auto Scheduled | AMETEK SAP XXL Project Plan Replan MSP Task.csv | AMETEK SAP XXL Project Plan Replan MSP Task.csv__2f0764ccac__2026-05-05T02-44-15-662Z | COULD NOT BE DETERMINED | 75 | True |  | Not started |   29 29 0 0 0 0 8 | Low 0 0 0  |  | 87, 884, 86, 3367, 201, 1284, 85, 88, 849 | True |  |
| 357ae9be-8a60-810f-8b16-e663b6d04897 | 1827 | Pre Load Validation | PTP;OTC | 1.2.2.2.23.2 | 1.2.2.2.23.2 | 2026-05-18 | 2026-05-18 | 2026-04-13 | 0 | 6 | 1825 | 0 | 1 |  | 357ae9be-8a60-8154-8e79-d466acaf965d | -481 | 0 | As Soon As Possible | Auto Scheduled | AMETEK SAP XXL Project Plan Replan MSP Task.csv | AMETEK SAP XXL Project Plan Replan MSP Task.csv__2f0764ccac__2026-05-05T02-44-15-662Z | Nevin Varkey | 35 | True | True | Not started | True  -481 0 1 0 0 0 26 | Negative Float, Open Start Critical 3 0 0  |  |  |  |  |
| 357ae9be-8a60-810f-9549-d3153babbbf9 | 4187 | RTR_CM04_Cost_Center | (Unassigned) | 1.2.5.2.5 | 1.2.5.2.5 | 2026-09-25 | 2026-09-29 | 2026-04-09 | 0 | 5 | 4162 | 0 | 0 |  |  | -83.19 | 0 | As Soon As Possible | Auto Scheduled | AMETEK SAP XXL Project Plan Replan MSP Task.csv | AMETEK SAP XXL Project Plan Replan MSP Task.csv__2f0764ccac__2026-05-05T02-44-15-662Z | COULD NOT BE DETERMINED | 173 | True |  | Not started | True  -83.19 0 0 0 0 0 20 | Negative Float Critical 2 0 0  |  | 4191, 4192, 4190, 4193, 4188, 4189 | True |  |
| 357ae9be-8a60-810f-981e-c3499217565c | 2601 | Simulate Load | Data | 1.2.4.2.28.3 | 1.2.4.2.28.3 | 2026-09-29 | 2026-09-29 | 2026-04-16 | 0 | 6 | 2598 | 1 | 1 | 357ae9be-8a60-81fa-96a4-ee57b14748ce | 357ae9be-8a60-81cc-83de-df75b47f05b7 | -676.25 | 0 | As Soon As Possible | Auto Scheduled | AMETEK SAP XXL Project Plan Replan MSP Task.csv | AMETEK SAP XXL Project Plan Replan MSP Task.csv__2f0764ccac__2026-05-05T02-44-15-662Z | Jyoti Nain | 166 | True |  | Not started | True  -676.25 0 1 0 0 0 26 | Negative Float Critical 2 0 0  |  |  |  |  |
| 357ae9be-8a60-810f-998b-fd234fcfc4a3 | 1301 | Release Security roles to Functional Team | Security | 1.1.1.6.1.15 | 1.1.1.6.1.15 | 2026-05-25 | 2026-05-25 | 2026-05-19 | 0 | 6 | 3339 | 1 | 0 | 357ae9be-8a60-819d-b48e-e3bd979bbd0f |  | 79 | 79 | As Soon As Possible | Auto Scheduled | AMETEK SAP XXL Project Plan Replan MSP Task.csv | AMETEK SAP XXL Project Plan Replan MSP Task.csv__2f0764ccac__2026-05-05T02-44-15-662Z | Manjunatha Umesha | 6 | True |  | Not started |   79 79 0 0 0 0 8 | Open Finish Medium 1 0 0  |  |  |  |  |
| 357ae9be-8a60-810f-99ea-d85bcc3b5c29 | 1750 | RTR_CM14_Cost Element_Group | Finance | 1.2.2.2.11 | 1.2.2.2.11 | 2026-05-21 | 2026-05-25 | 2026-04-15 | 0 | 5 | 2800 | 0 | 0 |  |  | -4.81 | 0 | As Soon As Possible | Auto Scheduled | AMETEK SAP XXL Project Plan Replan MSP Task.csv | AMETEK SAP XXL Project Plan Replan MSP Task.csv__2f0764ccac__2026-05-05T02-44-15-662Z | Kasey Hughes | 40 | True |  | Not started | True  -4.81 0 0 0 0 0 20 | Negative Float High 2 0 0  |  | 1752, 1751, 1753 | True |  |
| 357ae9be-8a60-810f-a1d7-c241456fc760 | 4455 | Post Load Validation | OTC | 1.2.5.2.50.6 | 1.2.5.2.50.6 | 2026-10-08 | 2026-10-08 | 2026-04-21 | 0 | 6 | 4449 | 1 | 0 | 357ae9be-8a60-81d9-82df-e24ffa56737c |  | -726.02 | 0 | As Soon As Possible | Auto Scheduled | AMETEK SAP XXL Project Plan Replan MSP Task.csv | AMETEK SAP XXL Project Plan Replan MSP Task.csv__2f0764ccac__2026-05-05T02-44-15-662Z | Ric Haraida | 170 | True |  | Not started | True  -726.02 0 0 0 0 0 20 | Negative Float, Open Finish Critical 3 0 0  |  |  |  |  |
| 357ae9be-8a60-810f-a1db-f3b19f043b05 | 2599 | Load File Staged and Posted "Ready" | PTP | 1.2.4.2.28.1 | 1.2.4.2.28.1 | 2026-09-29 | 2026-09-29 | 2026-04-15 | 0 | 6 | 2598 | 2 | 1 | 357ae9be-8a60-8194-8b31-ebdfccfeb50e, 357ae9be-8a60-8181-8191-e719cc7d6851 | 357ae9be-8a60-81fa-96a4-ee57b14748ce | -40575 | 0 | As Soon As Possible | Auto Scheduled | AMETEK SAP XXL Project Plan Replan MSP Task.csv | AMETEK SAP XXL Project Plan Replan MSP Task.csv__2f0764ccac__2026-05-05T02-44-15-662Z | Nevin Varkey | 167 | True |  | Not started | True  -40575 0 1 0 0 0 26 | Wrong Dependency, Negative Float Critical 5 2 0  |  |  |  |  |
| 357ae9be-8a60-810f-ac76-f30d0adb8095 | 2784 | Load File Staged and Posted "Ready" | Finance | 1.2.4.2.68.1 | 1.2.4.2.68.1 | 2026-09-24 | 2026-09-24 | 2026-04-10 | 0 | 6 | 2783 | 1 | 1 | 357ae9be-8a60-8140-b93c-fac0729b01a5 | 357ae9be-8a60-8186-afb1-ef3bb21635f1 | -39090 | 0 | Start No Earlier Than | Auto Scheduled | AMETEK SAP XXL Project Plan Replan MSP Task.csv | AMETEK SAP XXL Project Plan Replan MSP Task.csv__2f0764ccac__2026-05-05T02-44-15-662Z | Kasey Hughes | 167 | True |  | Not started | True  -39090 0 1 0 0 0 26 | Wrong Dependency, Negative Float Critical 5 1 0 True | 2026-04-17 |  |  |  |
| 357ae9be-8a60-810f-bcdf-c931c82c660d | 2042 | Error and Defect Mitigation | Finance | 1.2.2.2.67.4 | 1.2.2.2.67.4 | 2026-05-18 | 2026-05-18 | 2026-04-17 | 0 | 6 | 2038 | 1 | 1 | 357ae9be-8a60-8128-bbf0-ff93f742bbc5 | 357ae9be-8a60-81a5-8e25-ce4e922f987d | -9.02 | 0 | As Soon As Possible | Auto Scheduled | AMETEK SAP XXL Project Plan Replan MSP Task.csv | AMETEK SAP XXL Project Plan Replan MSP Task.csv__2f0764ccac__2026-05-05T02-44-15-662Z | Kasey Hughes | 31 | True | True | Not started | True  -9.02 0 1 0 0 0 26 | Negative Float High 2 0 0  |  |  |  |  |

| id | uid | name | workstream | outlineNumber | wbs | start | finish | baselineFinish | pct | outlineLevel | parentUid | predCount | sucCount | predIds | sucIds | totalSlackDaysRaw | freeSlackDaysRaw | constraintType | taskMode | mspSourceFile | mspImportVersion | assignedTo | slipDays | isSlipped | isDue14 | status | cpm | scheduleQuality | constraintDate | childUids | isSummary |
| --- | --- | --- | --- | --- | --- | --- | --- | --- | --- | --- | --- | --- | --- | --- | --- | --- | --- | --- | --- | --- | --- | --- | --- | --- | --- | --- | --- | --- | --- | --- | --- |
| 357ae9be-8a60-8110-812a-d9b77df9ab72 | 1923 | VC_Object Dependencies | (Unassigned) | 1.2.2.2.37 | 1.2.2.2.37 | 2026-05-18 | 2026-05-18 | 2026-04-06 | 0 | 5 | 2800 | 0 | 0 |  |  | -2.44 | 0 | As Soon As Possible | Auto Scheduled | AMETEK SAP XXL Project Plan Replan MSP Task.csv | AMETEK SAP XXL Project Plan Replan MSP Task.csv__2f0764ccac__2026-05-05T02-44-15-662Z | COULD NOT BE DETERMINED | 42 | True | True | Not started | True  -2.44 0 0 0 0 0 20 | Negative Float High 2 0 0  |  | 1924, 1925 | True |
| 357ae9be-8a60-8110-8af2-d89abfe150d9 | 4255 | Simulate Load | Data | 1.2.5.2.15.3 | 1.2.5.2.15.3 | 2026-10-01 | 2026-10-02 | 2026-04-13 | 0 | 6 | 4252 | 2 | 1 | 357ae9be-8a60-81ae-9eb3-c1a391ae1d6d, 357ae9be-8a60-819a-b381-c8abad592460 | 357ae9be-8a60-8140-8c03-c6c251d0b7a2 | -718.52 | 0 | Finish No Earlier Than | Auto Scheduled | AMETEK SAP XXL Project Plan Replan MSP Task.csv | AMETEK SAP XXL Project Plan Replan MSP Task.csv__2f0764ccac__2026-05-05T02-44-15-662Z | Jyoti Nain | 172 | True |  | Not started | True  -718.52 0 1 0 0 0 26 | Negative Float Critical 2 0 0 True | 2026-04-13 |  |  |
| 357ae9be-8a60-8110-905b-c2eddbac3e85 | 2788 | Load | Data | 1.2.4.2.68.5 | 1.2.4.2.68.5 | 2026-09-24 | 2026-09-24 | 2026-04-17 | 0 | 6 | 2783 | 1 | 1 | 357ae9be-8a60-81af-8eaf-f5df41c9049a | 357ae9be-8a60-81d5-8a18-dda8b4f99df6 | -651.5 | 0 | As Soon As Possible | Auto Scheduled | AMETEK SAP XXL Project Plan Replan MSP Task.csv | AMETEK SAP XXL Project Plan Replan MSP Task.csv__2f0764ccac__2026-05-05T02-44-15-662Z | Jyoti Nain | 160 | True |  | Not started | True  -651.5 0 1 0 0 0 26 | Negative Float Critical 2 0 0  |  |  |  |
| 357ae9be-8a60-8110-9112-e95f30836724 | 4485 | Run material interface to GTS | OTC | 1.2.5.2.57.1 | 1.2.5.2.57.1 | 2026-09-24 | 2026-09-25 | 2026-04-15 | 0 | 6 | 4484 | 1 | 2 | 357ae9be-8a60-81ff-a4e5-c4ad996ac6aa | 357ae9be-8a60-812b-998f-d08749175d85, 357ae9be-8a60-816c-a2fc-f2984473d9a5 | -653.52 | 0 | As Soon As Possible | Auto Scheduled | AMETEK SAP XXL Project Plan Replan MSP Task.csv | AMETEK SAP XXL Project Plan Replan MSP Task.csv__2f0764ccac__2026-05-05T02-44-15-662Z | James VanRiper | 163 | True |  | Not started | True  -653.52 0 2 0 0 0 32 | Negative Float Critical 2 0 0  |  |  |  |
| 357ae9be-8a60-8110-91c5-d8b49c47576f | 1060 | Load | Data | 1.2.1.31.5 | 1-Apr | 2026-04-17 | 2026-04-17 | 2026-04-16 | 100 | 5 | 694 | 1 | 1 | 357ae9be-8a60-8183-8531-e72a33be04e0 | 357ae9be-8a60-810e-af55-f5cf31093190 | 0 | 0 | As Soon As Possible | Auto Scheduled | AMETEK SAP XXL Project Plan Replan MSP Task.csv | AMETEK SAP XXL Project Plan Replan MSP Task.csv__2f0764ccac__2026-05-05T02-44-15-662Z | Jyoti Nain |  |  |  | Done | True  0 0 1 0 0 0 18 | Low 0 0 0  |  |  |  |
| 357ae9be-8a60-8110-a623-e594b701ad8c | 3358 | Open Production Orders(Manual) | (Unassigned) | 1.2.4.4.8 | 1.2.4.4.8 | 2026-10-09 | 2026-10-12 | 2026-10-12 | 0 | 5 | 3350 | 1 | 0 | 357ae9be-8a60-8192-a781-cd2922407469 |  | -40.16 | 0 | As Soon As Possible | Auto Scheduled | AMETEK SAP XXL Project Plan Replan MSP Task.csv | AMETEK SAP XXL Project Plan Replan MSP Task.csv__2f0764ccac__2026-05-05T02-44-15-662Z | COULD NOT BE DETERMINED |  |  |  | Not started | True  -40.16 0 0 0 0 0 12 | Negative Float, Open Finish Critical 3 0 0  |  |  |  |
| 357ae9be-8a60-8110-a770-f45be745f892 | 3145 | Error and Defect Mitigation | PTP | 1.2.3.2.29.4 | 1.2.3.2.29.4 | 2026-06-11 | 2026-06-11 | 2026-04-16 | 0 | 6 | 3141 | 1 | 1 | 357ae9be-8a60-8156-af35-d73666b65652 | 357ae9be-8a60-817b-8265-e02e7dcf908e | -154.27 | 0 | As Soon As Possible | Auto Scheduled | AMETEK SAP XXL Project Plan Replan MSP Task.csv | AMETEK SAP XXL Project Plan Replan MSP Task.csv__2f0764ccac__2026-05-05T02-44-15-662Z | Nevin Varkey | 56 | True |  | Not started | True  -154.27 0 1 0 0 0 26 | Wrong Dependency, Negative Float Critical 5 1 0  |  |  |  |
| 357ae9be-8a60-8110-a79f-c1411b7deee6 | 684 | Assign Tester ID's | (Unassigned) | 1.3.3.5.3 | 1.3.3.5.3 | 2026-04-16 | 2026-04-23 | 2026-04-16 | 100 | 5 | 19 | 1 | 1 | 357ae9be-8a60-8145-abcf-ead9952da254 | 357ae9be-8a60-81f6-81ad-c1ff46855c97 | 0 | 0 | Finish No Earlier Than | Auto Scheduled | AMETEK SAP XXL Project Plan Replan MSP Task.csv | AMETEK SAP XXL Project Plan Replan MSP Task.csv__2f0764ccac__2026-05-05T02-44-15-662Z | COULD NOT BE DETERMINED |  |  |  | Done | True  0 0 0 0 0 1 14 | Low 0 0 0 True | 2025-03-13 |  |  |
| 357ae9be-8a60-8111-8cc4-fbdd6d21e7a9 | 3291 | Load Descartes XML File | OTC | 1.2.3.2.60.1 | 1.2.3.2.60.1 | 2026-06-08 | 2026-06-08 | 2026-04-06 | 0 | 6 | 3290 | 0 | 1 |  | 357ae9be-8a60-8112-8dd2-ffe81185cd64 | -121.52 | 0 | As Soon As Possible | Auto Scheduled | AMETEK SAP XXL Project Plan Replan MSP Task.csv | AMETEK SAP XXL Project Plan Replan MSP Task.csv__2f0764ccac__2026-05-05T02-44-15-662Z | James VanRiper | 63 | True |  | Not started | True  -121.52 0 1 0 0 0 26 | Negative Float, Open Start Critical 3 0 0  |  |  |  |
| 357ae9be-8a60-8111-96f7-ca3e5e03cb08 | 2551 | Post Load Validation | PTP | 1.2.4.2.20.6 | 1.2.4.2.20.6 | 2026-09-24 | 2026-09-24 | 2026-04-15 | 0 | 6 | 2545 | 1 | 1 | 357ae9be-8a60-81e9-a72f-e5f18eea2652 | 357ae9be-8a60-81ee-80ef-f16d7d611c40 | -653.5 | 0 | As Soon As Possible | Auto Scheduled | AMETEK SAP XXL Project Plan Replan MSP Task.csv | AMETEK SAP XXL Project Plan Replan MSP Task.csv__2f0764ccac__2026-05-05T02-44-15-662Z | Nevin Varkey | 162 | True |  | Not started | True  -653.5 0 1 0 0 0 26 | Negative Float Critical 2 0 0  |  |  |  |
| 357ae9be-8a60-8111-a18c-f94bd7480c26 | 1205 | Error and Defect Mitigation | PTM | 1.2.1.37.4 | 1.2.1.37.4 | 2026-04-22 | 2026-04-22 | 2026-04-21 | 100 | 5 | 1195 | 1 | 1 | 357ae9be-8a60-81bd-8572-c9e803b0a8e9 | 357ae9be-8a60-8119-a22c-c4a96a113540 | 0 | 0 | As Soon As Possible | Auto Scheduled | AMETEK SAP XXL Project Plan Replan MSP Task.csv | AMETEK SAP XXL Project Plan Replan MSP Task.csv__2f0764ccac__2026-05-05T02-44-15-662Z | Brad Meseck |  |  |  | Done | True  0 0 1 0 0 0 18 | Low 0 0 0  |  |  |  |
| 357ae9be-8a60-8111-a2e7-c7306861610b | 3374 | Validate Syniti Connections to QS5 | Data | 1.1.1.8.1.6 | 1.1.1.8.1.6 | 2026-09-16 | 2026-09-16 | 2026-07-03 | 0 | 6 | 3368 | 1 | 0 | 357ae9be-8a60-810b-a038-c6bb1649ba05 |  | -85.69 | 0 | As Soon As Possible | Auto Scheduled | AMETEK SAP XXL Project Plan Replan MSP Task.csv | AMETEK SAP XXL Project Plan Replan MSP Task.csv__2f0764ccac__2026-05-05T02-44-15-662Z | Jyoti Nain | 75 | True |  | Not started | True  -85.69 0 0 0 0 0 20 | Negative Float, Open Finish Critical 3 0 0  |  |  |  |
| 357ae9be-8a60-8111-a374-f12307008950 | 4257 | Load | Data | 1.2.5.2.15.5 | 1.2.5.2.15.5 | 2026-10-06 | 2026-10-07 | 2026-04-14 | 0 | 6 | 4252 | 1 | 1 | 357ae9be-8a60-8140-8c03-c6c251d0b7a2 | 357ae9be-8a60-811b-b8e1-ee857891f28e | -718.52 | 0 | As Soon As Possible | Auto Scheduled | AMETEK SAP XXL Project Plan Replan MSP Task.csv | AMETEK SAP XXL Project Plan Replan MSP Task.csv__2f0764ccac__2026-05-05T02-44-15-662Z | Jyoti Nain | 176 | True |  | Not started | True  -718.52 0 1 0 0 0 26 | Negative Float Critical 2 0 0  |  |  |  |
| 357ae9be-8a60-8111-ab94-ff7a4474c3a9 | 4375 | Simulate Load | Data | 1.2.5.2.33.3 | 1.2.5.2.33.3 | 2026-09-29 | 2026-09-30 | 2026-04-16 | 0 | 6 | 4372 | 1 | 1 | 357ae9be-8a60-8154-b740-ccb7f3b50fcc | 357ae9be-8a60-81a8-aecc-f7996977e225 | -695.77 | 0 | As Soon As Possible | Auto Scheduled | AMETEK SAP XXL Project Plan Replan MSP Task.csv | AMETEK SAP XXL Project Plan Replan MSP Task.csv__2f0764ccac__2026-05-05T02-44-15-662Z | Jyoti Nain | 167 | True |  | Not started | True  -695.77 0 1 0 0 0 26 | Negative Float Critical 2 0 0  |  |  |  |
| 357ae9be-8a60-8111-aba6-e3685ccac787 | 888 | Client Config / Validation | Basis | 1.1.1.7.1.2 | 1.1.1.7.1.2 | 2026-06-10 | 2026-06-11 | 2026-06-29 | 0 | 6 | 3338 | 1 | 2 | 357ae9be-8a60-81c1-8705-ed93717d70fd | 357ae9be-8a60-814f-b388-fd6c98f507a0, 357ae9be-8a60-811c-9422-fe433027e1dc | -37.25 | 0 | As Soon As Possible | Auto Scheduled | AMETEK SAP XXL Project Plan Replan MSP Task.csv | AMETEK SAP XXL Project Plan Replan MSP Task.csv__2f0764ccac__2026-05-05T02-44-15-662Z | Lokchetan Meghavath |  |  |  | Not started | True  -37.25 0 2 0 0 0 24 | Negative Float Critical 2 0 0  |  |  |  |
| 357ae9be-8a60-8111-aea0-f5dba62e7cdb | 1780 | Load | Data | 1.2.2.2.15.5 | 1.2.2.2.15.5 | 2026-05-28 | 2026-05-29 | 2026-04-14 | 0 | 6 | 1775 | 1 | 1 | 357ae9be-8a60-81da-94bd-c9d0d5294259 | 357ae9be-8a60-819a-bc76-e5cf500b2a01 | -76.52 | 0 | As Soon As Possible | Auto Scheduled | AMETEK SAP XXL Project Plan Replan MSP Task.csv | AMETEK SAP XXL Project Plan Replan MSP Task.csv__2f0764ccac__2026-05-05T02-44-15-662Z | Jyoti Nain | 45 | True |  | Not started | True  -76.52 0 1 0 0 0 26 | Negative Float Critical 2 0 0  |  |  |  |
| 357ae9be-8a60-8111-b0a1-dd3de3d9aaa5 | 2694 | Post Load Validation | PTM | 1.2.4.2.46.6 | 1.2.4.2.46.6 | 2026-10-05 | 2026-10-05 | 2026-04-16 | 0 | 6 | 2688 | 1 | 1 | 357ae9be-8a60-8122-a8de-f102c9eb3fbb | 357ae9be-8a60-81d9-a615-e2133af8ca96 | -726 | 0 | As Soon As Possible | Auto Scheduled | AMETEK SAP XXL Project Plan Replan MSP Task.csv | AMETEK SAP XXL Project Plan Replan MSP Task.csv__2f0764ccac__2026-05-05T02-44-15-662Z | Eric Heisler | 172 | True |  | Not started | True  -726 0 1 0 0 0 26 | Negative Float Critical 2 0 0  |  |  |  |
| 357ae9be-8a60-8111-b710-ff87a842b6ed | 4207 | Load File Staged and Posted "Ready" | Finance | 1.2.5.2.8.1 | 1.2.5.2.8.1 | 2026-09-25 | 2026-09-25 | 2026-04-07 | 0 | 6 | 4206 | 1 | 1 | 357ae9be-8a60-8197-98a0-c93374ed5808 | 357ae9be-8a60-815a-b65d-ff5a8adcc5cb | -662.52 | 0 | As Soon As Possible | Auto Scheduled | AMETEK SAP XXL Project Plan Replan MSP Task.csv | AMETEK SAP XXL Project Plan Replan MSP Task.csv__2f0764ccac__2026-05-05T02-44-15-662Z | Kasey Hughes | 171 | True |  | Not started | True  -662.52 0 1 0 0 0 26 | Negative Float Critical 2 0 0  |  |  |  |
| 357ae9be-8a60-8112-811f-deaef6f27fd8 | 1740 | Error and Defect Mitigation | Finance | 1.2.2.2.9.4 | 1.2.2.2.9.4 | 2026-05-18 | 2026-05-18 | 2026-04-09 | 0 | 6 | 1736 | 1 | 1 | 357ae9be-8a60-8193-aff8-d55f72612b83 | 357ae9be-8a60-819d-910b-da3deb9b68af | -48.52 | 0 | As Soon As Possible | Auto Scheduled | AMETEK SAP XXL Project Plan Replan MSP Task.csv | AMETEK SAP XXL Project Plan Replan MSP Task.csv__2f0764ccac__2026-05-05T02-44-15-662Z | Kasey Hughes | 39 | True | True | Not started | True  -48.52 0 1 0 0 0 26 | Negative Float Critical 2 0 0  |  |  |  |
| 357ae9be-8a60-8112-83e8-f7c442de8fb5 | 2971 | Simulate Load | Data | 1.2.3.2.3.3 | 1.2.3.2.3.3 | 2026-06-10 | 2026-06-10 | 2026-04-08 | 0 | 6 | 2968 | 1 | 1 | 357ae9be-8a60-8199-b049-c7c966f03949 | 357ae9be-8a60-81f3-b750-fa4538bed458 | -196.52 | 0 | As Soon As Possible | Auto Scheduled | AMETEK SAP XXL Project Plan Replan MSP Task.csv | AMETEK SAP XXL Project Plan Replan MSP Task.csv__2f0764ccac__2026-05-05T02-44-15-662Z | Jyoti Nain | 63 | True |  | Not started | True  -196.52 0 1 0 0 0 26 | Negative Float Critical 2 0 0  |  |  |  |
| 357ae9be-8a60-8112-870e-ca1b30835281 | 951 | OTC_CM22_Pricing_Condition | OTC | 1.2.1.50 | 1.2.1.50 | 2026-04-15 | 2026-04-16 | 2026-04-21 | 100 | 4 | 425 | 0 | 0 |  |  | 0 | 0 | As Soon As Possible | Auto Scheduled | AMETEK SAP XXL Project Plan Replan MSP Task.csv | AMETEK SAP XXL Project Plan Replan MSP Task.csv__2f0764ccac__2026-05-05T02-44-15-662Z | Anitha Jothi |  |  |  | Done | True  0 0 0 0 0 0 12 | Low 0 0 0  |  | 1109, 1111, 1110 | True |
| 357ae9be-8a60-8112-8dd2-ffe81185cd64 | 3292 | Post Load Validation | OTC | 1.2.3.2.60.2 | 1.2.3.2.60.2 | 2026-06-08 | 2026-06-08 | 2026-04-06 | 0 | 6 | 3290 | 1 | 0 | 357ae9be-8a60-8111-8cc4-fbdd6d21e7a9 |  | -121.52 | 0 | As Soon As Possible | Auto Scheduled | AMETEK SAP XXL Project Plan Replan MSP Task.csv | AMETEK SAP XXL Project Plan Replan MSP Task.csv__2f0764ccac__2026-05-05T02-44-15-662Z | James VanRiper | 63 | True |  | Not started | True  -121.52 0 0 0 0 0 20 | Negative Float, Open Finish Critical 3 0 0  |  |  |  |
| 357ae9be-8a60-8112-97aa-e6d3508c898f | 3189 | Post Load Validation | PTM | 1.2.3.2.35.6 | 1.2.3.2.35.6 | 2026-06-15 | 2026-06-16 | 2026-04-20 | 0 | 6 | 3183 | 1 | 1 | 357ae9be-8a60-81a9-be4d-eb7d27ad5d94 | 357ae9be-8a60-816c-8bb3-f43e740478cc | -173.77 | 0 | As Soon As Possible | Auto Scheduled | AMETEK SAP XXL Project Plan Replan MSP Task.csv | AMETEK SAP XXL Project Plan Replan MSP Task.csv__2f0764ccac__2026-05-05T02-44-15-662Z | Brad Meseck | 57 | True |  | Not started | True  -173.77 0 1 0 0 0 26 | Negative Float Critical 2 0 0  |  |  |  |
| 357ae9be-8a60-8112-990c-eb26a26d3ebd | 4357 | Post Load Validation | PTM | 1.2.5.2.30.6 | 1.2.5.2.30.6 | 2026-10-01 | 2026-10-01 | 2026-04-17 | 0 | 6 | 4351 | 1 | 1 | 357ae9be-8a60-8123-8cf8-c37a811276c4 | 357ae9be-8a60-8144-ae5c-e9a73c0becf6 | -700.39 | 0 | Finish No Earlier Than | Auto Scheduled | AMETEK SAP XXL Project Plan Replan MSP Task.csv | AMETEK SAP XXL Project Plan Replan MSP Task.csv__2f0764ccac__2026-05-05T02-44-15-662Z | Brad Meseck | 167 | True |  | Not started | True  -700.39 0 1 0 0 0 26 | Negative Float Critical 2 0 0 True | 2026-04-16 |  |  |
| 357ae9be-8a60-8112-9a58-fa08cf3ef49d | 2860 | Service Orders(Manual) | (Unassigned) | 1.2.2.4.7 | 1.2.2.4.7 | 2026-10-09 | 2026-10-09 | 2026-10-09 | 0 | 5 | 2801 | 1 | 0 | 357ae9be-8a60-81e3-b4fa-f1222ef8b771 |  | -89.75 | 0 | As Soon As Possible | Auto Scheduled | AMETEK SAP XXL Project Plan Replan MSP Task.csv | AMETEK SAP XXL Project Plan Replan MSP Task.csv__2f0764ccac__2026-05-05T02-44-15-662Z | COULD NOT BE DETERMINED |  |  |  | Not started | True  -89.75 0 0 0 0 0 12 | Wrong Dependency, Negative Float, Open Finish Critical 6 1 0  |  |  |  |
| 357ae9be-8a60-8112-a1e3-da0b1f577f1a | 3148 | PTM_CM31_BOM Conversion | PTM | 1.2.3.2.30 | 1.2.3.2.30 | 2026-06-11 | 2026-06-16 | 2026-04-17 | 0 | 5 | 2959 | 0 | 0 |  |  | -22.8 | 0 | As Soon As Possible | Auto Scheduled | AMETEK SAP XXL Project Plan Replan MSP Task.csv | AMETEK SAP XXL Project Plan Replan MSP Task.csv__2f0764ccac__2026-05-05T02-44-15-662Z | Brad Meseck | 60 | True |  | Not started | True  -22.8 0 0 0 0 0 20 | Negative Float Critical 2 0 0  |  | 3154, 3150, 3151, 3153, 3149, 3152 | True |
| 357ae9be-8a60-8112-a484-c6d7bca39266 | 1769 | Error and Defect Mitigation | OTC | 1.2.2.2.14.4 | 1.2.2.2.14.4 | 2026-05-22 | 2026-05-22 | 2026-04-09 | 0 | 6 | 1765 | 1 | 1 | 357ae9be-8a60-81f2-9b4c-cdb1dfa84b63 | 357ae9be-8a60-8122-b5a7-f52bb4b3e2ef | -76.52 | 0 | As Soon As Possible | Auto Scheduled | AMETEK SAP XXL Project Plan Replan MSP Task.csv | AMETEK SAP XXL Project Plan Replan MSP Task.csv__2f0764ccac__2026-05-05T02-44-15-662Z | Ric Haraida | 43 | True |  | Not started | True  -76.52 0 1 0 0 0 26 | Negative Float Critical 2 0 0  |  |  |  |
| 357ae9be-8a60-8112-a5bd-dfa74b97aa50 | 4308 | Post Load Validation | PTP;OTC | 1.2.5.2.23.6 | 1.2.5.2.23.6 | 2026-09-24 | 2026-09-25 | 2026-04-14 | 0 | 6 | 4302 | 1 | 0 | 357ae9be-8a60-8184-bdc3-c2f0c4a9438b |  | -650.02 | 0 | As Soon As Possible | Auto Scheduled | AMETEK SAP XXL Project Plan Replan MSP Task.csv | AMETEK SAP XXL Project Plan Replan MSP Task.csv__2f0764ccac__2026-05-05T02-44-15-662Z | Nevin Varkey | 164 | True |  | Not started | True  -650.02 0 0 0 0 0 20 | Negative Float, Open Finish Critical 3 0 0  |  |  |  |
| 357ae9be-8a60-8112-b3aa-e421a350f01a | 4366 | Extract File | Data | 1.2.5.2.32.1 | 1.2.5.2.32.1 | 2026-09-29 | 2026-09-29 | 2026-04-16 | 0 | 6 | 4365 | 1 | 1 | 357ae9be-8a60-8193-a749-dbd3916f3eb7 | 357ae9be-8a60-81b4-8e9a-ede2a5ab87bf | -695.77 | 0 | As Soon As Possible | Auto Scheduled | AMETEK SAP XXL Project Plan Replan MSP Task.csv | AMETEK SAP XXL Project Plan Replan MSP Task.csv__2f0764ccac__2026-05-05T02-44-15-662Z | Jyoti Nain | 166 | True |  | Not started | True  -695.77 0 1 0 0 0 26 | Negative Float Critical 2 0 0  |  |  |  |
| 357ae9be-8a60-8112-b607-cc3c84e6c5d3 | 660 | Manual activities group 2 | Development;PTM;Finance;PMO;Europe IT lead;OTC;TESTING | 1.1.1.4.18.4 | 1.1.1.4.18.4 | 2026-03-23 | 2026-03-24 | 2026-03-24 | 100 | 6 | 647 | 1 | 1 | 357ae9be-8a60-81f6-a633-f76d7c10f2f7 | 357ae9be-8a60-813c-ba12-fb438770d64d | 0 | 0 | As Soon As Possible | Auto Scheduled | AMETEK SAP XXL Project Plan Replan MSP Task.csv | AMETEK SAP XXL Project Plan Replan MSP Task.csv__2f0764ccac__2026-05-05T02-44-15-662Z | Bijoykrishna Das |  |  |  | Done | True  0 0 1 0 0 0 18 | Low 0 0 0  |  |  |  |
| 357ae9be-8a60-8113-8003-d3128b981412 | 4442 | Manual File Staged and Posted "Ready" | PTM | 1.2.5.2.48.1 | 1.2.5.2.48.1 | 2026-10-07 | 2026-10-07 | 2026-04-17 | 0 | 6 | 4441 | 1 | 1 | 357ae9be-8a60-815c-81a0-dfcc5e99da49 | 357ae9be-8a60-81b4-bf0b-cd1bca2665d9 | -43561 | 0 | Start No Earlier Than | Auto Scheduled | AMETEK SAP XXL Project Plan Replan MSP Task.csv | AMETEK SAP XXL Project Plan Replan MSP Task.csv__2f0764ccac__2026-05-05T02-44-15-662Z | Eric Heisler | 173 | True |  | Not started | True  -43561 0 1 0 0 0 26 | Negative Float Critical 2 0 0 True | 2026-04-06 |  |  |
| 357ae9be-8a60-8113-88bc-ec2b10b68227 | 789 | Load File Staged and Posted "Ready" | Data | 1.2.1.10.1 | 1.2.1.10.1 | 2026-04-14 | 2026-04-14 | 2026-04-08 | 100 | 5 | 757 | 1 | 1 | 357ae9be-8a60-8122-937d-cf575dce70be | 357ae9be-8a60-81ff-99e2-f4a04f83b604 | 0 | 0 | As Soon As Possible | Auto Scheduled | AMETEK SAP XXL Project Plan Replan MSP Task.csv | AMETEK SAP XXL Project Plan Replan MSP Task.csv__2f0764ccac__2026-05-05T02-44-15-662Z | Jyoti Nain |  |  |  | Done | True  0 0 1 0 0 0 18 | Wrong Dependency High 3 1 0  |  |  |  |
| 357ae9be-8a60-8113-8c93-e9c834bff860 | 2738 | Post Load Validation | PTM | 1.2.4.2.54.6 | 1.2.4.2.54.6 | 2026-09-30 | 2026-10-01 | 2026-04-17 | 0 | 6 | 2732 | 1 | 0 | 357ae9be-8a60-81de-8316-c0cf679237ed |  | -681.25 | 0 | As Soon As Possible | Auto Scheduled | AMETEK SAP XXL Project Plan Replan MSP Task.csv | AMETEK SAP XXL Project Plan Replan MSP Task.csv__2f0764ccac__2026-05-05T02-44-15-662Z | Brad Meseck | 167 | True |  | Not started | True  -681.25 0 0 0 0 0 20 | Negative Float, Open Finish Critical 3 0 0  |  |  |  |
| 357ae9be-8a60-8113-8f8e-ebedd8499781 | 2014 | Load Descartes XML File | OTC | 1.2.2.2.59.1 | 1.2.2.2.59.1 | 2026-05-25 | 2026-05-25 | 2026-04-16 | 0 | 6 | 2013 | 1 | 1 | 357ae9be-8a60-8167-b8b5-c2ec38a57569 | 357ae9be-8a60-81ae-8755-ea97769bbad7 | -70.27 | 0 | As Soon As Possible | Auto Scheduled | AMETEK SAP XXL Project Plan Replan MSP Task.csv | AMETEK SAP XXL Project Plan Replan MSP Task.csv__2f0764ccac__2026-05-05T02-44-15-662Z | James VanRiper | 39 | True |  | Not started | True  -70.27 0 1 0 0 0 26 | Negative Float Critical 2 0 0  |  |  |  |
| 357ae9be-8a60-8113-922c-cb8b2d2521a7 | 4285 | Extract File(Will Extract from LFA1) | PTP | 1.2.5.2.20.1 | 1.2.5.2.20.1 | 2026-09-24 | 2026-09-24 | 2026-04-10 | 0 | 6 | 4284 | 0 | 2 |  | 357ae9be-8a60-816e-94d2-ee506a27ddc4, 357ae9be-8a60-81ac-ba53-fddfa2890917 | -653.52 | 0 | Start No Earlier Than | Auto Scheduled | AMETEK SAP XXL Project Plan Replan MSP Task.csv | AMETEK SAP XXL Project Plan Replan MSP Task.csv__2f0764ccac__2026-05-05T02-44-15-662Z | Nevin Varkey | 167 | True |  | Not started | True  -653.52 0 2 0 0 0 32 | Negative Float, Open Start Critical 3 0 0 True | 2026-04-16 |  |  |
| 357ae9be-8a60-8113-a321-c4965d29c893 | 3086 | Load | PTP | 1.2.3.2.20.5 | 1.2.3.2.20.5 | 2026-06-08 | 2026-06-08 | 2026-04-15 | 0 | 6 | 3081 | 1 | 1 | 357ae9be-8a60-81f5-96e8-ce622850625c | 357ae9be-8a60-8115-b963-f4ab5361bbc3 | -131.52 | 0 | As Soon As Possible | Auto Scheduled | AMETEK SAP XXL Project Plan Replan MSP Task.csv | AMETEK SAP XXL Project Plan Replan MSP Task.csv__2f0764ccac__2026-05-05T02-44-15-662Z | Nevin Varkey | 54 | True |  | Not started | True  -131.52 0 1 0 0 0 26 | Wrong Dependency, Negative Float Critical 5 1 0  |  |  |  |
| 357ae9be-8a60-8113-af77-c88bc37aec0c | 3203 | VC_Classes | (Unassigned) | 1.2.3.2.39 | 1.2.3.2.39 | 2026-06-09 | 2026-06-10 | 2026-04-07 | 0 | 5 | 2959 | 0 | 0 |  |  | -17.44 | 0 | As Soon As Possible | Auto Scheduled | AMETEK SAP XXL Project Plan Replan MSP Task.csv | AMETEK SAP XXL Project Plan Replan MSP Task.csv__2f0764ccac__2026-05-05T02-44-15-662Z | COULD NOT BE DETERMINED | 64 | True |  | Not started | True  -17.44 0 0 0 0 0 20 | Negative Float Critical 2 0 0  |  | 3204, 3205 | True |
| 357ae9be-8a60-8113-ba84-d5504b32b7b1 | 986 | Post Load Validation | OTC | 1.2.1.17.3 | 1.2.1.17.3 | 2026-04-10 | 2026-04-10 | 2026-04-10 | 100 | 5 | 771 | 1 | 0 | 357ae9be-8a60-8107-b5dd-e39e8a613c14 |  | 0 | 0 | As Soon As Possible | Auto Scheduled | AMETEK SAP XXL Project Plan Replan MSP Task.csv | AMETEK SAP XXL Project Plan Replan MSP Task.csv__2f0764ccac__2026-05-05T02-44-15-662Z | Ric Haraida |  |  |  | Done | True  0 0 0 0 0 1 12 | Low 0 0 0  |  |  |  |
| 357ae9be-8a60-8114-84e5-ec0de541e927 | 1006 | Pre Load Validation | PTP | 1.2.1.21.2 | 1.2.1.21.2 | 2026-04-16 | 2026-04-16 | 2026-04-10 | 100 | 5 | 692 | 1 | 1 | 357ae9be-8a60-81e1-8f9e-dd0d8a504df8 | 357ae9be-8a60-81ba-af14-edd006ddda83 | 0 | 0 | As Soon As Possible | Auto Scheduled | AMETEK SAP XXL Project Plan Replan MSP Task.csv | AMETEK SAP XXL Project Plan Replan MSP Task.csv__2f0764ccac__2026-05-05T02-44-15-662Z | Nevin Varkey |  |  |  | Done | True  0 0 1 0 0 0 18 | Wrong Dependency High 3 1 0  |  |  |  |
| 357ae9be-8a60-8114-921e-fd9bb7f96ba4 | 1176 | Run material interface to GTS | OTC | 1.2.1.58.1 | 1.2.1.58.1 | 2026-04-16 | 2026-04-16 | 2026-04-15 | 100 | 5 | 954 | 1 | 1 | 357ae9be-8a60-8115-b454-e9246c8f485e | 357ae9be-8a60-81b7-901c-ca232f355464 | 0 | 0 | As Soon As Possible | Auto Scheduled | AMETEK SAP XXL Project Plan Replan MSP Task.csv | AMETEK SAP XXL Project Plan Replan MSP Task.csv__2f0764ccac__2026-05-05T02-44-15-662Z | James VanRiper |  |  |  | Done | True  0 0 1 1 6 0 23 | Wrong Successor High 3 0 1  |  |  |  |
| 357ae9be-8a60-8114-9781-ed28909ec9d2 | 4504 | Post Load Validation | OTC | 1.2.5.2.63.2 | 1.2.5.2.63.2 | 2026-10-06 | 2026-10-06 | 2026-04-16 | 0 | 6 | 4502 | 1 | 0 | 357ae9be-8a60-8159-8f54-cc236a86404e |  | -712.27 | 0 | Start No Earlier Than | Auto Scheduled | AMETEK SAP XXL Project Plan Replan MSP Task.csv | AMETEK SAP XXL Project Plan Replan MSP Task.csv__2f0764ccac__2026-05-05T02-44-15-662Z | James VanRiper | 173 | True |  | Not started | True  -712.27 0 0 0 0 0 20 | Negative Float, Open Finish Critical 3 0 0 True | 2026-04-17 |  |  |
| 357ae9be-8a60-8114-9797-f03b69b043bc | 1113 | Pre Load Validation | OTC | 1.2.1.51.2 | 1.2.1.51.2 | 2026-04-16 | 2026-04-16 | 2026-04-20 | 100 | 5 | 691 | 1 | 1 | 357ae9be-8a60-81b8-a433-e66fb7a302e1 | 357ae9be-8a60-8116-9560-c8818dccd3aa | 0 | 0 | As Soon As Possible | Auto Scheduled | AMETEK SAP XXL Project Plan Replan MSP Task.csv | AMETEK SAP XXL Project Plan Replan MSP Task.csv__2f0764ccac__2026-05-05T02-44-15-662Z | Ric Haraida |  |  |  | Done | True  0 0 1 0 0 1 18 | Low 0 0 0  |  |  |  |
| 357ae9be-8a60-8114-987c-ec5e2f105b71 | 1920 | Error and Defect Mitigation | PTM | 1.2.2.2.36.4 | 1.2.2.2.36.4 | 2026-05-26 | 2026-05-26 | 2026-04-21 | 0 | 6 | 1916 | 1 | 1 | 357ae9be-8a60-81af-bc4a-e7d232581ca1 | 357ae9be-8a60-8107-a54a-e0365bc24d18 | -53.77 | 0 | As Soon As Possible | Auto Scheduled | AMETEK SAP XXL Project Plan Replan MSP Task.csv | AMETEK SAP XXL Project Plan Replan MSP Task.csv__2f0764ccac__2026-05-05T02-44-15-662Z | Brad Meseck | 35 | True |  | Not started | True  -53.77 0 1 0 0 0 26 | Negative Float Critical 2 0 0  |  |  |  |
| 357ae9be-8a60-8114-9ddd-c9ed98d76f10 | 1135 | Simulate Load | Data | 1.2.1.55.3 | 1.2.1.55.3 | 2026-04-16 | 2026-04-16 | 2026-04-16 | 100 | 5 | 715 | 1 | 1 | 357ae9be-8a60-81ba-849f-f9409342a203 | 357ae9be-8a60-8173-a126-ec5c11b80de0 | 0 | 0 | As Soon As Possible | Auto Scheduled | AMETEK SAP XXL Project Plan Replan MSP Task.csv | AMETEK SAP XXL Project Plan Replan MSP Task.csv__2f0764ccac__2026-05-05T02-44-15-662Z | Jyoti Nain |  |  |  | Done | True  0 0 1 0 0 0 18 | Low 0 0 0  |  |  |  |
| 357ae9be-8a60-8114-a6a7-d2483ab41737 | 262 | Initial configuration [GRC Parameter/Business Process/Sub Process and system Configuration] | (Unassigned) | 1.1.2.2.6 | 1.1.2.2.6 | 2026-03-13 | 2026-03-20 | 2026-03-20 | 100 | 5 | 253 | 1 | 1 | 357ae9be-8a60-81c7-96c1-d5aa84493c00 | 357ae9be-8a60-81d6-9040-ef7283587acf | 0 | 0 | As Soon As Possible | Auto Scheduled | AMETEK SAP XXL Project Plan Replan MSP Task.csv | AMETEK SAP XXL Project Plan Replan MSP Task.csv__2f0764ccac__2026-05-05T02-44-15-662Z | COULD NOT BE DETERMINED |  |  |  | Done | True  0 0 0 0 0 0 14 | Low 0 0 0  |  |  |  |
| 357ae9be-8a60-8114-aae7-c236068f95d4 | 2796 | Team Testing | TESTING | 1.3.3.6.7 | 1.3.3.6.7 | 2026-06-08 | 2026-06-19 | 2026-07-17 | 0 | 5 | 2791 | 1 | 1 | 357ae9be-8a60-818e-8f34-de8741a5d2b6 | 357ae9be-8a60-81aa-89a6-f1fb2ba8a7f6 | 101 | 0 | As Soon As Possible | Auto Scheduled | AMETEK SAP XXL Project Plan Replan MSP Task.csv | AMETEK SAP XXL Project Plan Replan MSP Task.csv__2f0764ccac__2026-05-05T02-44-15-662Z | Kishore Kakarla |  |  |  | Not started | True  101 0 1 1 8 0 23 | Low 0 0 0  |  |  |  |
| 357ae9be-8a60-8114-b245-da8532436612 | 822 | Post Load Validation | OTC | 1.2.1.15.6 | 1.2.1.15.6 | 2026-04-10 | 2026-04-10 | 2026-04-10 | 100 | 5 | 762 | 1 | 0 | 357ae9be-8a60-81a9-a799-fb2443f06fc1 |  | 0 | 0 | As Soon As Possible | Auto Scheduled | AMETEK SAP XXL Project Plan Replan MSP Task.csv | AMETEK SAP XXL Project Plan Replan MSP Task.csv__2f0764ccac__2026-05-05T02-44-15-662Z | Ric Haraida |  |  |  | Done | True  0 0 0 0 0 0 12 | Low 0 0 0  |  |  |  |
| 357ae9be-8a60-8114-b63e-c12cda224bd6 | 2038 | RTR_CM17_Project Definition / Builder | (Unassigned) | 1.2.2.2.67 | 1.2.2.2.67 | 2026-05-18 | 2026-05-19 | 2026-04-17 | 0 | 5 | 2800 | 0 | 0 |  |  | -1.19 | 0 | As Soon As Possible | Auto Scheduled | AMETEK SAP XXL Project Plan Replan MSP Task.csv | AMETEK SAP XXL Project Plan Replan MSP Task.csv__2f0764ccac__2026-05-05T02-44-15-662Z | COULD NOT BE DETERMINED | 32 | True | True | Not started | True  -1.19 0 0 0 0 0 20 | Negative Float High 2 0 0  |  | 2039, 2042, 2041, 2040, 2044, 2043 | True |
| 357ae9be-8a60-8114-ba70-d652a823b48b | 4347 | Simulate Load | Data | 1.2.5.2.29.3 | 1.2.5.2.29.3 | 2026-09-29 | 2026-09-29 | 2026-04-16 | 0 | 6 | 4344 | 1 | 2 | 357ae9be-8a60-81e1-957d-fec0a2d2316c | 357ae9be-8a60-81c4-b7e5-fdc0952abaab, 357ae9be-8a60-814d-95b9-ffb7a755ca18 | -712.27 | 0 | As Soon As Possible | Auto Scheduled | AMETEK SAP XXL Project Plan Replan MSP Task.csv | AMETEK SAP XXL Project Plan Replan MSP Task.csv__2f0764ccac__2026-05-05T02-44-15-662Z | Jyoti Nain | 166 | True |  | Not started | True  -712.27 0 2 0 0 0 32 | Negative Float Critical 2 0 0  |  |  |  |
| 357ae9be-8a60-8114-bae6-d64076452052 | 4230 | Post Load Validation | Finance | 1.2.5.2.11.3 | 1.2.5.2.11.3 | 2026-10-05 | 2026-10-05 | 2026-04-15 | 0 | 6 | 4227 | 1 | 0 | 357ae9be-8a60-81f3-993e-c6dc004e7a26 |  | -704.52 | 0 | Start No Earlier Than | Auto Scheduled | AMETEK SAP XXL Project Plan Replan MSP Task.csv | AMETEK SAP XXL Project Plan Replan MSP Task.csv__2f0764ccac__2026-05-05T02-44-15-662Z | Kasey Hughes | 173 | True |  | Not started | True  -704.52 0 0 0 0 0 20 | Negative Float, Open Finish Critical 3 0 0 True | 2026-04-17 |  |  |
| 357ae9be-8a60-8115-8ba1-d2a890dcdcda | 4279 | Pre Load Validation | PTP | 1.2.5.2.19.2 | 1.2.5.2.19.2 | 2026-10-01 | 2026-10-01 | 2026-04-10 | 0 | 6 | 4277 | 1 | 1 | 357ae9be-8a60-819c-a1b7-f223e0d785fc | 357ae9be-8a60-810a-ab36-e6cf95be2d2c | -691.77 | 0 | As Soon As Possible | Auto Scheduled | AMETEK SAP XXL Project Plan Replan MSP Task.csv | AMETEK SAP XXL Project Plan Replan MSP Task.csv__2f0764ccac__2026-05-05T02-44-15-662Z | Nevin Varkey | 174 | True |  | Not started | True  -691.77 0 1 0 0 0 26 | Negative Float Critical 2 0 0  |  |  |  |
| 357ae9be-8a60-8115-9952-f4b3cd512c4b | 4476 | Load | Data | 1.2.5.2.54.5 | 1.2.5.2.54.5 | 2026-09-30 | 2026-09-30 | 2026-04-17 | 0 | 6 | 4471 | 1 | 1 | 357ae9be-8a60-816a-bdbe-d3030aeb2e33 | 357ae9be-8a60-8130-b24a-c24da8ce42f4 | -681.27 | 0 | As Soon As Possible | Auto Scheduled | AMETEK SAP XXL Project Plan Replan MSP Task.csv | AMETEK SAP XXL Project Plan Replan MSP Task.csv__2f0764ccac__2026-05-05T02-44-15-662Z | Jyoti Nain | 166 | True |  | Not started | True  -681.27 0 1 0 0 0 26 | Negative Float Critical 2 0 0  |  |  |  |
| 357ae9be-8a60-8115-a10b-e4f98d655d03 | 3049 | PTP_CM27_Vendor Master as Customer - FLCU01 | PTP | 1.2.3.2.15 | 1.2.3.2.15 | 2026-06-15 | 2026-06-19 | 2026-04-14 | 0 | 5 | 2959 | 0 | 0 |  |  | -24.56 | 0 | As Soon As Possible | Auto Scheduled | AMETEK SAP XXL Project Plan Replan MSP Task.csv | AMETEK SAP XXL Project Plan Replan MSP Task.csv__2f0764ccac__2026-05-05T02-44-15-662Z | Muniraju Surappachari | 66 | True |  | Not started | True  -24.56 0 0 0 0 0 20 | Negative Float Critical 2 0 0  |  | 3051, 3052, 3050, 3053, 3055, 3054 | True |
| 357ae9be-8a60-8115-a4ba-c80ebd485f2f | 1801 | Extract File | Data | 1.2.2.2.19.1 | 1.2.2.2.19.1 | 2026-05-25 | 2026-05-25 | 2026-04-10 | 0 | 6 | 1800 | 1 | 1 | 357ae9be-8a60-810d-b302-cdf5fa9f1423 | 357ae9be-8a60-8178-b56f-e81fbac20a4e | -49.77 | 0 | As Soon As Possible | Auto Scheduled | AMETEK SAP XXL Project Plan Replan MSP Task.csv | AMETEK SAP XXL Project Plan Replan MSP Task.csv__2f0764ccac__2026-05-05T02-44-15-662Z | Jyoti Nain | 45 | True |  | Not started | True  -49.77 0 1 0 0 0 26 | Wrong Dependency, Negative Float Critical 5 1 0  |  |  |  |
| 357ae9be-8a60-8115-a512-cbb55bde2cca | 2669 | Post Load Validation | PTM | 1.2.4.2.39.2 | 1.2.4.2.39.2 | 2026-09-25 | 2026-09-25 | 2026-04-07 | 0 | 6 | 2667 | 1 | 1 | 357ae9be-8a60-81be-9d1d-ec760139afa1 | 357ae9be-8a60-8125-9b6b-e1afa72116e1 | -661.5 | 0 | As Soon As Possible | Auto Scheduled | AMETEK SAP XXL Project Plan Replan MSP Task.csv | AMETEK SAP XXL Project Plan Replan MSP Task.csv__2f0764ccac__2026-05-05T02-44-15-662Z | Eric Heisler | 171 | True |  | Not started | True  -661.5 0 0 0 0 0 22 | Wrong Successor, Negative Float Critical 5 0 1  |  |  |  |
| 357ae9be-8a60-8115-a54a-e65caa42148c | 2641 | Load File Staged and Posted "Ready" | PTM | 1.2.4.2.34.1 | 1.2.4.2.34.1 | 2026-09-30 | 2026-09-30 | 2026-04-17 | 0 | 6 | 2640 | 1 | 1 | 357ae9be-8a60-8121-9c31-efb169c1629e | 357ae9be-8a60-81bf-bd43-c94da4989471 | -41745 | 0 | As Soon As Possible | Auto Scheduled | AMETEK SAP XXL Project Plan Replan MSP Task.csv | AMETEK SAP XXL Project Plan Replan MSP Task.csv__2f0764ccac__2026-05-05T02-44-15-662Z | Brad Meseck | 166 | True |  | Not started | True  -41745 0 1 1 541 0 31 | Wrong Successor, Negative Float Critical 5 0 1  |  |  |  |
| 357ae9be-8a60-8115-b454-e9246c8f485e | 1010 | Post Load Validation | PTP | 1.2.1.21.6 | 1.2.1.21.6 | 2026-04-16 | 2026-04-16 | 2026-04-15 | 100 | 5 | 692 | 1 | 1 | 357ae9be-8a60-818f-805b-db614ba956fe | 357ae9be-8a60-8114-921e-fd9bb7f96ba4 | 0 | 0 | As Soon As Possible | Auto Scheduled | AMETEK SAP XXL Project Plan Replan MSP Task.csv | AMETEK SAP XXL Project Plan Replan MSP Task.csv__2f0764ccac__2026-05-05T02-44-15-662Z | Nevin Varkey |  |  |  | Done | True  0 0 1 0 0 0 18 | Low 0 0 0  |  |  |  |
| 357ae9be-8a60-8115-b45b-d3fcf3c0f8f2 | 4304 | Pre Load Validation | PTP;OTC | 1.2.5.2.23.2 | 1.2.5.2.23.2 | 2026-09-24 | 2026-09-24 | 2026-04-13 | 0 | 6 | 4302 | 0 | 1 |  | 357ae9be-8a60-8109-a034-e299dbbc467e | -39001 | 0 | As Soon As Possible | Auto Scheduled | AMETEK SAP XXL Project Plan Replan MSP Task.csv | AMETEK SAP XXL Project Plan Replan MSP Task.csv__2f0764ccac__2026-05-05T02-44-15-662Z | Nevin Varkey | 164 | True |  | Not started | True  -39001 0 1 0 0 0 26 | Negative Float, Open Start Critical 3 0 0  |  |  |  |
| 357ae9be-8a60-8115-b963-f4ab5361bbc3 | 3087 | Post Load Validation | PTP | 1.2.3.2.20.6 | 1.2.3.2.20.6 | 2026-06-08 | 2026-06-09 | 2026-04-15 | 0 | 6 | 3081 | 1 | 1 | 357ae9be-8a60-8113-a321-c4965d29c893 | 357ae9be-8a60-815a-a872-cfa7e721eb4e | -131.52 | 0 | As Soon As Possible | Auto Scheduled | AMETEK SAP XXL Project Plan Replan MSP Task.csv | AMETEK SAP XXL Project Plan Replan MSP Task.csv__2f0764ccac__2026-05-05T02-44-15-662Z | Nevin Varkey | 55 | True |  | Not started | True  -131.52 0 1 0 0 0 26 | Negative Float Critical 2 0 0  |  |  |  |
| 357ae9be-8a60-8115-ba2f-d2318990c2a8 | 1978 | Post Load Validation | OTC | 1.2.2.2.50.6 | 1.2.2.2.50.6 | 2026-05-28 | 2026-05-28 | 2026-04-21 | 0 | 6 | 1972 | 1 | 0 | 357ae9be-8a60-81c4-b30c-cf71956a4954 |  | -67.27 | 0 | As Soon As Possible | Auto Scheduled | AMETEK SAP XXL Project Plan Replan MSP Task.csv | AMETEK SAP XXL Project Plan Replan MSP Task.csv__2f0764ccac__2026-05-05T02-44-15-662Z | Ric Haraida | 37 | True |  | Not started | True  -67.27 0 0 0 0 0 20 | Negative Float, Open Finish Critical 3 0 0  |  |  |  |
| 357ae9be-8a60-8115-bdcf-c8d2d153359b | 1719 | Service Enterprise Setup | OTC | 1.2.2.2.6.2 | 1.2.2.2.6.2 | 2026-05-22 | 2026-05-29 | 2026-04-15 | 0 | 6 | 1717 | 2 | 0 | 357ae9be-8a60-81c3-9699-f4d5e8610f9a, 357ae9be-8a60-81f5-b601-cdd7c2772c27 |  | -8.88 | 0 | As Soon As Possible | Auto Scheduled | AMETEK SAP XXL Project Plan Replan MSP Task.csv | AMETEK SAP XXL Project Plan Replan MSP Task.csv__2f0764ccac__2026-05-05T02-44-15-662Z | Keith Riley | 44 | True |  | Not started | True  -8.88 0 0 0 0 1 20 | Wrong Dependency, Negative Float, Open Finish High 6 2 0  |  |  |  |
| 357ae9be-8a60-8116-88d5-c92f6b149877 | 1246 | Load File Staged and Posted "Ready" | PTP;OTC | 1.2.1.24.1 | 1.2.1.24.1 | 2026-04-13 | 2026-04-13 | 2026-04-13 | 100 | 5 | 1245 | 0 | 0 |  |  | 0 | 0 | As Soon As Possible | Auto Scheduled | AMETEK SAP XXL Project Plan Replan MSP Task.csv | AMETEK SAP XXL Project Plan Replan MSP Task.csv__2f0764ccac__2026-05-05T02-44-15-662Z | Nevin Varkey |  |  |  | Done | True  0 0 0 0 0 0 12 | Low 0 0 0  |  |  |  |
| 357ae9be-8a60-8116-8d75-d41e455d0436 | 1717 | Manual Configuration Activities in QS5 | (Unassigned) | 1.2.2.2.6 | 1.2.2.2.6 | 2026-05-21 | 2026-05-29 | 2026-04-15 | 0 | 5 | 2800 | 1 | 0 | 357ae9be-8a60-81c8-b0ed-cc5d4b0de079 |  | -8.88 | 0 | As Soon As Possible | Auto Scheduled | AMETEK SAP XXL Project Plan Replan MSP Task.csv | AMETEK SAP XXL Project Plan Replan MSP Task.csv__2f0764ccac__2026-05-05T02-44-15-662Z | COULD NOT BE DETERMINED | 44 | True |  | Not started | True  -8.88 0 0 0 0 0 20 | Negative Float High 2 0 0  |  | 1719, 1718, 1720, 1721 | True |
| 357ae9be-8a60-8116-8f70-cb9213ced7a7 | 2473 | Post Load Validation | Finance | 1.2.4.2.8.6 | 1.2.4.2.8.6 | 2026-09-28 | 2026-09-28 | 2026-04-08 | 0 | 6 | 2467 | 1 | 0 | 357ae9be-8a60-818b-bed9-e9f0bce5df46 |  | -662.5 | 0 | As Soon As Possible | Auto Scheduled | AMETEK SAP XXL Project Plan Replan MSP Task.csv | AMETEK SAP XXL Project Plan Replan MSP Task.csv__2f0764ccac__2026-05-05T02-44-15-662Z | Kasey Hughes | 173 | True |  | Not started | True  -662.5 0 0 0 0 0 20 | Negative Float, Open Finish Critical 3 0 0  |  |  |  |
| 357ae9be-8a60-8116-9560-c8818dccd3aa | 1114 | Simulate Load | Data | 1.2.1.51.3 | 1.2.1.51.3 | 2026-04-16 | 2026-04-16 | 2026-04-20 | 100 | 5 | 691 | 1 | 1 | 357ae9be-8a60-8114-9797-f03b69b043bc | 357ae9be-8a60-81ff-a9cd-f43027fb7257 | 0 | 0 | As Soon As Possible | Auto Scheduled | AMETEK SAP XXL Project Plan Replan MSP Task.csv | AMETEK SAP XXL Project Plan Replan MSP Task.csv__2f0764ccac__2026-05-05T02-44-15-662Z | Jyoti Nain |  |  |  | Done | True  0 0 1 0 0 0 18 | Low 0 0 0  |  |  |  |
| 357ae9be-8a60-8116-983a-ec6a16e69d56 | 2691 | Simulate Load | Data | 1.2.4.2.46.3 | 1.2.4.2.46.3 | 2026-09-29 | 2026-10-02 | 2026-04-16 | 0 | 6 | 2688 | 1 | 1 | 357ae9be-8a60-811a-b602-f83a880e6527 | 357ae9be-8a60-81c5-9ba2-d7811c4f6283 | -726 | 0 | Finish No Earlier Than | Auto Scheduled | AMETEK SAP XXL Project Plan Replan MSP Task.csv | AMETEK SAP XXL Project Plan Replan MSP Task.csv__2f0764ccac__2026-05-05T02-44-15-662Z | Jyoti Nain | 169 | True |  | Not started | True  -726 0 1 0 0 0 26 | Negative Float Critical 2 0 0 True | 2026-04-20 |  |  |
| 357ae9be-8a60-8116-9d9b-ed7d86ca6356 | 4462 | Pre Load Validation | Finance | 1.2.5.2.52.2 | 1.2.5.2.52.2 | 2026-09-24 | 2026-09-24 | 2026-04-10 | 0 | 6 | 4460 | 1 | 1 | 357ae9be-8a60-8165-bfc0-eec719389d3f | 357ae9be-8a60-81ad-97b0-c0d0235bb849 | -41671 | 0 | As Soon As Possible | Auto Scheduled | AMETEK SAP XXL Project Plan Replan MSP Task.csv | AMETEK SAP XXL Project Plan Replan MSP Task.csv__2f0764ccac__2026-05-05T02-44-15-662Z | Kasey Hughes | 167 | True |  | Not started | True  -41671 0 1 0 0 0 26 | Negative Float Critical 2 0 0  |  |  |  |
| 357ae9be-8a60-8116-9f13-ebe42c8bf5e2 | 931 | Test Readiness Review (TRR) - ITC 3 | (Unassigned) | 1.3.3.3 | 1.3.3.3 | 2026-06-30 | 2026-06-30 | 2026-06-18 | 0 | 4 | 18 | 2 | 1 | 357ae9be-8a60-8190-9bfc-f6d06ac2b5b1, 357ae9be-8a60-81cb-bfeb-d91fb3ac3c84 | 357ae9be-8a60-81f6-8b16-c7e49f54caee | 68 | 68 | As Soon As Possible | Auto Scheduled | AMETEK SAP XXL Project Plan Replan MSP Task.csv | AMETEK SAP XXL Project Plan Replan MSP Task.csv__2f0764ccac__2026-05-05T02-44-15-662Z | COULD NOT BE DETERMINED | 12 | True |  | Not started |   68 68 0 0 0 0 10 | Low 0 0 0  |  |  |  |
| 357ae9be-8a60-8116-a1a3-f6ac1693be49 | 1835 | Simulate Load | Data | 1.2.2.2.24.3 | 1.2.2.2.24.3 | 2026-05-19 | 2026-05-19 | 2026-04-14 | 0 | 6 | 1832 | 1 | 1 | 357ae9be-8a60-817d-9950-fe4ef1fd243e | 357ae9be-8a60-8127-a897-d9b628051bdd | -70.27 | 0 | As Soon As Possible | Auto Scheduled | AMETEK SAP XXL Project Plan Replan MSP Task.csv | AMETEK SAP XXL Project Plan Replan MSP Task.csv__2f0764ccac__2026-05-05T02-44-15-662Z | Jyoti Nain | 35 | True | True | Not started | True  -70.27 0 1 0 0 0 26 | Negative Float Critical 2 0 0  |  |  |  |
| 357ae9be-8a60-8116-a87f-c4bc8a5f0ad1 | 2695 | PTM_CM53_Super_Routing | PTM | 1.2.4.2.47 | 1.2.4.2.47 | 2026-10-05 | 2026-10-07 | 2026-04-20 | 0 | 5 | 2898 | 0 | 0 |  |  | -90.75 | 0 | As Soon As Possible | Auto Scheduled | AMETEK SAP XXL Project Plan Replan MSP Task.csv | AMETEK SAP XXL Project Plan Replan MSP Task.csv__2f0764ccac__2026-05-05T02-44-15-662Z | Brad Meseck | 170 | True |  | Not started | True  -90.75 0 0 0 0 0 20 | Negative Float Critical 2 0 0  |  | 2698, 2701, 2699, 2697, 2696, 2700 | True |

| id | uid | name | workstream | outlineNumber | wbs | start | finish | baselineFinish | pct | outlineLevel | parentUid | predCount | sucCount | predIds | sucIds | totalSlackDaysRaw | freeSlackDaysRaw | constraintType | taskMode | mspSourceFile | mspImportVersion | assignedTo | slipDays | isSlipped | isDue14 | status | cpm | scheduleQuality | constraintDate | childUids | isSummary |
| --- | --- | --- | --- | --- | --- | --- | --- | --- | --- | --- | --- | --- | --- | --- | --- | --- | --- | --- | --- | --- | --- | --- | --- | --- | --- | --- | --- | --- | --- | --- | --- |
| 357ae9be-8a60-8116-a89f-e32fe30423ef | 1036 | Load | Data | 1.2.1.27.5 | 1.2.1.27.5 | 2026-04-15 | 2026-04-15 | 2026-04-15 | 100 | 5 | 749 | 1 | 1 | 357ae9be-8a60-8167-921f-f937c2e9cb75 | 357ae9be-8a60-8102-9c7a-df91720f2329 | 0 | 0 | As Soon As Possible | Auto Scheduled | AMETEK SAP XXL Project Plan Replan MSP Task.csv | AMETEK SAP XXL Project Plan Replan MSP Task.csv__2f0764ccac__2026-05-05T02-44-15-662Z | Jyoti Nain |  |  |  | Done | True  0 0 1 0 0 0 18 | Low 0 0 0  |  |  |  |
| 357ae9be-8a60-8116-ab4e-dd9324687cda | 690 | Test Readiness Review (TRR) - UAT | (Unassigned) | 1.3.3.4 | 1.3.3.4 | 2026-10-16 | 2026-10-16 | 2026-08-06 | 0 | 4 | 18 | 3 | 1 | 357ae9be-8a60-8127-84ad-c3095bc3fc8f, 357ae9be-8a60-819f-9b2f-ff945e2a22d6, 357ae9be-8a60-81b7-9a9c-ee8a637217d0 | 357ae9be-8a60-8176-be0a-e672e3348137 | -355 | 0 | As Soon As Possible | Auto Scheduled | AMETEK SAP XXL Project Plan Replan MSP Task.csv | AMETEK SAP XXL Project Plan Replan MSP Task.csv__2f0764ccac__2026-05-05T02-44-15-662Z | COULD NOT BE DETERMINED | 71 | True |  | Not started | True  -355 0 1 1 60 0 31 | Negative Float Critical 2 0 0  |  |  |  |
| 357ae9be-8a60-8116-b116-ca290db86f46 | 952 | GTS - Material initial load from S4 (Run Interface) | (Unassigned) | 1.2.1.56 | 1.2.1.56 | 2026-04-16 | 2026-04-20 | 2026-04-16 | 100 | 4 | 425 | 0 | 0 |  |  | 0 | 0 | As Soon As Possible | Auto Scheduled | AMETEK SAP XXL Project Plan Replan MSP Task.csv | AMETEK SAP XXL Project Plan Replan MSP Task.csv__2f0764ccac__2026-05-05T02-44-15-662Z | COULD NOT BE DETERMINED |  |  |  | Done | True  0 0 0 0 0 0 12 | Low 0 0 0  |  | 1171, 1173 | True |
| 357ae9be-8a60-8116-b8b7-d28ea3430e4e | 2593 | Pre Load Validation | PTP | 1.2.4.2.27.2 | 1.2.4.2.27.2 | 2026-09-29 | 2026-09-29 | 2026-04-16 | 0 | 6 | 2591 | 1 | 1 | 357ae9be-8a60-81f3-8c70-e7a393d62f08 | 357ae9be-8a60-8155-b7da-f275e94eaaf6 | -673.25 | 0 | As Soon As Possible | Auto Scheduled | AMETEK SAP XXL Project Plan Replan MSP Task.csv | AMETEK SAP XXL Project Plan Replan MSP Task.csv__2f0764ccac__2026-05-05T02-44-15-662Z | Nevin Varkey | 166 | True |  | Not started | True  -673.25 0 1 0 0 0 26 | Wrong Dependency, Negative Float Critical 5 1 0  |  |  |  |
| 357ae9be-8a60-8117-803e-d83a05039a9e | 1840 | Load File Staged and Posted "Ready" | PTP;OTC | 1.2.2.2.25.1 | 1.2.2.2.25.1 | 2026-05-20 | 2026-05-20 | 2026-04-07 | 0 | 6 | 1839 | 1 | 0 | 357ae9be-8a60-8101-8ec8-f2861b9b8301 |  | -901 | 0 | As Soon As Possible | Auto Scheduled | AMETEK SAP XXL Project Plan Replan MSP Task.csv | AMETEK SAP XXL Project Plan Replan MSP Task.csv__2f0764ccac__2026-05-05T02-44-15-662Z | Nevin Varkey | 43 | True | True | Not started | True  -901 0 0 0 0 0 20 | Wrong Dependency, Negative Float, Open Finish Critical 6 1 0  |  |  |  |
| 357ae9be-8a60-8117-807d-ca17c423167f | 3038 | Post Load Validation | OTC | 1.2.3.2.13.9 | 1.2.3.2.13.9 | 2026-06-12 | 2026-06-15 | 2026-04-10 | 0 | 6 | 3029 | 1 | 0 | 357ae9be-8a60-8134-8734-f23114b01491 |  | -159.02 | 0 | As Soon As Possible | Auto Scheduled | AMETEK SAP XXL Project Plan Replan MSP Task.csv | AMETEK SAP XXL Project Plan Replan MSP Task.csv__2f0764ccac__2026-05-05T02-44-15-662Z | Ric Haraida | 66 | True |  | Not started | True  -159.02 0 0 0 0 0 20 | Negative Float, Open Finish Critical 3 0 0  |  |  |  |
| 357ae9be-8a60-8117-883b-c38f99c7482c | 2444 | Simulate Load | Data | 1.2.4.2.4.3 | 1.2.4.2.4.3 | 2026-09-25 | 2026-09-25 | 2026-04-07 | 0 | 6 | 2441 | 1 | 1 | 357ae9be-8a60-81f6-bbfa-f274efb3008b | 357ae9be-8a60-81f2-8c02-e33f92861d88 | -677.75 | 0 | As Soon As Possible | Auto Scheduled | AMETEK SAP XXL Project Plan Replan MSP Task.csv | AMETEK SAP XXL Project Plan Replan MSP Task.csv__2f0764ccac__2026-05-05T02-44-15-662Z | Jyoti Nain | 171 | True |  | Not started | True  -677.75 0 1 0 0 0 26 | Negative Float Critical 2 0 0  |  |  |  |
| 357ae9be-8a60-8117-8862-f63fde489bf2 | 1098 | Load | Data | 1.2.1.47.5 | 1.2.1.47.5 | 2026-04-21 | 2026-04-21 | 2026-04-16 | 100 | 5 | 713 | 1 | 1 | 357ae9be-8a60-811f-9664-ebb83cae0e11 | 357ae9be-8a60-8192-a803-d469c1919201 | 0 | 0 | Start No Earlier Than | Auto Scheduled | AMETEK SAP XXL Project Plan Replan MSP Task.csv | AMETEK SAP XXL Project Plan Replan MSP Task.csv__2f0764ccac__2026-05-05T02-44-15-662Z | Jyoti Nain |  |  |  | Done | True  0 0 1 0 0 0 18 | Low 0 0 0 True | 2026-04-17 |  |  |
| 357ae9be-8a60-8117-8970-ed0625cec930 | 2498 | Close Client | Basis | 1.2.4.2.13.5 | 1.2.4.2.13.5 | 2026-09-29 | 2026-09-29 | 2026-04-13 | 0 | 6 | 2493 | 1 | 0 | 357ae9be-8a60-814d-9993-ef431fb68608 |  | -40275 | 0 | As Soon As Possible | Auto Scheduled | AMETEK SAP XXL Project Plan Replan MSP Task.csv | AMETEK SAP XXL Project Plan Replan MSP Task.csv__2f0764ccac__2026-05-05T02-44-15-662Z | Lokchetan Meghavath | 169 | True |  | Not started | True  -40275 0 0 0 0 0 20 | Negative Float, Open Finish Critical 3 0 0  |  |  |  |
| 357ae9be-8a60-8117-8d4c-e745fffe1fb3 | 1722 | RTR_CM09_Activity_Type | (Unassigned) | 1.2.2.2.7 | 1.2.2.2.7 | 2026-05-21 | 2026-05-25 | 2026-04-09 | 0 | 5 | 2800 | 0 | 0 |  |  | -4.75 | 0 | As Soon As Possible | Auto Scheduled | AMETEK SAP XXL Project Plan Replan MSP Task.csv | AMETEK SAP XXL Project Plan Replan MSP Task.csv__2f0764ccac__2026-05-05T02-44-15-662Z | COULD NOT BE DETERMINED | 46 | True |  | Not started | True  -4.75 0 0 0 0 0 20 | Negative Float High 2 0 0  |  | 1725, 1724, 1726, 1723, 1728, 1727 | True |
| 357ae9be-8a60-8117-a158-cbe8ace6609a | 3058 | Load | OTC | 1.2.3.2.16.2 | 1.2.3.2.16.2 | 2026-06-15 | 2026-06-15 | 2026-04-10 | 0 | 6 | 3056 | 1 | 1 | 357ae9be-8a60-8133-87a6-c6cf401d769f | 357ae9be-8a60-816b-809f-c3f0028ecfb4 | -163.52 | 0 | As Soon As Possible | Auto Scheduled | AMETEK SAP XXL Project Plan Replan MSP Task.csv | AMETEK SAP XXL Project Plan Replan MSP Task.csv__2f0764ccac__2026-05-05T02-44-15-662Z | Ric Haraida | 66 | True |  | Not started | True  -163.52 0 1 0 0 0 26 | Negative Float Critical 2 0 0  |  |  |  |
| 357ae9be-8a60-8117-ab4c-e98bba46e9c5 | 3241 | Post Load Validation | PTM | 1.2.3.2.48.3 | 1.2.3.2.48.3 | 2026-06-17 | 2026-06-17 | 2026-04-20 | 0 | 6 | 3238 | 1 | 1 | 357ae9be-8a60-8137-9a85-eb2bcbd520a8 | 357ae9be-8a60-818f-831c-f6235bfbdd72 | -187.27 | 0 | As Soon As Possible | Auto Scheduled | AMETEK SAP XXL Project Plan Replan MSP Task.csv | AMETEK SAP XXL Project Plan Replan MSP Task.csv__2f0764ccac__2026-05-05T02-44-15-662Z | Eric Heisler | 58 | True |  | Not started | True  -187.27 0 1 0 0 0 26 | Negative Float Critical 2 0 0  |  |  |  |
| 357ae9be-8a60-8118-954c-ebe5e7ddd41b | 2575 | Load | Data | 1.2.4.2.24.5 | 1.2.4.2.24.5 | 2026-09-25 | 2026-09-28 | 2026-04-15 | 0 | 6 | 2570 | 1 | 1 | 357ae9be-8a60-816c-82c5-eccfacc01a0f | 357ae9be-8a60-8196-bb5c-d5df25346ba5 | -726 | 0 | As Soon As Possible | Auto Scheduled | AMETEK SAP XXL Project Plan Replan MSP Task.csv | AMETEK SAP XXL Project Plan Replan MSP Task.csv__2f0764ccac__2026-05-05T02-44-15-662Z | Jyoti Nain | 166 | True |  | Not started | True  -726 0 1 1 166 0 31 | Wrong Successor, Negative Float Critical 5 0 1  |  |  |  |
| 357ae9be-8a60-8118-964a-dd183d2229dc | 2439 | Extend GL to all Company Codes | Finance | 1.2.4.2.3.7 | 1.2.4.2.3.7 | 2026-09-29 | 2026-09-29 | 2026-04-09 | 0 | 6 | 2432 | 1 | 1 | 357ae9be-8a60-814f-9909-dc7f6a9040f5 | 357ae9be-8a60-8124-b0a5-c28742185d5d | -718.5 | 0 | As Soon As Possible | Auto Scheduled | AMETEK SAP XXL Project Plan Replan MSP Task.csv | AMETEK SAP XXL Project Plan Replan MSP Task.csv__2f0764ccac__2026-05-05T02-44-15-662Z | Kasey Hughes | 173 | True |  | Not started | True  -718.5 0 1 0 0 0 26 | Wrong Dependency, Negative Float Critical 5 1 0  |  |  |  |
| 357ae9be-8a60-8118-993f-ceeea0cb3239 | 3388 | Manual activities group 2 | Development;PTM;Finance;PMO;Europe IT lead;OTC;TESTING | 1.1.1.8.2.4 | 1.1.1.8.2.4 | 2026-09-21 | 2026-09-21 | 2026-07-13 | 0 | 6 | 3384 | 1 | 1 | 357ae9be-8a60-8146-8fa4-fb1a4de29f47 | 357ae9be-8a60-816f-b754-ca5bed645e5f | -90.75 | 0 | As Soon As Possible | Auto Scheduled | AMETEK SAP XXL Project Plan Replan MSP Task.csv | AMETEK SAP XXL Project Plan Replan MSP Task.csv__2f0764ccac__2026-05-05T02-44-15-662Z | Bijoykrishna Das | 70 | True |  | Not started | True  -90.75 0 1 0 0 0 26 | Negative Float Critical 2 0 0  |  |  |  |
| 357ae9be-8a60-8118-a579-fd78b8d668b8 | 1086 | Post Load Validation | PTM | 1.2.1.34.6 | 1.2.1.34.6 | 2026-04-20 | 2026-04-21 | 2026-04-17 | 100 | 5 | 709 | 1 | 1 | 357ae9be-8a60-8195-9610-fceff9f33c65 | 357ae9be-8a60-8189-a761-f14ec6641244 | 0 | 0 | Finish No Earlier Than | Auto Scheduled | AMETEK SAP XXL Project Plan Replan MSP Task.csv | AMETEK SAP XXL Project Plan Replan MSP Task.csv__2f0764ccac__2026-05-05T02-44-15-662Z | Brad Meseck |  |  |  | Done | True  0 0 1 0 0 0 18 | Low 0 0 0 True | 2026-04-17 |  |  |
| 357ae9be-8a60-8118-a784-d7fc8ebddab5 | 4448 | Post Load Validation | OTC | 1.2.5.2.49.3 | 1.2.5.2.49.3 | 2026-10-08 | 2026-10-08 | 2026-04-21 | 0 | 6 | 4445 | 1 | 0 | 357ae9be-8a60-8195-8a9f-c9ada017a5d0 |  | -725.02 | 0 | As Soon As Possible | Auto Scheduled | AMETEK SAP XXL Project Plan Replan MSP Task.csv | AMETEK SAP XXL Project Plan Replan MSP Task.csv__2f0764ccac__2026-05-05T02-44-15-662Z | Ric Haraida | 170 | True |  | Not started | True  -725.02 0 0 0 0 0 20 | Negative Float, Open Finish Critical 3 0 0  |  |  |  |
| 357ae9be-8a60-8118-aa5b-eecfd08faa4c | 1736 | RTR_CM06_Bank_master | (Unassigned) | 1.2.2.2.9 | 1.2.2.2.9 | 2026-05-18 | 2026-05-22 | 2026-04-09 | 0 | 5 | 2800 | 0 | 0 |  |  | -6.06 | 0 | As Soon As Possible | Auto Scheduled | AMETEK SAP XXL Project Plan Replan MSP Task.csv | AMETEK SAP XXL Project Plan Replan MSP Task.csv__2f0764ccac__2026-05-05T02-44-15-662Z | COULD NOT BE DETERMINED | 43 | True |  | Not started | True  -6.06 0 0 0 0 0 20 | Negative Float High 2 0 0  |  | 1740, 1738, 1737, 1742, 1739, 1741 | True |
| 357ae9be-8a60-8118-b7e7-f0da0167facd | 272 | Role Mapping with Business Process and Sub-Process /Functional Area | (Unassigned) | 1.1.2.5.1 | 1.1.2.5.1 | 2026-05-08 | 2026-05-14 | 2025-12-03 | 0 | 5 | 271 | 1 | 1 | 357ae9be-8a60-81fc-bd71-e60bc3788633 | 357ae9be-8a60-81ff-9d6d-fc6c645ffe4d | 122 | 0 | Start No Earlier Than | Auto Scheduled | AMETEK SAP XXL Project Plan Replan MSP Task.csv | AMETEK SAP XXL Project Plan Replan MSP Task.csv__2f0764ccac__2026-05-05T02-44-15-662Z | COULD NOT BE DETERMINED | 162 | True | True | Not started | True  122 0 1 0 0 0 26 | Low 0 0 0 True | 2026-04-30 |  |  |
| 357ae9be-8a60-8118-bbba-f79a908d0e68 | 1971 | Post Load Validation | OTC | 1.2.2.2.49.3 | 1.2.2.2.49.3 | 2026-05-28 | 2026-05-28 | 2026-04-21 | 0 | 6 | 1968 | 1 | 0 | 357ae9be-8a60-8123-a8e2-e7ec5d151ff2 |  | -66.27 | 0 | As Soon As Possible | Auto Scheduled | AMETEK SAP XXL Project Plan Replan MSP Task.csv | AMETEK SAP XXL Project Plan Replan MSP Task.csv__2f0764ccac__2026-05-05T02-44-15-662Z | Ric Haraida | 37 | True |  | Not started | True  -66.27 0 0 0 0 0 20 | Wrong Dependency, Negative Float, Open Finish Critical 6 1 0  |  |  |  |
| 357ae9be-8a60-8119-9640-f8b3f0472b2f | 4209 | Simulate Load | Data | 1.2.5.2.8.3 | 1.2.5.2.8.3 | 2026-09-25 | 2026-09-28 | 2026-04-08 | 0 | 6 | 4206 | 1 | 1 | 357ae9be-8a60-815a-b65d-ff5a8adcc5cb | 357ae9be-8a60-8183-a13d-d57cdb6bbcf1 | -662.52 | 0 | As Soon As Possible | Auto Scheduled | AMETEK SAP XXL Project Plan Replan MSP Task.csv | AMETEK SAP XXL Project Plan Replan MSP Task.csv__2f0764ccac__2026-05-05T02-44-15-662Z | Jyoti Nain | 173 | True |  | Not started | True  -662.52 0 1 0 0 0 26 | Negative Float Critical 2 0 0  |  |  |  |
| 357ae9be-8a60-8119-9cc6-e5ad373201f3 | 1755 | OTC_CM19_Customer_Master - Ship-To | OTC | 1.2.2.2.13 | 1.2.2.2.13 | 2026-05-21 | 2026-05-25 | 2026-04-13 | 0 | 5 | 2800 | 0 | 0 |  |  | -9.31 | 0 | As Soon As Possible | Auto Scheduled | AMETEK SAP XXL Project Plan Replan MSP Task.csv | AMETEK SAP XXL Project Plan Replan MSP Task.csv__2f0764ccac__2026-05-05T02-44-15-662Z | Anitha Jothi | 42 | True |  | Not started | True  -9.31 0 0 0 0 0 20 | Negative Float High 2 0 0  |  | 1764, 1757, 1759, 1761, 1758, 1763, 1756, 1760, 1762 | True |
| 357ae9be-8a60-8119-a06f-e6c396f0e8e1 | 3115 | Pre Load Validation | PTP;OTC | 1.2.3.2.25.2 | 1.2.3.2.25.2 | 2026-06-10 | 2026-06-10 | 2026-04-14 | 0 | 6 | 3113 | 1 | 1 | 357ae9be-8a60-81f6-ac26-f1d4a2895e33 | 357ae9be-8a60-81d9-860d-cccba81b40f8 | -8716 | 0 | As Soon As Possible | Auto Scheduled | AMETEK SAP XXL Project Plan Replan MSP Task.csv | AMETEK SAP XXL Project Plan Replan MSP Task.csv__2f0764ccac__2026-05-05T02-44-15-662Z | Nevin Varkey | 57 | True |  | Not started | True  -8716 0 1 0 0 0 26 | Wrong Dependency, Negative Float Critical 5 1 0  |  |  |  |
| 357ae9be-8a60-8119-a22c-c4a96a113540 | 1206 | Load | Data | 1.2.1.37.5 | 1.2.1.37.5 | 2026-04-22 | 2026-04-23 | 2026-04-21 | 100 | 5 | 1195 | 1 | 0 | 357ae9be-8a60-8111-a18c-f94bd7480c26 |  | 0 | 0 | Finish No Earlier Than | Auto Scheduled | AMETEK SAP XXL Project Plan Replan MSP Task.csv | AMETEK SAP XXL Project Plan Replan MSP Task.csv__2f0764ccac__2026-05-05T02-44-15-662Z | Jyoti Nain |  |  |  | Done | True  0 0 0 0 0 0 12 | Low 0 0 0 True | 2026-04-21 |  |  |
| 357ae9be-8a60-8119-a342-d70329259565 | 2029 | Load | OTC | 1.2.2.2.64.1 | 1.2.2.2.64.1 | 2026-05-26 | 2026-05-26 | 2025-03-13 | 0 | 6 | 2028 | 1 | 1 | 357ae9be-8a60-819d-a28d-eefb005070d1 | 357ae9be-8a60-81d8-a193-f2612af44809 | -49.02 | 0 | As Soon As Possible | Auto Scheduled | AMETEK SAP XXL Project Plan Replan MSP Task.csv | AMETEK SAP XXL Project Plan Replan MSP Task.csv__2f0764ccac__2026-05-05T02-44-15-662Z | James VanRiper | 439 | True |  | Not started | True  -49.02 0 1 0 0 0 26 | Wrong Dependency, Negative Float Critical 5 1 0  |  |  |  |
| 357ae9be-8a60-8119-a6bd-f67663176254 | 3207 | Run ALE Transaction to QS5 from DS4 130 | PTM | 1.2.3.2.40.1 | 1.2.3.2.40.1 | 2026-06-11 | 2026-06-11 | 2026-04-16 | 0 | 6 | 3206 | 1 | 1 | 357ae9be-8a60-81a4-8088-c93ce562ab5e | 357ae9be-8a60-81ec-9fc9-cc08a0c809d8 | -150.27 | 0 | As Soon As Possible | Auto Scheduled | AMETEK SAP XXL Project Plan Replan MSP Task.csv | AMETEK SAP XXL Project Plan Replan MSP Task.csv__2f0764ccac__2026-05-05T02-44-15-662Z | Eric Heisler | 56 | True |  | Not started | True  -150.27 0 1 0 0 0 26 | Wrong Dependency, Negative Float Critical 5 1 0  |  |  |  |
| 357ae9be-8a60-8119-b318-d0712b22a3e6 | 2779 | Simulate Load | Data | 1.2.4.2.67.3 | 1.2.4.2.67.3 | 2026-09-24 | 2026-09-24 | 2026-04-16 | 0 | 6 | 2776 | 1 | 1 | 357ae9be-8a60-8192-9078-da41fe7ff7e3 | 357ae9be-8a60-815d-b90a-ebfa97225106 | -651 | 0 | As Soon As Possible | Auto Scheduled | AMETEK SAP XXL Project Plan Replan MSP Task.csv | AMETEK SAP XXL Project Plan Replan MSP Task.csv__2f0764ccac__2026-05-05T02-44-15-662Z | Jyoti Nain | 161 | True |  | Not started | True  -651 0 1 0 0 0 26 | Negative Float Critical 2 0 0  |  |  |  |
| 357ae9be-8a60-8119-b74a-d453d4fed8b4 | 921 | Gate Review | (Unassigned) | 1.3.3.7.9 | 1.3.3.7.9 | 2026-07-21 | 2026-07-21 | 2026-07-23 | 0 | 5 | 915 | 1 | 0 | 357ae9be-8a60-81c4-afce-ef641568f8d3 |  | 632 | 632 | As Soon As Possible | Auto Scheduled | AMETEK SAP XXL Project Plan Replan MSP Task.csv | AMETEK SAP XXL Project Plan Replan MSP Task.csv__2f0764ccac__2026-05-05T02-44-15-662Z | COULD NOT BE DETERMINED |  |  |  | Not started |   632 632 0 0 0 0 0 | Open Finish Medium 1 0 0  |  |  |  |
| 357ae9be-8a60-8119-bb23-c85364ea892e | 3381 | Business Functions Validation | Basis | 1.1.1.8.1.13 | 1.1.1.8.1.13 | 2026-09-15 | 2026-09-15 | 2026-07-08 | 0 | 6 | 3368 | 1 | 0 | 357ae9be-8a60-81fd-8c12-e1cbb8e610f7 |  | -84.69 | 0 | Start No Earlier Than | Auto Scheduled | AMETEK SAP XXL Project Plan Replan MSP Task.csv | AMETEK SAP XXL Project Plan Replan MSP Task.csv__2f0764ccac__2026-05-05T02-44-15-662Z | Lokchetan Meghavath | 69 | True |  | Not started | True  -84.69 0 0 0 0 0 20 | Negative Float, Open Finish Critical 3 0 0 True | 2026-01-05 |  |  |
| 357ae9be-8a60-811a-8065-ff319de5005b | 3302 | SPL Master File | (Unassigned) | 1.2.3.2.64 | 1.2.3.2.64 | 2026-06-16 | 2026-06-16 | 2025-03-13 | 0 | 5 | 2959 | 0 | 0 |  |  | -21.13 | 0 | As Soon As Possible | Auto Scheduled | AMETEK SAP XXL Project Plan Replan MSP Task.csv | AMETEK SAP XXL Project Plan Replan MSP Task.csv__2f0764ccac__2026-05-05T02-44-15-662Z | COULD NOT BE DETERMINED | 460 | True |  | Not started | True  -21.13 0 0 0 0 0 20 | Negative Float Critical 2 0 0  |  | 3304, 3303 | True |
| 357ae9be-8a60-811a-8ad1-c32d4543b1bc | 1109 | Manual File Staged and Posted "Ready" | OTC | 1.2.1.50.1 | 1.2.1.50.1 | 2026-04-15 | 2026-04-15 | 2026-04-20 | 100 | 5 | 951 | 1 | 1 | 357ae9be-8a60-8138-8678-e8214f22730d | 357ae9be-8a60-81ce-bc1d-dd7a1aeebdef | 0 | 0 | Start No Earlier Than | Auto Scheduled | AMETEK SAP XXL Project Plan Replan MSP Task.csv | AMETEK SAP XXL Project Plan Replan MSP Task.csv__2f0764ccac__2026-05-05T02-44-15-662Z | Ric Haraida |  |  |  | Done | True  0 0 1 0 0 0 18 | Low 0 0 0 True | 2026-04-06 |  |  |
| 357ae9be-8a60-811a-963c-cb0eae80b7e7 | 1315 | Environment Ready for Test | PMO | 1.1.1.6.4 | 1.1.1.6.4 | 2026-05-29 | 2026-05-29 | 2026-07-16 | 0 | 5 | 1284 | 1 | 1 | 357ae9be-8a60-81b1-ba6c-d1f3754e777f | 357ae9be-8a60-81ae-b92b-e52f8d41eea2 | -14491 | 0 | As Soon As Possible | Auto Scheduled | AMETEK SAP XXL Project Plan Replan MSP Task.csv | AMETEK SAP XXL Project Plan Replan MSP Task.csv__2f0764ccac__2026-05-05T02-44-15-662Z | Chris Hanily |  |  |  | Not started | True  -14491 0 0 0 0 0 14 | Negative Float Critical 2 0 0  |  |  |  |
| 357ae9be-8a60-811a-9740-f5ff0e5d34b5 | 924 | Assign Resources to Depolyment 1 locations | PMO | 1.3.3.8.1 | 1.3.3.8.1 | 2026-10-08 | 2026-10-08 | 2026-04-30 | 0 | 5 | 22 | 2 | 1 | 357ae9be-8a60-8186-82d7-dea6d97c0abb, 357ae9be-8a60-81d2-b413-e8ebd9ac365c | 357ae9be-8a60-81a5-8ac3-d07ad90f4d64 | -355 | 0 | As Soon As Possible | Auto Scheduled | AMETEK SAP XXL Project Plan Replan MSP Task.csv | AMETEK SAP XXL Project Plan Replan MSP Task.csv__2f0764ccac__2026-05-05T02-44-15-662Z | Renee DiTullio | 161 | True |  | Not started | True  -355 0 1 0 0 0 26 | Negative Float Critical 2 0 0  |  |  |  |
| 357ae9be-8a60-811a-9b59-ff655e959396 | 2994 | Close Client | Basis | 1.2.3.2.6.3 | 1.2.3.2.6.3 | 2026-06-11 | 2026-06-11 | 2026-04-06 | 0 | 6 | 2991 | 0 | 0 |  |  | -8641 | 0 | As Soon As Possible | Auto Scheduled | AMETEK SAP XXL Project Plan Replan MSP Task.csv | AMETEK SAP XXL Project Plan Replan MSP Task.csv__2f0764ccac__2026-05-05T02-44-15-662Z | Lokchetan Meghavath | 66 | True |  | Not started | True  -8641 0 0 0 0 0 20 | Negative Float, Open Start, Open Finish Critical 4 0 0  |  |  |  |
| 357ae9be-8a60-811a-9b88-dc667041b5ff | 2766 | SPL Master File | (Unassigned) | 1.2.4.2.64 | 1.2.4.2.64 | 2026-10-02 | 2026-10-02 | 2025-03-13 | 0 | 5 | 2898 | 0 | 0 |  |  | -86.38 | 0 | As Soon As Possible | Auto Scheduled | AMETEK SAP XXL Project Plan Replan MSP Task.csv | AMETEK SAP XXL Project Plan Replan MSP Task.csv__2f0764ccac__2026-05-05T02-44-15-662Z | COULD NOT BE DETERMINED | 568 | True |  | Not started | True  -86.38 0 0 0 0 0 20 | Negative Float Critical 2 0 0  |  | 2768, 2767 | True |
| 357ae9be-8a60-811a-9ecf-f1007ff9b81d | 1966 | Load | PTM | 1.2.2.2.48.2 | 1.2.2.2.48.2 | 2026-05-27 | 2026-05-27 | 2026-04-17 | 0 | 6 | 1964 | 1 | 1 | 357ae9be-8a60-81f4-b537-ca6fa6063037 | 357ae9be-8a60-8109-8bba-fbeacfa92210 | -67.27 | 0 | As Soon As Possible | Auto Scheduled | AMETEK SAP XXL Project Plan Replan MSP Task.csv | AMETEK SAP XXL Project Plan Replan MSP Task.csv__2f0764ccac__2026-05-05T02-44-15-662Z | Eric Heisler | 40 | True |  | Not started | True  -67.27 0 1 0 0 0 26 | Negative Float Critical 2 0 0  |  |  |  |
| 357ae9be-8a60-811a-b4fd-d4dc8a3f3114 | 79 | Testing Complete | TESTING | 1.1.2.10.3.3 | 1.1.2.10.3.3 | 2025-03-13 | 2025-03-13 | 2025-03-13 | 100 | 6 | 65 | 0 | 0 |  |  | 0 | 0 | As Soon As Possible | Auto Scheduled | AMETEK SAP XXL Project Plan Replan MSP Task.csv | AMETEK SAP XXL Project Plan Replan MSP Task.csv__2f0764ccac__2026-05-05T02-44-15-662Z | Kishore Kakarla |  |  |  | Done | True  0 0 0 0 0 0 12 | Low 0 0 0  |  |  |  |
| 357ae9be-8a60-811a-b602-f83a880e6527 | 2690 | Pre Load Validation | PTM | 1.2.4.2.46.2 | 1.2.4.2.46.2 | 2026-09-29 | 2026-09-29 | 2026-04-15 | 0 | 6 | 2688 | 1 | 1 | 357ae9be-8a60-8161-878e-c3fd355c1dfe | 357ae9be-8a60-8116-983a-ec6a16e69d56 | -43560 | 0 | As Soon As Possible | Auto Scheduled | AMETEK SAP XXL Project Plan Replan MSP Task.csv | AMETEK SAP XXL Project Plan Replan MSP Task.csv__2f0764ccac__2026-05-05T02-44-15-662Z | Eric Heisler | 167 | True |  | Not started | True  -43560 0 1 0 0 0 26 | Negative Float Critical 2 0 0  |  |  |  |
| 357ae9be-8a60-811a-b6e9-c036a459f274 | 4326 | Simulate Load | Data | 1.2.5.2.26.3 | 1.2.5.2.26.3 | 2026-09-28 | 2026-09-28 | 2026-04-14 | 0 | 6 | 4323 | 1 | 1 | 357ae9be-8a60-81ac-82f4-e1753ce99685 | 357ae9be-8a60-81f0-a92c-c5b448a63560 | -726.02 | 0 | As Soon As Possible | Auto Scheduled | AMETEK SAP XXL Project Plan Replan MSP Task.csv | AMETEK SAP XXL Project Plan Replan MSP Task.csv__2f0764ccac__2026-05-05T02-44-15-662Z | Jyoti Nain | 167 | True |  | Not started | True  -726.02 0 1 0 0 0 26 | Negative Float Critical 2 0 0  |  |  |  |
| 357ae9be-8a60-811b-86be-fd41e706a321 | 1018 | Load | Data | 1.2.1.23.5 | 1.2.1.23.5 | 2026-04-13 | 2026-04-14 | 2026-04-14 | 100 | 5 | 693 | 1 | 0 | 357ae9be-8a60-8120-b1ac-f250f97ee2c5 |  | 0 | 0 | As Soon As Possible | Auto Scheduled | AMETEK SAP XXL Project Plan Replan MSP Task.csv | AMETEK SAP XXL Project Plan Replan MSP Task.csv__2f0764ccac__2026-05-05T02-44-15-662Z | Jyoti Nain |  |  |  | Done | True  0 0 0 0 0 0 12 | Low 0 0 0  |  |  |  |
| 357ae9be-8a60-811b-8aa8-d8f1d117000c | 1244 | Post GL Extention Validation | (Unassigned) | 1.2.1.4.8 | 1.2.1.4.8 | 2026-04-09 | 2026-04-09 | 2026-04-09 | 100 | 5 | 740 | 1 | 2 | 357ae9be-8a60-8174-8c84-c35ad925910e | 357ae9be-8a60-813e-9126-fedfdfb6b8c1, 357ae9be-8a60-810a-bd4a-c1b875eb1c60 | 0 | 0 | As Soon As Possible | Auto Scheduled | AMETEK SAP XXL Project Plan Replan MSP Task.csv | AMETEK SAP XXL Project Plan Replan MSP Task.csv__2f0764ccac__2026-05-05T02-44-15-662Z | COULD NOT BE DETERMINED |  |  |  | Done | True  0 0 2 1 1 0 29 | Wrong Successor High 3 0 2  |  |  |  |
| 357ae9be-8a60-811b-a54f-e90dc6d3ecbd | 4472 | Load File Staged and Posted "Ready" | PTM | 1.2.5.2.54.1 | 1.2.5.2.54.1 | 2026-09-29 | 2026-09-29 | 2026-04-16 | 0 | 6 | 4471 | 1 | 1 | 357ae9be-8a60-8136-95ae-e0b8c603c5d3 | 357ae9be-8a60-81d5-bfab-ef2dcb2b56ec | -40876 | 0 | As Soon As Possible | Auto Scheduled | AMETEK SAP XXL Project Plan Replan MSP Task.csv | AMETEK SAP XXL Project Plan Replan MSP Task.csv__2f0764ccac__2026-05-05T02-44-15-662Z | Sam Penrod | 166 | True |  | Not started | True  -40876 0 1 0 0 0 26 | Negative Float Critical 2 0 0  |  |  |  |
| 357ae9be-8a60-811b-a7a5-ed9b5894af75 | 1101 | Pre Load Validation | PTM | 1.2.1.48.2 | 1.2.1.48.2 | 2026-04-16 | 2026-04-17 | 2026-04-17 | 100 | 5 | 714 | 1 | 1 | 357ae9be-8a60-81b4-8352-f31d44b79177 | 357ae9be-8a60-816e-ac60-e48c25ae5532 | 0 | 0 | As Soon As Possible | Auto Scheduled | AMETEK SAP XXL Project Plan Replan MSP Task.csv | AMETEK SAP XXL Project Plan Replan MSP Task.csv__2f0764ccac__2026-05-05T02-44-15-662Z | Eric Heisler |  |  |  | Done | True  0 0 1 1 1 0 23 | Low 0 0 0  |  |  |  |
| 357ae9be-8a60-811b-b8e1-ee857891f28e | 4258 | Post Load Validation | PTP | 1.2.5.2.15.6 | 1.2.5.2.15.6 | 2026-10-07 | 2026-10-07 | 2026-04-14 | 0 | 6 | 4252 | 1 | 0 | 357ae9be-8a60-8111-a374-f12307008950 |  | -718.52 | 0 | As Soon As Possible | Auto Scheduled | AMETEK SAP XXL Project Plan Replan MSP Task.csv | AMETEK SAP XXL Project Plan Replan MSP Task.csv__2f0764ccac__2026-05-05T02-44-15-662Z | Nevin Varkey | 176 | True |  | Not started | True  -718.52 0 0 0 0 0 20 | Negative Float, Open Finish Critical 3 0 0  |  |  |  |
| 357ae9be-8a60-811b-bb50-cde174c37e84 | 1797 | Error and Defect Mitigation | Finance | 1.2.2.2.18.4 | 1.2.2.2.18.4 | 2026-05-25 | 2026-05-25 | 2026-04-10 | 0 | 6 | 1793 | 1 | 1 | 357ae9be-8a60-817f-968c-d2b33f69e607 | 357ae9be-8a60-818c-aa73-e510cfb483fd | -58.77 | 0 | As Soon As Possible | Auto Scheduled | AMETEK SAP XXL Project Plan Replan MSP Task.csv | AMETEK SAP XXL Project Plan Replan MSP Task.csv__2f0764ccac__2026-05-05T02-44-15-662Z | Kasey Hughes | 45 | True |  | Not started | True  -58.77 0 1 1 39 0 31 | Wrong Successor, Negative Float Critical 5 0 1  |  |  |  |
| 357ae9be-8a60-811b-bd41-d63decbf8341 | 4236 | Update number range BP02 from Internal to External | OTC | 1.2.5.2.13.4 | 1.2.5.2.13.4 | 2026-09-29 | 2026-09-29 | 2026-04-10 | 0 | 6 | 4232 | 1 | 1 | 357ae9be-8a60-8141-b86c-da8c08198aaa | 357ae9be-8a60-81f8-8d62-df8f9aab4f1a | -40276 | 0 | As Soon As Possible | Auto Scheduled | AMETEK SAP XXL Project Plan Replan MSP Task.csv | AMETEK SAP XXL Project Plan Replan MSP Task.csv__2f0764ccac__2026-05-05T02-44-15-662Z | Ric Haraida | 172 | True |  | Not started | True  -40276 0 1 0 0 0 26 | Negative Float Critical 2 0 0  |  |  |  |
| 357ae9be-8a60-811c-8082-f998f4c3c1e0 | 4482 | Run material interface to GTS | OTC | 1.2.5.2.56.1 | 1.2.5.2.56.1 | 2026-09-24 | 2026-09-24 | 2026-04-10 | 0 | 6 | 4481 | 0 | 1 |  | 357ae9be-8a60-81af-92d3-df75c137a1bf | -643.52 | 0 | Start No Earlier Than | Auto Scheduled | AMETEK SAP XXL Project Plan Replan MSP Task.csv | AMETEK SAP XXL Project Plan Replan MSP Task.csv__2f0764ccac__2026-05-05T02-44-15-662Z | James VanRiper | 167 | True |  | Not started | True  -643.52 0 1 0 0 0 26 | Negative Float, Open Start Critical 3 0 0 True | 2026-04-15 |  |  |
| 357ae9be-8a60-811c-87f3-da496da930d0 | 1957 | PTM_CM53_Super_Routing | PTM | 1.2.2.2.47 | 1.2.2.2.47 | 2026-05-25 | 2026-05-27 | 2026-04-20 | 0 | 5 | 2800 | 0 | 0 |  |  | -8.41 | 0 | As Soon As Possible | Auto Scheduled | AMETEK SAP XXL Project Plan Replan MSP Task.csv | AMETEK SAP XXL Project Plan Replan MSP Task.csv__2f0764ccac__2026-05-05T02-44-15-662Z | Brad Meseck | 37 | True |  | Not started | True  -8.41 0 0 0 0 0 20 | Negative Float High 2 0 0  |  | 1963, 1961, 1958, 1962, 1960, 1959 | True |
| 357ae9be-8a60-811c-8abe-e62ca2b52b53 | 1847 | Load File Staged and Posted "Ready" | PTM | 1.2.2.2.26.1 | 1.2.2.2.26.1 | 2026-05-20 | 2026-05-20 | 2026-04-07 | 0 | 6 | 1846 | 1 | 0 | 357ae9be-8a60-8101-8ec8-f2861b9b8301 |  | -2146 | 0 | As Soon As Possible | Auto Scheduled | AMETEK SAP XXL Project Plan Replan MSP Task.csv | AMETEK SAP XXL Project Plan Replan MSP Task.csv__2f0764ccac__2026-05-05T02-44-15-662Z | Eric Heisler | 43 | True | True | Not started | True  -2146 0 0 0 0 0 20 | Wrong Dependency, Negative Float, Open Finish Critical 6 1 0  |  |  |  |
| 357ae9be-8a60-811c-9422-fe433027e1dc | 890 | Best Practice / Country Validation | Basis | 1.1.1.7.1.4 | 1.1.1.7.1.4 | 2026-06-12 | 2026-06-12 | 2026-07-01 | 0 | 6 | 3338 | 1 | 2 | 357ae9be-8a60-8111-aba6-e3685ccac787 | 357ae9be-8a60-8167-b0ab-f07e70c41731, 357ae9be-8a60-812f-b111-c6112e6169d2 | -37.25 | 0 | As Soon As Possible | Auto Scheduled | AMETEK SAP XXL Project Plan Replan MSP Task.csv | AMETEK SAP XXL Project Plan Replan MSP Task.csv__2f0764ccac__2026-05-05T02-44-15-662Z | Lokchetan Meghavath |  |  |  | Not started | True  -37.25 0 0 0 0 0 16 | Negative Float Critical 2 0 0  |  |  |  |
| 357ae9be-8a60-811c-9a87-f544c3ff3dd3 | 4453 | Error and Defect Mitigation | OTC | 1.2.5.2.50.4 | 1.2.5.2.50.4 | 2026-10-08 | 2026-10-08 | 2026-04-21 | 0 | 6 | 4449 | 1 | 1 | 357ae9be-8a60-8154-ab4d-dcd68d96804a | 357ae9be-8a60-81d9-82df-e24ffa56737c | -726.02 | 0 | As Soon As Possible | Auto Scheduled | AMETEK SAP XXL Project Plan Replan MSP Task.csv | AMETEK SAP XXL Project Plan Replan MSP Task.csv__2f0764ccac__2026-05-05T02-44-15-662Z | Ric Haraida | 170 | True |  | Not started | True  -726.02 0 1 0 0 0 26 | Negative Float Critical 2 0 0  |  |  |  |
| 357ae9be-8a60-811c-9dde-cab0725091b8 | 1963 | Post Load Validation | PTM | 1.2.2.2.47.6 | 1.2.2.2.47.6 | 2026-05-27 | 2026-05-27 | 2026-04-20 | 0 | 6 | 1957 | 1 | 0 | 357ae9be-8a60-81ca-abff-e32cc3aac5b4 |  | -58.27 | 0 | As Soon As Possible | Auto Scheduled | AMETEK SAP XXL Project Plan Replan MSP Task.csv | AMETEK SAP XXL Project Plan Replan MSP Task.csv__2f0764ccac__2026-05-05T02-44-15-662Z | Eric Heisler | 37 | True |  | Not started | True  -58.27 0 0 0 0 0 20 | Wrong Dependency, Negative Float, Open Finish Critical 6 1 0  |  |  |  |
| 357ae9be-8a60-811c-a632-c761fdfa4cc5 | 18 | Testing Cycles | TESTING | 1.3.3 | 1.3.3 | 2026-04-16 | 2026-10-16 | 2026-09-03 | 13 | 3 | 681 | 0 | 0 |  |  | 16.63 | 16.63 | As Soon As Possible | Auto Scheduled | AMETEK SAP XXL Project Plan Replan MSP Task.csv | AMETEK SAP XXL Project Plan Replan MSP Task.csv__2f0764ccac__2026-05-05T02-44-15-662Z | Kishore Kakarla | 43 | True |  | Not started |   16.63 16.63 0 0 0 0 8 | Low 0 0 0  |  | 19, 2799, 931, 690, 932, 2791, 915, 22 | True |
| 357ae9be-8a60-811c-b07e-d2d554a818af | 1856 | Simulate Load | Data | 1.2.2.2.27.3 | 1.2.2.2.27.3 | 2026-05-21 | 2026-05-21 | 2026-04-16 | 0 | 6 | 1853 | 1 | 1 | 357ae9be-8a60-81a6-bb6b-eabbe7f475dd | 357ae9be-8a60-81cb-b382-f677190f5acb | -31.27 | 0 | As Soon As Possible | Auto Scheduled | AMETEK SAP XXL Project Plan Replan MSP Task.csv | AMETEK SAP XXL Project Plan Replan MSP Task.csv__2f0764ccac__2026-05-05T02-44-15-662Z | Jyoti Nain | 35 | True |  | Not started | True  -31.27 0 1 0 0 0 26 | Negative Float Critical 2 0 0  |  |  |  |
| 357ae9be-8a60-811c-bca4-fc03ac0c3268 | 1939 | Run ALE Transaction to QS5 from DS4 130 | PTM | 1.2.2.2.42.1 | 1.2.2.2.42.1 | 2026-05-21 | 2026-05-21 | 2026-04-16 | 0 | 6 | 1938 | 1 | 1 | 357ae9be-8a60-81dd-8a96-ddc9809ad094 | 357ae9be-8a60-816b-9130-dc8fbac80688 | -46.02 | 0 | As Soon As Possible | Auto Scheduled | AMETEK SAP XXL Project Plan Replan MSP Task.csv | AMETEK SAP XXL Project Plan Replan MSP Task.csv__2f0764ccac__2026-05-05T02-44-15-662Z | Eric Heisler | 35 | True |  | Not started | True  -46.02 0 1 0 0 0 26 | Wrong Dependency, Negative Float Critical 5 1 0  |  |  |  |
| 357ae9be-8a60-811d-8a9c-d1863710bf2c | 4167 | RTR_CM03_Cost Center Hierarchy | (Unassigned) | 1.2.5.2.2 | 1.2.5.2.2 | 2026-09-24 | 2026-09-25 | 2026-04-07 | 0 | 5 | 4162 | 0 | 2 |  | 357ae9be-8a60-812f-85bf-d49c1d4fc08a, 357ae9be-8a60-819c-9c43-d9d355b60ec5 | -89.81 | 0 | As Soon As Possible | Auto Scheduled | AMETEK SAP XXL Project Plan Replan MSP Task.csv | AMETEK SAP XXL Project Plan Replan MSP Task.csv__2f0764ccac__2026-05-05T02-44-15-662Z | COULD NOT BE DETERMINED | 171 | True |  | Not started | True  -89.81 0 0 0 0 0 24 | Negative Float Critical 2 0 0  |  | 4169, 4170, 4168 | True |
| 357ae9be-8a60-811d-8bfd-cd3527c19e0d | 2017 | Load Descartes XML File | OTC | 1.2.2.2.60.1 | 1.2.2.2.60.1 | 2026-05-18 | 2026-05-18 | 2026-04-06 | 0 | 6 | 2016 | 0 | 1 |  | 357ae9be-8a60-812a-bd8f-fdc9a1056d2c | -1.52 | 0 | As Soon As Possible | Auto Scheduled | AMETEK SAP XXL Project Plan Replan MSP Task.csv | AMETEK SAP XXL Project Plan Replan MSP Task.csv__2f0764ccac__2026-05-05T02-44-15-662Z | James VanRiper | 42 | True | True | Not started | True  -1.52 0 1 0 0 0 26 | Negative Float, Open Start High 3 0 0  |  |  |  |
| 357ae9be-8a60-811d-8cbd-fe64a0af8f39 | 3362 | Defect Correction / Retesting / Mitigation / Close | TESTING | 1.3.3.8.7 | 1.3.3.8.7 | 2026-08-19 | 2026-08-19 | 2026-07-24 | 0 | 5 | 22 | 1 | 1 | 357ae9be-8a60-81dc-bde3-d618436406b1 | 357ae9be-8a60-81cd-987c-ca881428729d | 54 | 0 | As Soon As Possible | Auto Scheduled | AMETEK SAP XXL Project Plan Replan MSP Task.csv | AMETEK SAP XXL Project Plan Replan MSP Task.csv__2f0764ccac__2026-05-05T02-44-15-662Z | Kishore Kakarla | 26 | True |  | Not started | True  54 0 0 0 0 1 22 | Low 0 0 0  |  |  |  |
| 357ae9be-8a60-811d-9d62-fc2dbc6cbbe1 | 4400 | VC_Object Dependencies | (Unassigned) | 1.2.5.2.37 | 1.2.5.2.37 | 2026-09-24 | 2026-09-24 | 2026-04-06 | 0 | 5 | 4162 | 0 | 0 |  |  | -82.69 | 0 | As Soon As Possible | Auto Scheduled | AMETEK SAP XXL Project Plan Replan MSP Task.csv | AMETEK SAP XXL Project Plan Replan MSP Task.csv__2f0764ccac__2026-05-05T02-44-15-662Z | COULD NOT BE DETERMINED | 171 | True |  | Not started | True  -82.69 0 0 0 0 0 20 | Negative Float Critical 2 0 0  |  | 4402, 4401 | True |
| 357ae9be-8a60-811d-ab49-d3747ac99661 | 216 | Content Development | Development | 1.4.1.1 | 1.4.1.1 | 2026-02-16 | 2026-11-09 | 2026-08-10 | 44 | 4 | 215 | 0 | 0 |  |  | 0 | 0 | As Soon As Possible | Auto Scheduled | AMETEK SAP XXL Project Plan Replan MSP Task.csv | AMETEK SAP XXL Project Plan Replan MSP Task.csv__2f0764ccac__2026-05-05T02-44-15-662Z | Bijoykrishna Das | 91 | True |  | In progress | True  0 0 0 0 0 0 20 | Low 0 0 0  |  | 217, 4542, 218, 220, 233, 225, 232 | True |
| 357ae9be-8a60-811d-b3a5-da4692248b13 | 913 | User Training Plan and Schedule | Training | 1.4.1.4.1 | 1.4.1.4.1 | 2026-07-10 | 2026-08-03 | 2026-07-10 | 0 | 5 | 242 | 0 | 0 |  |  | 560 | 560 | Finish No Earlier Than | Auto Scheduled | AMETEK SAP XXL Project Plan Replan MSP Task.csv | AMETEK SAP XXL Project Plan Replan MSP Task.csv__2f0764ccac__2026-05-05T02-44-15-662Z | Karen Zalnis | 24 | True |  | Not started |   560 560 0 0 0 0 8 | Open Start, Open Finish Medium 2 0 0 True | 2026-08-03 |  |  |
| 357ae9be-8a60-811e-82fa-d0d0c792b238 | 3102 | Simulate Load | Data | 1.2.3.2.23.3 | 1.2.3.2.23.3 | 2026-06-08 | 2026-06-08 | 2026-04-13 | 0 | 6 | 3099 | 1 | 1 | 357ae9be-8a60-8124-b348-fd31cfa3570a | 357ae9be-8a60-81a1-8251-c199d31f13c7 | -128.02 | 0 | As Soon As Possible | Auto Scheduled | AMETEK SAP XXL Project Plan Replan MSP Task.csv | AMETEK SAP XXL Project Plan Replan MSP Task.csv__2f0764ccac__2026-05-05T02-44-15-662Z | Jyoti Nain | 56 | True |  | Not started | True  -128.02 0 1 0 0 0 26 | Negative Float Critical 2 0 0  |  |  |  |
| 357ae9be-8a60-811e-84fc-c1cccc854af7 | 3233 | Pre Load Validation | PTM | 1.2.3.2.47.2 | 1.2.3.2.47.2 | 2026-06-15 | 2026-06-15 | 2026-04-17 | 0 | 6 | 3231 | 1 | 1 | 357ae9be-8a60-8156-ba9a-d4a49f8bbadc | 357ae9be-8a60-8175-9626-ebacde7180e2 | -11236 | 0 | As Soon As Possible | Auto Scheduled | AMETEK SAP XXL Project Plan Replan MSP Task.csv | AMETEK SAP XXL Project Plan Replan MSP Task.csv__2f0764ccac__2026-05-05T02-44-15-662Z | Eric Heisler | 59 | True |  | Not started | True  -11236 0 1 0 0 0 26 | Negative Float Critical 2 0 0  |  |  |  |
| 357ae9be-8a60-811e-870d-dd2c54b54d56 | 3150 | Pre Load Validation | PTM | 1.2.3.2.30.2 | 1.2.3.2.30.2 | 2026-06-11 | 2026-06-11 | 2026-04-16 | 0 | 6 | 3148 | 1 | 1 | 357ae9be-8a60-81e2-a0b5-ebbf0741e05a | 357ae9be-8a60-8160-9ddb-fc6e1417f753 | -182.39 | 0 | As Soon As Possible | Auto Scheduled | AMETEK SAP XXL Project Plan Replan MSP Task.csv | AMETEK SAP XXL Project Plan Replan MSP Task.csv__2f0764ccac__2026-05-05T02-44-15-662Z | Brad Meseck | 56 | True |  | Not started | True  -182.39 0 1 0 0 0 26 | Wrong Dependency, Negative Float Critical 5 1 0  |  |  |  |
| 357ae9be-8a60-811e-8bd6-c6fafb841a8a | 2434 | Pre Load Validation | Finance | 1.2.4.2.3.2 | 1.2.4.2.3.2 | 2026-09-25 | 2026-09-25 | 2026-04-07 | 0 | 6 | 2432 | 1 | 1 | 357ae9be-8a60-8161-8626-e030f3b90871 | 357ae9be-8a60-8100-9743-e21288c70c43 | -718.5 | 0 | As Soon As Possible | Auto Scheduled | AMETEK SAP XXL Project Plan Replan MSP Task.csv | AMETEK SAP XXL Project Plan Replan MSP Task.csv__2f0764ccac__2026-05-05T02-44-15-662Z | Kasey Hughes | 171 | True |  | Not started | True  -718.5 0 1 0 0 0 26 | Negative Float Critical 2 0 0  |  |  |  |
| 357ae9be-8a60-811e-8c0e-f570ba9642e2 | 959 | Load File Staged and Posted "Ready" | Finance | 1.2.1.6.1 | 1.2.1.6.1 | 2026-04-07 | 2026-04-08 | 2026-04-08 | 100 | 5 | 767 | 1 | 1 | 357ae9be-8a60-8149-b297-f48afb2a029f | 357ae9be-8a60-8161-baa9-e5c8f9ebc40e | 0 | 0 | As Soon As Possible | Auto Scheduled | AMETEK SAP XXL Project Plan Replan MSP Task.csv | AMETEK SAP XXL Project Plan Replan MSP Task.csv__2f0764ccac__2026-05-05T02-44-15-662Z | Kasey Hughes |  |  |  | Done | True  0 0 1 0 0 0 18 | Wrong Dependency High 3 1 0  |  |  |  |
| 357ae9be-8a60-811e-9bb4-ef2a7dc6d026 | 922 | Assign Resources to Depolyment 1 locations | PMO | 1.3.3.7.1 | 1.3.3.7.1 | 2026-06-19 | 2026-06-22 | 2026-04-30 | 0 | 5 | 915 | 1 | 1 | 357ae9be-8a60-8199-92ae-eda8830268bf | 357ae9be-8a60-8148-903b-c443e941ad2f | 68 | 0 | As Soon As Possible | Auto Scheduled | AMETEK SAP XXL Project Plan Replan MSP Task.csv | AMETEK SAP XXL Project Plan Replan MSP Task.csv__2f0764ccac__2026-05-05T02-44-15-662Z | Renee DiTullio | 53 | True |  | Not started | True  68 0 1 1 3 0 31 | Wrong Dependency High 3 1 0  |  |  |  |
| 357ae9be-8a60-811e-9d3e-e58033d8759e | 777 | Manual File Staged and Posted "Ready" | Finance | 1.2.1.2.1 | 1.2.1.2.1 | 2026-04-06 | 2026-04-06 | 2026-04-06 | 100 | 5 | 755 | 1 | 1 | 357ae9be-8a60-8197-ad05-e5135192af2c | 357ae9be-8a60-815c-bf67-c4833f09610a | 0 | 0 | Start No Earlier Than | Auto Scheduled | AMETEK SAP XXL Project Plan Replan MSP Task.csv | AMETEK SAP XXL Project Plan Replan MSP Task.csv__2f0764ccac__2026-05-05T02-44-15-662Z | Kasey Hughes |  |  |  | Done | True  0 0 1 0 0 0 18 | Low 0 0 0 True | 2026-04-06 |  |  |
| 357ae9be-8a60-811e-bb30-c3056950a1c7 | 4450 | Load File Staged and Posted "Ready" | OTC | 1.2.5.2.50.1 | 1.2.5.2.50.1 | 2026-10-08 | 2026-10-08 | 2026-04-20 | 0 | 6 | 4449 | 2 | 1 | 357ae9be-8a60-8195-8a9f-c9ada017a5d0, 357ae9be-8a60-8150-a345-d170849776e1 | 357ae9be-8a60-8182-af33-ced9856d41ef | -43561 | 0 | As Soon As Possible | Auto Scheduled | AMETEK SAP XXL Project Plan Replan MSP Task.csv | AMETEK SAP XXL Project Plan Replan MSP Task.csv__2f0764ccac__2026-05-05T02-44-15-662Z | Ric Haraida | 171 | True |  | Not started | True  -43561 0 1 0 0 0 26 | Negative Float Critical 2 0 0  |  |  |  |
| 357ae9be-8a60-811e-bbd9-dbd4ee0a2c99 | 1922 | Post Load Validation | PTM | 1.2.2.2.36.6 | 1.2.2.2.36.6 | 2026-05-18 | 2026-05-18 | 2026-04-21 | 0 | 6 | 1916 | 0 | 0 |  |  | -2.52 | 0 | Start No Earlier Than | Auto Scheduled | AMETEK SAP XXL Project Plan Replan MSP Task.csv | AMETEK SAP XXL Project Plan Replan MSP Task.csv__2f0764ccac__2026-05-05T02-44-15-662Z | Brad Meseck | 27 | True | True | Not started | True  -2.52 0 0 0 0 0 20 | Negative Float, Open Start, Open Finish High 4 0 0 True | 2026-04-21 |  |  |

| id | uid | name | workstream | outlineNumber | wbs | start | finish | baselineFinish | pct | outlineLevel | parentUid | predCount | sucCount | predIds | sucIds | totalSlackDaysRaw | freeSlackDaysRaw | constraintType | taskMode | mspSourceFile | mspImportVersion | assignedTo | slipDays | isSlipped | isDue14 | status | cpm | scheduleQuality | constraintDate | childUids | isSummary |
| --- | --- | --- | --- | --- | --- | --- | --- | --- | --- | --- | --- | --- | --- | --- | --- | --- | --- | --- | --- | --- | --- | --- | --- | --- | --- | --- | --- | --- | --- | --- | --- |
| 357ae9be-8a60-811e-bd80-c11f457b97ec | 2615 | Simulate Load | Data | 1.2.4.2.30.3 | 1.2.4.2.30.3 | 2026-09-29 | 2026-10-01 | 2026-04-16 | 0 | 6 | 2612 | 1 | 1 | 357ae9be-8a60-8157-a9e6-c2d2c47dc51a | 357ae9be-8a60-814f-9c77-f9482bedfaaf | -700.38 | 0 | Finish No Earlier Than | Auto Scheduled | AMETEK SAP XXL Project Plan Replan MSP Task.csv | AMETEK SAP XXL Project Plan Replan MSP Task.csv__2f0764ccac__2026-05-05T02-44-15-662Z | Jyoti Nain | 168 | True |  | Not started | True  -700.38 0 1 0 0 0 26 | Negative Float Critical 2 0 0 True | 2026-04-17 |  |  |
| 357ae9be-8a60-811f-8c92-cfb2c88118f5 | 4542 | Develop Course ppts | (Unassigned) | 1.4.1.1.3 | 1.4.1.1.3 | 2026-05-01 | 2026-08-28 | 2026-08-03 | 35 | 5 | 216 | 1 | 3 | 357ae9be-8a60-81d3-9b0d-f6bfadfdb00a | 357ae9be-8a60-818e-8e2a-d04e013addbf, 357ae9be-8a60-8178-a829-e92cfc3d21d2, 357ae9be-8a60-81a1-8a3c-db65589908bd | 45 | 0 | Finish No Earlier Than | Auto Scheduled | AMETEK SAP XXL Project Plan Replan MSP Task.csv | AMETEK SAP XXL Project Plan Replan MSP Task.csv__2f0764ccac__2026-05-05T02-44-15-662Z | Training | 25 | True |  | In progress | True  45 0 1 1 119 1 35 | Low 0 0 0 True | 2026-08-28 |  |  |
| 357ae9be-8a60-811f-8f10-d2aef932d325 | 2591 | PTP_CM28_Purchase_Info_Records | PTP | 1.2.4.2.27 | 1.2.4.2.27 | 2026-09-24 | 2026-09-30 | 2026-04-16 | 0 | 5 | 2898 | 0 | 0 |  |  | -84.7 | 0 | As Soon As Possible | Auto Scheduled | AMETEK SAP XXL Project Plan Replan MSP Task.csv | AMETEK SAP XXL Project Plan Replan MSP Task.csv__2f0764ccac__2026-05-05T02-44-15-662Z | Muniraju Surappachari | 167 | True |  | Not started | True  -84.7 0 0 0 0 0 20 | Negative Float Critical 2 0 0  |  | 2593, 2594, 2592, 2596, 2595, 2597 | True |
| 357ae9be-8a60-811f-9059-fa4c89e88bb7 | 775 | Error and Defect Mitigation | Finance | 1.2.1.4.4 | 1.2.1.4.4 | 2026-04-08 | 2026-04-08 | 2026-04-08 | 100 | 5 | 740 | 1 | 1 | 357ae9be-8a60-81cd-8c09-e457da07ac98 | 357ae9be-8a60-81e9-99c7-f1e44fe2fcd1 | 0 | 0 | As Soon As Possible | Auto Scheduled | AMETEK SAP XXL Project Plan Replan MSP Task.csv | AMETEK SAP XXL Project Plan Replan MSP Task.csv__2f0764ccac__2026-05-05T02-44-15-662Z | Kasey Hughes |  |  |  | Done | True  0 0 1 0 0 0 18 | Low 0 0 0  |  |  |  |
| 357ae9be-8a60-811f-9664-ebb83cae0e11 | 1097 | Error and Defect Mitigation | PTM | 1.2.1.47.4 | 1.2.1.47.4 | 2026-04-21 | 2026-04-21 | 2026-04-16 | 100 | 5 | 713 | 1 | 1 | 357ae9be-8a60-81f7-83df-efbc214a3b7e | 357ae9be-8a60-8117-8862-f63fde489bf2 | 0 | 0 | Finish No Earlier Than | Auto Scheduled | AMETEK SAP XXL Project Plan Replan MSP Task.csv | AMETEK SAP XXL Project Plan Replan MSP Task.csv__2f0764ccac__2026-05-05T02-44-15-662Z | Eric Heisler |  |  |  | Done | True  0 0 1 0 0 0 18 | Low 0 0 0 True | 2026-04-17 |  |  |
| 357ae9be-8a60-811f-9f7b-f3a76e546e07 | 4521 | Post Load Validation | Finance | 1.2.5.2.67.6 | 1.2.5.2.67.6 | 2026-09-24 | 2026-09-25 | 2026-04-17 | 0 | 6 | 4515 | 1 | 0 | 357ae9be-8a60-81d9-8f23-e224d8a74606 |  | -651.02 | 0 | As Soon As Possible | Auto Scheduled | AMETEK SAP XXL Project Plan Replan MSP Task.csv | AMETEK SAP XXL Project Plan Replan MSP Task.csv__2f0764ccac__2026-05-05T02-44-15-662Z | Kasey Hughes | 161 | True |  | Not started | True  -651.02 0 0 0 0 0 20 | Negative Float, Open Finish Critical 3 0 0  |  |  |  |
| 357ae9be-8a60-811f-a320-c2486ec2c466 | 1738 | Pre Load Validation | Finance | 1.2.2.2.9.2 | 1.2.2.2.9.2 | 2026-05-21 | 2026-05-22 | 2026-04-09 | 0 | 6 | 1736 | 1 | 0 | 357ae9be-8a60-815b-8362-e303e13c793d |  | -30.02 | 0 | As Soon As Possible | Auto Scheduled | AMETEK SAP XXL Project Plan Replan MSP Task.csv | AMETEK SAP XXL Project Plan Replan MSP Task.csv__2f0764ccac__2026-05-05T02-44-15-662Z | Kasey Hughes | 43 | True |  | Not started | True  -30.02 0 0 0 0 0 20 | Negative Float, Open Finish Critical 3 0 0  |  |  |  |
| 357ae9be-8a60-811f-ac51-d708aae733f7 | 3066 | Post Load Validation | PTP | 1.2.3.2.17.6 | 1.2.3.2.17.6 | 2026-06-18 | 2026-06-18 | 2026-04-13 | 0 | 6 | 3060 | 1 | 0 | 357ae9be-8a60-81bd-b148-e03fada240e5 |  | -185.02 | 0 | As Soon As Possible | Auto Scheduled | AMETEK SAP XXL Project Plan Replan MSP Task.csv | AMETEK SAP XXL Project Plan Replan MSP Task.csv__2f0764ccac__2026-05-05T02-44-15-662Z | Nevin Varkey | 66 | True |  | Not started | True  -185.02 0 0 0 0 0 20 | Negative Float, Open Finish Critical 3 0 0  |  |  |  |
| 357ae9be-8a60-811f-b0a0-c4c959561e94 | 4395 | Pre Load Validation | PTM | 1.2.5.2.36.2 | 1.2.5.2.36.2 | 2026-10-02 | 2026-10-02 | 2026-04-20 | 0 | 6 | 4393 | 1 | 1 | 357ae9be-8a60-8132-9ee1-d2f2d5d78622 | 357ae9be-8a60-81ed-9a86-d3d5c62ecdc4 | -41746 | 0 | As Soon As Possible | Auto Scheduled | AMETEK SAP XXL Project Plan Replan MSP Task.csv | AMETEK SAP XXL Project Plan Replan MSP Task.csv__2f0764ccac__2026-05-05T02-44-15-662Z | Brad Meseck | 165 | True |  | Not started | True  -41746 0 1 0 0 0 26 | Negative Float Critical 2 0 0  |  |  |  |
| 357ae9be-8a60-811f-b3bd-fc58add07958 | 2990 | Post Load Validation | Finance | 1.2.3.2.5.6 | 1.2.3.2.5.6 | 2026-06-11 | 2026-06-11 | 2026-04-09 | 0 | 6 | 2984 | 1 | 0 | 357ae9be-8a60-81bc-92bf-e7a3456f3cfc |  | -183.52 | 0 | As Soon As Possible | Auto Scheduled | AMETEK SAP XXL Project Plan Replan MSP Task.csv | AMETEK SAP XXL Project Plan Replan MSP Task.csv__2f0764ccac__2026-05-05T02-44-15-662Z | Kasey Hughes | 63 | True |  | Not started | True  -183.52 0 0 0 0 0 20 | Negative Float, Open Finish Critical 3 0 0  |  |  |  |
| 357ae9be-8a60-8120-841e-d3f95fb10d85 | 1917 | Load File Staged and Posted "Ready" | PTM | 1.2.2.2.36.1 | 1.2.2.2.36.1 | 2026-05-26 | 2026-05-26 | 2026-04-20 | 0 | 6 | 1916 | 1 | 1 | 357ae9be-8a60-81c8-a6dd-d01ee73c0a5e | 357ae9be-8a60-815c-8c5a-f63e5756be43 | -3226 | 0 | As Soon As Possible | Auto Scheduled | AMETEK SAP XXL Project Plan Replan MSP Task.csv | AMETEK SAP XXL Project Plan Replan MSP Task.csv__2f0764ccac__2026-05-05T02-44-15-662Z | Brad Meseck | 36 | True |  | Not started | True  -3226 0 1 0 0 0 26 | Negative Float Critical 2 0 0  |  |  |  |
| 357ae9be-8a60-8120-9118-f98a324f3ee2 | 3353 | Open AP | (Unassigned) | 1.2.4.4.3 | 1.2.4.4.3 | 2026-10-09 | 2026-10-12 | 2026-10-12 | 0 | 5 | 3350 | 1 | 1 | 357ae9be-8a60-8192-bcb5-fca78f4cf9f3 | 357ae9be-8a60-812d-bf6c-d702e922b6b0 | -325.25 | 0 | As Soon As Possible | Auto Scheduled | AMETEK SAP XXL Project Plan Replan MSP Task.csv | AMETEK SAP XXL Project Plan Replan MSP Task.csv__2f0764ccac__2026-05-05T02-44-15-662Z | COULD NOT BE DETERMINED |  |  |  | Not started | True  -325.25 0 1 0 0 0 18 | Negative Float Critical 2 0 0  |  |  |  |
| 357ae9be-8a60-8120-9272-ef557a6f35df | 3070 | Simulate Load | Data | 1.2.3.2.18.3 | 1.2.3.2.18.3 | 2026-06-15 | 2026-06-15 | 2026-04-10 | 0 | 6 | 3067 | 1 | 1 | 357ae9be-8a60-81dd-92a5-dfcc7deacf21 | 357ae9be-8a60-81d8-afd4-df5816aa9545 | -178.77 | 0 | As Soon As Possible | Auto Scheduled | AMETEK SAP XXL Project Plan Replan MSP Task.csv | AMETEK SAP XXL Project Plan Replan MSP Task.csv__2f0764ccac__2026-05-05T02-44-15-662Z | Jyoti Nain | 66 | True |  | Not started | True  -178.77 0 1 0 0 0 26 | Negative Float Critical 2 0 0  |  |  |  |
| 357ae9be-8a60-8120-9cf3-d64d180cb302 | 295 | Execution of Cutover Plan(Business and Technical) | (Unassigned) | 1.1.2.8.2 | 1.1.2.8.2 | 2026-10-01 | 2026-10-09 | 2026-01-09 | 0 | 5 | 294 | 1 | 1 | 357ae9be-8a60-81fb-b3d8-e47c1b16de01 | 357ae9be-8a60-8167-8cd5-e4a082211fa8 | 12 | 0 | As Soon As Possible | Auto Scheduled | AMETEK SAP XXL Project Plan Replan MSP Task.csv | AMETEK SAP XXL Project Plan Replan MSP Task.csv__2f0764ccac__2026-05-05T02-44-15-662Z | COULD NOT BE DETERMINED | 273 | True |  | Not started | True  12 0 0 0 0 1 22 | Low 0 0 0  |  |  |  |
| 357ae9be-8a60-8120-a200-de882e5855c9 | 4480 | Post Load Validation | OTC | 1.2.5.2.55.2 | 1.2.5.2.55.2 | 2026-10-01 | 2026-10-01 | 2026-04-16 | 0 | 6 | 4478 | 1 | 1 | 357ae9be-8a60-814d-95b9-ffb7a755ca18 | 357ae9be-8a60-81a1-89f4-cde882b23561 | -712.27 | 0 | As Soon As Possible | Auto Scheduled | AMETEK SAP XXL Project Plan Replan MSP Task.csv | AMETEK SAP XXL Project Plan Replan MSP Task.csv__2f0764ccac__2026-05-05T02-44-15-662Z | James VanRiper | 168 | True |  | Not started | True  -712.27 0 1 0 0 0 26 | Negative Float Critical 2 0 0  |  |  |  |
| 357ae9be-8a60-8120-a46c-e69bf21bab1f | 903 | Import Group 1 - Ent Structure | Development;PTM;Finance;PMO;Europe IT lead;OTC;TESTING | 1.1.1.7.2.1 | 1.1.1.7.2.1 | 2026-06-18 | 2026-06-18 | 2026-07-07 | 0 | 6 | 902 | 1 | 1 | 357ae9be-8a60-81de-ae15-de842048dbc0 | 357ae9be-8a60-81ff-8013-e5ebd725cb91 | -298.02 | 0 | As Soon As Possible | Auto Scheduled | AMETEK SAP XXL Project Plan Replan MSP Task.csv | AMETEK SAP XXL Project Plan Replan MSP Task.csv__2f0764ccac__2026-05-05T02-44-15-662Z | Bijoykrishna Das |  |  |  | Not started | True  -298.02 0 1 0 0 0 18 | Negative Float Critical 2 0 0  |  |  |  |
| 357ae9be-8a60-8120-a9b4-fe70ddbe33fb | 820 | Error and Defect Mitigation | OTC | 1.2.1.15.4 | 1.2.1.15.4 | 2026-04-09 | 2026-04-09 | 2026-04-09 | 100 | 5 | 762 | 1 | 1 | 357ae9be-8a60-813e-9126-fedfdfb6b8c1 | 357ae9be-8a60-81a9-a799-fb2443f06fc1 | 0 | 0 | As Soon As Possible | Auto Scheduled | AMETEK SAP XXL Project Plan Replan MSP Task.csv | AMETEK SAP XXL Project Plan Replan MSP Task.csv__2f0764ccac__2026-05-05T02-44-15-662Z | Ric Haraida |  |  |  | Done | True  0 0 1 0 0 0 18 | Low 0 0 0  |  |  |  |
| 357ae9be-8a60-8120-b1ac-f250f97ee2c5 | 1017 | Error and Defect Mitigation | PTP;OTC | 1.2.1.23.4 | 1.2.1.23.4 | 2026-04-13 | 2026-04-13 | 2026-04-13 | 100 | 5 | 693 | 1 | 1 | 357ae9be-8a60-81f6-9c81-e66f9259c48b | 357ae9be-8a60-811b-86be-fd41e706a321 | 0 | 0 | As Soon As Possible | Auto Scheduled | AMETEK SAP XXL Project Plan Replan MSP Task.csv | AMETEK SAP XXL Project Plan Replan MSP Task.csv__2f0764ccac__2026-05-05T02-44-15-662Z | Nevin Varkey |  |  |  | Done | True  0 0 1 0 0 0 18 | Low 0 0 0  |  |  |  |
| 357ae9be-8a60-8120-b434-e3e224d3fb7c | 1743 | RTR_CM08_Exchange_Rates | (Unassigned) | 1.2.2.2.10 | 1.2.2.2.10 | 2026-05-19 | 2026-05-20 | 2026-04-10 | 0 | 5 | 2800 | 0 | 0 |  |  | -2.06 | 0 | As Soon As Possible | Auto Scheduled | AMETEK SAP XXL Project Plan Replan MSP Task.csv | AMETEK SAP XXL Project Plan Replan MSP Task.csv__2f0764ccac__2026-05-05T02-44-15-662Z | COULD NOT BE DETERMINED | 40 | True | True | Not started | True  -2.06 0 0 0 0 0 20 | Negative Float High 2 0 0  |  | 1748, 1745, 1746, 1744, 1747, 1749 | True |
| 357ae9be-8a60-8120-b798-f9605f51fc3c | 1897 | Pre Load Validation | PTM | 1.2.2.2.33.2 | 1.2.2.2.33.2 | 2026-05-22 | 2026-05-22 | 2026-04-16 | 0 | 6 | 1895 | 1 | 1 | 357ae9be-8a60-810c-82e9-ffc16aba0440 | 357ae9be-8a60-81ef-97aa-e46beb713c6d | -3226 | 0 | As Soon As Possible | Auto Scheduled | AMETEK SAP XXL Project Plan Replan MSP Task.csv | AMETEK SAP XXL Project Plan Replan MSP Task.csv__2f0764ccac__2026-05-05T02-44-15-662Z | Brad Meseck | 36 | True |  | Not started | True  -3226 0 1 0 0 0 26 | Wrong Dependency, Negative Float Critical 5 1 0  |  |  |  |
| 357ae9be-8a60-8120-be2d-c8bd4d10c30b | 3021 | Error and Defect Mitigation | Finance | 1.2.3.2.10.4 | 1.2.3.2.10.4 | 2026-06-09 | 2026-06-09 | 2026-04-10 | 0 | 6 | 3017 | 1 | 1 | 357ae9be-8a60-81fe-ae55-da6b244c99c4 | 357ae9be-8a60-81a1-80ad-db1b04513b88 | -136.52 | 0 | As Soon As Possible | Auto Scheduled | AMETEK SAP XXL Project Plan Replan MSP Task.csv | AMETEK SAP XXL Project Plan Replan MSP Task.csv__2f0764ccac__2026-05-05T02-44-15-662Z | Kasey Hughes | 60 | True |  | Not started | True  -136.52 0 1 0 0 0 26 | Negative Float Critical 2 0 0  |  |  |  |
| 357ae9be-8a60-8121-85c5-e1255ff88d54 | 3034 | Close Client | Basis | 1.2.3.2.13.5 | 1.2.3.2.13.5 | 2026-06-11 | 2026-06-11 | 2026-04-13 | 0 | 6 | 3029 | 1 | 0 | 357ae9be-8a60-81b9-84a1-d6d7a03a86bc |  | -8956 | 0 | As Soon As Possible | Auto Scheduled | AMETEK SAP XXL Project Plan Replan MSP Task.csv | AMETEK SAP XXL Project Plan Replan MSP Task.csv__2f0764ccac__2026-05-05T02-44-15-662Z | Lokchetan Meghavath | 59 | True |  | Not started | True  -8956 0 0 0 0 0 20 | Negative Float, Open Finish Critical 3 0 0  |  |  |  |
| 357ae9be-8a60-8121-8c65-d2805e95b73a | 3321 | Pre Load Validation | Finance | 1.2.3.2.68.2 | 1.2.3.2.68.2 | 2026-06-08 | 2026-06-08 | 2026-04-10 | 0 | 6 | 3319 | 1 | 1 | 357ae9be-8a60-8105-bb38-e08078c47fab | 357ae9be-8a60-81ac-a9c8-c388d1e51b6c | -7771 | 0 | As Soon As Possible | Auto Scheduled | AMETEK SAP XXL Project Plan Replan MSP Task.csv | AMETEK SAP XXL Project Plan Replan MSP Task.csv__2f0764ccac__2026-05-05T02-44-15-662Z | Kasey Hughes | 59 | True |  | Not started | True  -7771 0 1 0 0 0 26 | Negative Float Critical 2 0 0  |  |  |  |
| 357ae9be-8a60-8121-8da3-da12b1c4d208 | 2809 | ITC2 Data Load Tasks QS4 | Data | 1.2.2 | 1.2.2 | 2026-05-18 | 2026-10-12 | 2026-10-12 | 0 | 3 | 682 | 2 | 0 | 357ae9be-8a60-819a-857a-f70089bbe3dd, 357ae9be-8a60-81c3-9973-ef10b7cbd6bd |  | -90.75 | 0 | As Soon As Possible | Auto Scheduled | AMETEK SAP XXL Project Plan Replan MSP Task.csv | AMETEK SAP XXL Project Plan Replan MSP Task.csv__2f0764ccac__2026-05-05T02-44-15-662Z | Jyoti Nain |  |  |  | Not started | True  -90.75 0 0 0 0 0 12 | Negative Float Critical 2 0 0  |  | 2947, 2800, 2801, 2052, 1685 | True |
| 357ae9be-8a60-8121-9c31-efb169c1629e | 2639 | Post Load Validation | PTM | 1.2.4.2.33.6 | 1.2.4.2.33.6 | 2026-09-30 | 2026-09-30 | 2026-04-17 | 0 | 6 | 2633 | 1 | 1 | 357ae9be-8a60-8159-9197-c77bcd09f22a | 357ae9be-8a60-8115-a54a-e65caa42148c | -695.75 | 0 | Finish No Earlier Than | Auto Scheduled | AMETEK SAP XXL Project Plan Replan MSP Task.csv | AMETEK SAP XXL Project Plan Replan MSP Task.csv__2f0764ccac__2026-05-05T02-44-15-662Z | Brad Meseck | 166 | True |  | Not started | True  -695.75 0 1 0 0 0 26 | Negative Float Critical 2 0 0 True | 2026-04-17 |  |  |
| 357ae9be-8a60-8121-b120-c64de69a52ea | 3158 | Simulate Load | Data | 1.2.3.2.31.3 | 1.2.3.2.31.3 | 2026-06-16 | 2026-06-16 | 2026-04-17 | 0 | 6 | 3155 | 1 | 1 | 357ae9be-8a60-81cc-b9c6-f02be067db6f | 357ae9be-8a60-81fc-9189-c3fcec4adf77 | -182.39 | 0 | As Soon As Possible | Auto Scheduled | AMETEK SAP XXL Project Plan Replan MSP Task.csv | AMETEK SAP XXL Project Plan Replan MSP Task.csv__2f0764ccac__2026-05-05T02-44-15-662Z | Jyoti Nain | 60 | True |  | Not started | True  -182.39 0 1 0 0 0 26 | Negative Float Critical 2 0 0  |  |  |  |
| 357ae9be-8a60-8121-b166-cf6e7d7493fc | 2629 | Simulate Load | Data | 1.2.4.2.32.3 | 1.2.4.2.32.3 | 2026-10-05 | 2026-10-05 | 2026-04-20 | 0 | 6 | 2626 | 1 | 1 | 357ae9be-8a60-81c1-ab23-d04649fb5c7f | 357ae9be-8a60-81b5-97b1-fc457641930d | -700.38 | 0 | Finish No Earlier Than | Auto Scheduled | AMETEK SAP XXL Project Plan Replan MSP Task.csv | AMETEK SAP XXL Project Plan Replan MSP Task.csv__2f0764ccac__2026-05-05T02-44-15-662Z | Jyoti Nain | 168 | True |  | Not started | True  -700.38 0 1 0 0 0 26 | Negative Float Critical 2 0 0 True | 2026-04-17 |  |  |
| 357ae9be-8a60-8121-bb22-fe2b510893e1 | 2985 | Load File Staged and Posted "Ready" | Finance | 1.2.3.2.5.1 | 1.2.3.2.5.1 | 2026-06-10 | 2026-06-10 | 2026-04-08 | 0 | 6 | 2984 | 1 | 1 | 357ae9be-8a60-81ec-b52c-d19359ee27ae | 357ae9be-8a60-817e-b450-f3d1d5c324bf | -183.52 | 0 | As Soon As Possible | Auto Scheduled | AMETEK SAP XXL Project Plan Replan MSP Task.csv | AMETEK SAP XXL Project Plan Replan MSP Task.csv__2f0764ccac__2026-05-05T02-44-15-662Z | Kasey Hughes | 63 | True |  | Not started | True  -183.52 0 1 0 0 0 26 | Wrong Dependency, Negative Float Critical 5 1 0  |  |  |  |
| 357ae9be-8a60-8122-8ad8-e14d89ede36d | 817 | Load File Staged and Posted "Ready" | OTC | 1.2.1.15.1 | 1.2.1.15.1 | 2026-04-08 | 2026-04-09 | 2026-04-09 | 100 | 5 | 762 | 1 | 1 | 357ae9be-8a60-8134-9bab-efbb98b7b159 | 357ae9be-8a60-81b5-a3a5-c40db00435bc | 0 | 0 | As Soon As Possible | Auto Scheduled | AMETEK SAP XXL Project Plan Replan MSP Task.csv | AMETEK SAP XXL Project Plan Replan MSP Task.csv__2f0764ccac__2026-05-05T02-44-15-662Z | Ric Haraida |  |  |  | Done | True  0 0 1 0 0 0 18 | Wrong Dependency High 3 1 0  |  |  |  |
| 357ae9be-8a60-8122-92fd-dc2e76279754 | 1240 | Open client for BP number range update | Basis | 1.2.1.15.7 | 1.2.1.15.7 | 2026-04-09 | 2026-04-09 | 2026-04-09 | 100 | 5 | 762 | 1 | 1 | 357ae9be-8a60-8196-8f5b-e45aae4e7e4c | 357ae9be-8a60-81bd-b11f-ddf90c656d6c | 0 | 0 | As Soon As Possible | Auto Scheduled | AMETEK SAP XXL Project Plan Replan MSP Task.csv | AMETEK SAP XXL Project Plan Replan MSP Task.csv__2f0764ccac__2026-05-05T02-44-15-662Z | Lokchetan Meghavath |  |  |  | Done | True  0 0 1 0 0 0 18 | Wrong Dependency High 3 1 0  |  |  |  |
| 357ae9be-8a60-8122-937d-cf575dce70be | 776 | Post Load Validation | Finance | 1.2.1.4.6 | 1.2.1.4.6 | 2026-04-08 | 2026-04-08 | 2026-04-08 | 100 | 5 | 740 | 1 | 2 | 357ae9be-8a60-81e9-99c7-f1e44fe2fcd1 | 357ae9be-8a60-810c-aa8a-f5acbd240466, 357ae9be-8a60-81fc-a0bb-f489443faf37 | 0 | 0 | As Soon As Possible | Auto Scheduled | AMETEK SAP XXL Project Plan Replan MSP Task.csv | AMETEK SAP XXL Project Plan Replan MSP Task.csv__2f0764ccac__2026-05-05T02-44-15-662Z | Kasey Hughes |  |  |  | Done | True  0 0 1 1 335 0 25 | Wrong Successor High 3 0 2  |  |  |  |
| 357ae9be-8a60-8122-96fd-f92415d20307 | 3113 | PTP_CM26_Material_Master - SERV - Service Materials | PTP | 1.2.3.2.25 | 1.2.3.2.25 | 2026-06-10 | 2026-06-11 | 2026-04-15 | 0 | 5 | 2959 | 0 | 0 |  |  | -18.16 | 0 | As Soon As Possible | Auto Scheduled | AMETEK SAP XXL Project Plan Replan MSP Task.csv | AMETEK SAP XXL Project Plan Replan MSP Task.csv__2f0764ccac__2026-05-05T02-44-15-662Z | Muniraju Surappachari | 57 | True |  | Not started | True  -18.16 0 0 0 0 0 20 | Negative Float Critical 2 0 0  |  | 3117, 3115, 3118, 3114, 3119, 3116 | True |
| 357ae9be-8a60-8122-9d6b-d3770afc7fcd | 4406 | VC_Classes | (Unassigned) | 1.2.5.2.39 | 1.2.5.2.39 | 2026-09-25 | 2026-09-25 | 2026-04-07 | 0 | 5 | 4162 | 0 | 0 |  |  | -82.69 | 0 | As Soon As Possible | Auto Scheduled | AMETEK SAP XXL Project Plan Replan MSP Task.csv | AMETEK SAP XXL Project Plan Replan MSP Task.csv__2f0764ccac__2026-05-05T02-44-15-662Z | COULD NOT BE DETERMINED | 171 | True |  | Not started | True  -82.69 0 0 0 0 0 20 | Negative Float Critical 2 0 0  |  | 4407, 4408 | True |
| 357ae9be-8a60-8122-a8de-f102c9eb3fbb | 2693 | Load | Data | 1.2.4.2.46.5 | 1.2.4.2.46.5 | 2026-10-02 | 2026-10-02 | 2026-04-16 | 0 | 6 | 2688 | 1 | 1 | 357ae9be-8a60-81c5-9ba2-d7811c4f6283 | 357ae9be-8a60-8111-b0a1-dd3de3d9aaa5 | -726 | 0 | Start No Earlier Than | Auto Scheduled | AMETEK SAP XXL Project Plan Replan MSP Task.csv | AMETEK SAP XXL Project Plan Replan MSP Task.csv__2f0764ccac__2026-05-05T02-44-15-662Z | Jyoti Nain | 169 | True |  | Not started | True  -726 0 0 0 0 0 22 | Negative Float Critical 2 0 0 True | 2026-04-17 |  |  |
| 357ae9be-8a60-8122-aa76-c00f46155d21 | 2483 | Pre Load Validation | Finance | 1.2.4.2.10.2 | 1.2.4.2.10.2 | 2026-09-25 | 2026-09-25 | 2026-04-10 | 0 | 6 | 2481 | 1 | 1 | 357ae9be-8a60-81a6-8777-d4e31dcf9b8f | 357ae9be-8a60-81ba-9965-e975cd83e4c3 | -658.5 | 0 | As Soon As Possible | Auto Scheduled | AMETEK SAP XXL Project Plan Replan MSP Task.csv | AMETEK SAP XXL Project Plan Replan MSP Task.csv__2f0764ccac__2026-05-05T02-44-15-662Z | Kasey Hughes | 168 | True |  | Not started | True  -658.5 0 1 0 0 0 26 | Negative Float Critical 2 0 0  |  |  |  |
| 357ae9be-8a60-8122-ac37-debd07d88176 | 1202 | Load File Staged and Posted "Ready" | PTM | 1.2.1.37.1 | 1.2.1.37.1 | 2026-04-22 | 2026-04-22 | 2026-04-20 | 100 | 5 | 1195 | 1 | 1 | 357ae9be-8a60-8181-a92d-e4e135604429 | 357ae9be-8a60-81ce-a22e-d9f8795df7bf | 0 | 0 | As Soon As Possible | Auto Scheduled | AMETEK SAP XXL Project Plan Replan MSP Task.csv | AMETEK SAP XXL Project Plan Replan MSP Task.csv__2f0764ccac__2026-05-05T02-44-15-662Z | Brad Meseck |  |  |  | Done | True  0 0 1 0 0 0 18 | Low 0 0 0  |  |  |  |
| 357ae9be-8a60-8122-b4ac-ffebdc4d2642 | 4513 | Load Descartes XML File | OTC | 1.2.5.2.66.1 | 1.2.5.2.66.1 | 2026-10-02 | 2026-10-02 | 2026-04-16 | 0 | 6 | 4512 | 1 | 2 | 357ae9be-8a60-81d2-bf7c-d196748509c1 | 357ae9be-8a60-8151-8f99-cfea2f153d2d, 357ae9be-8a60-815c-997c-dfd952322937 | -693.02 | 0 | As Soon As Possible | Auto Scheduled | AMETEK SAP XXL Project Plan Replan MSP Task.csv | AMETEK SAP XXL Project Plan Replan MSP Task.csv__2f0764ccac__2026-05-05T02-44-15-662Z | James VanRiper | 169 | True |  | Not started | True  -693.02 0 2 0 0 0 32 | Negative Float Critical 2 0 0  |  |  |  |
| 357ae9be-8a60-8122-b5a7-f52bb4b3e2ef | 1770 | Load | Data | 1.2.2.2.14.5 | 1.2.2.2.14.5 | 2026-05-22 | 2026-05-25 | 2026-04-10 | 0 | 6 | 1765 | 1 | 2 | 357ae9be-8a60-8112-a484-c6d7bca39266 | 357ae9be-8a60-8122-937d-cf575dce70be, 357ae9be-8a60-8142-9972-cd1ecdb5f8b2 | -76.52 | 0 | As Soon As Possible | Auto Scheduled | AMETEK SAP XXL Project Plan Replan MSP Task.csv | AMETEK SAP XXL Project Plan Replan MSP Task.csv__2f0764ccac__2026-05-05T02-44-15-662Z | Jyoti Nain | 45 | True |  | Not started | True  -76.52 0 2 2 92 0 37 | Wrong Successor, Negative Float Critical 5 0 2  |  |  |  |
| 357ae9be-8a60-8122-bc16-e2109d71320c | 1025 | Post Load Validation | PTP | 1.2.1.25.6 | 1.2.1.25.6 | 2026-04-15 | 2026-04-15 | 2026-04-15 | 100 | 5 | 741 | 1 | 1 | 357ae9be-8a60-81c6-9147-c12703a93283 | 357ae9be-8a60-81d9-9566-dcc0bde780f4 | 0 | 0 | As Soon As Possible | Auto Scheduled | AMETEK SAP XXL Project Plan Replan MSP Task.csv | AMETEK SAP XXL Project Plan Replan MSP Task.csv__2f0764ccac__2026-05-05T02-44-15-662Z | Nevin Varkey |  |  |  | Done | True  0 0 1 1 6 0 23 | Wrong Dependency, Wrong Successor Critical 6 1 1  |  |  |  |
| 357ae9be-8a60-8123-8a38-e85edcee7dce | 2998 | Pre Load Validation | Finance | 1.2.3.2.7.2 | 1.2.3.2.7.2 | 2026-06-11 | 2026-06-12 | 2026-04-09 | 0 | 6 | 2996 | 1 | 1 | 357ae9be-8a60-81ce-847f-e221885ba10c | 357ae9be-8a60-819a-ace4-ffa75758544e | -158.02 | 0 | As Soon As Possible | Auto Scheduled | AMETEK SAP XXL Project Plan Replan MSP Task.csv | AMETEK SAP XXL Project Plan Replan MSP Task.csv__2f0764ccac__2026-05-05T02-44-15-662Z | Kasey Hughes | 64 | True |  | Not started | True  -158.02 0 1 0 0 0 26 | Negative Float Critical 2 0 0  |  |  |  |
| 357ae9be-8a60-8123-8cf8-c37a811276c4 | 4356 | Load | Data | 1.2.5.2.30.5 | 1-Apr | 2026-10-01 | 2026-10-01 | 2026-04-16 | 0 | 6 | 4351 | 1 | 1 | 357ae9be-8a60-8194-8a1b-cb2eb0e8367b | 357ae9be-8a60-8112-990c-eb26a26d3ebd | -700.39 | 0 | As Soon As Possible | Auto Scheduled | AMETEK SAP XXL Project Plan Replan MSP Task.csv | AMETEK SAP XXL Project Plan Replan MSP Task.csv__2f0764ccac__2026-05-05T02-44-15-662Z | Jyoti Nain | 168 | True |  | Not started | True  -700.39 0 1 0 0 0 26 | Negative Float Critical 2 0 0  |  |  |  |
| 357ae9be-8a60-8123-8eaa-c9e863cb2bb1 | 3230 | Post Load Validation | PTM | 1.2.3.2.46.6 | 1.2.3.2.46.6 | 2026-06-15 | 2026-06-15 | 2026-04-16 | 0 | 6 | 3224 | 1 | 1 | 357ae9be-8a60-818d-bfbf-c0d752f4ba3b | 357ae9be-8a60-8156-ba9a-d4a49f8bbadc | -187.27 | 0 | As Soon As Possible | Auto Scheduled | AMETEK SAP XXL Project Plan Replan MSP Task.csv | AMETEK SAP XXL Project Plan Replan MSP Task.csv__2f0764ccac__2026-05-05T02-44-15-662Z | Eric Heisler | 60 | True |  | Not started | True  -187.27 0 1 0 0 0 26 | Negative Float Critical 2 0 0  |  |  |  |
| 357ae9be-8a60-8123-922a-c49fc5877537 | 1308 | Manual Activities Group 3 | Development;PTM;Finance;PMO;Europe IT lead;OTC;TESTING | 1.1.1.6.2.6 | 1.1.1.6.2.6 | 2026-05-28 | 2026-05-29 | 2026-05-26 | 0 | 6 | 1302 | 1 | 1 | 357ae9be-8a60-81f8-b36c-f19067de58f3 | 357ae9be-8a60-811d-b3a5-da4692248b13 | -30.19 | 0 | As Soon As Possible | Auto Scheduled | AMETEK SAP XXL Project Plan Replan MSP Task.csv | AMETEK SAP XXL Project Plan Replan MSP Task.csv__2f0764ccac__2026-05-05T02-44-15-662Z | Bijoykrishna Das | 3 | True |  | Not started | True  -30.19 0 0 0 0 0 22 | Wrong Successor, Negative Float Critical 5 0 1  |  |  |  |
| 357ae9be-8a60-8123-a71e-c776fd34bbdf | 1830 | Load | Data | 1.2.2.2.23.5 | 1.2.2.2.23.5 | 2026-05-18 | 2026-05-18 | 2026-04-14 | 0 | 6 | 1825 | 1 | 1 | 357ae9be-8a60-81e8-8787-fe3ecf2e589a | 357ae9be-8a60-811c-a632-c761fdfa4cc5 | -8.02 | 0 | As Soon As Possible | Auto Scheduled | AMETEK SAP XXL Project Plan Replan MSP Task.csv | AMETEK SAP XXL Project Plan Replan MSP Task.csv__2f0764ccac__2026-05-05T02-44-15-662Z | Jyoti Nain | 34 | True | True | Not started | True  -8.02 0 1 1 32 0 31 | Wrong Successor, Negative Float High 5 0 1  |  |  |  |
| 357ae9be-8a60-8123-a7a5-dd8ef0c1f036 | 1848 | Pre Load Validation | PTM | 1.2.2.2.26.2 | 1.2.2.2.26.2 | 2026-05-20 | 2026-05-20 | 2026-04-14 | 0 | 6 | 1846 | 1 | 1 | 357ae9be-8a60-814d-a9ee-f6004b109629 | 357ae9be-8a60-81bc-8468-d3249e5e4458 | -4216 | 0 | As Soon As Possible | Auto Scheduled | AMETEK SAP XXL Project Plan Replan MSP Task.csv | AMETEK SAP XXL Project Plan Replan MSP Task.csv__2f0764ccac__2026-05-05T02-44-15-662Z | Eric Heisler | 36 | True | True | Not started | True  -4216 0 1 0 0 0 26 | Wrong Dependency, Negative Float Critical 5 1 0  |  |  |  |
| 357ae9be-8a60-8123-a8e2-e7ec5d151ff2 | 1970 | Load | OTC | 1.2.2.2.49.2 | 1.2.2.2.49.2 | 2026-05-27 | 2026-05-28 | 2026-04-20 | 0 | 6 | 1968 | 1 | 2 | 357ae9be-8a60-81ea-85c9-e53b26da28d6 | 357ae9be-8a60-8101-a382-e8a212fb3518, 357ae9be-8a60-8172-95d7-f08cb5837bec | -67.27 | 0 | As Soon As Possible | Auto Scheduled | AMETEK SAP XXL Project Plan Replan MSP Task.csv | AMETEK SAP XXL Project Plan Replan MSP Task.csv__2f0764ccac__2026-05-05T02-44-15-662Z | Ric Haraida | 38 | True |  | Not started | True  -67.27 0 2 2 90 0 37 | Wrong Successor, Negative Float Critical 5 0 2  |  |  |  |
| 357ae9be-8a60-8123-bcaf-f47ea361dcf4 | 2782 | Post Load Validation | Finance | 1.2.4.2.67.6 | 1.2.4.2.67.6 | 2026-09-24 | 2026-09-25 | 2026-04-17 | 0 | 6 | 2776 | 1 | 0 | 357ae9be-8a60-81f1-8d72-d090fe9dbc77 |  | -651 | 0 | As Soon As Possible | Auto Scheduled | AMETEK SAP XXL Project Plan Replan MSP Task.csv | AMETEK SAP XXL Project Plan Replan MSP Task.csv__2f0764ccac__2026-05-05T02-44-15-662Z | Kasey Hughes | 161 | True |  | Not started | True  -651 0 0 0 0 0 20 | Negative Float, Open Finish Critical 3 0 0  |  |  |  |
| 357ae9be-8a60-8124-82e7-cc038b2758d9 | 1990 | PTM_CM50_Material Class | PTM | 1.2.2.2.53 | 1.2.2.2.53 | 2026-05-22 | 2026-05-26 | 2026-04-16 | 0 | 5 | 2800 | 0 | 0 |  |  | -5.85 | 0 | As Soon As Possible | Auto Scheduled | AMETEK SAP XXL Project Plan Replan MSP Task.csv | AMETEK SAP XXL Project Plan Replan MSP Task.csv__2f0764ccac__2026-05-05T02-44-15-662Z | Brad Meseck | 40 | True |  | Not started | True  -5.85 0 0 0 0 0 20 | Negative Float High 2 0 0  |  | 1993, 1991, 1992 | True |
| 357ae9be-8a60-8124-8b73-eaed9492d54a | 3110 | Error and Defect Mitigation | PTP | 1.2.3.2.24.4 | 1.2.3.2.24.4 | 2026-06-09 | 2026-06-10 | 2026-04-14 | 0 | 6 | 3106 | 1 | 1 | 357ae9be-8a60-813e-8540-e60015b2c301 | 357ae9be-8a60-81f6-ac26-f1d4a2895e33 | -190.27 | 0 | As Soon As Possible | Auto Scheduled | AMETEK SAP XXL Project Plan Replan MSP Task.csv | AMETEK SAP XXL Project Plan Replan MSP Task.csv__2f0764ccac__2026-05-05T02-44-15-662Z | Nevin Varkey | 57 | True |  | Not started | True  -190.27 0 1 0 0 0 26 | Negative Float Critical 2 0 0  |  |  |  |
| 357ae9be-8a60-8124-9005-e815c5ae627c | 805 | Error and Defect Mitigation | Finance | 1.2.1.5.4 | 1.2.1.5.4 | 2026-04-07 | 2026-04-07 | 2026-04-07 | 100 | 5 | 759 | 1 | 1 | 357ae9be-8a60-810b-91ed-f3fcb9b602d4 | 357ae9be-8a60-81c3-8769-cc236331bb6d | 0 | 0 | As Soon As Possible | Auto Scheduled | AMETEK SAP XXL Project Plan Replan MSP Task.csv | AMETEK SAP XXL Project Plan Replan MSP Task.csv__2f0764ccac__2026-05-05T02-44-15-662Z | Kasey Hughes |  |  |  | Done | True  0 0 1 0 0 0 18 | Low 0 0 0  |  |  |  |
| 357ae9be-8a60-8124-ae42-f2ffe0578411 | 3283 | Post Load Validation | OTC | 1.2.3.2.57.2 | 1.2.3.2.57.2 | 2026-06-09 | 2026-06-09 | 2026-04-15 | 0 | 6 | 3281 | 1 | 0 | 357ae9be-8a60-815a-a872-cfa7e721eb4e |  | -128.52 | 0 | As Soon As Possible | Auto Scheduled | AMETEK SAP XXL Project Plan Replan MSP Task.csv | AMETEK SAP XXL Project Plan Replan MSP Task.csv__2f0764ccac__2026-05-05T02-44-15-662Z | James VanRiper | 55 | True |  | Not started | True  -128.52 0 0 0 0 0 20 | Wrong Dependency, Negative Float, Open Finish Critical 6 1 0  |  |  |  |
| 357ae9be-8a60-8124-b0a5-c28742185d5d | 2440 | Post GL Extention Validation | (Unassigned) | 1.2.4.2.3.8 | 1.2.4.2.3.8 | 2026-09-29 | 2026-09-29 | 2026-04-09 | 0 | 6 | 2432 | 1 | 2 | 357ae9be-8a60-8118-964a-dd183d2229dc | 357ae9be-8a60-8194-8b31-ebdfccfeb50e, 357ae9be-8a60-81aa-880d-e1a162854cd1 | -718.5 | 0 | As Soon As Possible | Auto Scheduled | AMETEK SAP XXL Project Plan Replan MSP Task.csv | AMETEK SAP XXL Project Plan Replan MSP Task.csv__2f0764ccac__2026-05-05T02-44-15-662Z | COULD NOT BE DETERMINED | 173 | True |  | Not started | True  -718.5 0 2 2 1105 0 37 | Wrong Successor, Negative Float Critical 5 0 2  |  |  |  |
| 357ae9be-8a60-8124-b348-fd31cfa3570a | 3101 | Pre Load Validation | PTP;OTC | 1.2.3.2.23.2 | 1.2.3.2.23.2 | 2026-06-08 | 2026-06-08 | 2026-04-13 | 0 | 6 | 3099 | 0 | 1 |  | 357ae9be-8a60-811e-82fa-d0d0c792b238 | -7681 | 0 | As Soon As Possible | Auto Scheduled | AMETEK SAP XXL Project Plan Replan MSP Task.csv | AMETEK SAP XXL Project Plan Replan MSP Task.csv__2f0764ccac__2026-05-05T02-44-15-662Z | Nevin Varkey | 56 | True |  | Not started | True  -7681 0 1 0 0 0 26 | Negative Float, Open Start Critical 3 0 0  |  |  |  |
| 357ae9be-8a60-8124-b471-ee89ea2c4094 | 2005 | Run material interface to GTS | OTC | 1.2.2.2.56.1 | 1.2.2.2.56.1 | 2026-05-18 | 2026-05-18 | 2026-04-10 | 0 | 6 | 2004 | 0 | 1 |  | 357ae9be-8a60-81f7-b4c2-d7a24083eb7c | -1.52 | 0 | As Soon As Possible | Auto Scheduled | AMETEK SAP XXL Project Plan Replan MSP Task.csv | AMETEK SAP XXL Project Plan Replan MSP Task.csv__2f0764ccac__2026-05-05T02-44-15-662Z | James VanRiper | 38 | True | True | Not started | True  -1.52 0 1 0 0 0 26 | Negative Float, Open Start High 3 0 0  |  |  |  |
| 357ae9be-8a60-8124-b6d0-fecd1a4c264a | 2448 | RTR_CM04_Cost_Center | (Unassigned) | 1.2.4.2.5 | 1.2.4.2.5 | 2026-09-25 | 2026-09-29 | 2026-04-09 | 0 | 5 | 2898 | 0 | 0 |  |  | -83.19 | 0 | As Soon As Possible | Auto Scheduled | AMETEK SAP XXL Project Plan Replan MSP Task.csv | AMETEK SAP XXL Project Plan Replan MSP Task.csv__2f0764ccac__2026-05-05T02-44-15-662Z | COULD NOT BE DETERMINED | 173 | True |  | Not started | True  -83.19 0 0 0 0 0 20 | Negative Float Critical 2 0 0  |  | 2449, 2450, 2454, 2453, 2451, 2452 | True |
| 357ae9be-8a60-8124-bbac-c650c1ebc9dc | 3003 | RTR_CM12_Activity Rates | (Unassigned) | 1.2.3.2.8 | 1.2.3.2.8 | 2026-06-09 | 2026-06-10 | 2026-04-08 | 0 | 5 | 2959 | 0 | 0 |  |  | -17.56 | 0 | As Soon As Possible | Auto Scheduled | AMETEK SAP XXL Project Plan Replan MSP Task.csv | AMETEK SAP XXL Project Plan Replan MSP Task.csv__2f0764ccac__2026-05-05T02-44-15-662Z | COULD NOT BE DETERMINED | 63 | True |  | Not started | True  -17.56 0 0 0 0 0 20 | Negative Float Critical 2 0 0  |  | 3004, 3008, 3005, 3009, 3006, 3007 | True |
| 357ae9be-8a60-8124-bc2f-c044b4b31ddc | 4180 | RTR_CM05_Profit_Center | (Unassigned) | 1.2.5.2.4 | 1.2.5.2.4 | 2026-09-24 | 2026-09-25 | 2026-04-07 | 0 | 5 | 4162 | 0 | 0 |  |  | -84.72 | 0 | As Soon As Possible | Auto Scheduled | AMETEK SAP XXL Project Plan Replan MSP Task.csv | AMETEK SAP XXL Project Plan Replan MSP Task.csv__2f0764ccac__2026-05-05T02-44-15-662Z | COULD NOT BE DETERMINED | 171 | True |  | Not started | True  -84.72 0 0 0 0 0 20 | Negative Float Critical 2 0 0  |  | 4184, 4185, 4183, 4181, 4186, 4182 | True |
| 357ae9be-8a60-8124-bcb4-ec9d96461fc1 | 4172 | Load File Staged and Posted "Ready" | Finance | 1.2.5.2.3.1 | 1.2.5.2.3.1 | 2026-09-25 | 2026-09-25 | 2026-04-07 | 0 | 6 | 4171 | 1 | 1 | 357ae9be-8a60-8197-98a0-c93374ed5808 | 357ae9be-8a60-81c8-b7cd-c1f76a030587 | -718.52 | 0 | Start No Earlier Than | Auto Scheduled | AMETEK SAP XXL Project Plan Replan MSP Task.csv | AMETEK SAP XXL Project Plan Replan MSP Task.csv__2f0764ccac__2026-05-05T02-44-15-662Z | Kasey Hughes | 171 | True |  | Not started | True  -718.52 0 1 0 0 0 26 | Negative Float Critical 2 0 0 True | 2026-04-06 |  |  |
| 357ae9be-8a60-8125-8286-d7af3f5eeee5 | 27 | Plan to Make | (Unassigned) | 1.1.2.9.1.3 | 1.1.2.9.1.3 | 2025-04-08 | 2025-09-04 | 2025-09-04 | 100 | 6 | 25 | 0 | 0 |  |  | 0 | 0 | As Soon As Possible | Auto Scheduled | AMETEK SAP XXL Project Plan Replan MSP Task.csv | AMETEK SAP XXL Project Plan Replan MSP Task.csv__2f0764ccac__2026-05-05T02-44-15-662Z | COULD NOT BE DETERMINED |  |  |  | Done | True  0 0 0 0 0 0 12 | Low 0 0 0  |  | 34, 33, 135 | True |
| 357ae9be-8a60-8125-8432-d0ea882197f0 | 4309 | PTP_CM26_Material_Master - All Types | PTP | 1.2.5.2.24 | 1.2.5.2.24 | 2026-09-24 | 2026-09-28 | 2026-04-15 | 0 | 5 | 4162 | 0 | 0 |  |  | -90.5 | 0 | As Soon As Possible | Auto Scheduled | AMETEK SAP XXL Project Plan Replan MSP Task.csv | AMETEK SAP XXL Project Plan Replan MSP Task.csv__2f0764ccac__2026-05-05T02-44-15-662Z | Muniraju Surappachari | 166 | True |  | Not started | True  -90.5 0 0 0 0 0 20 | Negative Float Critical 2 0 0  |  | 4315, 4314, 4310, 4312, 4313, 4311 | True |
| 357ae9be-8a60-8125-857b-cdb32ea80070 | 2500 | Error and Defect Mitigation | OTC | 1.2.4.2.13.7 | 1.2.4.2.13.7 | 2026-09-29 | 2026-09-30 | 2026-04-09 | 0 | 6 | 2493 | 1 | 1 | 357ae9be-8a60-81df-96a7-e6d94bf1fd21 | 357ae9be-8a60-81eb-a272-dd114ce2c0c2 | -681 | 0 | As Soon As Possible | Auto Scheduled | AMETEK SAP XXL Project Plan Replan MSP Task.csv | AMETEK SAP XXL Project Plan Replan MSP Task.csv__2f0764ccac__2026-05-05T02-44-15-662Z | Ric Haraida | 174 | True |  | Not started | True  -681 0 1 0 0 0 26 | Wrong Dependency, Negative Float Critical 5 1 0  |  |  |  |
| 357ae9be-8a60-8125-8b44-feff7c2c8e69 | 1890 | Pre Load Validation | PTM | 1.2.2.2.32.2 | 1.2.2.2.32.2 | 2026-05-26 | 2026-05-27 | 2026-04-20 | 0 | 6 | 1888 | 1 | 1 | 357ae9be-8a60-81e4-b73d-c606aa6b3cc5 | 357ae9be-8a60-81b7-83c6-f8d51b8728a7 | -62.39 | 0 | As Soon As Possible | Auto Scheduled | AMETEK SAP XXL Project Plan Replan MSP Task.csv | AMETEK SAP XXL Project Plan Replan MSP Task.csv__2f0764ccac__2026-05-05T02-44-15-662Z | Brad Meseck | 37 | True |  | Not started | True  -62.39 0 1 0 0 0 26 | Negative Float Critical 2 0 0  |  |  |  |
| 357ae9be-8a60-8125-970d-fc892cccb65b | 2495 | Pre Load Validation | OTC | 1.2.4.2.13.2 | 1.2.4.2.13.2 | 2026-09-29 | 2026-09-29 | 2026-04-08 | 0 | 6 | 2493 | 1 | 2 | 357ae9be-8a60-8170-8855-d16fcd417c75 | 357ae9be-8a60-8148-978b-e21b0261fccb, 357ae9be-8a60-8176-be0a-e672e3348137 | -42990 | 0 | As Soon As Possible | Auto Scheduled | AMETEK SAP XXL Project Plan Replan MSP Task.csv | AMETEK SAP XXL Project Plan Replan MSP Task.csv__2f0764ccac__2026-05-05T02-44-15-662Z | Ric Haraida | 174 | True |  | Not started | True  -42990 0 2 2 483 0 37 | Wrong Successor, Negative Float Critical 5 0 2  |  |  |  |
| 357ae9be-8a60-8125-97e5-ddc96de39bbb | 73 | Specs Completed | (Unassigned) | 1.1.2.10.2.1 | 1.1.2.10.2.1 | 2025-03-13 | 2025-03-13 | 2025-03-13 | 100 | 6 | 62 | 0 | 0 |  |  | 0 | 0 | As Soon As Possible | Auto Scheduled | AMETEK SAP XXL Project Plan Replan MSP Task.csv | AMETEK SAP XXL Project Plan Replan MSP Task.csv__2f0764ccac__2026-05-05T02-44-15-662Z | COULD NOT BE DETERMINED |  |  |  | Done | True  0 0 0 0 0 0 12 | Low 0 0 0  |  |  |  |
| 357ae9be-8a60-8125-9b6b-e1afa72116e1 | 2674 | Run ALE Transaction to QS5 from DS4 130 | PTM | 1.2.4.2.41.1 | 1.2.4.2.41.1 | 2026-09-29 | 2026-09-29 | 2026-04-16 | 0 | 6 | 2673 | 2 | 1 | 357ae9be-8a60-8194-8b31-ebdfccfeb50e, 357ae9be-8a60-817c-a0c9-f09c8601bf07 | 357ae9be-8a60-816d-b083-ff588f14a12e | -672.25 | 0 | As Soon As Possible | Auto Scheduled | AMETEK SAP XXL Project Plan Replan MSP Task.csv | AMETEK SAP XXL Project Plan Replan MSP Task.csv__2f0764ccac__2026-05-05T02-44-15-662Z | Eric Heisler | 166 | True |  | Not started | True  -672.25 0 1 0 0 0 26 | Wrong Dependency, Negative Float Critical 5 2 0  |  |  |  |
| 357ae9be-8a60-8125-9f41-c19534e57992 | 4435 | Load File Staged and Posted "Ready" | PTM | 1.2.5.2.47.1 | 1.2.5.2.47.1 | 2026-10-05 | 2026-10-05 | 2026-04-16 | 0 | 6 | 4434 | 1 | 1 | 357ae9be-8a60-8166-ae69-e4572738ee05 | 357ae9be-8a60-81dd-be57-ea7666758298 | -43561 | 0 | As Soon As Possible | Auto Scheduled | AMETEK SAP XXL Project Plan Replan MSP Task.csv | AMETEK SAP XXL Project Plan Replan MSP Task.csv__2f0764ccac__2026-05-05T02-44-15-662Z | Eric Heisler | 172 | True |  | Not started | True  -43561 0 1 0 0 0 26 | Negative Float Critical 2 0 0  |  |  |  |
| 357ae9be-8a60-8125-adc7-db00a3945811 | 1841 | Pre Load Validation | PTP;OTC | 1.2.2.2.25.2 | 1.2.2.2.25.2 | 2026-05-20 | 2026-05-20 | 2026-04-14 | 0 | 6 | 1839 | 1 | 1 | 357ae9be-8a60-814d-a9ee-f6004b109629 | 357ae9be-8a60-81ce-bd07-db73319ed2eb | -1516 | 0 | As Soon As Possible | Auto Scheduled | AMETEK SAP XXL Project Plan Replan MSP Task.csv | AMETEK SAP XXL Project Plan Replan MSP Task.csv__2f0764ccac__2026-05-05T02-44-15-662Z | Nevin Varkey | 36 | True | True | Not started | True  -1516 0 1 0 0 0 26 | Wrong Dependency, Negative Float Critical 5 1 0  |  |  |  |
| 357ae9be-8a60-8125-b8c1-f8ca2404d996 | 3204 | Run ALE Transaction to QS5 from DS4 130 | PTM | 1.2.3.2.39.1 | 1.2.3.2.39.1 | 2026-06-09 | 2026-06-09 | 2026-04-07 | 0 | 6 | 3203 | 1 | 1 | 357ae9be-8a60-81fd-abcd-e8f630061abb | 357ae9be-8a60-81be-9a7c-f90344943d1c | -139.52 | 0 | As Soon As Possible | Auto Scheduled | AMETEK SAP XXL Project Plan Replan MSP Task.csv | AMETEK SAP XXL Project Plan Replan MSP Task.csv__2f0764ccac__2026-05-05T02-44-15-662Z | Eric Heisler | 63 | True |  | Not started | True  -139.52 0 1 0 0 0 26 | Negative Float Critical 2 0 0  |  |  |  |
| 357ae9be-8a60-8125-bd31-c3fd6e8cf868 | 1872 | Load | Data | 1.2.2.2.29.5 | 1.2.2.2.29.5 | 2026-05-21 | 2026-05-22 | 2026-04-16 | 0 | 6 | 1867 | 1 | 1 | 357ae9be-8a60-81be-87b5-cc80be19e66b | 357ae9be-8a60-81bd-ade7-c1b72500e034 | -34.27 | 0 | As Soon As Possible | Auto Scheduled | AMETEK SAP XXL Project Plan Replan MSP Task.csv | AMETEK SAP XXL Project Plan Replan MSP Task.csv__2f0764ccac__2026-05-05T02-44-15-662Z | Jyoti Nain | 36 | True |  | Not started | True  -34.27 0 1 0 0 0 26 | Negative Float Critical 2 0 0  |  |  |  |
| 357ae9be-8a60-8126-8130-c27f22dfc1d9 | 2606 | Load File Staged and Posted "Ready" | PTP | 1.2.4.2.29.1 | 1.2.4.2.29.1 | 2026-09-29 | 2026-09-29 | 2026-04-15 | 0 | 6 | 2605 | 2 | 1 | 357ae9be-8a60-8194-8b31-ebdfccfeb50e, 357ae9be-8a60-8181-8191-e719cc7d6851 | 357ae9be-8a60-81e1-bf74-c4732c9e6224 | -42735 | 0 | As Soon As Possible | Auto Scheduled | AMETEK SAP XXL Project Plan Replan MSP Task.csv | AMETEK SAP XXL Project Plan Replan MSP Task.csv__2f0764ccac__2026-05-05T02-44-15-662Z | Nevin Varkey | 167 | True |  | Not started | True  -42735 0 1 0 0 0 26 | Wrong Dependency, Negative Float Critical 5 2 0  |  |  |  |

| id | uid | name | workstream | outlineNumber | wbs | start | finish | baselineFinish | pct | outlineLevel | parentUid | predCount | sucCount | predIds | sucIds | totalSlackDaysRaw | freeSlackDaysRaw | constraintType | taskMode | mspSourceFile | mspImportVersion | assignedTo | slipDays | isSlipped | isDue14 | status | cpm | scheduleQuality | constraintDate | childUids | isSummary | isOverdueStart |
| --- | --- | --- | --- | --- | --- | --- | --- | --- | --- | --- | --- | --- | --- | --- | --- | --- | --- | --- | --- | --- | --- | --- | --- | --- | --- | --- | --- | --- | --- | --- | --- | --- |
| 357ae9be-8a60-8126-8adb-c6aaf8a829b3 | 884 | QS4 UAT Refresh | (Unassigned) | 1.1.1.7 | 1.1.1.7 | 2026-06-08 | 2026-06-26 | 2026-07-16 | 0 | 4 | 5 | 0 | 1 |  | 357ae9be-8a60-8145-9194-de4910f8b1a0 | -35.25 | 0 | As Soon As Possible | Auto Scheduled | AMETEK SAP XXL Project Plan Replan MSP Task.csv | AMETEK SAP XXL Project Plan Replan MSP Task.csv__2f0764ccac__2026-05-05T02-44-15-662Z | COULD NOT BE DETERMINED |  |  |  | Not started | True  -35.25 0 1 1 445 0 23 | Wrong Successor, Negative Float Critical 5 0 1  |  | 902, 912, 3338, 1227 | True |  |
| 357ae9be-8a60-8126-8bae-f08810204ae0 | 860 | Manual Technical Tasks | Basis | 1.1.1.5.1.9 | 1.1.1.5.1.9 | 2026-05-04 | 2026-05-04 | 2026-05-18 | 0 | 6 | 3340 | 1 | 1 | 357ae9be-8a60-81c4-8995-e807244adc01 | 357ae9be-8a60-8187-9d2b-ce8f2dad5d54 | -25.5 | 0 | As Soon As Possible | Auto Scheduled | AMETEK SAP XXL Project Plan Replan MSP Task.csv | AMETEK SAP XXL Project Plan Replan MSP Task.csv__2f0764ccac__2026-05-05T02-44-15-662Z | Lokchetan Meghavath |  |  |  | Not started | True  -25.5 0 1 0 0 0 18 | Negative Float Critical 2 0 0  |  |  |  | True |
| 357ae9be-8a60-8126-8f02-e07b209659d0 | 4191 | Error and Defect Mitigation | Finance | 1.2.5.2.5.4 | 1.2.5.2.5.4 | 2026-09-28 | 2026-09-28 | 2026-04-08 | 0 | 6 | 4187 | 1 | 1 | 357ae9be-8a60-815d-88e3-f0cca531c21d | 357ae9be-8a60-8131-b2af-e48fa165536d | -665.52 | 0 | As Soon As Possible | Auto Scheduled | AMETEK SAP XXL Project Plan Replan MSP Task.csv | AMETEK SAP XXL Project Plan Replan MSP Task.csv__2f0764ccac__2026-05-05T02-44-15-662Z | Kasey Hughes | 173 | True |  | Not started | True  -665.52 0 1 0 0 0 26 | Negative Float Critical 2 0 0  |  |  |  |  |
| 357ae9be-8a60-8126-92e0-ff77e9612194 | 4266 | Simulate Load | Data | 1.2.5.2.17.3 | 1.2.5.2.17.3 | 2026-10-01 | 2026-10-01 | 2026-04-10 | 0 | 6 | 4263 | 2 | 1 | 357ae9be-8a60-81ae-9eb3-c1a391ae1d6d, 357ae9be-8a60-81fc-a289-cab796f302c2 | 357ae9be-8a60-81b3-8552-ed710632d1d9 | -707.02 | 0 | As Soon As Possible | Auto Scheduled | AMETEK SAP XXL Project Plan Replan MSP Task.csv | AMETEK SAP XXL Project Plan Replan MSP Task.csv__2f0764ccac__2026-05-05T02-44-15-662Z | Jyoti Nain | 174 | True |  | Not started | True  -707.02 0 1 0 0 0 26 | Negative Float Critical 2 0 0  |  |  |  |  |
| 357ae9be-8a60-8126-9ff8-f6bf8bb896f1 | 1213 | Commodity Code/Tarif | (Unassigned) | 1.2.1.64 | 1.2.1.64 | 2026-04-16 | 2026-04-21 | 2026-04-16 | 100 | 4 | 425 | 0 | 0 |  |  | 0 | 0 | As Soon As Possible | Auto Scheduled | AMETEK SAP XXL Project Plan Replan MSP Task.csv | AMETEK SAP XXL Project Plan Replan MSP Task.csv__2f0764ccac__2026-05-05T02-44-15-662Z | COULD NOT BE DETERMINED |  |  |  | Done | True  0 0 0 0 0 0 12 | Low 0 0 0  |  | 1215, 1214 | True |  |
| 357ae9be-8a60-8126-a9a1-d89498ceb500 | 59 | Finance and Controlling | Finance | 1.1.2.10.1 | 1.1.2.10.1 | 2025-03-13 | 2025-03-13 | 2025-03-13 | 100 | 5 | 55 | 0 | 0 |  |  | 0 | 0 | As Soon As Possible | Auto Scheduled | AMETEK SAP XXL Project Plan Replan MSP Task.csv | AMETEK SAP XXL Project Plan Replan MSP Task.csv__2f0764ccac__2026-05-05T02-44-15-662Z | Brian Wagner |  |  |  | Done | True  0 0 0 0 0 0 12 | Low 0 0 0  |  | 61, 72, 60, 71 | True |  |
| 357ae9be-8a60-8126-af50-fbca6e0c904e | 1831 | Post Load Validation | PTP;OTC | 1.2.2.2.23.6 | 1.2.2.2.23.6 | 2026-05-18 | 2026-05-19 | 2026-04-14 | 0 | 6 | 1825 | 1 | 0 | 357ae9be-8a60-8123-a71e-c776fd34bbdf |  | -8.02 | 0 | As Soon As Possible | Auto Scheduled | AMETEK SAP XXL Project Plan Replan MSP Task.csv | AMETEK SAP XXL Project Plan Replan MSP Task.csv__2f0764ccac__2026-05-05T02-44-15-662Z | Nevin Varkey | 35 | True | True | Not started | True  -8.02 0 0 0 0 0 20 | Wrong Dependency, Negative Float, Open Finish High 6 1 0  |  |  |  |  |
| 357ae9be-8a60-8126-b3f0-d7d74334a174 | 2561 | Load | Data | 1.2.4.2.22.5 | 1.2.4.2.22.5 | 2026-09-24 | 2026-09-25 | 2026-04-14 | 0 | 6 | 2556 | 1 | 1 | 357ae9be-8a60-81a7-83a1-e4fcdc41059a | 357ae9be-8a60-8194-8b31-ebdfccfeb50e | -653.5 | 0 | As Soon As Possible | Auto Scheduled | AMETEK SAP XXL Project Plan Replan MSP Task.csv | AMETEK SAP XXL Project Plan Replan MSP Task.csv__2f0764ccac__2026-05-05T02-44-15-662Z | Jyoti Nain | 164 | True |  | Not started | True  -653.5 0 1 1 536 0 31 | Wrong Successor, Negative Float Critical 5 0 1  |  |  |  |  |
| 357ae9be-8a60-8126-bb7c-fc487d640429 | 3311 | Post Load Validation | OTC | 1.2.3.2.66.2 | 1.2.3.2.66.2 | 2026-06-16 | 2026-06-16 | 2026-04-16 | 0 | 6 | 3309 | 1 | 0 | 357ae9be-8a60-8130-9642-d24a1c6dea80 |  | -170.02 | 0 | As Soon As Possible | Auto Scheduled | AMETEK SAP XXL Project Plan Replan MSP Task.csv | AMETEK SAP XXL Project Plan Replan MSP Task.csv__2f0764ccac__2026-05-05T02-44-15-662Z | James VanRiper | 61 | True |  | Not started | True  -170.02 0 0 0 0 0 20 | Wrong Dependency, Negative Float, Open Finish Critical 6 1 0  |  |  |  |  |
| 357ae9be-8a60-8127-8085-d2f50c3b8da9 | 4228 | Manual File Staged and Posted "Ready" | Finance | 1.2.5.2.11.1 | 1.2.5.2.11.1 | 2026-09-29 | 2026-09-29 | 2026-04-14 | 0 | 6 | 4227 | 1 | 1 | 357ae9be-8a60-817f-ac30-d49da3420dd8 | 357ae9be-8a60-81f3-993e-c6dc004e7a26 | -42271 | 0 | Finish No Earlier Than | Auto Scheduled | AMETEK SAP XXL Project Plan Replan MSP Task.csv | AMETEK SAP XXL Project Plan Replan MSP Task.csv__2f0764ccac__2026-05-05T02-44-15-662Z | Kasey Hughes | 168 | True |  | Not started | True  -42271 0 1 0 0 0 26 | Negative Float Critical 2 0 0 True | 2026-04-14 |  |  |  |
| 357ae9be-8a60-8127-84a2-d94e236b0abb | 1944 | VC_Variant Tables Content | (Unassigned) | 1.2.2.2.44 | 1.2.2.2.44 | 2026-05-22 | 2026-05-25 | 2026-04-17 | 0 | 5 | 2800 | 0 | 0 |  |  | -5.03 | 0 | As Soon As Possible | Auto Scheduled | AMETEK SAP XXL Project Plan Replan MSP Task.csv | AMETEK SAP XXL Project Plan Replan MSP Task.csv__2f0764ccac__2026-05-05T02-44-15-662Z | COULD NOT BE DETERMINED | 38 | True |  | Not started | True  -5.03 0 0 0 0 0 20 | Negative Float High 2 0 0  |  | 1946, 1945 | True |  |
| 357ae9be-8a60-8127-84ad-c3095bc3fc8f | 2938 | UAT Mock Data Loads Complete | PMO | 1.2.4.5 | 1.2.4.5 | 2026-10-12 | 2026-10-12 | 2026-04-21 | 0 | 4 | 2422 | 1 | 1 | 357ae9be-8a60-8102-b891-f8c2520cbdb9 | 357ae9be-8a60-8116-ab4e-dd9324687cda | -19515 | 0 | As Soon As Possible | Auto Scheduled | AMETEK SAP XXL Project Plan Replan MSP Task.csv | AMETEK SAP XXL Project Plan Replan MSP Task.csv__2f0764ccac__2026-05-05T02-44-15-662Z | Mark George | 174 | True |  | Not started | True  -19515 0 0 0 0 0 22 | Negative Float Critical 2 0 0  |  |  |  |  |
| 357ae9be-8a60-8127-852e-e15e02b8beab | 2454 | Post Load Validation | Finance | 1.2.4.2.5.6 | 1.2.4.2.5.6 | 2026-09-28 | 2026-09-29 | 2026-04-09 | 0 | 6 | 2448 | 1 | 0 | 357ae9be-8a60-813a-bb2c-f9fc075c9d21 |  | -665.5 | 0 | As Soon As Possible | Auto Scheduled | AMETEK SAP XXL Project Plan Replan MSP Task.csv | AMETEK SAP XXL Project Plan Replan MSP Task.csv__2f0764ccac__2026-05-05T02-44-15-662Z | Kasey Hughes | 173 | True |  | Not started | True  -665.5 0 0 0 0 0 20 | Negative Float, Open Finish Critical 3 0 0  |  |  |  |  |
| 357ae9be-8a60-8127-8926-d844ab4f8e3e | 3051 | Pre Load Validation | PTP | 1.2.3.2.15.2 | 1.2.3.2.15.2 | 2026-06-15 | 2026-06-15 | 2026-04-10 | 0 | 6 | 3049 | 1 | 1 | 357ae9be-8a60-81b9-b573-f0eec733742b | 357ae9be-8a60-8148-8f7b-eae199250a6e | -196.52 | 0 | As Soon As Possible | Auto Scheduled | AMETEK SAP XXL Project Plan Replan MSP Task.csv | AMETEK SAP XXL Project Plan Replan MSP Task.csv__2f0764ccac__2026-05-05T02-44-15-662Z | Nevin Varkey | 66 | True |  | Not started | True  -196.52 0 1 0 0 0 26 | Wrong Successor, Negative Float Critical 5 0 1  |  |  |  |  |
| 357ae9be-8a60-8127-8c09-d510449286ba | 4217 | Error and Defect Mitigation | Finance | 1.2.5.2.9.4 | 1.2.5.2.9.4 | 2026-09-24 | 2026-09-24 | 2026-04-09 | 0 | 6 | 4213 | 1 | 1 | 357ae9be-8a60-81c9-a6a2-e829c39393ba | 357ae9be-8a60-8143-b520-ecb1941edd8d | -690.52 | 0 | As Soon As Possible | Auto Scheduled | AMETEK SAP XXL Project Plan Replan MSP Task.csv | AMETEK SAP XXL Project Plan Replan MSP Task.csv__2f0764ccac__2026-05-05T02-44-15-662Z | Kasey Hughes | 168 | True |  | Not started | True  -690.52 0 1 0 0 0 26 | Negative Float Critical 2 0 0  |  |  |  |  |
| 357ae9be-8a60-8127-91c7-d678dee33ec0 | 247 | Deliver Train the Trainer (BPL->SME) | Training | 1.4.1.3.1 | 1.4.1.3.1 | 2026-08-03 | 2026-08-28 | 2026-08-28 | 0 | 5 | 241 | 1 | 1 | 357ae9be-8a60-8129-9ac6-e84090f66874 | 357ae9be-8a60-81ed-89b8-edc0eaa6a32e | 16 | 0 | Finish No Earlier Than | Auto Scheduled | AMETEK SAP XXL Project Plan Replan MSP Task.csv | AMETEK SAP XXL Project Plan Replan MSP Task.csv__2f0764ccac__2026-05-05T02-44-15-662Z | Karen Zalnis |  |  |  | Not started | True  16 0 0 0 0 0 14 | Low 0 0 0 True | 2026-08-28 |  |  |  |
| 357ae9be-8a60-8127-9b9e-df2003c82808 | 2507 | Error and Defect Mitigation | OTC | 1.2.4.2.14.4 | 1.2.4.2.14.4 | 2026-09-30 | 2026-09-30 | 2026-04-09 | 0 | 6 | 2503 | 1 | 1 | 357ae9be-8a60-8185-8aca-c561ef72a9ff | 357ae9be-8a60-81b0-90a1-ea8f91d653f6 | -718.5 | 0 | As Soon As Possible | Auto Scheduled | AMETEK SAP XXL Project Plan Replan MSP Task.csv | AMETEK SAP XXL Project Plan Replan MSP Task.csv__2f0764ccac__2026-05-05T02-44-15-662Z | Ric Haraida | 174 | True |  | Not started | True  -718.5 0 1 0 0 0 26 | Negative Float Critical 2 0 0  |  |  |  |  |
| 357ae9be-8a60-8127-9dd9-eb57ce65bb26 | 1810 | Simulate Load/ Not Needed | PTP | 1.2.2.2.20.3 | 1.2.2.2.20.3 | 2026-05-18 | 2026-05-18 | 2026-04-10 | 0 | 6 | 1807 | 1 | 2 | 357ae9be-8a60-81f3-af6a-ccceee9fdd1e | 357ae9be-8a60-811c-a632-c761fdfa4cc5, 357ae9be-8a60-815b-9426-ca1055e2c60b | -11.52 | 0 | As Soon As Possible | Auto Scheduled | AMETEK SAP XXL Project Plan Replan MSP Task.csv | AMETEK SAP XXL Project Plan Replan MSP Task.csv__2f0764ccac__2026-05-05T02-44-15-662Z | Nevin Varkey | 38 | True | True | Not started | True  -11.52 0 2 2 71 0 37 | Wrong Successor, Negative Float Critical 5 0 2  |  |  |  |  |
| 357ae9be-8a60-8127-9ded-c31899ec108f | 2636 | Simulate Load | Data | 1.2.4.2.33.3 | 1.2.4.2.33.3 | 2026-09-29 | 2026-09-30 | 2026-04-16 | 0 | 6 | 2633 | 1 | 1 | 357ae9be-8a60-8155-9f91-e0c5780f687f | 357ae9be-8a60-8108-9978-f6a1aa687a24 | -695.75 | 0 | As Soon As Possible | Auto Scheduled | AMETEK SAP XXL Project Plan Replan MSP Task.csv | AMETEK SAP XXL Project Plan Replan MSP Task.csv__2f0764ccac__2026-05-05T02-44-15-662Z | Jyoti Nain | 167 | True |  | Not started | True  -695.75 0 1 0 0 0 26 | Negative Float Critical 2 0 0  |  |  |  |  |
| 357ae9be-8a60-8127-9f5c-fde14254ebe8 | 2735 | Simulate Load | Data | 1.2.4.2.54.3 | 1.2.4.2.54.3 | 2026-09-30 | 2026-09-30 | 2026-04-16 | 0 | 6 | 2732 | 1 | 1 | 357ae9be-8a60-8158-8891-e0892731b771 | 357ae9be-8a60-81fe-9a3f-c1794f1eca76 | -681.25 | 0 | As Soon As Possible | Auto Scheduled | AMETEK SAP XXL Project Plan Replan MSP Task.csv | AMETEK SAP XXL Project Plan Replan MSP Task.csv__2f0764ccac__2026-05-05T02-44-15-662Z | Jyoti Nain | 167 | True |  | Not started | True  -681.25 0 1 0 0 0 26 | Negative Float Critical 2 0 0  |  |  |  |  |
| 357ae9be-8a60-8127-a897-d9b628051bdd | 1836 | Error and Defect Mitigation | PTP | 1.2.2.2.24.4 | 1.2.2.2.24.4 | 2026-05-19 | 2026-05-20 | 2026-04-14 | 0 | 6 | 1832 | 1 | 1 | 357ae9be-8a60-8116-a1a3-f6ac1693be49 | 357ae9be-8a60-814d-a9ee-f6004b109629 | -70.27 | 0 | As Soon As Possible | Auto Scheduled | AMETEK SAP XXL Project Plan Replan MSP Task.csv | AMETEK SAP XXL Project Plan Replan MSP Task.csv__2f0764ccac__2026-05-05T02-44-15-662Z | Nevin Varkey | 36 | True | True | Not started | True  -70.27 0 1 0 0 0 26 | Negative Float Critical 2 0 0  |  |  |  |  |
| 357ae9be-8a60-8127-aeaa-d9f2f6a8b729 | 4380 | Load File Staged and Posted "Ready" | PTM | 1.2.5.2.34.1 | 1.2.5.2.34.1 | 2026-09-30 | 2026-09-30 | 2026-04-17 | 0 | 6 | 4379 | 1 | 2 | 357ae9be-8a60-81f6-871b-ea524cbb2802 | 357ae9be-8a60-81cf-ac47-c7000ac6719a, 357ae9be-8a60-81b1-8147-eb282c9c9e93 | -41746 | 0 | As Soon As Possible | Auto Scheduled | AMETEK SAP XXL Project Plan Replan MSP Task.csv | AMETEK SAP XXL Project Plan Replan MSP Task.csv__2f0764ccac__2026-05-05T02-44-15-662Z | Brad Meseck | 166 | True |  | Not started | True  -41746 0 2 0 0 0 32 | Negative Float Critical 2 0 0  |  |  |  |  |
| 357ae9be-8a60-8127-bea0-fdf89dd970dd | 285 | Setup Mitigation controls | (Unassigned) | 1.1.2.4.8 | 1.1.2.4.8 | 2025-11-12 | 2025-11-19 | 2025-11-19 | 100 | 5 | 267 | 1 | 1 | 357ae9be-8a60-8199-a7af-e68fbfb59764 | 357ae9be-8a60-81fc-bd71-e60bc3788633 | 0 | 0 | As Soon As Possible | Auto Scheduled | AMETEK SAP XXL Project Plan Replan MSP Task.csv | AMETEK SAP XXL Project Plan Replan MSP Task.csv__2f0764ccac__2026-05-05T02-44-15-662Z | COULD NOT BE DETERMINED |  |  |  | Done | True  0 0 0 0 0 0 14 | Low 0 0 0  |  |  |  |  |
| 357ae9be-8a60-8128-86eb-e8a4f3d1c354 | 61 | Specs Assigned to Developer | (Unassigned) | 1.1.2.10.1.2 | 1.1.2.10.1.2 | 2025-03-13 | 2025-03-13 | 2025-03-13 | 100 | 6 | 59 | 0 | 0 |  |  | 0 | 0 | As Soon As Possible | Auto Scheduled | AMETEK SAP XXL Project Plan Replan MSP Task.csv | AMETEK SAP XXL Project Plan Replan MSP Task.csv__2f0764ccac__2026-05-05T02-44-15-662Z | COULD NOT BE DETERMINED |  |  |  | Done | True  0 0 0 0 0 0 12 | Low 0 0 0  |  |  |  |  |
| 357ae9be-8a60-8128-990c-f0e73118848a | 81 | Specs Completed | (Unassigned) | 1.1.2.10.4.1 | 1.1.2.10.4.1 | 2025-03-13 | 2025-03-13 | 2025-03-13 | 100 | 6 | 68 | 0 | 0 |  |  | 0 | 0 | As Soon As Possible | Auto Scheduled | AMETEK SAP XXL Project Plan Replan MSP Task.csv | AMETEK SAP XXL Project Plan Replan MSP Task.csv__2f0764ccac__2026-05-05T02-44-15-662Z | COULD NOT BE DETERMINED |  |  |  | Done | True  0 0 0 0 0 0 12 | Low 0 0 0  |  |  |  |  |
| 357ae9be-8a60-8128-a7b3-f9a06e93c31c | 1909 | PTM_CM48_Equipment_Master_Serial Numbers | PTM | 1.2.2.2.35 | 1.2.2.2.35 | 2026-05-25 | 2026-05-26 | 2026-04-20 | 0 | 5 | 2800 | 0 | 0 |  |  | -6.72 | 0 | As Soon As Possible | Auto Scheduled | AMETEK SAP XXL Project Plan Replan MSP Task.csv | AMETEK SAP XXL Project Plan Replan MSP Task.csv__2f0764ccac__2026-05-05T02-44-15-662Z | Brad Meseck | 36 | True |  | Not started | True  -6.72 0 0 0 0 0 20 | Negative Float High 2 0 0  |  | 1911, 1910, 1915, 1914, 1912, 1913 | True |  |
| 357ae9be-8a60-8128-b2da-fad5244972a7 | 4429 | Pre Load Validation | PTM | 1.2.5.2.46.2 | 1.2.5.2.46.2 | 2026-09-29 | 2026-09-29 | 2026-04-15 | 0 | 6 | 4427 | 1 | 1 | 357ae9be-8a60-81a4-9e35-c443d1c7a34b | 357ae9be-8a60-81d6-8a40-c3dc1959c0bf | -43561 | 0 | As Soon As Possible | Auto Scheduled | AMETEK SAP XXL Project Plan Replan MSP Task.csv | AMETEK SAP XXL Project Plan Replan MSP Task.csv__2f0764ccac__2026-05-05T02-44-15-662Z | Eric Heisler | 167 | True |  | Not started | True  -43561 0 1 0 0 0 26 | Negative Float Critical 2 0 0  |  |  |  |  |
| 357ae9be-8a60-8128-b5ad-da80f9efee96 | 4275 | Load | Data | 1.2.5.2.18.5 | 1.2.5.2.18.5 | 2026-10-01 | 2026-10-01 | 2026-04-10 | 0 | 6 | 4270 | 1 | 1 | 357ae9be-8a60-81d9-a671-c96fa8e79903 | 357ae9be-8a60-81cc-a542-d62954825610 | -700.77 | 0 | As Soon As Possible | Auto Scheduled | AMETEK SAP XXL Project Plan Replan MSP Task.csv | AMETEK SAP XXL Project Plan Replan MSP Task.csv__2f0764ccac__2026-05-05T02-44-15-662Z | Jyoti Nain | 174 | True |  | Not started | True  -700.77 0 1 0 0 0 26 | Negative Float Critical 2 0 0  |  |  |  |  |
| 357ae9be-8a60-8128-b5da-ca004ca7f481 | 1106 | Manual File Staged and Posted "Ready" | PTM | 1.2.1.49.1 | 1.2.1.49.1 | 2026-04-16 | 2026-04-16 | 2026-04-17 | 100 | 5 | 949 | 1 | 1 | 357ae9be-8a60-814f-a6ec-da71a065b880 | 357ae9be-8a60-818e-b790-dc2cca6aee2c | 0 | 0 | Start No Earlier Than | Auto Scheduled | AMETEK SAP XXL Project Plan Replan MSP Task.csv | AMETEK SAP XXL Project Plan Replan MSP Task.csv__2f0764ccac__2026-05-05T02-44-15-662Z | Eric Heisler |  |  |  | Done | True  0 0 1 0 0 0 18 | Wrong Dependency High 3 1 0 True | 2026-04-06 |  |  |  |
| 357ae9be-8a60-8128-bbf0-ff93f742bbc5 | 2041 | Simulate Load | Data | 1.2.2.2.67.3 | 1.2.2.2.67.3 | 2026-05-18 | 2026-05-18 | 2026-04-16 | 0 | 6 | 2038 | 1 | 1 | 357ae9be-8a60-814c-b106-c5a86bda32d1 | 357ae9be-8a60-810f-bcdf-c931c82c660d | -9.02 | 0 | As Soon As Possible | Auto Scheduled | AMETEK SAP XXL Project Plan Replan MSP Task.csv | AMETEK SAP XXL Project Plan Replan MSP Task.csv__2f0764ccac__2026-05-05T02-44-15-662Z | Jyoti Nain | 32 | True | True | Not started | True  -9.02 0 1 0 0 0 26 | Negative Float High 2 0 0  |  |  |  |  |
| 357ae9be-8a60-8128-bdf5-e1d3c94af282 | 2496 | Open client for BP number range update | Basis | 1.2.4.2.13.3 | 1.2.4.2.13.3 | 2026-09-29 | 2026-09-29 | 2026-04-09 | 0 | 6 | 2493 | 1 | 1 | 357ae9be-8a60-8125-970d-fc892cccb65b | 357ae9be-8a60-814d-9993-ef431fb68608 | -40275 | 0 | As Soon As Possible | Auto Scheduled | AMETEK SAP XXL Project Plan Replan MSP Task.csv | AMETEK SAP XXL Project Plan Replan MSP Task.csv__2f0764ccac__2026-05-05T02-44-15-662Z | Lokchetan Meghavath | 173 | True |  | Not started | True  -40275 0 1 0 0 0 26 | Wrong Dependency, Negative Float Critical 5 1 0  |  |  |  |  |
| 357ae9be-8a60-8129-8416-f2cfae7deb32 | 3235 | Error and Defect Mitigation | PTM | 1.2.3.2.47.4 | 1.2.3.2.47.4 | 2026-06-16 | 2026-06-16 | 2026-04-17 | 0 | 6 | 3231 | 1 | 1 | 357ae9be-8a60-8175-9626-ebacde7180e2 | 357ae9be-8a60-818d-b3b7-e81cfab2aacb | -187.27 | 0 | As Soon As Possible | Auto Scheduled | AMETEK SAP XXL Project Plan Replan MSP Task.csv | AMETEK SAP XXL Project Plan Replan MSP Task.csv__2f0764ccac__2026-05-05T02-44-15-662Z | Eric Heisler | 60 | True |  | Not started | True  -187.27 0 1 0 0 0 26 | Negative Float Critical 2 0 0  |  |  |  |  |
| 357ae9be-8a60-8129-858a-d04f4c744c5c | 269 | Extract SU24 Details of transactions from global ruleset and Custom Transactions | (Unassigned) | 1.1.2.4.2 | 1.1.2.4.2 | 2025-09-08 | 2025-09-16 | 2025-09-16 | 100 | 5 | 267 | 1 | 1 | 357ae9be-8a60-81e0-a039-e14902b9cd1e | 357ae9be-8a60-8178-be83-e2f18afdb588 | 0 | 0 | As Soon As Possible | Auto Scheduled | AMETEK SAP XXL Project Plan Replan MSP Task.csv | AMETEK SAP XXL Project Plan Replan MSP Task.csv__2f0764ccac__2026-05-05T02-44-15-662Z | COULD NOT BE DETERMINED |  |  |  | Done | True  0 0 1 0 0 0 18 | Low 0 0 0  |  |  |  |  |
| 357ae9be-8a60-8129-9154-cef114881dbf | 1042 | Load | Data | 1.2.1.28.5 | 1.2.1.28.5 | 2026-04-17 | 2026-04-17 | 2026-04-15 | 100 | 5 | 703 | 1 | 1 | 357ae9be-8a60-8108-8584-eeec48be6efb | 357ae9be-8a60-81aa-bc90-fad26c5b2dde | 0 | 0 | Start No Earlier Than | Auto Scheduled | AMETEK SAP XXL Project Plan Replan MSP Task.csv | AMETEK SAP XXL Project Plan Replan MSP Task.csv__2f0764ccac__2026-05-05T02-44-15-662Z | Jyoti Nain |  |  |  | Done | True  0 0 1 0 0 0 18 | Wrong Dependency High 3 1 0 True | 2026-04-17 |  |  |  |
| 357ae9be-8a60-8129-9ac6-e84090f66874 | 218 | Develop Train the Trainer | Training | 1.4.1.1.6 | 1.4.1.1.6 | 2026-02-16 | 2026-07-31 | 2026-07-31 | 100 | 5 | 216 | 1 | 1 | 357ae9be-8a60-81e2-809c-df100912a844 | 357ae9be-8a60-8127-91c7-d678dee33ec0 | 0 | 0 | Finish No Earlier Than | Auto Scheduled | AMETEK SAP XXL Project Plan Replan MSP Task.csv | AMETEK SAP XXL Project Plan Replan MSP Task.csv__2f0764ccac__2026-05-05T02-44-15-662Z | Karen Zalnis |  |  |  | Done | True  0 0 0 0 0 1 14 | Date Incorrect Critical 2 0 0 True | 2026-07-31 |  |  |  |
| 357ae9be-8a60-8129-9c37-e7c6a71bbf70 | 749 | PTP_CM26_Material_Master - KMAT - Configurable Materials | PTP | 1.2.1.27 | 1.2.1.27 | 2026-04-07 | 2026-04-15 | 2026-04-15 | 100 | 4 | 425 | 1 | 0 | 357ae9be-8a60-816d-ae55-cec8c80de4d9 |  | 0 | 0 | As Soon As Possible | Auto Scheduled | AMETEK SAP XXL Project Plan Replan MSP Task.csv | AMETEK SAP XXL Project Plan Replan MSP Task.csv__2f0764ccac__2026-05-05T02-44-15-662Z | Muniraju Surappachari |  |  |  | Done | True  0 0 0 0 0 1 12 | Low 0 0 0  |  | 1037, 1036, 1035, 1033, 1032, 1034 | True |  |
| 357ae9be-8a60-8129-9dba-da3989d5a940 | 2031 | Initialize Embargo situation | (Unassigned) | 1.2.2.2.65 | 1.2.2.2.65 | 2026-05-19 | 2026-05-19 | 2026-04-14 | 0 | 5 | 2800 | 0 | 0 |  |  | -1.44 | 0 | As Soon As Possible | Auto Scheduled | AMETEK SAP XXL Project Plan Replan MSP Task.csv | AMETEK SAP XXL Project Plan Replan MSP Task.csv__2f0764ccac__2026-05-05T02-44-15-662Z | COULD NOT BE DETERMINED | 35 | True | True | Not started | True  -1.44 0 0 0 0 0 20 | Negative Float High 2 0 0  |  | 2033, 2032, 2034 | True |  |
| 357ae9be-8a60-8129-a25c-d0b93d1df5a1 | 4251 | Close Client | Basis | 1.2.5.2.14.9 | 1.2.5.2.14.9 | 2026-09-29 | 2026-09-29 | 2026-04-09 | 0 | 6 | 4242 | 1 | 0 | 357ae9be-8a60-8194-9831-faf86ea08922 |  | -40306 | 0 | As Soon As Possible | Auto Scheduled | AMETEK SAP XXL Project Plan Replan MSP Task.csv | AMETEK SAP XXL Project Plan Replan MSP Task.csv__2f0764ccac__2026-05-05T02-44-15-662Z | Lokchetan Meghavath | 173 | True |  | Not started | True  -40306 0 0 0 0 0 20 | Negative Float, Open Finish Critical 3 0 0  |  |  |  |  |
| 357ae9be-8a60-8129-be24-e699d0daa448 | 2647 | PTM_CM48_Equipment_Master_Serial Numbers | PTM | 1.2.4.2.35 | 1.2.4.2.35 | 2026-09-30 | 2026-10-02 | 2026-04-20 | 0 | 5 | 2898 | 0 | 0 |  |  | -86.97 | 0 | As Soon As Possible | Auto Scheduled | AMETEK SAP XXL Project Plan Replan MSP Task.csv | AMETEK SAP XXL Project Plan Replan MSP Task.csv__2f0764ccac__2026-05-05T02-44-15-662Z | Brad Meseck | 165 | True |  | Not started | True  -86.97 0 0 0 0 0 20 | Negative Float Critical 2 0 0  |  | 2648, 2651, 2653, 2649, 2652, 2650 | True |  |
| 357ae9be-8a60-812a-82db-dbcd9c2b6c29 | 2048 | Simulate Load | Data | 1.2.2.2.68.3 | 1.2.2.2.68.3 | 2026-05-18 | 2026-05-18 | 2026-04-16 | 0 | 6 | 2045 | 1 | 1 | 357ae9be-8a60-81b7-84de-f4ceefa9feeb | 357ae9be-8a60-8109-a714-c4f93295c3df | -9.52 | 0 | As Soon As Possible | Auto Scheduled | AMETEK SAP XXL Project Plan Replan MSP Task.csv | AMETEK SAP XXL Project Plan Replan MSP Task.csv__2f0764ccac__2026-05-05T02-44-15-662Z | Jyoti Nain | 32 | True | True | Not started | True  -9.52 0 1 0 0 0 26 | Negative Float High 2 0 0  |  |  |  |  |
| 357ae9be-8a60-812a-86db-fdce52228fbd | 3042 | Simulate Load | Data | 1.2.3.2.14.3 | 1.2.3.2.14.3 | 2026-06-12 | 2026-06-12 | 2026-04-09 | 0 | 6 | 3039 | 3 | 1 | 357ae9be-8a60-816c-ad9a-cf035f1ccd99, 357ae9be-8a60-8174-964d-efd5d68137ea, 357ae9be-8a60-81ca-bf77-f5a62ede8fb8 | 357ae9be-8a60-81cb-9dc3-d8e7ead5ebd2 | -196.52 | 0 | As Soon As Possible | Auto Scheduled | AMETEK SAP XXL Project Plan Replan MSP Task.csv | AMETEK SAP XXL Project Plan Replan MSP Task.csv__2f0764ccac__2026-05-05T02-44-15-662Z | Jyoti Nain | 64 | True |  | Not started | True  -196.52 0 1 0 0 0 26 | Wrong Dependency, Negative Float Critical 5 3 0  |  |  |  |  |
| 357ae9be-8a60-812a-8ff8-e70b785cc280 | 1700 | Post Load Validation | Finance | 1.2.2.2.3.6 | 1.2.2.2.3.6 | 2026-05-21 | 2026-05-21 | 2026-04-08 | 0 | 6 | 1694 | 1 | 0 | 357ae9be-8a60-81ae-bb72-e6b8211186ac |  | -76.52 | 0 | As Soon As Possible | Auto Scheduled | AMETEK SAP XXL Project Plan Replan MSP Task.csv | AMETEK SAP XXL Project Plan Replan MSP Task.csv__2f0764ccac__2026-05-05T02-44-15-662Z | Kasey Hughes | 43 | True |  | Not started | True  -76.52 0 0 0 0 0 20 | Negative Float, Open Finish Critical 3 0 0  |  |  |  |  |
| 357ae9be-8a60-812a-9276-fa5ac5ca7b77 | 3036 | Error and Defect Mitigation | OTC | 1.2.3.2.13.7 | 1.2.3.2.13.7 | 2026-06-11 | 2026-06-12 | 2026-04-09 | 0 | 6 | 3029 | 1 | 1 | 357ae9be-8a60-81d3-8b8a-d779d8bdfcb8 | 357ae9be-8a60-8134-8734-f23114b01491 | -159.02 | 0 | As Soon As Possible | Auto Scheduled | AMETEK SAP XXL Project Plan Replan MSP Task.csv | AMETEK SAP XXL Project Plan Replan MSP Task.csv__2f0764ccac__2026-05-05T02-44-15-662Z | Ric Haraida | 64 | True |  | Not started | True  -159.02 0 1 0 0 0 26 | Wrong Dependency, Negative Float Critical 5 1 0  |  |  |  |  |
| 357ae9be-8a60-812a-927c-ec4a7b08404c | 995 | Simulate Load | Data | 1.2.1.19.3 | 1.2.1.19.3 | 2026-04-17 | 2026-04-17 | 2026-04-10 | 100 | 5 | 768 | 1 | 1 | 357ae9be-8a60-8148-9b58-f75c580810e7 | 357ae9be-8a60-81b3-a430-ceaf2ab631ad | 0 | 0 | As Soon As Possible | Auto Scheduled | AMETEK SAP XXL Project Plan Replan MSP Task.csv | AMETEK SAP XXL Project Plan Replan MSP Task.csv__2f0764ccac__2026-05-05T02-44-15-662Z | Jyoti Nain |  |  |  | Done | True  0 0 1 0 0 0 18 | Low 0 0 0  |  |  |  |  |
| 357ae9be-8a60-812a-9549-e49160ba8123 | 1123 | Simulate Load | Data | 1.2.1.53.3 | 1.2.1.53.3 | 2026-04-15 | 2026-04-20 | 2026-04-10 | 100 | 5 | 702 | 1 | 1 | 357ae9be-8a60-8199-8fc7-fc43235d4c2e | 357ae9be-8a60-81bc-b0a6-f724853cc828 | 0 | 0 | Finish No Earlier Than | Auto Scheduled | AMETEK SAP XXL Project Plan Replan MSP Task.csv | AMETEK SAP XXL Project Plan Replan MSP Task.csv__2f0764ccac__2026-05-05T02-44-15-662Z | Jyoti Nain |  |  |  | Done | True  0 0 1 0 0 0 18 | Low 0 0 0 True | 2026-04-20 |  |  |  |
| 357ae9be-8a60-812a-9872-cc68c59f780e | 2712 | Pre Load Validation | OTC | 1.2.4.2.50.2 | 1.2.4.2.50.2 | 2026-10-08 | 2026-10-08 | 2026-04-20 | 0 | 6 | 2710 | 1 | 1 | 357ae9be-8a60-81bf-b426-f5111592f00d | 357ae9be-8a60-81f4-9306-de7147a35343 | -43560 | 0 | As Soon As Possible | Auto Scheduled | AMETEK SAP XXL Project Plan Replan MSP Task.csv | AMETEK SAP XXL Project Plan Replan MSP Task.csv__2f0764ccac__2026-05-05T02-44-15-662Z | Ric Haraida | 171 | True |  | Not started | True  -43560 0 1 0 0 0 26 | Negative Float Critical 2 0 0  |  |  |  |  |
| 357ae9be-8a60-812a-992f-ce90e75b58e5 | 3012 | Pre Load Validation | Finance | 1.2.3.2.9.2 | 1.2.3.2.9.2 | 2026-06-11 | 2026-06-12 | 2026-04-09 | 0 | 6 | 3010 | 1 | 0 | 357ae9be-8a60-8190-9840-e23b456390b3 |  | -150.02 | 0 | As Soon As Possible | Auto Scheduled | AMETEK SAP XXL Project Plan Replan MSP Task.csv | AMETEK SAP XXL Project Plan Replan MSP Task.csv__2f0764ccac__2026-05-05T02-44-15-662Z | Kasey Hughes | 64 | True |  | Not started | True  -150.02 0 0 0 0 0 20 | Negative Float, Open Finish Critical 3 0 0  |  |  |  |  |
| 357ae9be-8a60-812a-9b40-e7cf33ecc7f1 | 1814 | RTR_****_Credit Hierarchy | (Unassigned) | 1.2.2.2.21 | 1.2.2.2.21 | 2026-05-25 | 2026-05-27 | 2026-04-13 | 0 | 5 | 2800 | 0 | 0 |  |  | -7.22 | 0 | As Soon As Possible | Auto Scheduled | AMETEK SAP XXL Project Plan Replan MSP Task.csv | AMETEK SAP XXL Project Plan Replan MSP Task.csv__2f0764ccac__2026-05-05T02-44-15-662Z | COULD NOT BE DETERMINED | 44 | True |  | Not started | True  -7.22 0 0 0 0 0 20 | Negative Float High 2 0 0  |  | 1815, 1817, 1816 | True |  |
| 357ae9be-8a60-812a-b365-f66486aec910 | 3097 | Load | Data | 1.2.3.2.22.5 | 1.2.3.2.22.5 | 2026-06-09 | 2026-06-09 | 2026-04-14 | 0 | 6 | 3092 | 1 | 1 | 357ae9be-8a60-817a-8cfb-ef1a68f2b7b5 | 357ae9be-8a60-8166-8560-db211999bb9a | -131.52 | 0 | As Soon As Possible | Auto Scheduled | AMETEK SAP XXL Project Plan Replan MSP Task.csv | AMETEK SAP XXL Project Plan Replan MSP Task.csv__2f0764ccac__2026-05-05T02-44-15-662Z | Jyoti Nain | 56 | True |  | Not started | True  -131.52 0 1 1 316 0 31 | Wrong Successor, Negative Float Critical 5 0 1  |  |  |  |  |
| 357ae9be-8a60-812a-b93b-f3e6d41671c0 | 3357 | Service Orders(Manual) | (Unassigned) | 1.2.4.4.7 | 1.2.4.4.7 | 2026-10-09 | 2026-10-09 | 2026-10-09 | 0 | 5 | 3350 | 1 | 0 | 357ae9be-8a60-8192-a781-cd2922407469 |  | -39.66 | 0 | As Soon As Possible | Auto Scheduled | AMETEK SAP XXL Project Plan Replan MSP Task.csv | AMETEK SAP XXL Project Plan Replan MSP Task.csv__2f0764ccac__2026-05-05T02-44-15-662Z | COULD NOT BE DETERMINED |  |  |  | Not started | True  -39.66 0 0 0 0 0 12 | Negative Float, Open Finish Critical 3 0 0  |  |  |  |  |
| 357ae9be-8a60-812a-bc85-eade38ff850f | 3067 | RTR_CM10_Credit_Management_Role | (Unassigned) | 1.2.3.2.18 | 1.2.3.2.18 | 2026-06-15 | 2026-06-16 | 2026-04-13 | 0 | 5 | 2959 | 0 | 0 |  |  | -22.35 | 0 | As Soon As Possible | Auto Scheduled | AMETEK SAP XXL Project Plan Replan MSP Task.csv | AMETEK SAP XXL Project Plan Replan MSP Task.csv__2f0764ccac__2026-05-05T02-44-15-662Z | COULD NOT BE DETERMINED | 64 | True |  | Not started | True  -22.35 0 0 0 0 0 20 | Negative Float Critical 2 0 0  |  | 3070, 3068, 3072, 3073, 3071, 3069 | True |  |
| 357ae9be-8a60-812a-bd8f-fdc9a1056d2c | 2018 | Post Load Validation | OTC | 1.2.2.2.60.2 | 1.2.2.2.60.2 | 2026-05-18 | 2026-05-18 | 2026-04-06 | 0 | 6 | 2016 | 1 | 0 | 357ae9be-8a60-811d-8bfd-cd3527c19e0d |  | -1.52 | 0 | As Soon As Possible | Auto Scheduled | AMETEK SAP XXL Project Plan Replan MSP Task.csv | AMETEK SAP XXL Project Plan Replan MSP Task.csv__2f0764ccac__2026-05-05T02-44-15-662Z | James VanRiper | 42 | True | True | Not started | True  -1.52 0 0 0 0 0 20 | Negative Float, Open Finish High 3 0 0  |  |  |  |  |
| 357ae9be-8a60-812a-be19-f6e901a7e23a | 894 | Security Manual Tasks | Security | 1.1.1.7.1.8 | 1.1.1.7.1.8 | 2026-06-16 | 2026-06-16 | 2026-07-06 | 0 | 6 | 3338 | 1 | 0 | 357ae9be-8a60-812f-b111-c6112e6169d2 |  | -36.25 | 0 | As Soon As Possible | Auto Scheduled | AMETEK SAP XXL Project Plan Replan MSP Task.csv | AMETEK SAP XXL Project Plan Replan MSP Task.csv__2f0764ccac__2026-05-05T02-44-15-662Z | Manjunatha Umesha |  |  |  | Not started | True  -36.25 0 0 0 0 0 12 | Negative Float, Open Finish Critical 3 0 0  |  |  |  |  |
| 357ae9be-8a60-812a-be7b-e2ffe4bd4e80 | 1210 | Run report /SAPSLL/EMB_CNTRY_INIT | OTC | 1.2.1.66.1 | 1.2.1.66.1 | 2026-04-13 | 2026-04-13 | 2026-04-13 | 100 | 5 | 1209 | 1 | 1 | 357ae9be-8a60-8137-9a4e-ee622e4c3bd2 | 357ae9be-8a60-8100-bdcf-cb2f255750e1 | 0 | 0 | As Soon As Possible | Auto Scheduled | AMETEK SAP XXL Project Plan Replan MSP Task.csv | AMETEK SAP XXL Project Plan Replan MSP Task.csv__2f0764ccac__2026-05-05T02-44-15-662Z | James VanRiper |  |  |  | Done | True  0 0 1 0 0 0 18 | Low 0 0 0  |  |  |  |  |
| 357ae9be-8a60-812a-bf60-cd37cd2d76df | 1764 | Post Load Validation | OTC | 1.2.2.2.13.9 | 1.2.2.2.13.9 | 2026-05-22 | 2026-05-25 | 2026-04-10 | 0 | 6 | 1755 | 1 | 0 | 357ae9be-8a60-81cb-b45a-fcdbf16cbf67 |  | -39.02 | 0 | As Soon As Possible | Auto Scheduled | AMETEK SAP XXL Project Plan Replan MSP Task.csv | AMETEK SAP XXL Project Plan Replan MSP Task.csv__2f0764ccac__2026-05-05T02-44-15-662Z | Ric Haraida | 45 | True |  | Not started | True  -39.02 0 0 0 0 0 20 | Negative Float, Open Finish Critical 3 0 0  |  |  |  |  |
| 357ae9be-8a60-812b-83a9-e00970db3d53 | 3196 | Post Load Validation | PTM | 1.2.3.2.36.6 | 1.2.3.2.36.6 | 2026-06-08 | 2026-06-08 | 2026-04-21 | 0 | 6 | 3190 | 0 | 0 |  |  | -122.52 | 0 | As Soon As Possible | Auto Scheduled | AMETEK SAP XXL Project Plan Replan MSP Task.csv | AMETEK SAP XXL Project Plan Replan MSP Task.csv__2f0764ccac__2026-05-05T02-44-15-662Z | Brad Meseck | 48 | True |  | Not started | True  -122.52 0 0 0 0 0 20 | Negative Float, Open Start, Open Finish Critical 4 0 0  |  |  |  |  |
| 357ae9be-8a60-812b-998f-d08749175d85 | 4486 | Post Load Validation | OTC | 1.2.5.2.57.2 | 1.2.5.2.57.2 | 2026-09-25 | 2026-09-25 | 2026-04-15 | 0 | 6 | 4484 | 1 | 0 | 357ae9be-8a60-8110-9112-e95f30836724 |  | -650.52 | 0 | As Soon As Possible | Auto Scheduled | AMETEK SAP XXL Project Plan Replan MSP Task.csv | AMETEK SAP XXL Project Plan Replan MSP Task.csv__2f0764ccac__2026-05-05T02-44-15-662Z | James VanRiper | 163 | True |  | Not started | True  -650.52 0 0 0 0 0 20 | Negative Float, Open Finish Critical 3 0 0  |  |  |  |  |
| 357ae9be-8a60-812b-99d2-f7a1aa058a4c | 3330 | Inventory | (Unassigned) | 1.2.3.4.1 | 1.2.3.4.1 | 2026-06-19 | 2026-06-22 | 2026-06-22 | 0 | 5 | 3326 | 1 | 1 | 357ae9be-8a60-8132-b9d5-c57d0f14703b | 357ae9be-8a60-8185-a59f-d11f46aa5b30 | -196.52 | 0 | As Soon As Possible | Auto Scheduled | AMETEK SAP XXL Project Plan Replan MSP Task.csv | AMETEK SAP XXL Project Plan Replan MSP Task.csv__2f0764ccac__2026-05-05T02-44-15-662Z | COULD NOT BE DETERMINED |  |  |  | Not started | True  -196.52 0 1 1 440 0 23 | Wrong Successor, Negative Float Critical 5 0 1  |  |  |  |  |
| 357ae9be-8a60-812b-a8ef-c64106c6d28a | 1972 | OTC_CM21_CMIR | OTC | 1.2.2.2.50 | 1.2.2.2.50 | 2026-05-28 | 2026-05-28 | 2026-04-21 | 0 | 5 | 2800 | 0 | 0 |  |  | -8.41 | 0 | As Soon As Possible | Auto Scheduled | AMETEK SAP XXL Project Plan Replan MSP Task.csv | AMETEK SAP XXL Project Plan Replan MSP Task.csv__2f0764ccac__2026-05-05T02-44-15-662Z | Anitha Jothi | 37 | True |  | Not started | True  -8.41 0 0 0 0 0 20 | Negative Float High 2 0 0  |  | 1978, 1976, 1974, 1977, 1973, 1975 | True |  |
| 357ae9be-8a60-812c-8a2b-c7867ae1ecef | 1778 | Simulate Load | Data | 1.2.2.2.15.3 | 1.2.2.2.15.3 | 2026-05-25 | 2026-05-26 | 2026-04-13 | 0 | 6 | 1775 | 1 | 1 | 357ae9be-8a60-811e-9d3e-e58033d8759e | 357ae9be-8a60-81da-94bd-c9d0d5294259 | -76.52 | 0 | As Soon As Possible | Auto Scheduled | AMETEK SAP XXL Project Plan Replan MSP Task.csv | AMETEK SAP XXL Project Plan Replan MSP Task.csv__2f0764ccac__2026-05-05T02-44-15-662Z | Jyoti Nain | 43 | True |  | Not started | True  -76.52 0 1 0 0 0 26 | Wrong Dependency, Negative Float Critical 5 1 0  |  |  |  |  |
| 357ae9be-8a60-812c-90c1-fea025db6b85 | 1022 | Simulate Load | Data | 1.2.1.25.3 | 1.2.1.25.3 | 2026-04-14 | 2026-04-14 | 2026-04-14 | 100 | 5 | 741 | 1 | 1 | 357ae9be-8a60-81e3-992f-c01cbcd7f276 | 357ae9be-8a60-81fc-9268-d7f795d0883f | 0 | 0 | As Soon As Possible | Auto Scheduled | AMETEK SAP XXL Project Plan Replan MSP Task.csv | AMETEK SAP XXL Project Plan Replan MSP Task.csv__2f0764ccac__2026-05-05T02-44-15-662Z | Jyoti Nain |  |  |  | Done | True  0 0 1 0 0 0 18 | Low 0 0 0  |  |  |  |  |
| 357ae9be-8a60-812c-9224-e51f776ad9de | 712 | PTM_CM50_Material Class | PTM | 1.2.1.54 | 1.2.1.54 | 2026-04-16 | 2026-04-20 | 2026-04-16 | 100 | 4 | 425 | 0 | 0 |  |  | 0 | 0 | As Soon As Possible | Auto Scheduled | AMETEK SAP XXL Project Plan Replan MSP Task.csv | AMETEK SAP XXL Project Plan Replan MSP Task.csv__2f0764ccac__2026-05-05T02-44-15-662Z | Brad Meseck |  |  |  | Done | True  0 0 0 0 0 0 12 | Low 0 0 0  |  | 1127, 1128, 1129 | True |  |
| 357ae9be-8a60-812c-9462-efeb1a186968 | 958 | Load File Staged and Posted "Ready" | Finance | 1.2.1.4.1 | 1.2.1.4.1 | 2026-04-07 | 2026-04-07 | 2026-04-07 | 100 | 5 | 740 | 1 | 1 | 357ae9be-8a60-8150-91fa-f9e50f826277 | 357ae9be-8a60-81e2-a260-eb6621be81ab | 0 | 0 | Start No Earlier Than | Auto Scheduled | AMETEK SAP XXL Project Plan Replan MSP Task.csv | AMETEK SAP XXL Project Plan Replan MSP Task.csv__2f0764ccac__2026-05-05T02-44-15-662Z | Kasey Hughes |  |  |  | Done | True  0 0 1 0 0 0 18 | Low 0 0 0 True | 2026-04-06 |  |  |  |
| 357ae9be-8a60-812c-9b9d-c71a25cc272f | 4162 | Master Data Loads | Data | 1.2.5.2 | 1.2.5.2 | 2026-09-24 | 2026-10-01 | 2026-10-01 | 0 | 4 | 4160 | 1 | 1 | 357ae9be-8a60-81e0-9d16-ea967b28bc5d | 357ae9be-8a60-81d2-b413-e8ebd9ac365c | 0 | 0 | As Soon As Possible | Manually Scheduled | AMETEK SAP XXL Project Plan Replan MSP Task.csv | AMETEK SAP XXL Project Plan Replan MSP Task.csv__2f0764ccac__2026-05-05T02-44-15-662Z | Jyoti Nain |  |  |  | Not started | True  0 0 1 0 0 0 18 | Low 0 0 0  |  |  | True |  |
| 357ae9be-8a60-812c-af14-cc7bf0c9bdc6 | 685 | Functional Smoke Testing | TESTING | 1.3.3.5.2 | 1.3.3.5.2 | 2026-04-20 | 2026-04-29 | 2026-04-24 | 100 | 5 | 19 | 1 | 0 | 357ae9be-8a60-8183-98b7-da108cd43291 |  | 0 | 0 | Start No Earlier Than | Auto Scheduled | AMETEK SAP XXL Project Plan Replan MSP Task.csv | AMETEK SAP XXL Project Plan Replan MSP Task.csv__2f0764ccac__2026-05-05T02-44-15-662Z | Kishore Kakarla |  |  |  | Done | True  0 0 0 0 0 0 12 | Low 0 0 0 True | 2026-04-20 |  |  |  |
| 357ae9be-8a60-812c-b36d-c2eccfdb2868 | 2824 | Open AP | (Unassigned) | 1.2.2.4.3 | 1.2.2.4.3 | 2026-10-09 | 2026-10-12 | 2026-10-12 | 0 | 5 | 2801 | 1 | 1 | 357ae9be-8a60-81af-977e-ee2c867478d4 | 357ae9be-8a60-81b6-b8fc-cdac9ff3f6b1 | -726 | 0 | As Soon As Possible | Auto Scheduled | AMETEK SAP XXL Project Plan Replan MSP Task.csv | AMETEK SAP XXL Project Plan Replan MSP Task.csv__2f0764ccac__2026-05-05T02-44-15-662Z | COULD NOT BE DETERMINED |  |  |  | Not started | True  -726 0 1 0 0 0 18 | Negative Float Critical 2 0 0  |  |  |  |  |
| 357ae9be-8a60-812c-b726-c9729f4a8c39 | 4293 | Load | Finance | 1.2.5.2.21.2 | 1.2.5.2.21.2 | 2026-10-02 | 2026-10-02 | 2026-04-13 | 0 | 6 | 4291 | 1 | 1 | 357ae9be-8a60-81cc-a542-d62954825610 | 357ae9be-8a60-81ba-80c3-cd008aac624f | -699.77 | 0 | As Soon As Possible | Auto Scheduled | AMETEK SAP XXL Project Plan Replan MSP Task.csv | AMETEK SAP XXL Project Plan Replan MSP Task.csv__2f0764ccac__2026-05-05T02-44-15-662Z | Kasey Hughes | 172 | True |  | Not started | True  -699.77 0 1 0 0 0 26 | Negative Float Critical 2 0 0  |  |  |  |  |
| 357ae9be-8a60-812c-b98c-cb719b38ae4e | 3281 | GTS - Vendors initial load from S4 (Run Interface) | (Unassigned) | 1.2.3.2.57 | 1.2.3.2.57 | 2026-06-09 | 2026-06-09 | 2026-04-15 | 0 | 5 | 2959 | 0 | 0 |  |  | -16.44 | 0 | As Soon As Possible | Auto Scheduled | AMETEK SAP XXL Project Plan Replan MSP Task.csv | AMETEK SAP XXL Project Plan Replan MSP Task.csv__2f0764ccac__2026-05-05T02-44-15-662Z | COULD NOT BE DETERMINED | 55 | True |  | Not started | True  -16.44 0 0 0 0 0 20 | Negative Float Critical 2 0 0  |  | 3283, 3282 | True |  |
| 357ae9be-8a60-812d-83f5-d6ccdb92ab00 | 3261 | Error and Defect Mitigation | Finance | 1.2.3.2.52.4 | 1.2.3.2.52.4 | 2026-06-09 | 2026-06-11 | 2026-04-10 | 0 | 6 | 3257 | 1 | 1 | 357ae9be-8a60-8164-bed5-e3e983e68023 | 357ae9be-8a60-8145-8155-f11cf3d89c7e | -149.52 | 0 | As Soon As Possible | Auto Scheduled | AMETEK SAP XXL Project Plan Replan MSP Task.csv | AMETEK SAP XXL Project Plan Replan MSP Task.csv__2f0764ccac__2026-05-05T02-44-15-662Z | Kasey Hughes | 62 | True |  | Not started | True  -149.52 0 1 0 0 0 26 | Negative Float Critical 2 0 0  |  |  |  |  |
| 357ae9be-8a60-812d-8922-ca289e7c92b4 | 2673 | VC_Dependency Nets | (Unassigned) | 1.2.4.2.41 | 1.2.4.2.41 | 2026-09-29 | 2026-09-29 | 2026-04-16 | 0 | 5 | 2898 | 0 | 0 |  |  | -84.03 | 0 | As Soon As Possible | Auto Scheduled | AMETEK SAP XXL Project Plan Replan MSP Task.csv | AMETEK SAP XXL Project Plan Replan MSP Task.csv__2f0764ccac__2026-05-05T02-44-15-662Z | COULD NOT BE DETERMINED | 166 | True |  | Not started | True  -84.03 0 0 0 0 0 20 | Negative Float Critical 2 0 0  |  | 2674, 2675 | True |  |

| id | uid | name | workstream | outlineNumber | wbs | start | finish | baselineFinish | pct | outlineLevel | parentUid | predCount | sucCount | predIds | sucIds | totalSlackDaysRaw | freeSlackDaysRaw | constraintType | taskMode | mspSourceFile | mspImportVersion | assignedTo | slipDays | isSlipped | isDue14 | status | cpm | scheduleQuality | constraintDate | childUids | isSummary |
| --- | --- | --- | --- | --- | --- | --- | --- | --- | --- | --- | --- | --- | --- | --- | --- | --- | --- | --- | --- | --- | --- | --- | --- | --- | --- | --- | --- | --- | --- | --- | --- |
| 357ae9be-8a60-812d-92c7-c949984a9066 | 4426 | Post Load Validation | PTM | 1.2.5.2.45.2 | 1.2.5.2.45.2 | 2026-10-01 | 2026-10-01 | 2026-04-17 | 0 | 6 | 4424 | 1 | 0 | 357ae9be-8a60-81e2-8a1c-fd0b66a30779 |  | -688.02 | 0 | As Soon As Possible | Auto Scheduled | AMETEK SAP XXL Project Plan Replan MSP Task.csv | AMETEK SAP XXL Project Plan Replan MSP Task.csv__2f0764ccac__2026-05-05T02-44-15-662Z | Eric Heisler | 167 | True |  | Not started | True  -688.02 0 0 0 0 0 20 | Negative Float, Open Finish Critical 3 0 0  |  |  |  |
| 357ae9be-8a60-812d-b566-d05de7484592 | 1765 | OTC_CM19_Customer_Master - Sold-To | OTC | 1.2.2.2.14 | 1.2.2.2.14 | 2026-05-21 | 2026-05-25 | 2026-04-10 | 0 | 5 | 2800 | 0 | 0 |  |  | -9.19 | 0 | As Soon As Possible | Auto Scheduled | AMETEK SAP XXL Project Plan Replan MSP Task.csv | AMETEK SAP XXL Project Plan Replan MSP Task.csv__2f0764ccac__2026-05-05T02-44-15-662Z | Anitha Jothi | 45 | True |  | Not started | True  -9.19 0 0 0 0 0 20 | Negative Float High 2 0 0  |  | 1769, 1770, 1767, 1773, 1772, 1771, 1774, 1766, 1768 | True |
| 357ae9be-8a60-812d-b600-e5a7b358807f | 3273 | Load | Data | 1.2.3.2.54.5 | 1.2.3.2.54.5 | 2026-06-12 | 2026-06-12 | 2026-04-17 | 0 | 6 | 3268 | 1 | 1 | 357ae9be-8a60-81b4-b17c-f10012398136 | 357ae9be-8a60-81ac-be91-c36c956026cb | -159.27 | 0 | As Soon As Possible | Auto Scheduled | AMETEK SAP XXL Project Plan Replan MSP Task.csv | AMETEK SAP XXL Project Plan Replan MSP Task.csv__2f0764ccac__2026-05-05T02-44-15-662Z | Jyoti Nain | 56 | True |  | Not started | True  -159.27 0 1 0 0 0 26 | Negative Float Critical 2 0 0  |  |  |  |
| 357ae9be-8a60-812d-bf6c-d702e922b6b0 | 3354 | Bank and Cash | (Unassigned) | 1.2.4.4.4 | 1.2.4.4.4 | 2026-10-12 | 2026-10-12 | 2026-10-12 | 0 | 5 | 3350 | 1 | 0 | 357ae9be-8a60-8120-9118-f98a324f3ee2 |  | -325.25 | 0 | As Soon As Possible | Auto Scheduled | AMETEK SAP XXL Project Plan Replan MSP Task.csv | AMETEK SAP XXL Project Plan Replan MSP Task.csv__2f0764ccac__2026-05-05T02-44-15-662Z | COULD NOT BE DETERMINED |  |  |  | Not started | True  -325.25 0 0 0 0 0 12 | Negative Float, Open Finish Critical 3 0 0  |  |  |  |
| 357ae9be-8a60-812e-8799-e0dabe267ef6 | 2643 | Simulate Load | Data | 1.2.4.2.34.3 | 1.2.4.2.34.3 | 2026-10-01 | 2026-10-01 | 2026-04-17 | 0 | 6 | 2640 | 1 | 1 | 357ae9be-8a60-81c9-86d7-f174eebfb663 | 357ae9be-8a60-8130-a708-fc4fae839885 | -689.25 | 0 | As Soon As Possible | Auto Scheduled | AMETEK SAP XXL Project Plan Replan MSP Task.csv | AMETEK SAP XXL Project Plan Replan MSP Task.csv__2f0764ccac__2026-05-05T02-44-15-662Z | Jyoti Nain | 167 | True |  | Not started | True  -689.25 0 1 0 0 0 26 | Negative Float Critical 2 0 0  |  |  |  |
| 357ae9be-8a60-812e-887f-fcb8605465dd | 2032 | Run report /SAPSLL/EMB_CNTRY_INIT | OTC | 1.2.2.2.65.1 | 1.2.2.2.65.1 | 2026-05-19 | 2026-05-19 | 2026-04-13 | 0 | 6 | 2031 | 1 | 1 | 357ae9be-8a60-81c7-a956-ec6d8b082ff4 | 357ae9be-8a60-8106-803e-e6f54de69a42 | -11.52 | 0 | As Soon As Possible | Auto Scheduled | AMETEK SAP XXL Project Plan Replan MSP Task.csv | AMETEK SAP XXL Project Plan Replan MSP Task.csv__2f0764ccac__2026-05-05T02-44-15-662Z | James VanRiper | 36 | True | True | Not started | True  -11.52 0 1 0 0 0 26 | Negative Float Critical 2 0 0  |  |  |  |
| 357ae9be-8a60-812e-9301-eb5e05ef0513 | 3289 | Post Load Validation | OTC | 1.2.3.2.59.2 | 1.2.3.2.59.2 | 2026-06-15 | 2026-06-16 | 2026-04-16 | 0 | 6 | 3287 | 1 | 1 | 357ae9be-8a60-81b7-a4bf-f8b21972d7fa | 357ae9be-8a60-81a1-be62-f2042da3ef7f | -190.27 | 0 | As Soon As Possible | Auto Scheduled | AMETEK SAP XXL Project Plan Replan MSP Task.csv | AMETEK SAP XXL Project Plan Replan MSP Task.csv__2f0764ccac__2026-05-05T02-44-15-662Z | James VanRiper | 61 | True |  | Not started | True  -190.27 0 1 0 0 0 26 | Negative Float Critical 2 0 0  |  |  |  |
| 357ae9be-8a60-812e-aef8-ebc1c25bbcfe | 2054 | PMO Authorization to Start Data Loads | PMO | 1.2.3.1 | 1.2.3.1 | 2026-06-08 | 2026-06-08 | 2026-04-06 | 0 | 4 | 2053 | 1 | 1 | 357ae9be-8a60-819f-b464-f94a2b15061f | 357ae9be-8a60-8139-b032-ec9ebefdeac6 | 0 | 0 | Must Start On | Auto Scheduled | AMETEK SAP XXL Project Plan Replan MSP Task.csv | AMETEK SAP XXL Project Plan Replan MSP Task.csv__2f0764ccac__2026-05-05T02-44-15-662Z | Mark George | 63 | True |  | Not started | True  0 0 1 0 0 0 26 | Low 0 0 0 True | 2026-06-08 |  |  |
| 357ae9be-8a60-812e-b105-d4bd153b4c77 | 1955 | Load | Data | 1.2.2.2.46.5 | 1.2.2.2.46.5 | 2026-05-22 | 2026-05-25 | 2026-04-16 | 0 | 6 | 1950 | 1 | 1 | 357ae9be-8a60-81be-9cc0-e30dca35ec61 | 357ae9be-8a60-815f-beaf-cd46247f5cb3 | -67.27 | 0 | As Soon As Possible | Auto Scheduled | AMETEK SAP XXL Project Plan Replan MSP Task.csv | AMETEK SAP XXL Project Plan Replan MSP Task.csv__2f0764ccac__2026-05-05T02-44-15-662Z | Jyoti Nain | 39 | True |  | Not started | True  -67.27 0 1 0 0 0 26 | Negative Float Critical 2 0 0  |  |  |  |
| 357ae9be-8a60-812e-b5ed-f80b0c96b932 | 1694 | RTR_CM01_GL_Account_Master to CC 1000 | (Unassigned) | 1.2.2.2.3 | 1.2.2.2.3 | 2026-05-19 | 2026-05-22 | 2026-04-09 | 0 | 5 | 2800 | 0 | 1 |  | 357ae9be-8a60-8115-bdcf-c8d2d153359b | -9.56 | 0 | As Soon As Possible | Auto Scheduled | AMETEK SAP XXL Project Plan Replan MSP Task.csv | AMETEK SAP XXL Project Plan Replan MSP Task.csv__2f0764ccac__2026-05-05T02-44-15-662Z | COULD NOT BE DETERMINED | 43 | True |  | Not started | True  -9.56 0 1 0 0 0 26 | Wrong Successor, Negative Float High 5 0 1  |  | 1702, 1700, 1696, 1698, 1699, 1701, 1695, 1697 | True |
| 357ae9be-8a60-812f-83a1-d04c21737d53 | 1186 | Load Descartes XML File | OTC | 1.2.1.63.1 | 1.2.1.63.1 | 2026-04-16 | 2026-04-16 | 2026-04-16 | 100 | 5 | 706 | 0 | 1 |  | 357ae9be-8a60-81af-8373-c4a212e21f7e | 0 | 0 | As Soon As Possible | Auto Scheduled | AMETEK SAP XXL Project Plan Replan MSP Task.csv | AMETEK SAP XXL Project Plan Replan MSP Task.csv__2f0764ccac__2026-05-05T02-44-15-662Z | James VanRiper |  |  |  | Done | True  0 0 1 0 0 0 18 | Low 0 0 0  |  |  |  |
| 357ae9be-8a60-812f-85bf-d49c1d4fc08a | 4196 | Service Enterprise Setup | OTC | 1.2.5.2.6.2 | 1.2.5.2.6.2 | 2026-09-30 | 2026-10-07 | 2026-04-15 | 0 | 6 | 4194 | 3 | 0 | 357ae9be-8a60-81c4-ae97-e675a141bed2, 357ae9be-8a60-811d-8a9c-d1863710bf2c, 357ae9be-8a60-815f-8597-d72213c75c19 |  | -89.13 | 0 | As Soon As Possible | Auto Scheduled | AMETEK SAP XXL Project Plan Replan MSP Task.csv | AMETEK SAP XXL Project Plan Replan MSP Task.csv__2f0764ccac__2026-05-05T02-44-15-662Z | Keith Riley | 175 | True |  | Not started | True  -89.13 0 0 0 0 0 20 | Negative Float, Open Finish Critical 3 0 0  |  |  |  |
| 357ae9be-8a60-812f-9f5f-cdba3a9319ed | 3092 | PTP_CM27_BP_Intercompany Supplier | PTP | 1.2.3.2.22 | 1.2.3.2.22 | 2026-06-08 | 2026-06-09 | 2026-04-14 | 0 | 5 | 2959 | 0 | 0 |  |  | -16.44 | 0 | As Soon As Possible | Auto Scheduled | AMETEK SAP XXL Project Plan Replan MSP Task.csv | AMETEK SAP XXL Project Plan Replan MSP Task.csv__2f0764ccac__2026-05-05T02-44-15-662Z | Muniraju Surappachari | 56 | True |  | Not started | True  -16.44 0 0 0 0 0 20 | Negative Float Critical 2 0 0  |  | 3097, 3096, 3093, 3098, 3095, 3094 | True |
| 357ae9be-8a60-812f-a2a8-e997f11b8def | 4415 | VC_Configuration Profiles | (Unassigned) | 1.2.5.2.42 | 1.2.5.2.42 | 2026-09-29 | 2026-09-29 | 2026-04-16 | 0 | 5 | 4162 | 0 | 0 |  |  | -86 | 0 | As Soon As Possible | Auto Scheduled | AMETEK SAP XXL Project Plan Replan MSP Task.csv | AMETEK SAP XXL Project Plan Replan MSP Task.csv__2f0764ccac__2026-05-05T02-44-15-662Z | COULD NOT BE DETERMINED | 166 | True |  | Not started | True  -86 0 0 0 0 0 20 | Negative Float Critical 2 0 0  |  | 4416, 4417 | True |
| 357ae9be-8a60-812f-b111-c6112e6169d2 | 893 | Security Transports | Security | 1.1.1.7.1.7 | 1.1.1.7.1.7 | 2026-06-15 | 2026-06-15 | 2026-07-03 | 0 | 6 | 3338 | 2 | 2 | 357ae9be-8a60-811c-9422-fe433027e1dc, 357ae9be-8a60-814f-b388-fd6c98f507a0 | 357ae9be-8a60-816c-a116-e1dc875ac858, 357ae9be-8a60-812a-be19-f6e901a7e23a | -36.38 | 0 | As Soon As Possible | Auto Scheduled | AMETEK SAP XXL Project Plan Replan MSP Task.csv | AMETEK SAP XXL Project Plan Replan MSP Task.csv__2f0764ccac__2026-05-05T02-44-15-662Z | Manjunatha Umesha |  |  |  | Not started | True  -36.38 0 2 0 0 0 24 | Negative Float Critical 2 0 0  |  |  |  |
| 357ae9be-8a60-812f-bd16-e6cc1920554e | 1310 | Import Group 5 - Config to support dev workbench | Development | 1.1.1.6.2.8 | 1.1.1.6.2.8 | 2026-05-29 | 2026-06-01 | 2026-05-28 | 0 | 6 | 1302 | 1 | 0 | 357ae9be-8a60-816c-b986-e85b6ee5928d |  | 36.5 | 36.5 | As Soon As Possible | Auto Scheduled | AMETEK SAP XXL Project Plan Replan MSP Task.csv | AMETEK SAP XXL Project Plan Replan MSP Task.csv__2f0764ccac__2026-05-05T02-44-15-662Z | Bijoykrishna Das | 4 | True |  | Not started |   36.5 36.5 0 0 0 0 8 | Open Finish Medium 1 0 0  |  |  |  |
| 357ae9be-8a60-8130-8082-ca9bdc44dd9e | 3179 | Simulate Load | Data | 1.2.3.2.34.3 | 1.2.3.2.34.3 | 2026-06-15 | 2026-06-15 | 2026-04-17 | 0 | 6 | 3176 | 1 | 1 | 357ae9be-8a60-8190-b7c8-fe04c4cd48ef | 357ae9be-8a60-8143-b3be-daee569dd8cf | -167.27 | 0 | As Soon As Possible | Auto Scheduled | AMETEK SAP XXL Project Plan Replan MSP Task.csv | AMETEK SAP XXL Project Plan Replan MSP Task.csv__2f0764ccac__2026-05-05T02-44-15-662Z | Jyoti Nain | 59 | True |  | Not started | True  -167.27 0 1 0 0 0 26 | Negative Float Critical 2 0 0  |  |  |  |
| 357ae9be-8a60-8130-88eb-ce801b94b7af | 1056 | Extract File | Data | 1.2.1.31.1 | 1.2.1.31.1 | 2026-04-15 | 2026-04-16 | 2026-04-16 | 100 | 5 | 694 | 1 | 1 | 357ae9be-8a60-8167-9e4b-e3aee0aa7005 | 357ae9be-8a60-81aa-880d-e1a162854cd1 | 0 | 0 | As Soon As Possible | Auto Scheduled | AMETEK SAP XXL Project Plan Replan MSP Task.csv | AMETEK SAP XXL Project Plan Replan MSP Task.csv__2f0764ccac__2026-05-05T02-44-15-662Z | Jyoti Nain |  |  |  | Done | True  0 0 1 1 399 0 23 | Wrong Dependency, Wrong Successor Critical 6 1 1  |  |  |  |
| 357ae9be-8a60-8130-8f09-d86870c31f26 | 2706 | OTC_CM22_Pricing_Condition | OTC | 1.2.4.2.49 | 1.2.4.2.49 | 2026-10-07 | 2026-10-08 | 2026-04-21 | 0 | 5 | 2898 | 0 | 0 |  |  | -90.75 | 0 | As Soon As Possible | Auto Scheduled | AMETEK SAP XXL Project Plan Replan MSP Task.csv | AMETEK SAP XXL Project Plan Replan MSP Task.csv__2f0764ccac__2026-05-05T02-44-15-662Z | Anitha Jothi | 170 | True |  | Not started | True  -90.75 0 0 0 0 0 20 | Negative Float Critical 2 0 0  |  | 2709, 2707, 2708 | True |
| 357ae9be-8a60-8130-9242-df0d4936c181 | 104 | Security Role for Data Team | Security | 1.1.1.3.2 | 1.1.1.3.2 | 2025-05-08 | 2025-05-08 | 2025-05-08 | 100 | 5 | 87 | 1 | 0 | 357ae9be-8a60-810b-ae6c-e77ada18665c |  | 0 | 0 | As Soon As Possible | Auto Scheduled | AMETEK SAP XXL Project Plan Replan MSP Task.csv | AMETEK SAP XXL Project Plan Replan MSP Task.csv__2f0764ccac__2026-05-05T02-44-15-662Z | Manjunatha Umesha |  |  |  | Done | True  0 0 0 0 0 0 12 | Low 0 0 0  |  |  |  |
| 357ae9be-8a60-8130-93f3-fa1dd9b29a21 | 4487 | GTS - ECCN - Create | (Unassigned) | 1.2.5.2.58 | 1.2.5.2.58 | 2026-09-24 | 2026-09-25 | 2026-04-13 | 0 | 5 | 4162 | 0 | 0 |  |  | -81.31 | 0 | As Soon As Possible | Auto Scheduled | AMETEK SAP XXL Project Plan Replan MSP Task.csv | AMETEK SAP XXL Project Plan Replan MSP Task.csv__2f0764ccac__2026-05-05T02-44-15-662Z | COULD NOT BE DETERMINED | 165 | True |  | Not started | True  -81.31 0 0 0 0 0 20 | Negative Float Critical 2 0 0  |  | 4489, 4488 | True |
| 357ae9be-8a60-8130-9642-d24a1c6dea80 | 3310 | Load Descartes XML File | OTC | 1.2.3.2.66.1 | 1.2.3.2.66.1 | 2026-06-16 | 2026-06-16 | 2026-04-16 | 0 | 6 | 3309 | 1 | 2 | 357ae9be-8a60-81cc-965d-c842e3af70a7 | 357ae9be-8a60-8108-90f1-c7a2d99193b6, 357ae9be-8a60-8172-95d7-f08cb5837bec | -171.02 | 0 | As Soon As Possible | Auto Scheduled | AMETEK SAP XXL Project Plan Replan MSP Task.csv | AMETEK SAP XXL Project Plan Replan MSP Task.csv__2f0764ccac__2026-05-05T02-44-15-662Z | James VanRiper | 61 | True |  | Not started | True  -171.02 0 2 2 488 0 37 | Wrong Dependency, Wrong Successor, Negative Float Critical 8 1 2  |  |  |  |
| 357ae9be-8a60-8130-a708-fc4fae839885 | 2644 | Error and Defect Mitigation | PTM | 1.2.4.2.34.4 | 1.2.4.2.34.4 | 2026-10-01 | 2026-10-01 | 2026-04-17 | 0 | 6 | 2640 | 1 | 1 | 357ae9be-8a60-812e-8799-e0dabe267ef6 | 357ae9be-8a60-81ea-8184-c43de0d7343d | -689.25 | 0 | As Soon As Possible | Auto Scheduled | AMETEK SAP XXL Project Plan Replan MSP Task.csv | AMETEK SAP XXL Project Plan Replan MSP Task.csv__2f0764ccac__2026-05-05T02-44-15-662Z | Brad Meseck | 167 | True |  | Not started | True  -689.25 0 1 0 0 0 26 | Negative Float Critical 2 0 0  |  |  |  |
| 357ae9be-8a60-8130-accb-cf794d8250fb | 4525 | Simulate Load | Data | 1.2.5.2.68.3 | 1.2.5.2.68.3 | 2026-09-24 | 2026-09-24 | 2026-04-16 | 0 | 6 | 4522 | 1 | 1 | 357ae9be-8a60-81c5-b944-ed2982d6ba08 | 357ae9be-8a60-81f5-9ed1-d7da670598d0 | -651.52 | 0 | As Soon As Possible | Auto Scheduled | AMETEK SAP XXL Project Plan Replan MSP Task.csv | AMETEK SAP XXL Project Plan Replan MSP Task.csv__2f0764ccac__2026-05-05T02-44-15-662Z | Jyoti Nain | 161 | True |  | Not started | True  -651.52 0 1 0 0 0 26 | Negative Float Critical 2 0 0  |  |  |  |
| 357ae9be-8a60-8130-b24a-c24da8ce42f4 | 4477 | Post Load Validation | PTM | 1.2.5.2.54.6 | 1.2.5.2.54.6 | 2026-09-30 | 2026-10-01 | 2026-04-17 | 0 | 6 | 4471 | 1 | 0 | 357ae9be-8a60-8115-9952-f4b3cd512c4b |  | -681.27 | 0 | As Soon As Possible | Auto Scheduled | AMETEK SAP XXL Project Plan Replan MSP Task.csv | AMETEK SAP XXL Project Plan Replan MSP Task.csv__2f0764ccac__2026-05-05T02-44-15-662Z | Brad Meseck | 167 | True |  | Not started | True  -681.27 0 0 0 0 0 20 | Negative Float, Open Finish Critical 3 0 0  |  |  |  |
| 357ae9be-8a60-8131-8753-fa3c6105d009 | 4383 | Error and Defect Mitigation | PTM | 1.2.5.2.34.4 | 1.2.5.2.34.4 | 2026-10-01 | 2026-10-01 | 2026-04-17 | 0 | 6 | 4379 | 1 | 1 | 357ae9be-8a60-81dd-9c8f-d92eb6f9f088 | 357ae9be-8a60-8140-abbf-f82e2324b1c3 | -689.27 | 0 | As Soon As Possible | Auto Scheduled | AMETEK SAP XXL Project Plan Replan MSP Task.csv | AMETEK SAP XXL Project Plan Replan MSP Task.csv__2f0764ccac__2026-05-05T02-44-15-662Z | Brad Meseck | 167 | True |  | Not started | True  -689.27 0 1 0 0 0 26 | Negative Float Critical 2 0 0  |  |  |  |
| 357ae9be-8a60-8131-9cc8-e4548099f127 | 4506 | Load | OTC | 1.2.5.2.64.1 | 1.2.5.2.64.1 | 2026-10-02 | 2026-10-02 | 2025-03-13 | 0 | 6 | 4505 | 1 | 1 | 357ae9be-8a60-81a1-9812-fee776d84020 | 357ae9be-8a60-81be-94ed-e3eff74ac789 | -691.02 | 0 | As Soon As Possible | Auto Scheduled | AMETEK SAP XXL Project Plan Replan MSP Task.csv | AMETEK SAP XXL Project Plan Replan MSP Task.csv__2f0764ccac__2026-05-05T02-44-15-662Z | James VanRiper | 568 | True |  | Not started | True  -691.02 0 1 0 0 0 26 | Wrong Dependency, Negative Float Critical 5 1 0  |  |  |  |
| 357ae9be-8a60-8131-9dcc-cf749a2413f9 | 1993 | Post Load Validation | PTM | 1.2.2.2.53.3 | 1.2.2.2.53.3 | 2026-05-22 | 2026-05-26 | 2026-04-16 | 0 | 6 | 1990 | 1 | 0 | 357ae9be-8a60-818f-a2a3-c1bd9d09ed72 |  | -46.77 | 0 | As Soon As Possible | Auto Scheduled | AMETEK SAP XXL Project Plan Replan MSP Task.csv | AMETEK SAP XXL Project Plan Replan MSP Task.csv__2f0764ccac__2026-05-05T02-44-15-662Z | Brad Meseck | 40 | True |  | Not started | True  -46.77 0 0 0 0 0 20 | Negative Float, Open Finish Critical 3 0 0  |  |  |  |
| 357ae9be-8a60-8131-b2af-e48fa165536d | 4192 | Load | Data | 1.2.5.2.5.5 | 1.2.5.2.5.5 | 2026-09-28 | 2026-09-28 | 2026-04-08 | 0 | 6 | 4187 | 1 | 1 | 357ae9be-8a60-8126-8f02-e07b209659d0 | 357ae9be-8a60-8171-a18d-d5bc58fb0592 | -665.52 | 0 | As Soon As Possible | Auto Scheduled | AMETEK SAP XXL Project Plan Replan MSP Task.csv | AMETEK SAP XXL Project Plan Replan MSP Task.csv__2f0764ccac__2026-05-05T02-44-15-662Z | Jyoti Nain | 173 | True |  | Not started | True  -665.52 0 1 0 0 0 26 | Negative Float Critical 2 0 0  |  |  |  |
| 357ae9be-8a60-8131-b8ae-e7b2519f4dca | 3015 | Load | Data | 1.2.3.2.9.5 | 1.2.3.2.9.5 | 2026-06-08 | 2026-06-09 | 2026-04-09 | 0 | 6 | 3010 | 1 | 1 | 357ae9be-8a60-81cd-9088-d70cee098476 | 357ae9be-8a60-811c-a632-c761fdfa4cc5 | -168.52 | 0 | As Soon As Possible | Auto Scheduled | AMETEK SAP XXL Project Plan Replan MSP Task.csv | AMETEK SAP XXL Project Plan Replan MSP Task.csv__2f0764ccac__2026-05-05T02-44-15-662Z | Jyoti Nain | 61 | True |  | Not started | True  -168.52 0 1 1 54 0 31 | Wrong Successor, Negative Float Critical 5 0 1  |  |  |  |
| 357ae9be-8a60-8131-bbd1-f93732506cf1 | 935 | RTR_****_Credit Hierarchy | (Unassigned) | 1.2.1.22 | 1.2.1.22 | 2026-04-15 | 2026-04-16 | 2026-04-13 | 100 | 4 | 425 | 1 | 1 | 357ae9be-8a60-8199-8452-dbd4be1c21ee | 357ae9be-8a60-815e-8e37-f3c99ebbbaec | 0 | 0 | As Soon As Possible | Auto Scheduled | AMETEK SAP XXL Project Plan Replan MSP Task.csv | AMETEK SAP XXL Project Plan Replan MSP Task.csv__2f0764ccac__2026-05-05T02-44-15-662Z | COULD NOT BE DETERMINED |  |  |  | Done | True  0 0 1 1 3 0 23 | Low 0 0 0  |  | 1012, 1011, 1013 | True |
| 357ae9be-8a60-8132-8e66-fac9ccaa544a | 3380 | Download Transport List | Basis | 1.1.1.8.1.12 | 1.1.1.8.1.12 | 2026-09-16 | 2026-09-16 | 2026-07-07 | 0 | 6 | 3368 | 1 | 0 | 357ae9be-8a60-81fd-8c12-e1cbb8e610f7 |  | -678.52 | 0 | As Soon As Possible | Auto Scheduled | AMETEK SAP XXL Project Plan Replan MSP Task.csv | AMETEK SAP XXL Project Plan Replan MSP Task.csv__2f0764ccac__2026-05-05T02-44-15-662Z | Lokchetan Meghavath | 71 | True |  | Not started | True  -678.52 0 0 0 0 0 20 | Negative Float, Open Finish Critical 3 0 0  |  |  |  |
| 357ae9be-8a60-8132-9ee1-d2f2d5d78622 | 4394 | Load File Staged and Posted "Ready" | PTM | 1.2.5.2.36.1 | 1.2.5.2.36.1 | 2026-10-02 | 2026-10-02 | 2026-04-20 | 0 | 6 | 4393 | 1 | 1 | 357ae9be-8a60-81a7-b07a-c96c1a064e34 | 357ae9be-8a60-811f-b0a0-c4c959561e94 | -41746 | 0 | As Soon As Possible | Auto Scheduled | AMETEK SAP XXL Project Plan Replan MSP Task.csv | AMETEK SAP XXL Project Plan Replan MSP Task.csv__2f0764ccac__2026-05-05T02-44-15-662Z | Brad Meseck | 165 | True |  | Not started | True  -41746 0 1 0 0 0 26 | Negative Float Critical 2 0 0  |  |  |  |
| 357ae9be-8a60-8132-a3f4-e469e01f783d | 2538 | PTP_CM27_Vendor Master | PTP | 1.2.4.2.19 | 1.2.4.2.19 | 2026-09-24 | 2026-10-02 | 2026-04-15 | 0 | 5 | 2898 | 0 | 0 |  |  | -90.75 | 0 | As Soon As Possible | Auto Scheduled | AMETEK SAP XXL Project Plan Replan MSP Task.csv | AMETEK SAP XXL Project Plan Replan MSP Task.csv__2f0764ccac__2026-05-05T02-44-15-662Z | Muniraju Surappachari | 170 | True |  | Not started | True  -90.75 0 0 0 0 0 20 | Negative Float Critical 2 0 0  |  | 2540, 2544, 2539, 2543, 2542, 2541 | True |
| 357ae9be-8a60-8132-a418-ee6edf1492cb | 1991 | Manual File Staged and Posted "Ready" | PTM | 1.2.2.2.53.1 | 1.2.2.2.53.1 | 2026-05-22 | 2026-05-22 | 2026-04-16 | 0 | 6 | 1990 | 1 | 3 | 357ae9be-8a60-810c-82e9-ffc16aba0440 | 357ae9be-8a60-8101-a382-e8a212fb3518, 357ae9be-8a60-8119-b74a-d453d4fed8b4, 357ae9be-8a60-812a-927c-ec4a7b08404c | -2806 | 0 | As Soon As Possible | Auto Scheduled | AMETEK SAP XXL Project Plan Replan MSP Task.csv | AMETEK SAP XXL Project Plan Replan MSP Task.csv__2f0764ccac__2026-05-05T02-44-15-662Z | Sam Penrod | 36 | True |  | Not started | True  -2806 0 2 2 71 0 39 | Wrong Dependency, Wrong Successor, Negative Float Critical 8 1 3  |  |  |  |
| 357ae9be-8a60-8132-a904-e3948a3b082a | 1725 | Simulate Load | Data | 1.2.2.2.7.3 | 1.2.2.2.7.3 | 2026-05-22 | 2026-05-22 | 2026-04-09 | 0 | 6 | 1722 | 1 | 1 | 357ae9be-8a60-8166-ab4a-d670a33fd6b1 | 357ae9be-8a60-8179-91ef-cc35ec714e1f | -38.02 | 0 | As Soon As Possible | Auto Scheduled | AMETEK SAP XXL Project Plan Replan MSP Task.csv | AMETEK SAP XXL Project Plan Replan MSP Task.csv__2f0764ccac__2026-05-05T02-44-15-662Z | Jyoti Nain | 43 | True |  | Not started | True  -38.02 0 1 0 0 0 26 | Negative Float Critical 2 0 0  |  |  |  |
| 357ae9be-8a60-8132-a9f0-f065eb34435f | 1995 | Load File Staged and Posted "Ready" | PTM | 1.2.2.2.54.1 | 1.2.2.2.54.1 | 2026-05-22 | 2026-05-22 | 2026-04-16 | 0 | 6 | 1994 | 1 | 1 | 357ae9be-8a60-8132-a418-ee6edf1492cb | 357ae9be-8a60-8180-a2bf-f38742db3729 | -2356 | 0 | As Soon As Possible | Auto Scheduled | AMETEK SAP XXL Project Plan Replan MSP Task.csv | AMETEK SAP XXL Project Plan Replan MSP Task.csv__2f0764ccac__2026-05-05T02-44-15-662Z | Sam Penrod | 36 | True |  | Not started | True  -2356 0 1 0 0 0 26 | Wrong Dependency, Negative Float Critical 5 1 0  |  |  |  |
| 357ae9be-8a60-8132-b005-eb9f9f5b3f50 | 1300 | Functional Leads Validation of Transport | Development;PTM;Finance;PMO;Europe IT lead;OTC;TESTING | 1.1.1.6.1.14 | 1.1.1.6.1.14 | 2026-05-22 | 2026-05-22 | 2026-05-19 | 0 | 6 | 3339 | 1 | 1 | 357ae9be-8a60-8191-a47a-df196e181f29 | 357ae9be-8a60-81e4-ad85-f3407bb2ec98 | -241.52 | 0 | As Soon As Possible | Auto Scheduled | AMETEK SAP XXL Project Plan Replan MSP Task.csv | AMETEK SAP XXL Project Plan Replan MSP Task.csv__2f0764ccac__2026-05-05T02-44-15-662Z | Bijoykrishna Das | 3 | True |  | Not started | True  -241.52 0 1 1 410 0 31 | Wrong Successor, Negative Float Critical 5 0 1  |  |  |  |
| 357ae9be-8a60-8132-b9d5-c57d0f14703b | 2947 | ITC2 Master Data Loads Complete | Data | 1.2.2.3 | 1.2.2.3 | 2026-05-29 | 2026-05-29 | 2026-05-29 | 0 | 4 | 2809 | 1 | 6 | 357ae9be-8a60-813b-ab10-e002cd1bd2ce | 357ae9be-8a60-81e3-b4fa-f1222ef8b771, 357ae9be-8a60-81b3-ae9a-cc86e380a852, 357ae9be-8a60-812b-99d2-f7a1aa058a4c, 357ae9be-8a60-81c9-8f77-ef73e3057ac4, 357ae9be-8a60-8192-a781-cd2922407469, 357ae9be-8a60-816c-a955-f517ebe8c18c | -4591 | 0 | As Soon As Possible | Auto Scheduled | AMETEK SAP XXL Project Plan Replan MSP Task.csv | AMETEK SAP XXL Project Plan Replan MSP Task.csv__2f0764ccac__2026-05-05T02-44-15-662Z | Jyoti Nain |  |  |  | Not started | True  -4591 0 1 0 0 0 28 | Wrong Successor, Negative Float Critical 5 0 1  |  |  |  |
| 357ae9be-8a60-8132-be5b-e3f9b779c49b | 2728 | PTM_CM50_Material Class | PTM | 1.2.4.2.53 | 1.2.4.2.53 | 2026-09-29 | 2026-10-01 | 2026-04-16 | 0 | 5 | 2898 | 0 | 0 |  |  | -86.09 | 0 | As Soon As Possible | Auto Scheduled | AMETEK SAP XXL Project Plan Replan MSP Task.csv | AMETEK SAP XXL Project Plan Replan MSP Task.csv__2f0764ccac__2026-05-05T02-44-15-662Z | Brad Meseck | 168 | True |  | Not started | True  -86.09 0 0 0 0 0 20 | Negative Float Critical 2 0 0  |  | 2731, 2730, 2729 | True |
| 357ae9be-8a60-8133-87a6-c6cf401d769f | 3057 | Manual File Staged and Posted "Ready" | OTC | 1.2.3.2.16.1 | 1.2.3.2.16.1 | 2026-06-15 | 2026-06-15 | 2026-04-10 | 0 | 6 | 3056 | 1 | 1 | 357ae9be-8a60-8185-a2d9-d16ed2b25102 | 357ae9be-8a60-8117-a158-cbe8ace6609a | -9811 | 0 | As Soon As Possible | Auto Scheduled | AMETEK SAP XXL Project Plan Replan MSP Task.csv | AMETEK SAP XXL Project Plan Replan MSP Task.csv__2f0764ccac__2026-05-05T02-44-15-662Z | Ric Haraida | 66 | True |  | Not started | True  -9811 0 1 0 0 0 26 | Wrong Dependency, Negative Float Critical 5 1 0  |  |  |  |
| 357ae9be-8a60-8133-8f00-ef694ce80e00 | 215 | Training Readiness | Training | 1.4.1 | 1.4.1 | 2026-02-16 | 2026-11-09 | 2026-10-16 | 38 | 3 | 683 | 0 | 0 |  |  | 0 | 0 | As Soon As Possible | Auto Scheduled | AMETEK SAP XXL Project Plan Replan MSP Task.csv | AMETEK SAP XXL Project Plan Replan MSP Task.csv__2f0764ccac__2026-05-05T02-44-15-662Z | Karen Zalnis | 24 | True |  | In progress | True  0 0 0 0 0 0 20 | Low 0 0 0  |  | 216, 242, 241, 221 | True |
| 357ae9be-8a60-8133-912a-d9c61895017a | 2490 | Load | Finance | 1.2.4.2.11.2 | 1.2.4.2.11.2 | 2026-09-29 | 2026-10-05 | 2026-04-15 | 0 | 6 | 2488 | 1 | 1 | 357ae9be-8a60-814b-9f67-c01051c11265 | 357ae9be-8a60-81c6-8cee-ec58591a3bbc | -704.5 | 0 | Finish No Earlier Than | Auto Scheduled | AMETEK SAP XXL Project Plan Replan MSP Task.csv | AMETEK SAP XXL Project Plan Replan MSP Task.csv__2f0764ccac__2026-05-05T02-44-15-662Z | Kasey Hughes | 173 | True |  | Not started | True  -704.5 0 1 0 0 0 26 | Negative Float Critical 2 0 0 True | 2026-04-21 |  |  |
| 357ae9be-8a60-8133-9fdd-cd69dde169e0 | 1015 | Pre Load Validation | PTP;OTC | 1.2.1.23.2 | 1.2.1.23.2 | 2026-04-13 | 2026-04-13 | 2026-04-13 | 100 | 5 | 693 | 1 | 1 | 357ae9be-8a60-81ff-bb44-db7f5846c790 | 357ae9be-8a60-81f6-9c81-e66f9259c48b | 0 | 0 | As Soon As Possible | Auto Scheduled | AMETEK SAP XXL Project Plan Replan MSP Task.csv | AMETEK SAP XXL Project Plan Replan MSP Task.csv__2f0764ccac__2026-05-05T02-44-15-662Z | Nevin Varkey |  |  |  | Done | True  0 0 1 0 0 0 18 | Low 0 0 0  |  |  |  |
| 357ae9be-8a60-8133-a0c8-c601d2e77172 | 3254 | Manual File Staged and Posted "Ready" | PTP | 1.2.3.2.51.1 | 1.2.3.2.51.1 | 2026-06-09 | 2026-06-09 | 2026-04-14 | 0 | 6 | 3253 | 2 | 0 | 357ae9be-8a60-8172-95d7-f08cb5837bec, 357ae9be-8a60-8130-9242-df0d4936c181 |  | -7741 | 0 | As Soon As Possible | Auto Scheduled | AMETEK SAP XXL Project Plan Replan MSP Task.csv | AMETEK SAP XXL Project Plan Replan MSP Task.csv__2f0764ccac__2026-05-05T02-44-15-662Z | Nevin Varkey | 56 | True |  | Not started | True  -7741 0 0 0 0 0 20 | Wrong Dependency, Negative Float, Open Finish Critical 6 2 0  |  |  |  |
| 357ae9be-8a60-8133-a47d-fb21486401c5 | 2527 | Simulate Load | Data | 1.2.4.2.17.3 | 1.2.4.2.17.3 | 2026-10-01 | 2026-10-01 | 2026-04-10 | 0 | 6 | 2524 | 2 | 1 | 357ae9be-8a60-8145-9194-de4910f8b1a0, 357ae9be-8a60-81b1-9755-fd8140e56513 | 357ae9be-8a60-817d-b433-fe2c101bf1b5 | -707 | 0 | As Soon As Possible | Auto Scheduled | AMETEK SAP XXL Project Plan Replan MSP Task.csv | AMETEK SAP XXL Project Plan Replan MSP Task.csv__2f0764ccac__2026-05-05T02-44-15-662Z | Jyoti Nain | 174 | True |  | Not started | True  -707 0 1 0 0 0 26 | Wrong Dependency, Negative Float Critical 5 2 0  |  |  |  |
| 357ae9be-8a60-8133-a4b7-d8780793bdb3 | 1953 | Simulate Load | Data | 1.2.2.2.46.3 | 1.2.2.2.46.3 | 2026-05-21 | 2026-05-22 | 2026-04-16 | 0 | 6 | 1950 | 1 | 1 | 357ae9be-8a60-81e3-bcec-f711149bf8bc | 357ae9be-8a60-81be-9cc0-e30dca35ec61 | -67.27 | 0 | As Soon As Possible | Auto Scheduled | AMETEK SAP XXL Project Plan Replan MSP Task.csv | AMETEK SAP XXL Project Plan Replan MSP Task.csv__2f0764ccac__2026-05-05T02-44-15-662Z | Jyoti Nain | 36 | True |  | Not started | True  -67.27 0 1 0 0 0 26 | Negative Float Critical 2 0 0  |  |  |  |
| 357ae9be-8a60-8133-a8bd-c9075993390d | 2949 | Run Costing for Data Identified(or ALL) | Data | 1.3.3.6.4 | 1.3.3.6.4 | 2026-06-01 | 2026-06-02 | 2026-06-02 | 0 | 5 | 2791 | 1 | 1 | 357ae9be-8a60-8135-826c-f28e7e4d6568 | 357ae9be-8a60-814a-b929-eb87b46ac659 | -12 | 0 | As Soon As Possible | Auto Scheduled | AMETEK SAP XXL Project Plan Replan MSP Task.csv | AMETEK SAP XXL Project Plan Replan MSP Task.csv__2f0764ccac__2026-05-05T02-44-15-662Z | Jyoti Nain |  |  |  | Not started | True  -12 0 1 0 0 0 18 | Negative Float Critical 2 0 0  |  |  |  |
| 357ae9be-8a60-8133-b7de-e2aca390e5a1 | 3024 | RTR_CM14_Cost Element_Group | Finance | 1.2.3.2.11 | 1.2.3.2.11 | 2026-06-11 | 2026-06-15 | 2026-04-15 | 0 | 5 | 2959 | 0 | 0 |  |  | -19.81 | 0 | As Soon As Possible | Auto Scheduled | AMETEK SAP XXL Project Plan Replan MSP Task.csv | AMETEK SAP XXL Project Plan Replan MSP Task.csv__2f0764ccac__2026-05-05T02-44-15-662Z | Kasey Hughes | 61 | True |  | Not started | True  -19.81 0 0 0 0 0 20 | Negative Float Critical 2 0 0  |  | 3025, 3026, 3027 | True |
| 357ae9be-8a60-8133-b814-d3222e250782 | 2758 | Load Descartes XML File | OTC | 1.2.4.2.61.1 | 1.2.4.2.61.1 | 2026-10-01 | 2026-10-01 | 2026-04-16 | 0 | 6 | 2757 | 1 | 3 | 357ae9be-8a60-8181-afeb-f49e49dec902 | 357ae9be-8a60-81d1-9dab-c8371a875537, 357ae9be-8a60-81a5-8ac3-d07ad90f4d64, 357ae9be-8a60-814f-894a-d5693095163e | -712.25 | 0 | As Soon As Possible | Auto Scheduled | AMETEK SAP XXL Project Plan Replan MSP Task.csv | AMETEK SAP XXL Project Plan Replan MSP Task.csv__2f0764ccac__2026-05-05T02-44-15-662Z | James VanRiper | 168 | True |  | Not started | True  -712.25 0 2 2 330 0 39 | Wrong Successor, Negative Float Critical 5 0 3  |  |  |  |
| 357ae9be-8a60-8134-8694-e71622c183dd | 4364 | Post Load Validation | PTM | 1.2.5.2.31.6 | 1.2.5.2.31.6 | 2026-10-02 | 2026-10-02 | 2026-04-20 | 0 | 6 | 4358 | 1 | 1 | 357ae9be-8a60-814b-a4d3-df52309ee439 | 357ae9be-8a60-8185-a230-f73bf978822c | -700.39 | 0 | As Soon As Possible | Auto Scheduled | AMETEK SAP XXL Project Plan Replan MSP Task.csv | AMETEK SAP XXL Project Plan Replan MSP Task.csv__2f0764ccac__2026-05-05T02-44-15-662Z | Brad Meseck | 165 | True |  | Not started | True  -700.39 0 1 0 0 0 26 | Negative Float Critical 2 0 0  |  |  |  |
| 357ae9be-8a60-8134-8734-f23114b01491 | 3037 | Load | Data | 1.2.3.2.13.8 | 1.2.3.2.13.8 | 2026-06-12 | 2026-06-12 | 2026-04-09 | 0 | 6 | 3029 | 1 | 1 | 357ae9be-8a60-812a-9276-fa5ac5ca7b77 | 357ae9be-8a60-8117-807d-ca17c423167f | -159.02 | 0 | As Soon As Possible | Auto Scheduled | AMETEK SAP XXL Project Plan Replan MSP Task.csv | AMETEK SAP XXL Project Plan Replan MSP Task.csv__2f0764ccac__2026-05-05T02-44-15-662Z | Jyoti Nain | 64 | True |  | Not started | True  -159.02 0 1 0 0 0 26 | Negative Float Critical 2 0 0  |  |  |  |
| 357ae9be-8a60-8134-8a50-d042a9a8a568 | 4232 | OTC_CM19_Customer_Master - Ship-To | OTC | 1.2.5.2.13 | 1.2.5.2.13 | 2026-09-29 | 2026-10-01 | 2026-04-13 | 0 | 5 | 4162 | 0 | 0 |  |  | -89.56 | 0 | As Soon As Possible | Auto Scheduled | AMETEK SAP XXL Project Plan Replan MSP Task.csv | AMETEK SAP XXL Project Plan Replan MSP Task.csv__2f0764ccac__2026-05-05T02-44-15-662Z | Anitha Jothi | 171 | True |  | Not started | True  -89.56 0 0 0 0 0 20 | Negative Float Critical 2 0 0  |  | 4238, 4239, 4236, 4235, 4233, 4234, 4240, 4241, 4237 | True |
| 357ae9be-8a60-8134-909f-c2e38ff9f4ad | 3397 | Environment Ready for Build | PMO | 1.1.1.8.4 | 1.1.1.8.4 | 2026-09-24 | 2026-09-24 | 2025-03-13 | 0 | 5 | 3367 | 1 | 0 | 357ae9be-8a60-81f9-a337-f8720992fc33 |  | -43561 | 0 | As Soon As Possible | Auto Scheduled | AMETEK SAP XXL Project Plan Replan MSP Task.csv | AMETEK SAP XXL Project Plan Replan MSP Task.csv__2f0764ccac__2026-05-05T02-44-15-662Z | Chris Hanily | 560 | True |  | Not started | True  -43561 0 0 0 0 0 20 | Negative Float, Open Finish Critical 3 0 0  |  |  |  |
| 357ae9be-8a60-8134-9bab-efbb98b7b159 | 824 | Pre Load Validation | OTC | 1.2.1.14.2 | 1.2.1.14.2 | 2026-04-08 | 2026-04-08 | 2026-04-08 | 100 | 5 | 763 | 1 | 1 | 357ae9be-8a60-81ee-96d4-f7b07820bab9 | 357ae9be-8a60-81c5-84f1-c75ccee56860 | 0 | 0 | As Soon As Possible | Auto Scheduled | AMETEK SAP XXL Project Plan Replan MSP Task.csv | AMETEK SAP XXL Project Plan Replan MSP Task.csv__2f0764ccac__2026-05-05T02-44-15-662Z | Ric Haraida |  |  |  | Done | True  0 0 1 1 49 0 23 | Wrong Successor High 3 0 1  |  |  |  |
| 357ae9be-8a60-8134-9fe8-d75899008ce7 | 1120 | Post Load Validation | PTP | 1.2.1.52.3 | 1.2.1.52.3 | 2026-04-20 | 2026-04-20 | 2026-04-13 | 100 | 5 | 704 | 1 | 0 | 357ae9be-8a60-8165-9c48-cf23b4092ef4 |  | 0 | 0 | As Soon As Possible | Auto Scheduled | AMETEK SAP XXL Project Plan Replan MSP Task.csv | AMETEK SAP XXL Project Plan Replan MSP Task.csv__2f0764ccac__2026-05-05T02-44-15-662Z | Nevin Varkey |  |  |  | Done | True  0 0 0 0 0 0 12 | Wrong Dependency High 3 1 0  |  |  |  |
| 357ae9be-8a60-8134-a080-c42ef230a785 | 2432 | RTR_CM01_GL_Account_Master to CC 1000 | (Unassigned) | 1.2.4.2.3 | 1.2.4.2.3 | 2026-09-25 | 2026-09-29 | 2026-04-09 | 0 | 5 | 2898 | 0 | 1 |  | 357ae9be-8a60-815d-86e7-f39657a35ad7 | -89.81 | 0 | As Soon As Possible | Auto Scheduled | AMETEK SAP XXL Project Plan Replan MSP Task.csv | AMETEK SAP XXL Project Plan Replan MSP Task.csv__2f0764ccac__2026-05-05T02-44-15-662Z | COULD NOT BE DETERMINED | 173 | True |  | Not started | True  -89.81 0 1 0 0 0 26 | Wrong Successor, Negative Float Critical 5 0 1  |  | 2435, 2439, 2434, 2440, 2438, 2433, 2437, 2436 | True |
| 357ae9be-8a60-8134-ab00-dd64a7314796 | 3323 | Error and Defect Mitigation | Finance | 1.2.3.2.68.4 | 1.2.3.2.68.4 | 2026-06-08 | 2026-06-08 | 2026-04-17 | 0 | 6 | 3319 | 1 | 1 | 357ae9be-8a60-81ac-a9c8-c388d1e51b6c | 357ae9be-8a60-816c-9756-cb4b3534e9a0 | -129.52 | 0 | As Soon As Possible | Auto Scheduled | AMETEK SAP XXL Project Plan Replan MSP Task.csv | AMETEK SAP XXL Project Plan Replan MSP Task.csv__2f0764ccac__2026-05-05T02-44-15-662Z | Kasey Hughes | 52 | True |  | Not started | True  -129.52 0 1 0 0 0 26 | Negative Float Critical 2 0 0  |  |  |  |
| 357ae9be-8a60-8135-826c-f28e7e4d6568 | 2948 | Identify Data and Processes for ITC | Data | 1.3.3.6.3 | 1.3.3.6.3 | 2026-05-29 | 2026-06-01 | 2026-06-01 | 0 | 5 | 2791 | 1 | 1 | 357ae9be-8a60-817f-a3a6-c45c235db3cf | 357ae9be-8a60-8133-a8bd-c9075993390d | -1.5 | 0 | As Soon As Possible | Auto Scheduled | AMETEK SAP XXL Project Plan Replan MSP Task.csv | AMETEK SAP XXL Project Plan Replan MSP Task.csv__2f0764ccac__2026-05-05T02-44-15-662Z | Jyoti Nain |  |  |  | Not started | True  -1.5 0 1 0 0 1 18 | Negative Float High 2 0 0  |  |  |  |
| 357ae9be-8a60-8135-882f-fa0aaa6f2485 | 3307 | Set Embargo situations | OTC | 1.2.3.2.65.2 | 1.2.3.2.65.2 | 2026-06-09 | 2026-06-09 | 2026-04-13 | 0 | 6 | 3305 | 1 | 1 | 357ae9be-8a60-814c-8b80-e148eada318e | 357ae9be-8a60-8167-8acc-c370f1c0644c | -131.52 | 0 | As Soon As Possible | Auto Scheduled | AMETEK SAP XXL Project Plan Replan MSP Task.csv | AMETEK SAP XXL Project Plan Replan MSP Task.csv__2f0764ccac__2026-05-05T02-44-15-662Z | James VanRiper | 57 | True |  | Not started | True  -131.52 0 1 0 0 0 26 | Negative Float Critical 2 0 0  |  |  |  |
| 357ae9be-8a60-8135-88cb-e3814e5dabc6 | 1144 | Post Load Validation | Finance | 1.2.1.68.6 | 1.2.1.68.6 | 2026-04-20 | 2026-04-21 | 2026-04-17 | 100 | 5 | 950 | 1 | 0 | 357ae9be-8a60-81d6-b663-ff1c737ad7c6 |  | 0 | 0 | As Soon As Possible | Auto Scheduled | AMETEK SAP XXL Project Plan Replan MSP Task.csv | AMETEK SAP XXL Project Plan Replan MSP Task.csv__2f0764ccac__2026-05-05T02-44-15-662Z | Kasey Hughes |  |  |  | Done | True  0 0 0 0 0 0 12 | Low 0 0 0  |  |  |  |
| 357ae9be-8a60-8135-8b8a-edb3e6f48b50 | 1149 | Load | Data | 1.2.1.69.5 | 1.2.1.69.5 | 2026-04-20 | 2026-04-20 | 2026-04-17 | 100 | 5 | 754 | 1 | 1 | 357ae9be-8a60-816e-8516-c6a67a0ab091 | 357ae9be-8a60-81e7-8ef6-de5f6ef7ada0 | 0 | 0 | As Soon As Possible | Auto Scheduled | AMETEK SAP XXL Project Plan Replan MSP Task.csv | AMETEK SAP XXL Project Plan Replan MSP Task.csv__2f0764ccac__2026-05-05T02-44-15-662Z | Jyoti Nain |  |  |  | Done | True  0 0 1 0 0 0 18 | Low 0 0 0  |  |  |  |
| 357ae9be-8a60-8135-93e3-fd048c8faa85 | 3122 | Pre Load Validation | PTM | 1.2.3.2.26.2 | 1.2.3.2.26.2 | 2026-06-10 | 2026-06-10 | 2026-04-14 | 0 | 6 | 3120 | 1 | 1 | 357ae9be-8a60-81f6-ac26-f1d4a2895e33 | 357ae9be-8a60-81b4-a7cd-f977cbce7c8d | -11416 | 0 | As Soon As Possible | Auto Scheduled | AMETEK SAP XXL Project Plan Replan MSP Task.csv | AMETEK SAP XXL Project Plan Replan MSP Task.csv__2f0764ccac__2026-05-05T02-44-15-662Z | Eric Heisler | 57 | True |  | Not started | True  -11416 0 1 0 0 0 26 | Wrong Dependency, Negative Float Critical 5 1 0  |  |  |  |
| 357ae9be-8a60-8135-9f46-e2fb0915391e | 3209 | VC_Dependency Nets | (Unassigned) | 1.2.3.2.41 | 1.2.3.2.41 | 2026-06-11 | 2026-06-12 | 2026-04-16 | 0 | 5 | 2959 | 0 | 0 |  |  | -18.78 | 0 | As Soon As Possible | Auto Scheduled | AMETEK SAP XXL Project Plan Replan MSP Task.csv | AMETEK SAP XXL Project Plan Replan MSP Task.csv__2f0764ccac__2026-05-05T02-44-15-662Z | COULD NOT BE DETERMINED | 57 | True |  | Not started | True  -18.78 0 0 0 0 0 20 | Negative Float Critical 2 0 0  |  | 3211, 3210 | True |
| 357ae9be-8a60-8135-baca-d43c05d02758 | 3120 | PTP_CM26_Material_Master - KMAT - Configurable Materials | PTP | 1.2.3.2.26 | 1.2.3.2.26 | 2026-06-10 | 2026-06-11 | 2026-04-15 | 0 | 5 | 2959 | 0 | 2 |  | 357ae9be-8a60-8108-90f1-c7a2d99193b6, 357ae9be-8a60-81aa-8fb9-d9d0f029be12 | -23.5 | 0 | As Soon As Possible | Auto Scheduled | AMETEK SAP XXL Project Plan Replan MSP Task.csv | AMETEK SAP XXL Project Plan Replan MSP Task.csv__2f0764ccac__2026-05-05T02-44-15-662Z | Muniraju Surappachari | 57 | True |  | Not started | True  -23.5 0 2 2 713 0 37 | Wrong Successor, Negative Float Critical 5 0 2  |  | 3122, 3126, 3124, 3123, 3125, 3121 | True |
| 357ae9be-8a60-8136-8a5c-d9212533f4ce | 1174 | Run material interface to GTS | OTC | 1.2.1.57.1 | 1.2.1.57.1 | 2026-04-15 | 2026-04-15 | 2026-04-10 | 100 | 5 | 953 | 0 | 1 |  | 357ae9be-8a60-81e0-b010-d9729f6e0465 | 0 | 0 | Start No Earlier Than | Auto Scheduled | AMETEK SAP XXL Project Plan Replan MSP Task.csv | AMETEK SAP XXL Project Plan Replan MSP Task.csv__2f0764ccac__2026-05-05T02-44-15-662Z | James VanRiper |  |  |  | Done | True  0 0 0 0 0 0 14 | Low 0 0 0 True | 2026-04-15 |  |  |
| 357ae9be-8a60-8136-8d3b-dea9b9ddbc00 | 3371 | Technical Transports / BP Setup | Basis | 1.1.1.8.1.3 | 1.1.1.8.1.3 | 2026-09-11 | 2026-09-11 | 2026-06-30 | 0 | 6 | 3368 | 1 | 1 | 357ae9be-8a60-81f3-b470-e486cf842928 | 357ae9be-8a60-81a4-ae6a-d96bdf165462 | -90.75 | 0 | As Soon As Possible | Auto Scheduled | AMETEK SAP XXL Project Plan Replan MSP Task.csv | AMETEK SAP XXL Project Plan Replan MSP Task.csv__2f0764ccac__2026-05-05T02-44-15-662Z | Lokchetan Meghavath | 73 | True |  | Not started | True  -90.75 0 0 0 0 0 22 | Wrong Dependency, Wrong Successor, Negative Float Critical 8 1 1  |  |  |  |
| 357ae9be-8a60-8136-95ae-e0b8c603c5d3 | 4468 | Manual File Staged and Posted "Ready" | PTM | 1.2.5.2.53.1 | 1.2.5.2.53.1 | 2026-09-29 | 2026-09-29 | 2026-04-16 | 0 | 6 | 4467 | 1 | 2 | 357ae9be-8a60-81b4-8e9a-ede2a5ab87bf | 357ae9be-8a60-81b1-986d-d20e96435b95, 357ae9be-8a60-811b-a54f-e90dc6d3ecbd | -41326 | 0 | As Soon As Possible | Auto Scheduled | AMETEK SAP XXL Project Plan Replan MSP Task.csv | AMETEK SAP XXL Project Plan Replan MSP Task.csv__2f0764ccac__2026-05-05T02-44-15-662Z | Sam Penrod | 166 | True |  | Not started | True  -41326 0 2 0 0 0 32 | Negative Float Critical 2 0 0  |  |  |  |
| 357ae9be-8a60-8136-974a-f4fd1d7e108b | 3192 | Pre Load Validation | PTM | 1.2.3.2.36.2 | 1.2.3.2.36.2 | 2026-06-16 | 2026-06-16 | 2026-04-20 | 0 | 6 | 3190 | 1 | 1 | 357ae9be-8a60-816c-8bb3-f43e740478cc | 357ae9be-8a60-81fb-85ba-d3e269a571b6 | -10426 | 0 | As Soon As Possible | Auto Scheduled | AMETEK SAP XXL Project Plan Replan MSP Task.csv | AMETEK SAP XXL Project Plan Replan MSP Task.csv__2f0764ccac__2026-05-05T02-44-15-662Z | Brad Meseck | 57 | True |  | Not started | True  -10426 0 1 0 0 0 26 | Negative Float Critical 2 0 0  |  |  |  |
| 357ae9be-8a60-8136-a4da-c3ee48a5933a | 4471 | PTM_CM55_Class assignment to materials | PTM | 1.2.5.2.54 | 1.2.5.2.54 | 2026-09-29 | 2026-10-01 | 2026-04-17 | 0 | 5 | 4162 | 0 | 0 |  |  | -85.16 | 0 | As Soon As Possible | Auto Scheduled | AMETEK SAP XXL Project Plan Replan MSP Task.csv | AMETEK SAP XXL Project Plan Replan MSP Task.csv__2f0764ccac__2026-05-05T02-44-15-662Z | Brad Meseck | 167 | True |  | Not started | True  -85.16 0 0 0 0 0 20 | Negative Float Critical 2 0 0  |  | 4474, 4476, 4472, 4477, 4475, 4473 | True |

| id | uid | name | workstream | outlineNumber | wbs | start | finish | baselineFinish | pct | outlineLevel | parentUid | predCount | sucCount | predIds | sucIds | totalSlackDaysRaw | freeSlackDaysRaw | constraintType | taskMode | mspSourceFile | mspImportVersion | assignedTo | slipDays | isSlipped | isDue14 | status | cpm | scheduleQuality | constraintDate | childUids | isSummary |
| --- | --- | --- | --- | --- | --- | --- | --- | --- | --- | --- | --- | --- | --- | --- | --- | --- | --- | --- | --- | --- | --- | --- | --- | --- | --- | --- | --- | --- | --- | --- | --- |
| 357ae9be-8a60-8136-a891-cea607114c2a | 1895 | PTM_CM36_Production Version Conversion | PTM | 1.2.2.2.33 | 1.2.2.2.33 | 2026-05-21 | 2026-05-25 | 2026-04-17 | 0 | 5 | 2800 | 0 | 0 |  |  | -6.72 | 0 | As Soon As Possible | Auto Scheduled | AMETEK SAP XXL Project Plan Replan MSP Task.csv | AMETEK SAP XXL Project Plan Replan MSP Task.csv__2f0764ccac__2026-05-05T02-44-15-662Z | Brad Meseck | 38 | True |  | Not started | True  -6.72 0 0 0 0 0 20 | Negative Float High 2 0 0  |  | 1896, 1897, 1899, 1900, 1898, 1901 | True |
| 357ae9be-8a60-8136-ab32-dcd8e1b4889f | 265 | MSMP workflow configuration | (Unassigned) | 1.1.2.3.1 | 1.1.2.3.1 | 2026-03-24 | 2026-03-30 | 2026-03-30 | 100 | 5 | 264 | 1 | 1 | 357ae9be-8a60-81d6-9040-ef7283587acf | 357ae9be-8a60-8166-9715-c8d420463ad1 | 0 | 0 | As Soon As Possible | Auto Scheduled | AMETEK SAP XXL Project Plan Replan MSP Task.csv | AMETEK SAP XXL Project Plan Replan MSP Task.csv__2f0764ccac__2026-05-05T02-44-15-662Z | COULD NOT BE DETERMINED |  |  |  | Done | True  0 0 1 0 0 0 18 | Low 0 0 0  |  |  |  |
| 357ae9be-8a60-8136-ac67-d9702d5fb636 | 4226 | Post Load Validation | Finance | 1.2.5.2.10.6 | 1.2.5.2.10.6 | 2026-09-25 | 2026-09-28 | 2026-04-10 | 0 | 6 | 4220 | 1 | 0 | 357ae9be-8a60-81fc-b415-d56b1db04f11 |  | -658.52 | 0 | As Soon As Possible | Auto Scheduled | AMETEK SAP XXL Project Plan Replan MSP Task.csv | AMETEK SAP XXL Project Plan Replan MSP Task.csv__2f0764ccac__2026-05-05T02-44-15-662Z | Kasey Hughes | 171 | True |  | Not started | True  -658.52 0 0 0 0 0 20 | Negative Float, Open Finish Critical 3 0 0  |  |  |  |
| 357ae9be-8a60-8136-b6ec-d2c1088d60d7 | 1196 | Load File Staged and Posted "Ready" | PTM | 1.2.1.36.1 | 1.2.1.36.1 | 2026-04-21 | 2026-04-21 | 2026-04-17 | 100 | 5 | 1194 | 1 | 1 | 357ae9be-8a60-8189-a761-f14ec6641244 | 357ae9be-8a60-81ed-8ed2-d1c23b0ddaeb | 0 | 0 | As Soon As Possible | Auto Scheduled | AMETEK SAP XXL Project Plan Replan MSP Task.csv | AMETEK SAP XXL Project Plan Replan MSP Task.csv__2f0764ccac__2026-05-05T02-44-15-662Z | Brad Meseck |  |  |  | Done | True  0 0 1 0 0 0 18 | Wrong Dependency High 3 1 0  |  |  |  |
| 357ae9be-8a60-8137-81d3-ea2e092449df | 2701 | Post Load Validation | PTM | 1.2.4.2.47.6 | 1.2.4.2.47.6 | 2026-10-07 | 2026-10-07 | 2026-04-20 | 0 | 6 | 2695 | 1 | 0 | 357ae9be-8a60-81ea-b9fa-fc9dde282f69 |  | -717 | 0 | As Soon As Possible | Auto Scheduled | AMETEK SAP XXL Project Plan Replan MSP Task.csv | AMETEK SAP XXL Project Plan Replan MSP Task.csv__2f0764ccac__2026-05-05T02-44-15-662Z | Eric Heisler | 170 | True |  | Not started | True  -717 0 0 0 0 0 20 | Wrong Dependency, Negative Float, Open Finish Critical 6 1 0  |  |  |  |
| 357ae9be-8a60-8137-8f18-efa83c85202d | 1748 | Load | Data | 1.2.2.2.10.5 | 1.2.2.2.10.5 | 2026-05-20 | 2026-05-20 | 2026-04-10 | 0 | 6 | 1743 | 1 | 1 | 357ae9be-8a60-81b8-b5d2-fe7e40e21c28 | 357ae9be-8a60-81ef-affc-ea26831ddbcf | -16.52 | 0 | As Soon As Possible | Auto Scheduled | AMETEK SAP XXL Project Plan Replan MSP Task.csv | AMETEK SAP XXL Project Plan Replan MSP Task.csv__2f0764ccac__2026-05-05T02-44-15-662Z | Jyoti Nain | 40 | True | True | Not started | True  -16.52 0 1 0 0 0 26 | Negative Float Critical 2 0 0  |  |  |  |
| 357ae9be-8a60-8137-8fd2-d564eb87810d | 1716 | Post Load Validation | Finance | 1.2.2.2.5.6 | 1.2.2.2.5.6 | 2026-05-21 | 2026-05-21 | 2026-04-09 | 0 | 6 | 1710 | 1 | 0 | 357ae9be-8a60-81fe-ab7c-f673703dc26f |  | -63.52 | 0 | As Soon As Possible | Auto Scheduled | AMETEK SAP XXL Project Plan Replan MSP Task.csv | AMETEK SAP XXL Project Plan Replan MSP Task.csv__2f0764ccac__2026-05-05T02-44-15-662Z | Kasey Hughes | 42 | True |  | Not started | True  -63.52 0 0 0 0 0 20 | Negative Float, Open Finish Critical 3 0 0  |  |  |  |
| 357ae9be-8a60-8137-9a4e-ee622e4c3bd2 | 1179 | Post Load Validation | OTC | 1.2.1.59.2 | 1.2.1.59.2 | 2026-04-13 | 2026-04-13 | 2026-04-13 | 100 | 5 | 698 | 1 | 1 | 357ae9be-8a60-8114-921e-fd9bb7f96ba4 | 357ae9be-8a60-812a-be7b-e2ffe4bd4e80 | 0 | 0 | As Soon As Possible | Auto Scheduled | AMETEK SAP XXL Project Plan Replan MSP Task.csv | AMETEK SAP XXL Project Plan Replan MSP Task.csv__2f0764ccac__2026-05-05T02-44-15-662Z | James VanRiper |  |  |  | Done | True  0 0 1 0 0 1 18 | Wrong Dependency High 3 1 0  |  |  |  |
| 357ae9be-8a60-8137-9a85-eb2bcbd520a8 | 3240 | Load | PTM | 1.2.3.2.48.2 | 1.2.3.2.48.2 | 2026-06-17 | 2026-06-17 | 2026-04-17 | 0 | 6 | 3238 | 1 | 1 | 357ae9be-8a60-8170-bdfb-fedaf1a674e6 | 357ae9be-8a60-8117-ab4c-e98bba46e9c5 | -187.27 | 0 | As Soon As Possible | Auto Scheduled | AMETEK SAP XXL Project Plan Replan MSP Task.csv | AMETEK SAP XXL Project Plan Replan MSP Task.csv__2f0764ccac__2026-05-05T02-44-15-662Z | Eric Heisler | 61 | True |  | Not started | True  -187.27 0 1 0 0 0 26 | Negative Float Critical 2 0 0  |  |  |  |
| 357ae9be-8a60-8137-9aa6-dc07a32cec9d | 1040 | Simulate Load | Data | 1.2.1.28.3 | 1.2.1.28.3 | 2026-04-16 | 2026-04-16 | 2026-04-16 | 100 | 5 | 703 | 1 | 1 | 357ae9be-8a60-81b4-88e2-ecf42d78350e | 357ae9be-8a60-8179-bede-cc837cf2f539 | 0 | 0 | As Soon As Possible | Auto Scheduled | AMETEK SAP XXL Project Plan Replan MSP Task.csv | AMETEK SAP XXL Project Plan Replan MSP Task.csv__2f0764ccac__2026-05-05T02-44-15-662Z | Jyoti Nain |  |  |  | Done | True  0 0 1 0 0 0 18 | Low 0 0 0  |  |  |  |
| 357ae9be-8a60-8137-a5b2-e958ef031700 | 902 | Release Transports to Client | (Unassigned) | 1.1.1.7.2 | 1.1.1.7.2 | 2026-06-18 | 2026-06-25 | 2026-07-14 | 0 | 5 | 884 | 1 | 1 | 357ae9be-8a60-81ae-b92b-e52f8d41eea2 | 357ae9be-8a60-810e-9450-fd86510ffc0f | -37.25 | 0 | As Soon As Possible | Auto Scheduled | AMETEK SAP XXL Project Plan Replan MSP Task.csv | AMETEK SAP XXL Project Plan Replan MSP Task.csv__2f0764ccac__2026-05-05T02-44-15-662Z | COULD NOT BE DETERMINED |  |  |  | Not started | True  -37.25 0 0 0 0 0 14 | Negative Float Critical 2 0 0  |  | 903, 909, 906, 907, 908, 910, 905, 904 | True |
| 357ae9be-8a60-8137-a9be-e0506af141c2 | 753 | RTR_CM12_Activity Rates | (Unassigned) | 1.2.1.9 | 1.2.1.9 | 2026-04-07 | 2026-04-08 | 2026-04-08 | 100 | 4 | 425 | 1 | 1 | 357ae9be-8a60-8181-91de-df16746bfd2b | 357ae9be-8a60-814e-8a03-ec8c8ee51eaa | 0 | 0 | As Soon As Possible | Auto Scheduled | AMETEK SAP XXL Project Plan Replan MSP Task.csv | AMETEK SAP XXL Project Plan Replan MSP Task.csv__2f0764ccac__2026-05-05T02-44-15-662Z | COULD NOT BE DETERMINED |  |  |  | Done | True  0 0 0 0 0 1 14 | Low 0 0 0  |  | 965, 970, 967, 968, 966, 969 | True |
| 357ae9be-8a60-8137-aae4-fff73a3c474f | 759 | RTR_CM05_Profit_Center | (Unassigned) | 1.2.1.5 | 1.2.1.5 | 2026-04-06 | 2026-04-07 | 2026-04-07 | 100 | 4 | 425 | 1 | 1 | 357ae9be-8a60-81da-8aea-f14b75b5a5d3 | 357ae9be-8a60-814f-894a-d5693095163e | 0 | 0 | As Soon As Possible | Auto Scheduled | AMETEK SAP XXL Project Plan Replan MSP Task.csv | AMETEK SAP XXL Project Plan Replan MSP Task.csv__2f0764ccac__2026-05-05T02-44-15-662Z | COULD NOT BE DETERMINED |  |  |  | Done | True  0 0 1 0 0 1 18 | Low 0 0 0  |  | 804, 805, 807, 802, 806, 803 | True |
| 357ae9be-8a60-8137-af24-c4f7a420ee7d | 3309 | GTS - SPL (Sanctioned party list) | (Unassigned) | 1.2.3.2.66 | 1.2.3.2.66 | 2026-06-16 | 2026-06-16 | 2026-04-16 | 0 | 5 | 2959 | 0 | 0 |  |  | -21.38 | 0 | As Soon As Possible | Auto Scheduled | AMETEK SAP XXL Project Plan Replan MSP Task.csv | AMETEK SAP XXL Project Plan Replan MSP Task.csv__2f0764ccac__2026-05-05T02-44-15-662Z | COULD NOT BE DETERMINED | 61 | True |  | Not started | True  -21.38 0 0 0 0 0 20 | Negative Float Critical 2 0 0  |  | 3311, 3310 | True |
| 357ae9be-8a60-8137-afc0-f798d63990a8 | 2699 | Error and Defect Mitigation | PTM | 1.2.4.2.47.4 | 1.2.4.2.47.4 | 2026-10-06 | 2026-10-06 | 2026-04-17 | 0 | 6 | 2695 | 1 | 1 | 357ae9be-8a60-810b-b32f-e4ac09ffff99 | 357ae9be-8a60-81ea-b9fa-fc9dde282f69 | -726 | 0 | As Soon As Possible | Auto Scheduled | AMETEK SAP XXL Project Plan Replan MSP Task.csv | AMETEK SAP XXL Project Plan Replan MSP Task.csv__2f0764ccac__2026-05-05T02-44-15-662Z | Eric Heisler | 172 | True |  | Not started | True  -726 0 1 0 0 0 26 | Negative Float Critical 2 0 0  |  |  |  |
| 357ae9be-8a60-8137-b304-e659f548d59b | 1118 | Manual File Staged and Posted "Ready" | PTP | 1.2.1.52.1 | 1.2.1.52.1 | 2026-04-17 | 2026-04-17 | 2026-04-14 | 100 | 5 | 704 | 1 | 0 | 357ae9be-8a60-81af-9699-c8a375eaed29 |  | 0 | 0 | Start No Earlier Than | Auto Scheduled | AMETEK SAP XXL Project Plan Replan MSP Task.csv | AMETEK SAP XXL Project Plan Replan MSP Task.csv__2f0764ccac__2026-05-05T02-44-15-662Z | Nevin Varkey |  |  |  | Done | True  0 0 0 0 0 0 12 | Wrong Dependency High 3 1 0 True | 2026-04-17 |  |  |
| 357ae9be-8a60-8137-b7e7-f067a1634e92 | 953 | GTS - Customers initial load from S4 (Run Interface) | (Unassigned) | 1.2.1.57 | 1.2.1.57 | 2026-04-15 | 2026-04-20 | 2026-04-10 | 100 | 4 | 425 | 0 | 0 |  |  | 0 | 0 | As Soon As Possible | Auto Scheduled | AMETEK SAP XXL Project Plan Replan MSP Task.csv | AMETEK SAP XXL Project Plan Replan MSP Task.csv__2f0764ccac__2026-05-05T02-44-15-662Z | COULD NOT BE DETERMINED |  |  |  | Done | True  0 0 0 0 0 0 12 | Low 0 0 0  |  | 1174, 1175 | True |
| 357ae9be-8a60-8137-bdf0-e91de2c32281 | 909 | Import Group 4 - workbench / dev work | Development | 1.1.1.7.2.7 | 1.1.1.7.2.7 | 2026-06-25 | 2026-06-25 | 2026-07-14 | 0 | 6 | 902 | 1 | 1 | 357ae9be-8a60-8169-ac3f-d59165e81ef5 | 357ae9be-8a60-81ac-b21c-ed8932fb2550 | -298.02 | 0 | As Soon As Possible | Auto Scheduled | AMETEK SAP XXL Project Plan Replan MSP Task.csv | AMETEK SAP XXL Project Plan Replan MSP Task.csv__2f0764ccac__2026-05-05T02-44-15-662Z | Bijoykrishna Das |  |  |  | Not started | True  -298.02 0 1 0 0 0 18 | Negative Float Critical 2 0 0  |  |  |  |
| 357ae9be-8a60-8138-800d-d0133e65175e | 816 | Post Load Validation | Finance | 1.2.1.12.3 | 1.2.1.12.3 | 2026-04-22 | 2026-04-22 | 2026-04-15 | 100 | 5 | 761 | 1 | 0 | 357ae9be-8a60-818c-aa73-e510cfb483fd |  | 0 | 0 | Start No Earlier Than | Auto Scheduled | AMETEK SAP XXL Project Plan Replan MSP Task.csv | AMETEK SAP XXL Project Plan Replan MSP Task.csv__2f0764ccac__2026-05-05T02-44-15-662Z | Kasey Hughes |  |  |  | Done | True  0 0 0 0 0 0 12 | Low 0 0 0 True | 2026-04-17 |  |  |
| 357ae9be-8a60-8138-85be-d5be5de62f5e | 2760 | GTS - License - Create | (Unassigned) | 1.2.4.2.62 | 1.2.4.2.62 | 2026-10-02 | 2026-10-02 | 2026-04-16 | 0 | 5 | 2898 | 0 | 0 |  |  | -86.63 | 0 | As Soon As Possible | Auto Scheduled | AMETEK SAP XXL Project Plan Replan MSP Task.csv | AMETEK SAP XXL Project Plan Replan MSP Task.csv__2f0764ccac__2026-05-05T02-44-15-662Z | COULD NOT BE DETERMINED | 169 | True |  | Not started | True  -86.63 0 0 0 0 0 20 | Negative Float Critical 2 0 0  |  | 2762, 2761 | True |
| 357ae9be-8a60-8138-8678-e8214f22730d | 1108 | Post Load Validation | PTM | 1.2.1.49.3 | 1.2.1.49.3 | 2026-04-16 | 2026-04-16 | 2026-04-20 | 100 | 5 | 949 | 1 | 1 | 357ae9be-8a60-818e-b790-dc2cca6aee2c | 357ae9be-8a60-811a-8ad1-c32d4543b1bc | 0 | 0 | As Soon As Possible | Auto Scheduled | AMETEK SAP XXL Project Plan Replan MSP Task.csv | AMETEK SAP XXL Project Plan Replan MSP Task.csv__2f0764ccac__2026-05-05T02-44-15-662Z | Eric Heisler |  |  |  | Done | True  0 0 1 1 1 0 23 | Low 0 0 0  |  |  |  |
| 357ae9be-8a60-8138-8b93-f96b58cd5b5f | 1217 | Load | OTC | 1.2.1.65.1 | 1.2.1.65.1 | 2026-04-16 | 2026-04-16 | 2025-03-13 | 100 | 5 | 1216 | 1 | 1 | 357ae9be-8a60-81be-bdd7-f6be26ecc566 | 357ae9be-8a60-81b7-a0b8-e0a8e6d5c5d4 | 0 | 0 | As Soon As Possible | Auto Scheduled | AMETEK SAP XXL Project Plan Replan MSP Task.csv | AMETEK SAP XXL Project Plan Replan MSP Task.csv__2f0764ccac__2026-05-05T02-44-15-662Z | James VanRiper |  |  |  | Done | True  0 0 1 1 1 0 23 | Wrong Dependency High 3 1 0  |  |  |  |
| 357ae9be-8a60-8138-9740-c3a2e26ce964 | 1215 | Post Load Validation | OTC | 1.2.1.64.2 | 1.2.1.64.2 | 2026-04-21 | 2026-04-21 | 2026-04-16 | 100 | 5 | 1213 | 1 | 0 | 357ae9be-8a60-81ba-8906-ed7df9dfa75f |  | 0 | 0 | Start No Earlier Than | Auto Scheduled | AMETEK SAP XXL Project Plan Replan MSP Task.csv | AMETEK SAP XXL Project Plan Replan MSP Task.csv__2f0764ccac__2026-05-05T02-44-15-662Z | James VanRiper |  |  |  | Done | True  0 0 0 0 0 0 12 | Low 0 0 0 True | 2026-04-17 |  |  |
| 357ae9be-8a60-8138-9ac0-d3be3f66fa61 | 1924 | Run ALE Transaction to QS5 from DS4 130 | PTM | 1.2.2.2.37.1 | 1.2.2.2.37.1 | 2026-05-18 | 2026-05-18 | 2026-04-06 | 0 | 6 | 1923 | 0 | 1 |  | 357ae9be-8a60-81c6-9d1b-f7f33881528a | -19.52 | 0 | As Soon As Possible | Auto Scheduled | AMETEK SAP XXL Project Plan Replan MSP Task.csv | AMETEK SAP XXL Project Plan Replan MSP Task.csv__2f0764ccac__2026-05-05T02-44-15-662Z | Eric Heisler | 42 | True | True | Not started | True  -19.52 0 1 0 0 0 26 | Negative Float, Open Start Critical 3 0 0  |  |  |  |
| 357ae9be-8a60-8138-9dfa-c8b84bf09dd8 | 1961 | Error and Defect Mitigation | PTM | 1.2.2.2.47.4 | 1.2.2.2.47.4 | 2026-05-26 | 2026-05-26 | 2026-04-17 | 0 | 6 | 1957 | 1 | 1 | 357ae9be-8a60-81d5-b4a5-f5402d74a94e | 357ae9be-8a60-81ca-abff-e32cc3aac5b4 | -67.27 | 0 | As Soon As Possible | Auto Scheduled | AMETEK SAP XXL Project Plan Replan MSP Task.csv | AMETEK SAP XXL Project Plan Replan MSP Task.csv__2f0764ccac__2026-05-05T02-44-15-662Z | Eric Heisler | 39 | True |  | Not started | True  -67.27 0 1 0 0 0 26 | Negative Float Critical 2 0 0  |  |  |  |
| 357ae9be-8a60-8138-a474-c96f1ccf6263 | 4273 | Simulate Load | Data | 1.2.5.2.18.3 | 1.2.5.2.18.3 | 2026-10-01 | 2026-10-01 | 2026-04-10 | 0 | 6 | 4270 | 1 | 1 | 357ae9be-8a60-8170-aa76-c9937833def6 | 357ae9be-8a60-81d9-a671-c96fa8e79903 | -700.77 | 0 | As Soon As Possible | Auto Scheduled | AMETEK SAP XXL Project Plan Replan MSP Task.csv | AMETEK SAP XXL Project Plan Replan MSP Task.csv__2f0764ccac__2026-05-05T02-44-15-662Z | Jyoti Nain | 174 | True |  | Not started | True  -700.77 0 1 0 0 0 26 | Negative Float Critical 2 0 0  |  |  |  |
| 357ae9be-8a60-8138-a89a-cda70d45c3e3 | 1799 | Post Load Validation | Finance | 1.2.2.2.18.6 | 1.2.2.2.18.6 | 2026-05-26 | 2026-05-26 | 2026-04-13 | 0 | 6 | 1793 | 1 | 1 | 357ae9be-8a60-8165-80ae-c2cfcf621d98 | 357ae9be-8a60-811c-a632-c761fdfa4cc5 | -58.77 | 0 | As Soon As Possible | Auto Scheduled | AMETEK SAP XXL Project Plan Replan MSP Task.csv | AMETEK SAP XXL Project Plan Replan MSP Task.csv__2f0764ccac__2026-05-05T02-44-15-662Z | Kasey Hughes | 43 | True |  | Not started | True  -58.77 0 1 1 40 0 31 | Wrong Successor, Negative Float Critical 5 0 1  |  |  |  |
| 357ae9be-8a60-8138-aa87-d33893f01fb3 | 945 | VC_Variant Tables Content | (Unassigned) | 1.2.1.45 | 1.2.1.45 | 2026-04-17 | 2026-04-17 | 2026-04-17 | 100 | 4 | 425 | 0 | 0 |  |  | 0 | 0 | As Soon As Possible | Auto Scheduled | AMETEK SAP XXL Project Plan Replan MSP Task.csv | AMETEK SAP XXL Project Plan Replan MSP Task.csv__2f0764ccac__2026-05-05T02-44-15-662Z | COULD NOT BE DETERMINED |  |  |  | Done | True  0 0 0 0 0 0 12 | Low 0 0 0  |  | 1167, 1166 | True |
| 357ae9be-8a60-8138-be9f-e539b8c24258 | 954 | GTS - Vendors initial load from S4 (Run Interface) | (Unassigned) | 1.2.1.58 | 1.2.1.58 | 2026-04-16 | 2026-04-17 | 2026-04-15 | 100 | 4 | 425 | 0 | 0 |  |  | 0 | 0 | As Soon As Possible | Auto Scheduled | AMETEK SAP XXL Project Plan Replan MSP Task.csv | AMETEK SAP XXL Project Plan Replan MSP Task.csv__2f0764ccac__2026-05-05T02-44-15-662Z | COULD NOT BE DETERMINED |  |  |  | Done | True  0 0 0 0 0 0 12 | Low 0 0 0  |  | 1176, 1177 | True |
| 357ae9be-8a60-8139-836a-d64a8ea95842 | 3379 | Fiori App Activation | Development | 1.1.1.8.1.11 | 1.1.1.8.1.11 | 2026-09-15 | 2026-09-15 | 2026-07-07 | 0 | 6 | 3368 | 1 | 0 | 357ae9be-8a60-81fd-8c12-e1cbb8e610f7 |  | -84.69 | 0 | As Soon As Possible | Auto Scheduled | AMETEK SAP XXL Project Plan Replan MSP Task.csv | AMETEK SAP XXL Project Plan Replan MSP Task.csv__2f0764ccac__2026-05-05T02-44-15-662Z | Bijoykrishna Das | 70 | True |  | Not started | True  -84.69 0 0 0 0 0 20 | Negative Float, Open Finish Critical 3 0 0  |  |  |  |
| 357ae9be-8a60-8139-852f-d3d3eb0fc62a | 2002 | Run material interface to GTS | OTC | 1.2.2.2.55.1 | 1.2.2.2.55.1 | 2026-05-21 | 2026-05-25 | 2026-04-16 | 0 | 6 | 2001 | 1 | 1 | 357ae9be-8a60-8190-a12b-da3a9cac7964 | 357ae9be-8a60-8167-b8b5-c2ec38a57569 | -70.27 | 0 | As Soon As Possible | Auto Scheduled | AMETEK SAP XXL Project Plan Replan MSP Task.csv | AMETEK SAP XXL Project Plan Replan MSP Task.csv__2f0764ccac__2026-05-05T02-44-15-662Z | James VanRiper | 39 | True |  | Not started | True  -70.27 0 1 0 0 0 26 | Wrong Dependency, Negative Float Critical 5 1 0  |  |  |  |
| 357ae9be-8a60-8139-8a01-e6689d0954af | 3046 | Open client for BP number range update | Basis | 1.2.3.2.14.7 | 1.2.3.2.14.7 | 2026-06-11 | 2026-06-11 | 2026-04-09 | 0 | 6 | 3039 | 1 | 1 | 357ae9be-8a60-81d3-8b8a-d779d8bdfcb8 | 357ae9be-8a60-81e7-850d-d75b77df227a | -8986 | 0 | As Soon As Possible | Auto Scheduled | AMETEK SAP XXL Project Plan Replan MSP Task.csv | AMETEK SAP XXL Project Plan Replan MSP Task.csv__2f0764ccac__2026-05-05T02-44-15-662Z | Lokchetan Meghavath | 63 | True |  | Not started | True  -8986 0 1 0 0 0 26 | Wrong Dependency, Negative Float Critical 5 1 0  |  |  |  |
| 357ae9be-8a60-8139-9352-dab0a56c53e8 | 942 | VC_Dependency Nets | (Unassigned) | 1.2.1.42 | 1.2.1.42 | 2026-04-15 | 2026-04-16 | 2026-04-16 | 100 | 4 | 425 | 0 | 0 |  |  | 0 | 0 | As Soon As Possible | Auto Scheduled | AMETEK SAP XXL Project Plan Replan MSP Task.csv | AMETEK SAP XXL Project Plan Replan MSP Task.csv__2f0764ccac__2026-05-05T02-44-15-662Z | COULD NOT BE DETERMINED |  |  |  | Done | True  0 0 0 0 0 0 12 | Low 0 0 0  |  | 1161, 1160 | True |
| 357ae9be-8a60-8139-9e40-e75ee0d408df | 2665 | Run ALE Transaction to QS5 from DS4 130 | PTM | 1.2.4.2.38.1 | 1.2.4.2.38.1 | 2026-09-24 | 2026-09-24 | 2026-04-06 | 0 | 6 | 2664 | 1 | 1 | 357ae9be-8a60-8187-9534-fe5c559ba129 | 357ae9be-8a60-81b7-b8d4-cdad76b1053a | -661.5 | 0 | As Soon As Possible | Auto Scheduled | AMETEK SAP XXL Project Plan Replan MSP Task.csv | AMETEK SAP XXL Project Plan Replan MSP Task.csv__2f0764ccac__2026-05-05T02-44-15-662Z | Eric Heisler | 171 | True |  | Not started | True  -661.5 0 1 0 0 0 26 | Negative Float Critical 2 0 0  |  |  |  |
| 357ae9be-8a60-8139-b032-ec9ebefdeac6 | 2959 | Master Data Loads | Data | 1.2.3.2 | 1.2.3.2 | 2026-06-08 | 2026-06-19 | 2026-06-19 | 0 | 4 | 2053 | 1 | 1 | 357ae9be-8a60-812e-aef8-ebc1c25bbcfe | 357ae9be-8a60-8199-92ae-eda8830268bf | -24.56 | 0 | As Soon As Possible | Auto Scheduled | AMETEK SAP XXL Project Plan Replan MSP Task.csv | AMETEK SAP XXL Project Plan Replan MSP Task.csv__2f0764ccac__2026-05-05T02-44-15-662Z | Jyoti Nain |  |  |  | Not started | True  -24.56 0 1 0 0 0 18 | Negative Float Critical 2 0 0  |  |  | True |
| 357ae9be-8a60-813a-87d4-c5cdabfa5fe1 | 2545 | PTP_CM27_Vendor Master - Mass Maintenance - LFA1-WERKR | PTP | 1.2.4.2.20 | 1.2.4.2.20 | 2026-09-24 | 2026-09-24 | 2026-04-15 | 0 | 5 | 2898 | 0 | 0 |  |  | -81.69 | 0 | As Soon As Possible | Auto Scheduled | AMETEK SAP XXL Project Plan Replan MSP Task.csv | AMETEK SAP XXL Project Plan Replan MSP Task.csv__2f0764ccac__2026-05-05T02-44-15-662Z | Muniraju Surappachari | 162 | True |  | Not started | True  -81.69 0 0 0 0 0 20 | Negative Float Critical 2 0 0  |  | 2547, 2551, 2548, 2549, 2546, 2550 | True |
| 357ae9be-8a60-813a-898d-f2752dcc1fe0 | 1000 | Pre Load Validation | PTP | 1.2.1.20.2 | 1.2.1.20.2 | 2026-04-10 | 2026-04-10 | 2026-04-10 | 100 | 5 | 752 | 1 | 1 | 357ae9be-8a60-8181-a902-f5385ade7cb8 | 357ae9be-8a60-81c7-9a3f-ef9279205d97 | 0 | 0 | As Soon As Possible | Auto Scheduled | AMETEK SAP XXL Project Plan Replan MSP Task.csv | AMETEK SAP XXL Project Plan Replan MSP Task.csv__2f0764ccac__2026-05-05T02-44-15-662Z | Nevin Varkey |  |  |  | Done | True  0 0 1 0 0 0 18 | Low 0 0 0  |  |  |  |
| 357ae9be-8a60-813a-8c88-f03f957c1587 | 794 | Post Load Validation | Finance | 1.2.1.10.6 | 1.2.1.10.6 | 2026-04-15 | 2026-04-16 | 2026-04-09 | 100 | 5 | 757 | 1 | 2 | 357ae9be-8a60-81cb-876e-d1051fc0a159 | 357ae9be-8a60-81e9-8d3a-c6760459bab9, 357ae9be-8a60-8174-b2fe-c8bd76346ecd | 0 | 0 | Finish No Earlier Than | Auto Scheduled | AMETEK SAP XXL Project Plan Replan MSP Task.csv | AMETEK SAP XXL Project Plan Replan MSP Task.csv__2f0764ccac__2026-05-05T02-44-15-662Z | Kasey Hughes |  |  |  | Done | True  0 0 2 2 12 0 29 | Low 0 0 0 True | 2026-04-14 |  |  |
| 357ae9be-8a60-813a-9f08-d37583343dee | 3395 | Create Migration Data Project in DMC | Data | 1.1.1.8.3.2 | 1.1.1.8.3.2 | 2026-09-23 | 2026-09-24 | 2026-07-16 | 0 | 6 | 3393 | 1 | 1 | 357ae9be-8a60-81ce-a502-febace550237 | 357ae9be-8a60-81cf-9699-f6d13ae8cd39 | -726.02 | 0 | As Soon As Possible | Auto Scheduled | AMETEK SAP XXL Project Plan Replan MSP Task.csv | AMETEK SAP XXL Project Plan Replan MSP Task.csv__2f0764ccac__2026-05-05T02-44-15-662Z | Jyoti Nain | 70 | True |  | Not started | True  -726.02 0 1 0 0 0 26 | Negative Float Critical 2 0 0  |  |  |  |
| 357ae9be-8a60-813a-a3fc-f5e1e3acf49c | 1976 | Error and Defect Mitigation | OTC | 1.2.2.2.50.4 | 1.2.2.2.50.4 | 2026-05-28 | 2026-05-28 | 2026-04-21 | 0 | 6 | 1972 | 1 | 1 | 357ae9be-8a60-81f9-8d94-c13a763aa984 | 357ae9be-8a60-81c4-b30c-cf71956a4954 | -67.27 | 0 | As Soon As Possible | Auto Scheduled | AMETEK SAP XXL Project Plan Replan MSP Task.csv | AMETEK SAP XXL Project Plan Replan MSP Task.csv__2f0764ccac__2026-05-05T02-44-15-662Z | Ric Haraida | 37 | True |  | Not started | True  -67.27 0 1 0 0 0 26 | Negative Float Critical 2 0 0  |  |  |  |
| 357ae9be-8a60-813a-ab13-ff1407a0c5be | 2721 | RTR_CM11_Asset_Master | (Unassigned) | 1.2.4.2.52 | 1.2.4.2.52 | 2026-09-24 | 2026-10-02 | 2026-04-13 | 0 | 5 | 2898 | 0 | 0 |  |  | -86.81 | 0 | As Soon As Possible | Auto Scheduled | AMETEK SAP XXL Project Plan Replan MSP Task.csv | AMETEK SAP XXL Project Plan Replan MSP Task.csv__2f0764ccac__2026-05-05T02-44-15-662Z | COULD NOT BE DETERMINED | 172 | True |  | Not started | True  -86.81 0 0 0 0 0 20 | Negative Float Critical 2 0 0  |  | 2722, 2726, 2727, 2724, 2723, 2725 | True |
| 357ae9be-8a60-813a-bb2c-f9fc075c9d21 | 2453 | Load | Data | 1.2.4.2.5.5 | 1.2.4.2.5.5 | 2026-09-28 | 2026-09-28 | 2026-04-08 | 0 | 6 | 2448 | 1 | 1 | 357ae9be-8a60-81c1-be6a-fa552b9fe805 | 357ae9be-8a60-8127-852e-e15e02b8beab | -665.5 | 0 | As Soon As Possible | Auto Scheduled | AMETEK SAP XXL Project Plan Replan MSP Task.csv | AMETEK SAP XXL Project Plan Replan MSP Task.csv__2f0764ccac__2026-05-05T02-44-15-662Z | Jyoti Nain | 173 | True |  | Not started | True  -665.5 0 1 0 0 0 26 | Negative Float Critical 2 0 0  |  |  |  |
| 357ae9be-8a60-813b-83c5-e580725bea9e | 2679 | VC_Variant Tables | (Unassigned) | 1.2.4.2.43 | 1.2.4.2.43 | 2026-09-29 | 2026-09-30 | 2026-04-17 | 0 | 5 | 2898 | 0 | 0 |  |  | -85.28 | 0 | As Soon As Possible | Auto Scheduled | AMETEK SAP XXL Project Plan Replan MSP Task.csv | AMETEK SAP XXL Project Plan Replan MSP Task.csv__2f0764ccac__2026-05-05T02-44-15-662Z | COULD NOT BE DETERMINED | 166 | True |  | Not started | True  -85.28 0 0 0 0 0 20 | Negative Float Critical 2 0 0  |  | 2681, 2680 | True |
| 357ae9be-8a60-813b-87b2-e90e33a3d943 | 2442 | Load File Staged and Posted "Ready" | Finance | 1.2.4.2.4.1 | 1.2.4.2.4.1 | 2026-09-24 | 2026-09-24 | 2026-04-06 | 0 | 6 | 2441 | 1 | 1 | 357ae9be-8a60-8164-9d0a-fda0094c8875 | 357ae9be-8a60-81f6-bbfa-f274efb3008b | -677.75 | 0 | As Soon As Possible | Auto Scheduled | AMETEK SAP XXL Project Plan Replan MSP Task.csv | AMETEK SAP XXL Project Plan Replan MSP Task.csv__2f0764ccac__2026-05-05T02-44-15-662Z | Kasey Hughes | 171 | True |  | Not started | True  -677.75 0 1 0 0 0 26 | Wrong Dependency, Negative Float Critical 5 1 0  |  |  |  |
| 357ae9be-8a60-813b-88ad-dd5c4b999291 | 4421 | VC_Variant Tables Content | (Unassigned) | 1.2.5.2.44 | 1.2.5.2.44 | 2026-09-30 | 2026-10-01 | 2026-04-17 | 0 | 5 | 4162 | 0 | 0 |  |  | -85.28 | 0 | As Soon As Possible | Auto Scheduled | AMETEK SAP XXL Project Plan Replan MSP Task.csv | AMETEK SAP XXL Project Plan Replan MSP Task.csv__2f0764ccac__2026-05-05T02-44-15-662Z | COULD NOT BE DETERMINED | 167 | True |  | Not started | True  -85.28 0 0 0 0 0 20 | Negative Float Critical 2 0 0  |  | 4423, 4422 | True |
| 357ae9be-8a60-813b-9104-c416a0c2e2e0 | 298 | Go-live (Technical) | (Unassigned) | 1.1.2.8.4 | 1.1.2.8.4 | 2026-10-21 | 2026-10-22 | 2026-01-22 | 0 | 5 | 294 | 1 | 0 | 357ae9be-8a60-8167-8cd5-e4a082211fa8 |  | 12 | 12 | As Soon As Possible | Auto Scheduled | AMETEK SAP XXL Project Plan Replan MSP Task.csv | AMETEK SAP XXL Project Plan Replan MSP Task.csv__2f0764ccac__2026-05-05T02-44-15-662Z | COULD NOT BE DETERMINED | 273 | True |  | Not started |   12 12 0 0 0 0 8 | Open Finish Medium 1 0 0  |  |  |  |
| 357ae9be-8a60-813b-a188-e0ffa4fd5979 | 3160 | Load | Data | 1.2.3.2.31.5 | 1.2.3.2.31.5 | 2026-06-16 | 2026-06-16 | 2026-04-17 | 0 | 6 | 3155 | 1 | 1 | 357ae9be-8a60-81fc-9189-c3fcec4adf77 | 357ae9be-8a60-81cf-8e07-d81fbe1523d2 | -182.39 | 0 | As Soon As Possible | Auto Scheduled | AMETEK SAP XXL Project Plan Replan MSP Task.csv | AMETEK SAP XXL Project Plan Replan MSP Task.csv__2f0764ccac__2026-05-05T02-44-15-662Z | Jyoti Nain | 60 | True |  | Not started | True  -182.39 0 1 0 0 0 26 | Negative Float Critical 2 0 0  |  |  |  |
| 357ae9be-8a60-813b-ab10-e002cd1bd2ce | 2800 | Master Data Loads | Data | 1.2.2.2 | 1.2.2.2 | 2026-05-18 | 2026-05-29 | 2026-05-29 | 0 | 4 | 2809 | 1 | 1 | 357ae9be-8a60-81f9-86e0-d06eb0ca7bf1 | 357ae9be-8a60-8132-b9d5-c57d0f14703b | -9.56 | 0 | As Soon As Possible | Auto Scheduled | AMETEK SAP XXL Project Plan Replan MSP Task.csv | AMETEK SAP XXL Project Plan Replan MSP Task.csv__2f0764ccac__2026-05-05T02-44-15-662Z | Jyoti Nain |  |  |  | Not started | True  -9.56 0 1 0 0 0 18 | Negative Float High 2 0 0  |  |  | True |
| 357ae9be-8a60-813b-b0a5-d96f44c48a8f | 1712 | Pre Load Validation | Finance | 1.2.2.2.5.2 | 1.2.2.2.5.2 | 2026-05-20 | 2026-05-20 | 2026-04-08 | 0 | 6 | 1710 | 1 | 1 | 357ae9be-8a60-81aa-b632-d38164765264 | 357ae9be-8a60-8103-9794-dcd4ba73d36f | -63.52 | 0 | As Soon As Possible | Auto Scheduled | AMETEK SAP XXL Project Plan Replan MSP Task.csv | AMETEK SAP XXL Project Plan Replan MSP Task.csv__2f0764ccac__2026-05-05T02-44-15-662Z | Kasey Hughes | 42 | True | True | Not started | True  -63.52 0 1 0 0 0 26 | Negative Float Critical 2 0 0  |  |  |  |
| 357ae9be-8a60-813b-b1b0-dd2c217bee9b | 4176 | Load | Data | 1.2.5.2.3.5 | 1.2.5.2.3.5 | 2026-09-29 | 2026-09-29 | 2026-04-08 | 0 | 6 | 4171 | 1 | 1 | 357ae9be-8a60-8196-a7b9-da4e1b6ebbcc | 357ae9be-8a60-817f-ac30-d49da3420dd8 | -718.52 | 0 | As Soon As Possible | Auto Scheduled | AMETEK SAP XXL Project Plan Replan MSP Task.csv | AMETEK SAP XXL Project Plan Replan MSP Task.csv__2f0764ccac__2026-05-05T02-44-15-662Z | Jyoti Nain | 174 | True |  | Not started | True  -718.52 0 1 0 0 0 26 | Negative Float Critical 2 0 0  |  |  |  |
| 357ae9be-8a60-813b-b43c-e62c481d29f6 | 3085 | Error and Defect Mitigation | PTP | 1.2.3.2.20.4 | 1.2.3.2.20.4 | 2026-06-08 | 2026-06-08 | 2026-04-13 | 0 | 6 | 3081 | 1 | 0 | 357ae9be-8a60-81f5-96e8-ce622850625c |  | -125.52 | 0 | As Soon As Possible | Auto Scheduled | AMETEK SAP XXL Project Plan Replan MSP Task.csv | AMETEK SAP XXL Project Plan Replan MSP Task.csv__2f0764ccac__2026-05-05T02-44-15-662Z | Nevin Varkey | 56 | True |  | Not started | True  -125.52 0 0 0 0 0 20 | Wrong Dependency, Negative Float, Open Finish Critical 6 1 0  |  |  |  |
| 357ae9be-8a60-813b-bb13-fe4652c7743d | 3238 | VC_VK30 Pricing Variant | (Unassigned) | 1.2.3.2.48 | 1.2.3.2.48 | 2026-06-17 | 2026-06-17 | 2026-04-20 | 0 | 5 | 2959 | 0 | 0 |  |  | -23.41 | 0 | As Soon As Possible | Auto Scheduled | AMETEK SAP XXL Project Plan Replan MSP Task.csv | AMETEK SAP XXL Project Plan Replan MSP Task.csv__2f0764ccac__2026-05-05T02-44-15-662Z | COULD NOT BE DETERMINED | 58 | True |  | Not started | True  -23.41 0 0 0 0 0 20 | Negative Float Critical 2 0 0  |  | 3241, 3240, 3239 | True |
| 357ae9be-8a60-813c-84cf-ec8f08ad52b1 | 2462 | Pre Load Validation | Finance | 1.2.4.2.7.2 | 1.2.4.2.7.2 | 2026-09-29 | 2026-09-30 | 2026-04-09 | 0 | 6 | 2460 | 1 | 1 | 357ae9be-8a60-81c0-90e8-c416063b5fed | 357ae9be-8a60-8191-83cf-f4174ce4f207 | -680 | 0 | As Soon As Possible | Auto Scheduled | AMETEK SAP XXL Project Plan Replan MSP Task.csv | AMETEK SAP XXL Project Plan Replan MSP Task.csv__2f0764ccac__2026-05-05T02-44-15-662Z | Kasey Hughes | 174 | True |  | Not started | True  -680 0 1 0 0 0 26 | Negative Float Critical 2 0 0  |  |  |  |
| 357ae9be-8a60-813c-92e4-e6e886f188f2 | 998 | Post Load Validation | Finance | 1.2.1.19.6 | 1.2.1.19.6 | 2026-04-17 | 2026-04-17 | 2026-04-13 | 100 | 5 | 768 | 1 | 0 | 357ae9be-8a60-81ff-aaec-f33c2191ccce |  | 0 | 0 | As Soon As Possible | Auto Scheduled | AMETEK SAP XXL Project Plan Replan MSP Task.csv | AMETEK SAP XXL Project Plan Replan MSP Task.csv__2f0764ccac__2026-05-05T02-44-15-662Z | Kasey Hughes |  |  |  | Done | True  0 0 0 0 0 0 12 | Low 0 0 0  |  |  |  |
| 357ae9be-8a60-813c-9a64-f6e14b6c9683 | 2485 | Error and Defect Mitigation | Finance | 1.2.4.2.10.4 | 1.2.4.2.10.4 | 2026-09-25 | 2026-09-25 | 2026-04-10 | 0 | 6 | 2481 | 1 | 1 | 357ae9be-8a60-81ba-9965-e975cd83e4c3 | 357ae9be-8a60-81c8-a940-dd913ea00426 | -658.5 | 0 | As Soon As Possible | Auto Scheduled | AMETEK SAP XXL Project Plan Replan MSP Task.csv | AMETEK SAP XXL Project Plan Replan MSP Task.csv__2f0764ccac__2026-05-05T02-44-15-662Z | Kasey Hughes | 168 | True |  | Not started | True  -658.5 0 1 0 0 0 26 | Negative Float Critical 2 0 0  |  |  |  |
| 357ae9be-8a60-813c-a514-f4b73a3a715d | 1752 | Load | Finance | 1.2.2.2.11.2 | 1.2.2.2.11.2 | 2026-05-21 | 2026-05-22 | 2026-04-15 | 0 | 6 | 1750 | 1 | 1 | 357ae9be-8a60-817d-9392-eebffc048abf | 357ae9be-8a60-81e2-9cd5-ce87e1a6aaa0 | -38.52 | 0 | As Soon As Possible | Auto Scheduled | AMETEK SAP XXL Project Plan Replan MSP Task.csv | AMETEK SAP XXL Project Plan Replan MSP Task.csv__2f0764ccac__2026-05-05T02-44-15-662Z | Kasey Hughes | 37 | True |  | Not started | True  -38.52 0 1 0 0 0 26 | Negative Float Critical 2 0 0  |  |  |  |
| 357ae9be-8a60-813c-aa67-e55287381e4f | 4388 | Pre Load Validation | PTM | 1.2.5.2.35.2 | 1.2.5.2.35.2 | 2026-10-01 | 2026-10-01 | 2026-04-17 | 0 | 6 | 4386 | 1 | 1 | 357ae9be-8a60-81b1-8147-eb282c9c9e93 | 357ae9be-8a60-815e-b092-ff91aeade286 | -41746 | 0 | As Soon As Possible | Auto Scheduled | AMETEK SAP XXL Project Plan Replan MSP Task.csv | AMETEK SAP XXL Project Plan Replan MSP Task.csv__2f0764ccac__2026-05-05T02-44-15-662Z | Brad Meseck | 167 | True |  | Not started | True  -41746 0 1 0 0 0 26 | Negative Float Critical 2 0 0  |  |  |  |
| 357ae9be-8a60-813c-b3e1-e857e0d0886a | 4427 | PTM_CM52_Super_BOM | PTM | 1.2.5.2.46 | 1.2.5.2.46 | 2026-09-29 | 2026-10-05 | 2026-04-16 | 0 | 5 | 4162 | 0 | 0 |  |  | -90.75 | 0 | As Soon As Possible | Auto Scheduled | AMETEK SAP XXL Project Plan Replan MSP Task.csv | AMETEK SAP XXL Project Plan Replan MSP Task.csv__2f0764ccac__2026-05-05T02-44-15-662Z | Brad Meseck | 172 | True |  | Not started | True  -90.75 0 0 0 0 0 20 | Negative Float Critical 2 0 0  |  | 4429, 4431, 4432, 4433, 4428, 4430 | True |
| 357ae9be-8a60-813c-b53e-d758eb3e8aaf | 652 | Environment Ready for Build | PMO | 1.1.1.4.22 | 1.1.1.4.22 | 2026-04-06 | 2026-04-06 | 2026-04-06 | 100 | 5 | 88 | 1 | 0 | 357ae9be-8a60-8161-a7ee-c6935d18bcd8 |  | 0 | 0 | As Soon As Possible | Auto Scheduled | AMETEK SAP XXL Project Plan Replan MSP Task.csv | AMETEK SAP XXL Project Plan Replan MSP Task.csv__2f0764ccac__2026-05-05T02-44-15-662Z | Chris Hanily |  |  |  | Done | True  0 0 0 0 0 0 12 | Low 0 0 0  |  |  |  |
| 357ae9be-8a60-813c-b9b0-dac44b65adde | 798 | Simulate Load | Data | 1.2.1.11.3 | 1.2.1.11.3 | 2026-04-10 | 2026-04-10 | 2026-04-10 | 100 | 5 | 758 | 1 | 1 | 357ae9be-8a60-81eb-ad7a-ec398c361fe5 | 357ae9be-8a60-81cb-8958-d03617c7c0a3 | 0 | 0 | As Soon As Possible | Auto Scheduled | AMETEK SAP XXL Project Plan Replan MSP Task.csv | AMETEK SAP XXL Project Plan Replan MSP Task.csv__2f0764ccac__2026-05-05T02-44-15-662Z | Jyoti Nain |  |  |  | Done | True  0 0 1 0 0 0 18 | Low 0 0 0  |  |  |  |
| 357ae9be-8a60-813c-ba12-fb438770d64d | 661 | Import Group 3 - prior to transactions | Development;PTM;Finance;PMO;Europe IT lead;OTC;TESTING | 1.1.1.4.18.5 | 1.1.1.4.18.5 | 2026-03-24 | 2026-03-24 | 2026-03-24 | 100 | 6 | 647 | 1 | 1 | 357ae9be-8a60-8112-b607-cc3c84e6c5d3 | 357ae9be-8a60-81e5-ae82-c5cd60df3771 | 0 | 0 | As Soon As Possible | Auto Scheduled | AMETEK SAP XXL Project Plan Replan MSP Task.csv | AMETEK SAP XXL Project Plan Replan MSP Task.csv__2f0764ccac__2026-05-05T02-44-15-662Z | Bijoykrishna Das |  |  |  | Done | True  0 0 1 0 0 0 18 | Low 0 0 0  |  |  |  |
| 357ae9be-8a60-813c-ba4e-f0b7b9201b7f | 756 | RTR_CM03_Cost Center Hierarchy | (Unassigned) | 1.2.1.3 | 1.2.1.3 | 2026-04-06 | 2026-04-07 | 2026-04-07 | 100 | 4 | 425 | 1 | 3 | 357ae9be-8a60-81c0-a605-d1917e4681be | 357ae9be-8a60-8162-bad5-e08ffb0a4cec, 357ae9be-8a60-810a-bd4a-c1b875eb1c60, 357ae9be-8a60-81da-8aea-f14b75b5a5d3 | 0 | 0 | As Soon As Possible | Auto Scheduled | AMETEK SAP XXL Project Plan Replan MSP Task.csv | AMETEK SAP XXL Project Plan Replan MSP Task.csv__2f0764ccac__2026-05-05T02-44-15-662Z | COULD NOT BE DETERMINED |  |  |  | Done | True  0 0 3 0 0 0 30 | Wrong Successor High 3 0 1  |  | 783, 787, 786 | True |
| 357ae9be-8a60-813d-8409-e017c2722552 | 2988 | Error and Defect Mitigation | Finance | 1.2.3.2.5.4 | 1.2.3.2.5.4 | 2026-06-10 | 2026-06-10 | 2026-04-08 | 0 | 6 | 2984 | 1 | 1 | 357ae9be-8a60-81f9-8aa5-e7a991d83437 | 357ae9be-8a60-81bc-92bf-e7a3456f3cfc | -183.52 | 0 | As Soon As Possible | Auto Scheduled | AMETEK SAP XXL Project Plan Replan MSP Task.csv | AMETEK SAP XXL Project Plan Replan MSP Task.csv__2f0764ccac__2026-05-05T02-44-15-662Z | Kasey Hughes | 63 | True |  | Not started | True  -183.52 0 1 0 0 0 26 | Negative Float Critical 2 0 0  |  |  |  |
| 357ae9be-8a60-813d-8db0-d4f9fc117621 | 2455 | Manual Configuration Activities in QS5 | (Unassigned) | 1.2.4.2.6 | 1.2.4.2.6 | 2026-09-24 | 2026-10-06 | 2026-04-15 | 0 | 5 | 2898 | 1 | 0 | 357ae9be-8a60-813c-b53e-d758eb3e8aaf |  | -89.13 | 0 | As Soon As Possible | Auto Scheduled | AMETEK SAP XXL Project Plan Replan MSP Task.csv | AMETEK SAP XXL Project Plan Replan MSP Task.csv__2f0764ccac__2026-05-05T02-44-15-662Z | COULD NOT BE DETERMINED | 174 | True |  | Not started | True  -89.13 0 0 0 0 0 20 | Wrong Dependency, Negative Float Critical 5 1 0  |  | 2459, 2457, 2458, 2456 | True |
| 357ae9be-8a60-813d-8f3f-c833b76d5085 | 1839 | PTP_CM26_Material_Master - SERV - Service Materials | PTP | 1.2.2.2.25 | 1.2.2.2.25 | 2026-05-20 | 2026-05-21 | 2026-04-15 | 0 | 5 | 2800 | 0 | 0 |  |  | -3.16 | 0 | As Soon As Possible | Auto Scheduled | AMETEK SAP XXL Project Plan Replan MSP Task.csv | AMETEK SAP XXL Project Plan Replan MSP Task.csv__2f0764ccac__2026-05-05T02-44-15-662Z | Muniraju Surappachari | 36 | True |  | Not started | True  -3.16 0 0 0 0 0 20 | Negative Float High 2 0 0  |  | 1844, 1840, 1841, 1845, 1843, 1842 | True |
| 357ae9be-8a60-813d-9938-fa516e5f46b5 | 1046 | Simulate Load | Data | 1.2.1.29.3 | 1.2.1.29.3 | 2026-04-16 | 2026-04-16 | 2026-04-16 | 100 | 5 | 936 | 1 | 1 | 357ae9be-8a60-8105-8688-e90a0baaa353 | 357ae9be-8a60-81e6-a99d-c3f6fd22a481 | 0 | 0 | As Soon As Possible | Auto Scheduled | AMETEK SAP XXL Project Plan Replan MSP Task.csv | AMETEK SAP XXL Project Plan Replan MSP Task.csv__2f0764ccac__2026-05-05T02-44-15-662Z | Jyoti Nain |  |  |  | Done | True  0 0 1 0 0 0 18 | Low 0 0 0  |  |  |  |
| 357ae9be-8a60-813d-a1c6-f96b9af3ecb2 | 783 | Manual File Staged and Posted "Ready" | Finance | 1.2.1.3.1 | 1.2.1.3.1 | 2026-04-06 | 2026-04-06 | 2026-04-06 | 100 | 5 | 756 | 1 | 1 | 357ae9be-8a60-81f9-8103-c2590b210309 | 357ae9be-8a60-8186-93a8-f20ab9a1e69c | 0 | 0 | Start No Earlier Than | Auto Scheduled | AMETEK SAP XXL Project Plan Replan MSP Task.csv | AMETEK SAP XXL Project Plan Replan MSP Task.csv__2f0764ccac__2026-05-05T02-44-15-662Z | Kasey Hughes |  |  |  | Done | True  0 0 1 0 0 0 18 | Low 0 0 0 True | 2026-04-06 |  |  |
| 357ae9be-8a60-813d-ad27-ec19e64fa280 | 1786 | PTP_CM27_Vendor Master - Z001 - External Sales Rep | PTP | 1.2.2.2.17 | 1.2.2.2.17 | 2026-05-25 | 2026-05-28 | 2026-04-13 | 0 | 5 | 2800 | 0 | 0 |  |  | -8.13 | 0 | As Soon As Possible | Auto Scheduled | AMETEK SAP XXL Project Plan Replan MSP Task.csv | AMETEK SAP XXL Project Plan Replan MSP Task.csv__2f0764ccac__2026-05-05T02-44-15-662Z | Muniraju Surappachari | 45 | True |  | Not started | True  -8.13 0 0 0 0 0 20 | Negative Float High 2 0 0  |  | 1787, 1789, 1792, 1788, 1791, 1790 | True |
| 357ae9be-8a60-813d-b5a8-d6e55a7dbbee | 2520 | OTC_CM23_Customer_Hierarchy | OTC | 1.2.4.2.16 | 1.2.4.2.16 | 2026-09-30 | 2026-10-01 | 2026-04-10 | 0 | 5 | 2898 | 0 | 0 |  |  | -85.69 | 0 | As Soon As Possible | Auto Scheduled | AMETEK SAP XXL Project Plan Replan MSP Task.csv | AMETEK SAP XXL Project Plan Replan MSP Task.csv__2f0764ccac__2026-05-05T02-44-15-662Z | Anitha Jothi | 174 | True |  | Not started | True  -85.69 0 0 0 0 0 20 | Negative Float Critical 2 0 0  |  | 2521, 2522, 2523 | True |
| 357ae9be-8a60-813d-ba6d-cbecad728247 | 3382 | Functional Leads Validation of Transport List | Development;PTM;Finance;PMO;Europe IT lead;OTC;TESTING | 1.1.1.8.1.14 | 1.1.1.8.1.14 | 2026-09-15 | 2026-09-15 | 2026-07-07 | 0 | 6 | 3368 | 1 | 1 | 357ae9be-8a60-81fd-8c12-e1cbb8e610f7 | 357ae9be-8a60-8172-ba47-ecdb909b1f4a | -90.75 | 0 | As Soon As Possible | Auto Scheduled | AMETEK SAP XXL Project Plan Replan MSP Task.csv | AMETEK SAP XXL Project Plan Replan MSP Task.csv__2f0764ccac__2026-05-05T02-44-15-662Z | Bijoykrishna Das | 70 | True |  | Not started | True  -90.75 0 1 1 141 0 31 | Wrong Successor, Negative Float Critical 5 0 1  |  |  |  |

| id | uid | name | workstream | outlineNumber | wbs | start | finish | baselineFinish | pct | outlineLevel | parentUid | predCount | sucCount | predIds | sucIds | totalSlackDaysRaw | freeSlackDaysRaw | constraintType | taskMode | mspSourceFile | mspImportVersion | assignedTo | slipDays | isSlipped | isDue14 | status | cpm | scheduleQuality | constraintDate | childUids | isSummary | isOverdueStart |
| --- | --- | --- | --- | --- | --- | --- | --- | --- | --- | --- | --- | --- | --- | --- | --- | --- | --- | --- | --- | --- | --- | --- | --- | --- | --- | --- | --- | --- | --- | --- | --- | --- |
| 357ae9be-8a60-813e-814f-eba85c5f881c | 4243 | Load File Staged and Posted "Ready" | OTC | 1.2.5.2.14.1 | 1.2.5.2.14.1 | 2026-09-29 | 2026-09-29 | 2026-04-09 | 0 | 6 | 4242 | 1 | 1 | 357ae9be-8a60-81d0-ba9b-fac3ecf31398 | 357ae9be-8a60-81f4-bd59-ce26678bf808 | -40261 | 0 | As Soon As Possible | Auto Scheduled | AMETEK SAP XXL Project Plan Replan MSP Task.csv | AMETEK SAP XXL Project Plan Replan MSP Task.csv__2f0764ccac__2026-05-05T02-44-15-662Z | Ric Haraida | 173 | True |  | Not started | True  -40261 0 1 0 0 0 26 | Negative Float Critical 2 0 0  |  |  |  |  |
| 357ae9be-8a60-813e-83db-f9a25488072f | 3030 | Load File Staged and Posted "Ready" | OTC | 1.2.3.2.13.1 | 1.2.3.2.13.1 | 2026-06-11 | 2026-06-11 | 2026-04-08 | 0 | 6 | 3029 | 1 | 1 | 357ae9be-8a60-8185-8ff0-e7244c64b7d0 | 357ae9be-8a60-8101-ab0f-e94ffe0140fd | -11671 | 0 | As Soon As Possible | Auto Scheduled | AMETEK SAP XXL Project Plan Replan MSP Task.csv | AMETEK SAP XXL Project Plan Replan MSP Task.csv__2f0764ccac__2026-05-05T02-44-15-662Z | Ric Haraida | 64 | True |  | Not started | True  -11671 0 1 0 0 0 26 | Wrong Dependency, Negative Float Critical 5 1 0  |  |  |  |  |
| 357ae9be-8a60-813e-8540-e60015b2c301 | 3109 | Simulate Load | Data | 1.2.3.2.24.3 | 1.2.3.2.24.3 | 2026-06-09 | 2026-06-09 | 2026-04-14 | 0 | 6 | 3106 | 1 | 1 | 357ae9be-8a60-81d7-8f0a-d399c69957d4 | 357ae9be-8a60-8124-8b73-eaed9492d54a | -190.27 | 0 | As Soon As Possible | Auto Scheduled | AMETEK SAP XXL Project Plan Replan MSP Task.csv | AMETEK SAP XXL Project Plan Replan MSP Task.csv__2f0764ccac__2026-05-05T02-44-15-662Z | Jyoti Nain | 56 | True |  | Not started | True  -190.27 0 1 0 0 0 26 | Negative Float Critical 2 0 0  |  |  |  |  |
| 357ae9be-8a60-813e-89b9-f1c9b1382b41 | 86 | DS4-110 Unit Test Client | (Unassigned) | 1.1.1.2 | 1.1.1.2 | 2025-05-08 | 2025-05-08 | 2025-05-08 | 100 | 4 | 5 | 0 | 0 |  |  | 0 | 0 | As Soon As Possible | Auto Scheduled | AMETEK SAP XXL Project Plan Replan MSP Task.csv | AMETEK SAP XXL Project Plan Replan MSP Task.csv__2f0764ccac__2026-05-05T02-44-15-662Z | COULD NOT BE DETERMINED |  |  |  | Done | True  0 0 0 0 0 0 12 | Low 0 0 0  |  | 101, 106 | True |  |
| 357ae9be-8a60-813e-8bbe-f2eaedac97f1 | 4499 | GTS - License - Create | (Unassigned) | 1.2.5.2.62 | 1.2.5.2.62 | 2026-10-02 | 2026-10-02 | 2026-04-16 | 0 | 5 | 4162 | 0 | 0 |  |  | -86.63 | 0 | As Soon As Possible | Auto Scheduled | AMETEK SAP XXL Project Plan Replan MSP Task.csv | AMETEK SAP XXL Project Plan Replan MSP Task.csv__2f0764ccac__2026-05-05T02-44-15-662Z | COULD NOT BE DETERMINED | 169 | True |  | Not started | True  -86.63 0 0 0 0 0 20 | Negative Float Critical 2 0 0  |  | 4500, 4501 | True |  |
| 357ae9be-8a60-813e-9086-da5ee1cca0d0 | 1054 | Load | Data | 1.2.1.30.5 | 1.2.1.30.5 | 2026-04-16 | 2026-04-16 | 2026-04-16 | 100 | 5 | 937 | 1 | 1 | 357ae9be-8a60-81d4-80ef-c274560be6ed | 357ae9be-8a60-81bb-81ab-fb001b48bd4a | 0 | 0 | As Soon As Possible | Auto Scheduled | AMETEK SAP XXL Project Plan Replan MSP Task.csv | AMETEK SAP XXL Project Plan Replan MSP Task.csv__2f0764ccac__2026-05-05T02-44-15-662Z | Jyoti Nain |  |  |  | Done | True  0 0 1 0 0 0 18 | Low 0 0 0  |  |  |  |  |
| 357ae9be-8a60-813e-9126-fedfdfb6b8c1 | 819 | Simulate Load | Data | 1.2.1.15.3 | 1.2.1.15.3 | 2026-04-09 | 2026-04-09 | 2026-04-09 | 100 | 5 | 762 | 1 | 1 | 357ae9be-8a60-8166-9dbf-e1966cc91c01 | 357ae9be-8a60-8120-a9b4-fe70ddbe33fb | 0 | 0 | As Soon As Possible | Auto Scheduled | AMETEK SAP XXL Project Plan Replan MSP Task.csv | AMETEK SAP XXL Project Plan Replan MSP Task.csv__2f0764ccac__2026-05-05T02-44-15-662Z | Jyoti Nain |  |  |  | Done | True  0 0 1 0 0 0 18 | Wrong Dependency High 3 1 0  |  |  |  |  |
| 357ae9be-8a60-813e-a17b-d9bee8aec470 | 873 | Manual Activities Group 3 | Development;PTM;Finance;PMO;Europe IT lead;OTC;TESTING | 1.1.1.5.2.6 | 1.1.1.5.2.6 | 2026-05-12 | 2026-05-13 | 2026-05-26 | 0 | 6 | 867 | 1 | 1 | 357ae9be-8a60-815f-9501-f55e31b783c3 | 357ae9be-8a60-81ac-b7c8-c7a23609996d | -25.5 | 0 | As Soon As Possible | Auto Scheduled | AMETEK SAP XXL Project Plan Replan MSP Task.csv | AMETEK SAP XXL Project Plan Replan MSP Task.csv__2f0764ccac__2026-05-05T02-44-15-662Z | Bijoykrishna Das |  |  | True | Not started | True  -25.5 0 1 0 0 0 18 | Negative Float Critical 2 0 0  |  |  |  |  |
| 357ae9be-8a60-813e-a770-caf64bc994c6 | 674 | Validate Syniti Connections to QS5 | Data | 1.1.1.4.8 | 1.1.1.4.8 | 2026-02-05 | 2026-02-05 | 2026-02-05 | 100 | 5 | 88 | 1 | 0 | 357ae9be-8a60-8162-91ec-cf1baabe3c85 |  | 0 | 0 | As Soon As Possible | Auto Scheduled | AMETEK SAP XXL Project Plan Replan MSP Task.csv | AMETEK SAP XXL Project Plan Replan MSP Task.csv__2f0764ccac__2026-05-05T02-44-15-662Z | Jyoti Nain |  |  |  | Done | True  0 0 0 0 0 0 12 | Low 0 0 0  |  |  |  |  |
| 357ae9be-8a60-813e-ac7a-e527c6540992 | 2603 | Load | Data | 1.2.4.2.28.5 | 1.2.4.2.28.5 | 2026-09-29 | 2026-09-30 | 2026-04-16 | 0 | 6 | 2598 | 1 | 1 | 357ae9be-8a60-81cc-83de-df75b47f05b7 | 357ae9be-8a60-810a-970a-e5819cd25b1b | -676.25 | 0 | As Soon As Possible | Auto Scheduled | AMETEK SAP XXL Project Plan Replan MSP Task.csv | AMETEK SAP XXL Project Plan Replan MSP Task.csv__2f0764ccac__2026-05-05T02-44-15-662Z | Jyoti Nain | 167 | True |  | Not started | True  -676.25 0 1 0 0 0 26 | Negative Float Critical 2 0 0  |  |  |  |  |
| 357ae9be-8a60-813e-b418-c7f1980ac279 | 2977 | RTR_CM05_Profit_Center | (Unassigned) | 1.2.3.2.4 | 1.2.3.2.4 | 2026-06-09 | 2026-06-10 | 2026-04-07 | 0 | 5 | 2959 | 0 | 0 |  |  | -22.94 | 0 | As Soon As Possible | Auto Scheduled | AMETEK SAP XXL Project Plan Replan MSP Task.csv | AMETEK SAP XXL Project Plan Replan MSP Task.csv__2f0764ccac__2026-05-05T02-44-15-662Z | COULD NOT BE DETERMINED | 64 | True |  | Not started | True  -22.94 0 0 0 0 0 20 | Negative Float Critical 2 0 0  |  | 2980, 2978, 2979, 2981, 2982, 2983 | True |  |
| 357ae9be-8a60-813e-b7c7-f611d79c08a4 | 1745 | Pre Load Validation | Finance | 1.2.2.2.10.2 | 1.2.2.2.10.2 | 2026-05-19 | 2026-05-19 | 2026-04-10 | 0 | 6 | 1743 | 1 | 1 | 357ae9be-8a60-8168-8818-caae662d4e3d | 357ae9be-8a60-8149-ad97-fdea27e16201 | -16.52 | 0 | As Soon As Possible | Auto Scheduled | AMETEK SAP XXL Project Plan Replan MSP Task.csv | AMETEK SAP XXL Project Plan Replan MSP Task.csv__2f0764ccac__2026-05-05T02-44-15-662Z | Kasey Hughes | 39 | True | True | Not started | True  -16.52 0 1 0 0 0 26 | Negative Float Critical 2 0 0  |  |  |  |  |
| 357ae9be-8a60-813e-b837-e29c9b646923 | 4420 | Post Load Validation | PTM | 1.2.5.2.43.2 | 1.2.5.2.43.2 | 2026-09-30 | 2026-09-30 | 2026-04-17 | 0 | 6 | 4418 | 1 | 1 | 357ae9be-8a60-81d5-8281-ced5d3b6803b | 357ae9be-8a60-81ef-92b2-e706ea5c2475 | -682.27 | 0 | As Soon As Possible | Auto Scheduled | AMETEK SAP XXL Project Plan Replan MSP Task.csv | AMETEK SAP XXL Project Plan Replan MSP Task.csv__2f0764ccac__2026-05-05T02-44-15-662Z | Eric Heisler | 166 | True |  | Not started | True  -682.27 0 1 0 0 0 26 | Negative Float Critical 2 0 0  |  |  |  |  |
| 357ae9be-8a60-813e-bc0e-d226d1e7dae0 | 1154 | Run ALE Transaction to QS5 from DS4 130 | PTM | 1.2.1.39.1 | 1.2.1.39.1 | 2026-04-06 | 2026-04-06 | 2026-04-06 | 100 | 5 | 939 | 1 | 1 | 357ae9be-8a60-81fe-a12f-fc1f08198af5 | 357ae9be-8a60-81dc-b1e2-e65885183926 | 0 | 0 | As Soon As Possible | Auto Scheduled | AMETEK SAP XXL Project Plan Replan MSP Task.csv | AMETEK SAP XXL Project Plan Replan MSP Task.csv__2f0764ccac__2026-05-05T02-44-15-662Z | Eric Heisler |  |  |  | Done | True  0 0 1 0 0 0 18 | Low 0 0 0  |  |  |  |  |
| 357ae9be-8a60-813f-80d4-e47fa8c9241d | 801 | Post Load Validation | Finance | 1.2.1.11.6 | 1.2.1.11.6 | 2026-04-10 | 2026-04-10 | 2026-04-10 | 100 | 5 | 758 | 1 | 0 | 357ae9be-8a60-8142-9972-cd1ecdb5f8b2 |  | 0 | 0 | As Soon As Possible | Auto Scheduled | AMETEK SAP XXL Project Plan Replan MSP Task.csv | AMETEK SAP XXL Project Plan Replan MSP Task.csv__2f0764ccac__2026-05-05T02-44-15-662Z | Kasey Hughes |  |  |  | Done | True  0 0 0 0 0 0 12 | Low 0 0 0  |  |  |  |  |
| 357ae9be-8a60-813f-83fa-dfca39818ad5 | 1216 | SPL Master File | (Unassigned) | 1.2.1.65 | 1.2.1.65 | 2026-04-15 | 2026-04-16 | 2025-03-13 | 100 | 4 | 425 | 0 | 0 |  |  | 0 | 0 | As Soon As Possible | Auto Scheduled | AMETEK SAP XXL Project Plan Replan MSP Task.csv | AMETEK SAP XXL Project Plan Replan MSP Task.csv__2f0764ccac__2026-05-05T02-44-15-662Z | COULD NOT BE DETERMINED |  |  |  | Done | True  0 0 0 0 0 0 12 | Low 0 0 0  |  | 1217, 1218 | True |  |
| 357ae9be-8a60-813f-8a8a-d80f729c2d5f | 2540 | Pre Load Validation | PTP | 1.2.4.2.19.2 | 1.2.4.2.19.2 | 2026-10-01 | 2026-10-01 | 2026-04-10 | 0 | 6 | 2538 | 1 | 1 | 357ae9be-8a60-8184-a5d1-e96a65b1e3be | 357ae9be-8a60-81ed-8d02-e48f989626d4 | -691.75 | 0 | As Soon As Possible | Auto Scheduled | AMETEK SAP XXL Project Plan Replan MSP Task.csv | AMETEK SAP XXL Project Plan Replan MSP Task.csv__2f0764ccac__2026-05-05T02-44-15-662Z | Nevin Varkey | 174 | True |  | Not started | True  -691.75 0 1 0 0 0 26 | Negative Float Critical 2 0 0  |  |  |  |  |
| 357ae9be-8a60-813f-9328-c0d8dc770d62 | 1312 | Open Client | Basis | 1.1.1.6.3.1 | 1.1.1.6.3.1 | 2026-05-29 | 2026-05-29 | 2026-05-27 | 0 | 6 | 1311 | 1 | 1 | 357ae9be-8a60-8123-922a-c49fc5877537 | 357ae9be-8a60-81ae-a08a-c5c91b22a335 | -14491 | 0 | As Soon As Possible | Auto Scheduled | AMETEK SAP XXL Project Plan Replan MSP Task.csv | AMETEK SAP XXL Project Plan Replan MSP Task.csv__2f0764ccac__2026-05-05T02-44-15-662Z | Lokchetan Meghavath | 2 | True |  | Not started | True  -14491 0 1 0 0 0 26 | Wrong Dependency, Negative Float Critical 5 1 0  |  |  |  |  |
| 357ae9be-8a60-813f-9f1e-dfadcd8f8129 | 3227 | Simulate Load | Data | 1.2.3.2.46.3 | 1.2.3.2.46.3 | 2026-06-11 | 2026-06-12 | 2026-04-16 | 0 | 6 | 3224 | 1 | 1 | 357ae9be-8a60-819b-9d83-c65fbbb17cf2 | 357ae9be-8a60-8152-819e-e8b040f85155 | -187.27 | 0 | As Soon As Possible | Auto Scheduled | AMETEK SAP XXL Project Plan Replan MSP Task.csv | AMETEK SAP XXL Project Plan Replan MSP Task.csv__2f0764ccac__2026-05-05T02-44-15-662Z | Jyoti Nain | 57 | True |  | Not started | True  -187.27 0 1 0 0 0 26 | Negative Float Critical 2 0 0  |  |  |  |  |
| 357ae9be-8a60-8140-8712-fc46dfc88a59 | 3075 | Extract File | Data | 1.2.3.2.19.1 | 1.2.3.2.19.1 | 2026-06-15 | 2026-06-15 | 2026-04-10 | 0 | 6 | 3074 | 1 | 1 | 357ae9be-8a60-8156-a9a7-e68186b68119 | 357ae9be-8a60-8187-ab82-d47b59e71cef | -169.77 | 0 | As Soon As Possible | Auto Scheduled | AMETEK SAP XXL Project Plan Replan MSP Task.csv | AMETEK SAP XXL Project Plan Replan MSP Task.csv__2f0764ccac__2026-05-05T02-44-15-662Z | Jyoti Nain | 66 | True |  | Not started | True  -169.77 0 1 0 0 0 26 | Wrong Dependency, Negative Float Critical 5 1 0  |  |  |  |  |
| 357ae9be-8a60-8140-8c03-c6c251d0b7a2 | 4256 | Error and Defect Mitigation | PTP | 1.2.5.2.15.4 | 1.2.5.2.15.4 | 2026-10-02 | 2026-10-06 | 2026-04-14 | 0 | 6 | 4252 | 1 | 1 | 357ae9be-8a60-8110-8af2-d89abfe150d9 | 357ae9be-8a60-8111-a374-f12307008950 | -718.52 | 0 | As Soon As Possible | Auto Scheduled | AMETEK SAP XXL Project Plan Replan MSP Task.csv | AMETEK SAP XXL Project Plan Replan MSP Task.csv__2f0764ccac__2026-05-05T02-44-15-662Z | Nevin Varkey | 175 | True |  | Not started | True  -718.52 0 1 0 0 0 26 | Negative Float Critical 2 0 0  |  |  |  |  |
| 357ae9be-8a60-8140-8c5a-d79df2420f80 | 3340 | System Setup | (Unassigned) | 1.1.1.5.1 | 1.1.1.5.1 | 2026-04-27 | 2026-05-05 | 2026-05-05 | 49 | 5 | 849 | 1 | 1 | 357ae9be-8a60-813c-b53e-d758eb3e8aaf | 357ae9be-8a60-8140-9dea-def2d309ec0b | -3 | 0 | As Soon As Possible | Auto Scheduled | AMETEK SAP XXL Project Plan Replan MSP Task.csv | AMETEK SAP XXL Project Plan Replan MSP Task.csv__2f0764ccac__2026-05-05T02-44-15-662Z | COULD NOT BE DETERMINED |  |  |  | In progress | True  -3 0 1 0 0 0 18 | Wrong Dependency, Negative Float, Out Of Sequence Risk High 7 1 0  |  | 862, 860, 856, 866, 853, 850, 861, 855, 865, 863, 858, 864, 854, 859, 857 | True |  |
| 357ae9be-8a60-8140-8df5-df5d36b163f0 | 3162 | PTM_CM38_Routing Conversion | PTM | 1.2.3.2.32 | 1.2.3.2.32 | 2026-06-11 | 2026-06-18 | 2026-04-21 | 0 | 5 | 2959 | 0 | 0 |  |  | -22.8 | 0 | As Soon As Possible | Auto Scheduled | AMETEK SAP XXL Project Plan Replan MSP Task.csv | AMETEK SAP XXL Project Plan Replan MSP Task.csv__2f0764ccac__2026-05-05T02-44-15-662Z | Brad Meseck | 58 | True |  | Not started | True  -22.8 0 0 0 0 0 20 | Negative Float Critical 2 0 0  |  | 3168, 3164, 3163, 3167, 3166, 3165 | True |  |
| 357ae9be-8a60-8140-9156-f5d93ee23e66 | 3332 | Open AP | (Unassigned) | 1.2.3.4.3 | 1.2.3.4.3 | 2026-06-22 | 2026-06-23 | 2026-06-23 | 0 | 5 | 3326 | 1 | 1 | 357ae9be-8a60-8174-a2dc-c58e95f8bdd9 | 357ae9be-8a60-815e-a67d-cd717867b760 | -196.52 | 0 | As Soon As Possible | Auto Scheduled | AMETEK SAP XXL Project Plan Replan MSP Task.csv | AMETEK SAP XXL Project Plan Replan MSP Task.csv__2f0764ccac__2026-05-05T02-44-15-662Z | COULD NOT BE DETERMINED |  |  |  | Not started | True  -196.52 0 1 0 0 0 18 | Negative Float Critical 2 0 0  |  |  |  |  |
| 357ae9be-8a60-8140-9dea-def2d309ec0b | 867 | Release Transports to Client | (Unassigned) | 1.1.1.5.2 | 1.1.1.5.2 | 2026-05-06 | 2026-05-14 | 2026-05-26 | 0 | 5 | 849 | 1 | 1 | 357ae9be-8a60-8140-8c5a-d79df2420f80 | 357ae9be-8a60-810b-a047-e61b7750fd00 | -25.5 | 0 | As Soon As Possible | Auto Scheduled | AMETEK SAP XXL Project Plan Replan MSP Task.csv | AMETEK SAP XXL Project Plan Replan MSP Task.csv__2f0764ccac__2026-05-05T02-44-15-662Z | COULD NOT BE DETERMINED |  |  | True | Not started | True  -25.5 0 0 0 0 0 14 | Negative Float Critical 2 0 0  |  | 869, 873, 868, 872, 871, 875, 874, 870 | True | True |
| 357ae9be-8a60-8140-9e72-c35892cb42f3 | 4261 | Load | OTC | 1.2.5.2.16.2 | 1.2.5.2.16.2 | 2026-09-30 | 2026-10-01 | 2026-04-10 | 0 | 6 | 4259 | 1 | 1 | 357ae9be-8a60-818e-9a66-eb2accc3d0bd | 357ae9be-8a60-81fc-9456-f7a5ad21ab95 | -685.52 | 0 | Start No Earlier Than | Auto Scheduled | AMETEK SAP XXL Project Plan Replan MSP Task.csv | AMETEK SAP XXL Project Plan Replan MSP Task.csv__2f0764ccac__2026-05-05T02-44-15-662Z | Ric Haraida | 174 | True |  | Not started | True  -685.52 0 1 0 0 0 26 | Negative Float Critical 2 0 0 True | 2026-04-15 |  |  |  |
| 357ae9be-8a60-8140-a693-c73c855c587d | 3063 | Simulate Load | Data | 1.2.3.2.17.3 | 1.2.3.2.17.3 | 2026-06-15 | 2026-06-15 | 2026-04-10 | 0 | 6 | 3060 | 1 | 1 | 357ae9be-8a60-81aa-880d-e1a162854cd1 | 357ae9be-8a60-81ca-880c-ca2bd9dec1f6 | -185.02 | 0 | As Soon As Possible | Auto Scheduled | AMETEK SAP XXL Project Plan Replan MSP Task.csv | AMETEK SAP XXL Project Plan Replan MSP Task.csv__2f0764ccac__2026-05-05T02-44-15-662Z | Jyoti Nain | 66 | True |  | Not started | True  -185.02 0 1 0 0 0 26 | Wrong Dependency, Negative Float Critical 5 1 0  |  |  |  |  |
| 357ae9be-8a60-8140-ab5f-f764b158713d | 1888 | PTM_CM38_Routing Conversion | PTM | 1.2.2.2.32 | 1.2.2.2.32 | 2026-05-21 | 2026-05-28 | 2026-04-21 | 0 | 5 | 2800 | 0 | 0 |  |  | -7.8 | 0 | As Soon As Possible | Auto Scheduled | AMETEK SAP XXL Project Plan Replan MSP Task.csv | AMETEK SAP XXL Project Plan Replan MSP Task.csv__2f0764ccac__2026-05-05T02-44-15-662Z | Brad Meseck | 37 | True |  | Not started | True  -7.8 0 0 0 0 0 20 | Negative Float High 2 0 0  |  | 1890, 1889, 1892, 1893, 1891, 1894 | True |  |
| 357ae9be-8a60-8140-abbf-f82e2324b1c3 | 4384 | Load | Data | 1.2.5.2.34.5 | 1.2.5.2.34.5 | 2026-10-01 | 2026-10-01 | 2026-04-20 | 0 | 6 | 4379 | 1 | 1 | 357ae9be-8a60-8131-8753-fa3c6105d009 | 357ae9be-8a60-8154-b4c5-d1bd96db8b78 | -689.27 | 0 | Finish No Earlier Than | Auto Scheduled | AMETEK SAP XXL Project Plan Replan MSP Task.csv | AMETEK SAP XXL Project Plan Replan MSP Task.csv__2f0764ccac__2026-05-05T02-44-15-662Z | Jyoti Nain | 164 | True |  | Not started | True  -689.27 0 1 0 0 0 26 | Negative Float Critical 2 0 0 True | 2026-04-17 |  |  |  |
| 357ae9be-8a60-8140-b282-dfbd75bf19e1 | 3247 | Load File Staged and Posted "Ready" | OTC | 1.2.3.2.50.1 | 1.2.3.2.50.1 | 2026-06-18 | 2026-06-18 | 2026-04-20 | 0 | 6 | 3246 | 1 | 1 | 357ae9be-8a60-8108-90f1-c7a2d99193b6 | 357ae9be-8a60-81b2-ba35-fbadd37c1c73 | -11236 | 0 | As Soon As Possible | Auto Scheduled | AMETEK SAP XXL Project Plan Replan MSP Task.csv | AMETEK SAP XXL Project Plan Replan MSP Task.csv__2f0764ccac__2026-05-05T02-44-15-662Z | Ric Haraida | 59 | True |  | Not started | True  -11236 0 1 0 0 0 26 | Wrong Dependency, Negative Float Critical 5 1 0  |  |  |  |  |
| 357ae9be-8a60-8140-b93c-fac0729b01a5 | 2777 | Load File Staged and Posted "Ready" | Finance | 1.2.4.2.67.1 | 1.2.4.2.67.1 | 2026-09-24 | 2026-09-24 | 2026-04-10 | 0 | 6 | 2776 | 1 | 1 | 357ae9be-8a60-8163-84fd-f9d0ff240ac7 | 357ae9be-8a60-8125-8286-d7af3f5eeee5 | -39090 | 0 | Start No Earlier Than | Auto Scheduled | AMETEK SAP XXL Project Plan Replan MSP Task.csv | AMETEK SAP XXL Project Plan Replan MSP Task.csv__2f0764ccac__2026-05-05T02-44-15-662Z | Kasey Hughes | 167 | True |  | Not started | True  -39090 0 1 1 534 0 31 | Wrong Dependency, Wrong Successor, Negative Float Critical 8 1 1 True | 2026-04-20 |  |  |  |
| 357ae9be-8a60-8141-824b-e8fd9d3a2e0b | 2741 | Post Load Validation | OTC | 1.2.4.2.55.2 | 1.2.4.2.55.2 | 2026-10-01 | 2026-10-01 | 2026-04-16 | 0 | 6 | 2739 | 1 | 1 | 357ae9be-8a60-8167-98e1-dd003212701a | 357ae9be-8a60-81b7-bdff-e977e8bf72f6 | -712.25 | 0 | As Soon As Possible | Auto Scheduled | AMETEK SAP XXL Project Plan Replan MSP Task.csv | AMETEK SAP XXL Project Plan Replan MSP Task.csv__2f0764ccac__2026-05-05T02-44-15-662Z | James VanRiper | 168 | True |  | Not started | True  -712.25 0 1 0 0 0 26 | Negative Float Critical 2 0 0  |  |  |  |  |
| 357ae9be-8a60-8141-82f7-f46173a3e919 | 2612 | PTM_CM31_BOM Conversion | PTM | 1.2.4.2.30 | 1.2.4.2.30 | 2026-09-29 | 2026-10-01 | 2026-04-17 | 0 | 5 | 2898 | 0 | 0 |  |  | -87.55 | 0 | As Soon As Possible | Auto Scheduled | AMETEK SAP XXL Project Plan Replan MSP Task.csv | AMETEK SAP XXL Project Plan Replan MSP Task.csv__2f0764ccac__2026-05-05T02-44-15-662Z | Brad Meseck | 167 | True |  | Not started | True  -87.55 0 0 0 0 0 20 | Negative Float Critical 2 0 0  |  | 2615, 2616, 2614, 2618, 2617, 2613 | True |  |
| 357ae9be-8a60-8141-8465-c627d31e805b | 1964 | VC_VK30 Pricing Variant | (Unassigned) | 1.2.2.2.48 | 1.2.2.2.48 | 2026-05-27 | 2026-05-27 | 2026-04-20 | 0 | 5 | 2800 | 0 | 0 |  |  | -8.41 | 0 | As Soon As Possible | Auto Scheduled | AMETEK SAP XXL Project Plan Replan MSP Task.csv | AMETEK SAP XXL Project Plan Replan MSP Task.csv__2f0764ccac__2026-05-05T02-44-15-662Z | COULD NOT BE DETERMINED | 37 | True |  | Not started | True  -8.41 0 0 0 0 0 20 | Negative Float High 2 0 0  |  | 1967, 1966, 1965 | True |  |
| 357ae9be-8a60-8141-87f5-c8cbd8a5768b | 2598 | PTP_CM28_Purchase_Info_Record External Processing | PTP | 1.2.4.2.28 | 1.2.4.2.28 | 2026-09-29 | 2026-09-30 | 2026-04-16 | 0 | 5 | 2898 | 0 | 0 |  |  | -84.53 | 0 | As Soon As Possible | Auto Scheduled | AMETEK SAP XXL Project Plan Replan MSP Task.csv | AMETEK SAP XXL Project Plan Replan MSP Task.csv__2f0764ccac__2026-05-05T02-44-15-662Z | Muniraju Surappachari | 167 | True |  | Not started | True  -84.53 0 0 0 0 0 20 | Negative Float Critical 2 0 0  |  | 2604, 2601, 2599, 2603, 2602, 2600 | True |  |
| 357ae9be-8a60-8141-885f-f54147dcc8ec | 1775 | PTP_CM27_Vendor Master as Customer - FLCU01 | PTP | 1.2.2.2.15 | 1.2.2.2.15 | 2026-05-25 | 2026-05-29 | 2026-04-14 | 0 | 5 | 2800 | 0 | 0 |  |  | -9.56 | 0 | As Soon As Possible | Auto Scheduled | AMETEK SAP XXL Project Plan Replan MSP Task.csv | AMETEK SAP XXL Project Plan Replan MSP Task.csv__2f0764ccac__2026-05-05T02-44-15-662Z | Muniraju Surappachari | 45 | True |  | Not started | True  -9.56 0 0 0 0 0 20 | Negative Float High 2 0 0  |  | 1780, 1778, 1777, 1781, 1776, 1779 | True |  |
| 357ae9be-8a60-8141-8898-d05c92d4cdf5 | 2471 | Error and Defect Mitigation | Finance | 1.2.4.2.8.4 | 1.2.4.2.8.4 | 2026-09-28 | 2026-09-28 | 2026-04-08 | 0 | 6 | 2467 | 1 | 1 | 357ae9be-8a60-81b0-a46f-f586265ab10c | 357ae9be-8a60-818b-bed9-e9f0bce5df46 | -662.5 | 0 | As Soon As Possible | Auto Scheduled | AMETEK SAP XXL Project Plan Replan MSP Task.csv | AMETEK SAP XXL Project Plan Replan MSP Task.csv__2f0764ccac__2026-05-05T02-44-15-662Z | Kasey Hughes | 173 | True |  | Not started | True  -662.5 0 1 0 0 0 26 | Negative Float Critical 2 0 0  |  |  |  |  |
| 357ae9be-8a60-8141-8e10-fc3d20299796 | 963 | Load | Data | 1.2.1.6.5 | 1.2.1.6.5 | 2026-04-08 | 2026-04-08 | 2026-04-08 | 100 | 5 | 767 | 1 | 1 | 357ae9be-8a60-81db-b40a-d6260f6e4327 | 357ae9be-8a60-81ba-8dd6-de8382df1265 | 0 | 0 | As Soon As Possible | Auto Scheduled | AMETEK SAP XXL Project Plan Replan MSP Task.csv | AMETEK SAP XXL Project Plan Replan MSP Task.csv__2f0764ccac__2026-05-05T02-44-15-662Z | Jyoti Nain |  |  |  | Done | True  0 0 1 0 0 0 18 | Low 0 0 0  |  |  |  |  |
| 357ae9be-8a60-8141-aa0a-cd9e937e20c4 | 1951 | Load File Staged and Posted "Ready" | PTM | 1.2.2.2.46.1 | 1.2.2.2.46.1 | 2026-05-21 | 2026-05-21 | 2026-04-15 | 0 | 6 | 1950 | 1 | 1 | 357ae9be-8a60-819c-aa40-e834724723c1 | 357ae9be-8a60-81e3-bcec-f711149bf8bc | -4036 | 0 | As Soon As Possible | Auto Scheduled | AMETEK SAP XXL Project Plan Replan MSP Task.csv | AMETEK SAP XXL Project Plan Replan MSP Task.csv__2f0764ccac__2026-05-05T02-44-15-662Z | Eric Heisler | 36 | True |  | Not started | True  -4036 0 1 0 0 0 26 | Wrong Dependency, Negative Float Critical 5 1 0  |  |  |  |  |
| 357ae9be-8a60-8141-acad-c3a930ba728c | 1987 | Error and Defect Mitigation | Finance | 1.2.2.2.52.4 | 1.2.2.2.52.4 | 2026-05-19 | 2026-05-21 | 2026-04-10 | 0 | 6 | 1983 | 1 | 1 | 357ae9be-8a60-818d-b654-e4cfcc5ceee2 | 357ae9be-8a60-81be-955c-fdd5e9141514 | -29.52 | 0 | As Soon As Possible | Auto Scheduled | AMETEK SAP XXL Project Plan Replan MSP Task.csv | AMETEK SAP XXL Project Plan Replan MSP Task.csv__2f0764ccac__2026-05-05T02-44-15-662Z | Kasey Hughes | 41 | True |  | Not started | True  -29.52 0 1 0 0 0 26 | Negative Float Critical 2 0 0  |  |  |  |  |
| 357ae9be-8a60-8141-b0d5-ebd80cf8926d | 2685 | VC_Characteristic Groups | (Unassigned) | 1.2.4.2.45 | 1.2.4.2.45 | 2026-09-29 | 2026-10-01 | 2026-04-17 | 0 | 5 | 2898 | 0 | 0 |  |  | -86 | 0 | As Soon As Possible | Auto Scheduled | AMETEK SAP XXL Project Plan Replan MSP Task.csv | AMETEK SAP XXL Project Plan Replan MSP Task.csv__2f0764ccac__2026-05-05T02-44-15-662Z | COULD NOT BE DETERMINED | 167 | True |  | Not started | True  -86 0 0 0 0 0 20 | Negative Float Critical 2 0 0  |  | 2686, 2687 | True |  |
| 357ae9be-8a60-8141-b86c-da8c08198aaa | 4235 | Open client for BP number range update | Basis | 1.2.5.2.13.3 | 1.2.5.2.13.3 | 2026-09-29 | 2026-09-29 | 2026-04-09 | 0 | 6 | 4232 | 1 | 1 | 357ae9be-8a60-81d0-ba9b-fac3ecf31398 | 357ae9be-8a60-811b-bd41-d63decbf8341 | -40276 | 0 | As Soon As Possible | Auto Scheduled | AMETEK SAP XXL Project Plan Replan MSP Task.csv | AMETEK SAP XXL Project Plan Replan MSP Task.csv__2f0764ccac__2026-05-05T02-44-15-662Z | Lokchetan Meghavath | 173 | True |  | Not started | True  -40276 0 1 0 0 0 26 | Negative Float Critical 2 0 0  |  |  |  |  |
| 357ae9be-8a60-8142-893f-c75618e34291 | 1221 | Open Client | Basis | 1.1.1.5.3.1 | 1.1.1.5.3.1 | 2026-05-14 | 2026-05-14 | 2026-05-27 | 0 | 6 | 1226 | 1 | 1 | 357ae9be-8a60-818f-be8e-fa86486fe95d | 357ae9be-8a60-8176-baef-ee9da430e290 | -3931 | 0 | As Soon As Possible | Auto Scheduled | AMETEK SAP XXL Project Plan Replan MSP Task.csv | AMETEK SAP XXL Project Plan Replan MSP Task.csv__2f0764ccac__2026-05-05T02-44-15-662Z | Lokchetan Meghavath |  |  | True | Not started | True  -3931 0 1 0 0 0 18 | Negative Float Critical 2 0 0  |  |  |  |  |
| 357ae9be-8a60-8142-8de6-eee11ca3cbc6 | 2563 | PTP_CM27_BP_Intercompany Customer | PTP | 1.2.4.2.23 | 1.2.4.2.23 | 2026-09-24 | 2026-09-25 | 2026-04-14 | 0 | 5 | 2898 | 0 | 0 |  |  | -81.25 | 0 | As Soon As Possible | Auto Scheduled | AMETEK SAP XXL Project Plan Replan MSP Task.csv | AMETEK SAP XXL Project Plan Replan MSP Task.csv__2f0764ccac__2026-05-05T02-44-15-662Z | Muniraju Surappachari | 164 | True |  | Not started | True  -81.25 0 0 0 0 0 20 | Negative Float Critical 2 0 0  |  | 2564, 2565, 2568, 2567, 2569, 2566 | True |  |
| 357ae9be-8a60-8142-98a7-ff4429afd4e1 | 80 | Assigned to Testing Cycle | TESTING | 1.1.2.10.3.4 | 1.1.2.10.3.4 | 2025-03-13 | 2025-03-13 | 2025-03-13 | 100 | 6 | 65 | 0 | 0 |  |  | 0 | 0 | As Soon As Possible | Auto Scheduled | AMETEK SAP XXL Project Plan Replan MSP Task.csv | AMETEK SAP XXL Project Plan Replan MSP Task.csv__2f0764ccac__2026-05-05T02-44-15-662Z | Kishore Kakarla |  |  |  | Done | True  0 0 0 0 0 0 12 | Low 0 0 0  |  |  |  |  |
| 357ae9be-8a60-8142-9972-cd1ecdb5f8b2 | 800 | Load | Data | 1.2.1.11.5 | 1.2.1.11.5 | 2026-04-10 | 2026-04-10 | 2026-04-10 | 100 | 5 | 758 | 1 | 1 | 357ae9be-8a60-81cb-8958-d03617c7c0a3 | 357ae9be-8a60-813f-80d4-e47fa8c9241d | 0 | 0 | As Soon As Possible | Auto Scheduled | AMETEK SAP XXL Project Plan Replan MSP Task.csv | AMETEK SAP XXL Project Plan Replan MSP Task.csv__2f0764ccac__2026-05-05T02-44-15-662Z | Jyoti Nain |  |  |  | Done | True  0 0 1 0 0 0 18 | Low 0 0 0  |  |  |  |  |
| 357ae9be-8a60-8143-81e6-f69d391cf512 | 3172 | Simulate Load | Data | 1.2.3.2.33.3 | 1.2.3.2.33.3 | 2026-06-12 | 2026-06-12 | 2026-04-16 | 0 | 6 | 3169 | 1 | 1 | 357ae9be-8a60-81e8-8b17-d5e4294e5243 | 357ae9be-8a60-8155-80d2-c71316a4c7a1 | -173.77 | 0 | As Soon As Possible | Auto Scheduled | AMETEK SAP XXL Project Plan Replan MSP Task.csv | AMETEK SAP XXL Project Plan Replan MSP Task.csv__2f0764ccac__2026-05-05T02-44-15-662Z | Jyoti Nain | 57 | True |  | Not started | True  -173.77 0 1 0 0 0 26 | Negative Float Critical 2 0 0  |  |  |  |  |
| 357ae9be-8a60-8143-8341-db85e96fecbe | 2976 | Post GL Extention Validation | (Unassigned) | 1.2.3.2.3.8 | 1.2.3.2.3.8 | 2026-06-11 | 2026-06-12 | 2026-04-09 | 0 | 6 | 2968 | 1 | 1 | 357ae9be-8a60-8105-bfbf-f9abbf39743e | 357ae9be-8a60-812a-927c-ec4a7b08404c | -196.52 | 0 | As Soon As Possible | Auto Scheduled | AMETEK SAP XXL Project Plan Replan MSP Task.csv | AMETEK SAP XXL Project Plan Replan MSP Task.csv__2f0764ccac__2026-05-05T02-44-15-662Z | COULD NOT BE DETERMINED | 64 | True |  | Not started | True  -196.52 0 1 1 56 0 31 | Wrong Successor, Negative Float Critical 5 0 1  |  |  |  |  |
| 357ae9be-8a60-8143-9347-e72eae6762b8 | 3298 | Post Load Validation | OTC | 1.2.3.2.62.2 | 1.2.3.2.62.2 | 2026-06-16 | 2026-06-16 | 2026-04-16 | 0 | 6 | 3296 | 1 | 0 | 357ae9be-8a60-81d1-bc8b-d93fc73eadec |  | -171.02 | 0 | As Soon As Possible | Auto Scheduled | AMETEK SAP XXL Project Plan Replan MSP Task.csv | AMETEK SAP XXL Project Plan Replan MSP Task.csv__2f0764ccac__2026-05-05T02-44-15-662Z | James VanRiper | 61 | True |  | Not started | True  -171.02 0 0 0 0 0 20 | Negative Float, Open Finish Critical 3 0 0  |  |  |  |  |
| 357ae9be-8a60-8143-9e28-e7516a38e101 | 1171 | Run material interface to GTS | OTC | 1.2.1.56.1 | 1.2.1.56.1 | 2026-04-16 | 2026-04-17 | 2026-04-16 | 100 | 5 | 952 | 1 | 1 | 357ae9be-8a60-8192-8bdf-dfd213d023eb | 357ae9be-8a60-81a9-a851-ddfbc35e7437 | 0 | 0 | Finish No Earlier Than | Auto Scheduled | AMETEK SAP XXL Project Plan Replan MSP Task.csv | AMETEK SAP XXL Project Plan Replan MSP Task.csv__2f0764ccac__2026-05-05T02-44-15-662Z | James VanRiper |  |  |  | Done | True  0 0 0 0 0 0 14 | Wrong Dependency High 3 1 0 True | 2026-04-17 |  |  |  |
| 357ae9be-8a60-8143-a2d3-eb17388481d4 | 3219 | Run ALE Transaction to QS5 from DS4 130 | PTM | 1.2.3.2.44.1 | 1.2.3.2.44.1 | 2026-06-12 | 2026-06-12 | 2026-04-17 | 0 | 6 | 3218 | 1 | 1 | 357ae9be-8a60-81e4-ad42-e59d78d272c0 | 357ae9be-8a60-81ad-b373-e38522e3a0b8 | -160.27 | 0 | As Soon As Possible | Auto Scheduled | AMETEK SAP XXL Project Plan Replan MSP Task.csv | AMETEK SAP XXL Project Plan Replan MSP Task.csv__2f0764ccac__2026-05-05T02-44-15-662Z | Eric Heisler | 56 | True |  | Not started | True  -160.27 0 1 0 0 0 26 | Negative Float Critical 2 0 0  |  |  |  |  |
| 357ae9be-8a60-8143-a595-c791f457bf85 | 1165 | Post Load Validation | PTM | 1.2.1.44.2 | 1.2.1.44.2 | 2026-04-16 | 2026-04-17 | 2026-04-17 | 100 | 5 | 944 | 1 | 1 | 357ae9be-8a60-81ea-8200-f03bb36f5603 | 357ae9be-8a60-81ad-850f-fb363e0cc28e | 0 | 0 | As Soon As Possible | Auto Scheduled | AMETEK SAP XXL Project Plan Replan MSP Task.csv | AMETEK SAP XXL Project Plan Replan MSP Task.csv__2f0764ccac__2026-05-05T02-44-15-662Z | Eric Heisler |  |  |  | Done | True  0 0 1 0 0 0 18 | Low 0 0 0  |  |  |  |  |
| 357ae9be-8a60-8143-b3be-daee569dd8cf | 3180 | Error and Defect Mitigation | PTM | 1.2.3.2.34.4 | 1.2.3.2.34.4 | 2026-06-15 | 2026-06-15 | 2026-04-17 | 0 | 6 | 3176 | 1 | 1 | 357ae9be-8a60-8130-8082-ca9bdc44dd9e | 357ae9be-8a60-8160-9c56-e07d479eb32a | -167.27 | 0 | As Soon As Possible | Auto Scheduled | AMETEK SAP XXL Project Plan Replan MSP Task.csv | AMETEK SAP XXL Project Plan Replan MSP Task.csv__2f0764ccac__2026-05-05T02-44-15-662Z | Brad Meseck | 59 | True |  | Not started | True  -167.27 0 1 0 0 0 26 | Negative Float Critical 2 0 0  |  |  |  |  |
| 357ae9be-8a60-8143-b520-ecb1941edd8d | 4218 | Load | Data | 1.2.5.2.9.5 | 1.2.5.2.9.5 | 2026-09-24 | 2026-09-25 | 2026-04-09 | 0 | 6 | 4213 | 1 | 2 | 357ae9be-8a60-8127-8c09-d510449286ba | 357ae9be-8a60-81ae-9eb3-c1a391ae1d6d, 357ae9be-8a60-8160-b40a-d82d5a63ab3d | -690.52 | 0 | Finish No Earlier Than | Auto Scheduled | AMETEK SAP XXL Project Plan Replan MSP Task.csv | AMETEK SAP XXL Project Plan Replan MSP Task.csv__2f0764ccac__2026-05-05T02-44-15-662Z | Jyoti Nain | 169 | True |  | Not started | True  -690.52 0 2 0 0 0 32 | Negative Float Critical 2 0 0 True | 2026-04-15 |  |  |  |
| 357ae9be-8a60-8143-be8a-efd9c44d7895 | 2771 | Set Embargo situations | OTC | 1.2.4.2.65.2 | 1.2.4.2.65.2 | 2026-09-25 | 2026-09-25 | 2026-04-13 | 0 | 6 | 2769 | 1 | 1 | 357ae9be-8a60-8172-a12a-f83e1215c838 | 357ae9be-8a60-81a3-b3f8-c475d34048ad | -653.5 | 0 | As Soon As Possible | Auto Scheduled | AMETEK SAP XXL Project Plan Replan MSP Task.csv | AMETEK SAP XXL Project Plan Replan MSP Task.csv__2f0764ccac__2026-05-05T02-44-15-662Z | James VanRiper | 165 | True |  | Not started | True  -653.5 0 1 0 0 0 26 | Negative Float Critical 2 0 0  |  |  |  |  |
| 357ae9be-8a60-8143-bf1d-f5a4b1c67878 | 4437 | Simulate Load | Data | 1.2.5.2.47.3 | 1.2.5.2.47.3 | 2026-10-05 | 2026-10-06 | 2026-04-17 | 0 | 6 | 4434 | 1 | 1 | 357ae9be-8a60-81dd-be57-ea7666758298 | 357ae9be-8a60-8161-b0ff-f966c0f56153 | -726.02 | 0 | As Soon As Possible | Auto Scheduled | AMETEK SAP XXL Project Plan Replan MSP Task.csv | AMETEK SAP XXL Project Plan Replan MSP Task.csv__2f0764ccac__2026-05-05T02-44-15-662Z | Jyoti Nain | 172 | True |  | Not started | True  -726.02 0 1 0 0 0 26 | Negative Float Critical 2 0 0  |  |  |  |  |
| 357ae9be-8a60-8143-bf86-d5f54db32538 | 703 | PTP_CM28_Purchase_Info_Records | PTP | 1.2.1.28 | 1.2.1.28 | 2026-04-15 | 2026-04-17 | 2026-04-16 | 100 | 4 | 425 | 0 | 0 |  |  | 0 | 0 | As Soon As Possible | Auto Scheduled | AMETEK SAP XXL Project Plan Replan MSP Task.csv | AMETEK SAP XXL Project Plan Replan MSP Task.csv__2f0764ccac__2026-05-05T02-44-15-662Z | Muniraju Surappachari |  |  |  | Done | True  0 0 0 0 0 0 12 | Low 0 0 0  |  | 1042, 1040, 1038, 1041, 1043, 1039 | True |  |
| 357ae9be-8a60-8144-9fa7-f5395f51a176 | 992 | Post Load Validation | PTP | 1.2.1.18.6 | 1.2.1.18.6 | 2026-04-15 | 2026-04-15 | 2026-04-13 | 100 | 5 | 766 | 1 | 0 | 357ae9be-8a60-8166-97d3-c4b7d93ac49c |  | 0 | 0 | As Soon As Possible | Auto Scheduled | AMETEK SAP XXL Project Plan Replan MSP Task.csv | AMETEK SAP XXL Project Plan Replan MSP Task.csv__2f0764ccac__2026-05-05T02-44-15-662Z | Nevin Varkey |  |  |  | Done | True  0 0 0 0 0 0 12 | Low 0 0 0  |  |  |  |  |
| 357ae9be-8a60-8144-a1fe-ebe4c0c5ef15 | 4169 | Load | Finance | 1.2.5.2.2.2 | 1.2.5.2.2.2 | 2026-09-24 | 2026-09-25 | 2026-04-07 | 0 | 6 | 4167 | 1 | 1 | 357ae9be-8a60-81e5-8162-f2c28b788ce5 | 357ae9be-8a60-8197-98a0-c93374ed5808 | -718.52 | 0 | As Soon As Possible | Auto Scheduled | AMETEK SAP XXL Project Plan Replan MSP Task.csv | AMETEK SAP XXL Project Plan Replan MSP Task.csv__2f0764ccac__2026-05-05T02-44-15-662Z | Kasey Hughes | 171 | True |  | Not started | True  -718.52 0 1 0 0 0 26 | Negative Float Critical 2 0 0  |  |  |  |  |
| 357ae9be-8a60-8144-ae5c-e9a73c0becf6 | 4360 | Pre Load Validation | PTM | 1.2.5.2.31.2 | 1.2.5.2.31.2 | 2026-10-01 | 2026-10-02 | 2026-04-17 | 0 | 6 | 4358 | 1 | 1 | 357ae9be-8a60-8112-990c-eb26a26d3ebd | 357ae9be-8a60-81f5-bd58-cd925c50c7af | -700.39 | 0 | As Soon As Possible | Auto Scheduled | AMETEK SAP XXL Project Plan Replan MSP Task.csv | AMETEK SAP XXL Project Plan Replan MSP Task.csv__2f0764ccac__2026-05-05T02-44-15-662Z | Brad Meseck | 168 | True |  | Not started | True  -700.39 0 1 0 0 0 26 | Negative Float Critical 2 0 0  |  |  |  |  |
| 357ae9be-8a60-8144-b21e-e16a5372978e | 2009 | Post Load Validation | OTC | 1.2.2.2.57.2 | 1.2.2.2.57.2 | 2026-05-19 | 2026-05-19 | 2026-04-15 | 0 | 6 | 2007 | 1 | 0 | 357ae9be-8a60-8102-a957-c18983a4a1c0 |  | -8.52 | 0 | As Soon As Possible | Auto Scheduled | AMETEK SAP XXL Project Plan Replan MSP Task.csv | AMETEK SAP XXL Project Plan Replan MSP Task.csv__2f0764ccac__2026-05-05T02-44-15-662Z | James VanRiper | 34 | True | True | Not started | True  -8.52 0 0 0 0 0 20 | Wrong Dependency, Negative Float, Open Finish High 6 1 0  |  |  |  |  |
| 357ae9be-8a60-8145-8155-f11cf3d89c7e | 3262 | Load | Data | 1.2.3.2.52.5 | 1.2.3.2.52.5 | 2026-06-11 | 2026-06-11 | 2026-04-10 | 0 | 6 | 3257 | 1 | 1 | 357ae9be-8a60-812d-83f5-d6ccdb92ab00 | 357ae9be-8a60-81f8-9a0b-c1c43b21d9d6 | -149.52 | 0 | As Soon As Possible | Auto Scheduled | AMETEK SAP XXL Project Plan Replan MSP Task.csv | AMETEK SAP XXL Project Plan Replan MSP Task.csv__2f0764ccac__2026-05-05T02-44-15-662Z | Jyoti Nain | 62 | True |  | Not started | True  -149.52 0 1 0 0 0 26 | Negative Float Critical 2 0 0  |  |  |  |  |
| 357ae9be-8a60-8145-88c2-f27870c04ab9 | 2557 | Load File Staged and Posted "Ready" | PTP;OTC | 1.2.4.2.22.1 | 1.2.4.2.22.1 | 2026-09-24 | 2026-09-24 | 2026-04-13 | 0 | 6 | 2556 | 1 | 1 | 357ae9be-8a60-814e-a320-ec1ac9bb1c59 | 357ae9be-8a60-8172-b8b6-d7b5432aa17b | -39210 | 0 | As Soon As Possible | Auto Scheduled | AMETEK SAP XXL Project Plan Replan MSP Task.csv | AMETEK SAP XXL Project Plan Replan MSP Task.csv__2f0764ccac__2026-05-05T02-44-15-662Z | Nevin Varkey | 164 | True |  | Not started | True  -39210 0 1 0 0 0 26 | Wrong Dependency, Negative Float Critical 5 1 0  |  |  |  |  |
| 357ae9be-8a60-8145-8cfc-ffe1928bbe0d | 1137 | Load | Data | 1.2.1.55.5 | 1.2.1.55.5 | 2026-04-16 | 2026-04-17 | 2026-04-17 | 100 | 5 | 715 | 1 | 1 | 357ae9be-8a60-8173-a126-ec5c11b80de0 | 357ae9be-8a60-81e2-a8b0-f5938a03372d | 0 | 0 | As Soon As Possible | Auto Scheduled | AMETEK SAP XXL Project Plan Replan MSP Task.csv | AMETEK SAP XXL Project Plan Replan MSP Task.csv__2f0764ccac__2026-05-05T02-44-15-662Z | Jyoti Nain |  |  |  | Done | True  0 0 1 0 0 0 18 | Low 0 0 0  |  |  |  |  |
| 357ae9be-8a60-8145-9194-de4910f8b1a0 | 24 | Functional Build Tasks | (Unassigned) | 1.1.2.9 | 1.1.2.9 | 2025-04-07 | 2025-09-18 | 2025-09-18 | 100 | 4 | 248 | 0 | 0 |  |  | 0 | 0 | As Soon As Possible | Auto Scheduled | AMETEK SAP XXL Project Plan Replan MSP Task.csv | AMETEK SAP XXL Project Plan Replan MSP Task.csv__2f0764ccac__2026-05-05T02-44-15-662Z | COULD NOT BE DETERMINED |  |  |  | Done | True  0 0 0 0 0 0 12 | Low 0 0 0  |  | 25 | True |  |
| 357ae9be-8a60-8145-abb2-f0f44668100b | 2732 | PTM_CM55_Class assignment to materials | PTM | 1.2.4.2.54 | 1.2.4.2.54 | 2026-09-29 | 2026-10-01 | 2026-04-17 | 0 | 5 | 2898 | 0 | 0 |  |  | -85.16 | 0 | As Soon As Possible | Auto Scheduled | AMETEK SAP XXL Project Plan Replan MSP Task.csv | AMETEK SAP XXL Project Plan Replan MSP Task.csv__2f0764ccac__2026-05-05T02-44-15-662Z | Brad Meseck | 167 | True |  | Not started | True  -85.16 0 0 0 0 0 20 | Negative Float Critical 2 0 0  |  | 2738, 2735, 2734, 2733, 2737, 2736 | True |  |
| 357ae9be-8a60-8145-abcf-ead9952da254 | 932 | Test Readiness Review (TRR) - ITC 1 | (Unassigned) | 1.3.3.1 | 1.3.3.1 | 2026-04-16 | 2026-05-01 | 2026-04-16 | 25 | 4 | 18 | 1 | 3 | 357ae9be-8a60-81ce-afd3-e1674f14f7c9 | 357ae9be-8a60-8183-98b7-da108cd43291, 357ae9be-8a60-8110-a79f-c1411b7deee6, 357ae9be-8a60-8101-a382-e8a212fb3518 | -87.75 | 0 | Start No Earlier Than | Auto Scheduled | AMETEK SAP XXL Project Plan Replan MSP Task.csv | AMETEK SAP XXL Project Plan Replan MSP Task.csv__2f0764ccac__2026-05-05T02-44-15-662Z | COULD NOT BE DETERMINED | 15 | True |  | In progress | True  -87.75 0 3 3 45 1 43 | Negative Float, Out Of Sequence Risk Critical 4 0 0 True | 2026-04-16 |  |  |  |
| 357ae9be-8a60-8145-ae7e-d6e4066a7551 | 4413 | Run ALE Transaction to QS5 from DS4 130 | PTM | 1.2.5.2.41.1 | 1.2.5.2.41.1 | 2026-09-29 | 2026-09-29 | 2026-04-16 | 0 | 6 | 4412 | 2 | 1 | 357ae9be-8a60-81e5-9fc0-d1e94d3624fd, 357ae9be-8a60-818f-8a11-f9d2f587053e | 357ae9be-8a60-815c-b8a4-d185413f9be7 | -672.27 | 0 | As Soon As Possible | Auto Scheduled | AMETEK SAP XXL Project Plan Replan MSP Task.csv | AMETEK SAP XXL Project Plan Replan MSP Task.csv__2f0764ccac__2026-05-05T02-44-15-662Z | Eric Heisler | 166 | True |  | Not started | True  -672.27 0 1 0 0 0 26 | Negative Float Critical 2 0 0  |  |  |  |  |
| 357ae9be-8a60-8145-b40c-d35c88561209 | 4335 | Load | Data | 1.2.5.2.27.5 | 1.2.5.2.27.5 | 2026-09-24 | 2026-09-24 | 2026-04-15 | 0 | 6 | 4330 | 1 | 1 | 357ae9be-8a60-814a-b11f-fa49bd036ce8 | 357ae9be-8a60-810d-a7cd-f8b22e40f471 | -647.52 | 0 | Start No Earlier Than | Auto Scheduled | AMETEK SAP XXL Project Plan Replan MSP Task.csv | AMETEK SAP XXL Project Plan Replan MSP Task.csv__2f0764ccac__2026-05-05T02-44-15-662Z | Jyoti Nain | 162 | True |  | Not started | True  -647.52 0 1 0 0 0 26 | Negative Float Critical 2 0 0 True | 2026-04-17 |  |  |  |
| 357ae9be-8a60-8146-8071-f1cf16d2681c | 961 | Simulate Load | Data | 1.2.1.6.3 | 1.2.1.6.3 | 2026-04-08 | 2026-04-08 | 2026-04-08 | 100 | 5 | 767 | 1 | 1 | 357ae9be-8a60-8161-baa9-e5c8f9ebc40e | 357ae9be-8a60-81db-b40a-d6260f6e4327 | 0 | 0 | As Soon As Possible | Auto Scheduled | AMETEK SAP XXL Project Plan Replan MSP Task.csv | AMETEK SAP XXL Project Plan Replan MSP Task.csv__2f0764ccac__2026-05-05T02-44-15-662Z | Jyoti Nain |  |  |  | Done | True  0 0 1 0 0 0 18 | Low 0 0 0  |  |  |  |  |

| id | uid | name | workstream | outlineNumber | wbs | start | finish | baselineFinish | pct | outlineLevel | parentUid | predCount | sucCount | predIds | sucIds | totalSlackDaysRaw | freeSlackDaysRaw | constraintType | taskMode | mspSourceFile | mspImportVersion | assignedTo | slipDays | isSlipped | isDue14 | status | cpm | scheduleQuality | constraintDate | childUids | isSummary | isOverdueStart |
| --- | --- | --- | --- | --- | --- | --- | --- | --- | --- | --- | --- | --- | --- | --- | --- | --- | --- | --- | --- | --- | --- | --- | --- | --- | --- | --- | --- | --- | --- | --- | --- | --- |
| 357ae9be-8a60-8146-873e-eac75feabbe6 | 4523 | Load File Staged and Posted "Ready" | Finance | 1.2.5.2.68.1 | 1.2.5.2.68.1 | 2026-09-24 | 2026-09-24 | 2026-04-10 | 0 | 6 | 4522 | 1 | 1 | 357ae9be-8a60-81bd-88ea-ecf738c80151 | 357ae9be-8a60-81c5-b944-ed2982d6ba08 | -39091 | 0 | Start No Earlier Than | Auto Scheduled | AMETEK SAP XXL Project Plan Replan MSP Task.csv | AMETEK SAP XXL Project Plan Replan MSP Task.csv__2f0764ccac__2026-05-05T02-44-15-662Z | Kasey Hughes | 167 | True |  | Not started | True  -39091 0 1 0 0 0 26 | Negative Float Critical 2 0 0 True | 2026-04-17 |  |  |  |
| 357ae9be-8a60-8146-8fa4-fb1a4de29f47 | 3387 | Import Group 2 - Core Transports | Development;PTM;Finance;PMO;Europe IT lead;OTC;TESTING | 1.1.1.8.2.3 | 1.1.1.8.2.3 | 2026-09-18 | 2026-09-18 | 2026-07-10 | 0 | 6 | 3384 | 1 | 1 | 357ae9be-8a60-8109-878a-f172140a78ad | 357ae9be-8a60-8118-993f-ceeea0cb3239 | -726.02 | 0 | As Soon As Possible | Auto Scheduled | AMETEK SAP XXL Project Plan Replan MSP Task.csv | AMETEK SAP XXL Project Plan Replan MSP Task.csv__2f0764ccac__2026-05-05T02-44-15-662Z | Bijoykrishna Das | 70 | True |  | Not started | True  -726.02 0 0 0 0 0 22 | Negative Float Critical 2 0 0  |  |  |  |  |
| 357ae9be-8a60-8146-990c-cad2efd1a091 | 2667 | VC_Classes | (Unassigned) | 1.2.4.2.39 | 1.2.4.2.39 | 2026-09-25 | 2026-09-25 | 2026-04-07 | 0 | 5 | 2898 | 0 | 0 |  |  | -82.69 | 0 | As Soon As Possible | Auto Scheduled | AMETEK SAP XXL Project Plan Replan MSP Task.csv | AMETEK SAP XXL Project Plan Replan MSP Task.csv__2f0764ccac__2026-05-05T02-44-15-662Z | COULD NOT BE DETERMINED | 171 | True |  | Not started | True  -82.69 0 0 0 0 0 20 | Negative Float Critical 2 0 0  |  | 2669, 2668 | True |  |
| 357ae9be-8a60-8146-a101-ee6eeebfe426 | 1092 | Load | Data | 1.2.1.35.5 | 1.2.1.35.5 | 2026-04-21 | 2026-04-21 | 2026-04-20 | 100 | 5 | 710 | 1 | 1 | 357ae9be-8a60-8151-8baa-f3eee86fd64c | 357ae9be-8a60-81d6-a625-ceba75e6af7f | 0 | 0 | Finish No Earlier Than | Auto Scheduled | AMETEK SAP XXL Project Plan Replan MSP Task.csv | AMETEK SAP XXL Project Plan Replan MSP Task.csv__2f0764ccac__2026-05-05T02-44-15-662Z | Jyoti Nain |  |  |  | Done | True  0 0 1 0 0 0 18 | Low 0 0 0 True | 2026-04-17 |  |  |  |
| 357ae9be-8a60-8146-adac-e46b743e3b20 | 2548 | Simulate Load/ Not Needed | PTP | 1.2.4.2.20.3 | 1.2.4.2.20.3 | 2026-09-24 | 2026-09-24 | 2026-04-10 | 0 | 6 | 2545 | 1 | 1 | 357ae9be-8a60-810b-badd-fe5adebc3401 | 357ae9be-8a60-8194-8b31-ebdfccfeb50e | -653.5 | 0 | As Soon As Possible | Auto Scheduled | AMETEK SAP XXL Project Plan Replan MSP Task.csv | AMETEK SAP XXL Project Plan Replan MSP Task.csv__2f0764ccac__2026-05-05T02-44-15-662Z | Nevin Varkey | 167 | True |  | Not started | True  -653.5 0 1 1 535 0 31 | Wrong Successor, Negative Float Critical 5 0 1  |  |  |  |  |
| 357ae9be-8a60-8146-b22d-d23f509a3937 | 944 | VC_Variant Tables | (Unassigned) | 1.2.1.44 | 1.2.1.44 | 2026-04-16 | 2026-04-17 | 2026-04-17 | 100 | 4 | 425 | 0 | 0 |  |  | 0 | 0 | As Soon As Possible | Auto Scheduled | AMETEK SAP XXL Project Plan Replan MSP Task.csv | AMETEK SAP XXL Project Plan Replan MSP Task.csv__2f0764ccac__2026-05-05T02-44-15-662Z | COULD NOT BE DETERMINED |  |  |  | Done | True  0 0 0 0 0 0 12 | Low 0 0 0  |  | 1165, 1164 | True |  |
| 357ae9be-8a60-8146-bb3a-e7e843b23c05 | 2459 | Intercompany Business Partner Setup | Development;PTM;Finance;PMO;Europe IT lead;OTC;TESTING | 1.2.4.2.6.4 | 1.2.4.2.6.4 | 2026-09-30 | 2026-09-30 | 2026-04-09 | 0 | 6 | 2455 | 2 | 0 | 357ae9be-8a60-814d-8b0d-f2ba60171555, 357ae9be-8a60-81ab-be7c-e62d6fc7bc76 |  | -675 | 0 | As Soon As Possible | Auto Scheduled | AMETEK SAP XXL Project Plan Replan MSP Task.csv | AMETEK SAP XXL Project Plan Replan MSP Task.csv__2f0764ccac__2026-05-05T02-44-15-662Z | Bijoykrishna Das | 174 | True |  | Not started | True  -675 0 0 0 0 1 20 | Wrong Dependency, Negative Float, Open Finish Critical 6 2 0  |  |  |  |  |
| 357ae9be-8a60-8147-8434-c1ad0381f972 | 4333 | Simulate Load | Data | 1.2.5.2.27.3 | 1.2.5.2.27.3 | 2026-09-29 | 2026-09-29 | 2026-04-16 | 0 | 6 | 4330 | 1 | 1 | 357ae9be-8a60-810e-befc-ccddeb6e62cb | 357ae9be-8a60-81f1-a28a-c5e7e8fad5bd | -673.27 | 0 | As Soon As Possible | Auto Scheduled | AMETEK SAP XXL Project Plan Replan MSP Task.csv | AMETEK SAP XXL Project Plan Replan MSP Task.csv__2f0764ccac__2026-05-05T02-44-15-662Z | Jyoti Nain | 166 | True |  | Not started | True  -673.27 0 1 0 0 0 26 | Negative Float Critical 2 0 0  |  |  |  |  |
| 357ae9be-8a60-8147-97ab-f4f156324632 | 2648 | Load File Staged and Posted "Ready" | PTM | 1.2.4.2.35.1 | 1.2.4.2.35.1 | 2026-09-30 | 2026-10-01 | 2026-04-17 | 0 | 6 | 2647 | 1 | 1 | 357ae9be-8a60-8115-a54a-e65caa42148c | 357ae9be-8a60-81e0-af18-cfb648393790 | -41745 | 0 | As Soon As Possible | Auto Scheduled | AMETEK SAP XXL Project Plan Replan MSP Task.csv | AMETEK SAP XXL Project Plan Replan MSP Task.csv__2f0764ccac__2026-05-05T02-44-15-662Z | Brad Meseck | 167 | True |  | Not started | True  -41745 0 1 0 0 0 26 | Wrong Dependency, Negative Float Critical 5 1 0  |  |  |  |  |
| 357ae9be-8a60-8147-9cc5-f90ead68a698 | 3142 | Load File Staged and Posted "Ready" | PTP | 1.2.3.2.29.1 | 1.2.3.2.29.1 | 2026-06-11 | 2026-06-11 | 2026-04-15 | 0 | 6 | 3141 | 1 | 1 | 357ae9be-8a60-81e4-ad85-f3407bb2ec98 | 357ae9be-8a60-81cb-a4b5-cc9017ecec41 | -11416 | 0 | As Soon As Possible | Auto Scheduled | AMETEK SAP XXL Project Plan Replan MSP Task.csv | AMETEK SAP XXL Project Plan Replan MSP Task.csv__2f0764ccac__2026-05-05T02-44-15-662Z | Nevin Varkey | 57 | True |  | Not started | True  -11416 0 1 0 0 0 26 | Wrong Dependency, Negative Float Critical 5 1 0  |  |  |  |  |
| 357ae9be-8a60-8147-a31a-fb6c6058faaf | 4184 | Error and Defect Mitigation | Finance | 1.2.5.2.4.4 | 1.2.5.2.4.4 | 2026-09-25 | 2026-09-25 | 2026-04-07 | 0 | 6 | 4180 | 1 | 1 | 357ae9be-8a60-81ae-ae39-d6a19719f1a0 | 357ae9be-8a60-819f-b02e-e3accb75e565 | -677.77 | 0 | As Soon As Possible | Auto Scheduled | AMETEK SAP XXL Project Plan Replan MSP Task.csv | AMETEK SAP XXL Project Plan Replan MSP Task.csv__2f0764ccac__2026-05-05T02-44-15-662Z | Kasey Hughes | 171 | True |  | Not started | True  -677.77 0 1 0 0 0 26 | Negative Float Critical 2 0 0  |  |  |  |  |
| 357ae9be-8a60-8147-a65f-ce9d9fe9d77f | 3367 | P? Production System | (Unassigned) | 1.1.1.8 | 1.1.1.8 | 2026-09-07 | 2026-09-24 | 2026-07-16 | 0 | 4 | 5 | 0 | 3 |  | 357ae9be-8a60-81d8-8d16-c96bb642e48c, 357ae9be-8a60-814d-8b0d-f2ba60171555, 357ae9be-8a60-8151-ad6b-ee1d3da18424 | -88.75 | 0 | As Soon As Possible | Auto Scheduled | AMETEK SAP XXL Project Plan Replan MSP Task.csv | AMETEK SAP XXL Project Plan Replan MSP Task.csv__2f0764ccac__2026-05-05T02-44-15-662Z | COULD NOT BE DETERMINED | 70 | True |  | Not started | True  -88.75 0 3 3 827 0 43 | Wrong Successor, Negative Float Critical 5 0 3  |  | 3368, 3397, 3384, 3393 | True |  |
| 357ae9be-8a60-8147-adb8-d246f38105c1 | 868 | Import Group 1 - Ent Structure | Development;PTM;Finance;PMO;Europe IT lead;OTC;TESTING | 1.1.1.5.2.1 | 1.1.1.5.2.1 | 2026-05-06 | 2026-05-06 | 2026-05-19 | 0 | 6 | 867 | 1 | 1 | 357ae9be-8a60-819a-93ea-f080e6e6a5ef | 357ae9be-8a60-8109-ba5c-c56ecdf6a68d | -204.02 | 0 | As Soon As Possible | Auto Scheduled | AMETEK SAP XXL Project Plan Replan MSP Task.csv | AMETEK SAP XXL Project Plan Replan MSP Task.csv__2f0764ccac__2026-05-05T02-44-15-662Z | Bijoykrishna Das |  |  |  | Not started | True  -204.02 0 1 0 0 0 18 | Negative Float Critical 2 0 0  |  |  |  | True |
| 357ae9be-8a60-8147-b023-d81f0f1ee1af | 3216 | Run ALE Transaction to QS5 from DS4 130 | PTM | 1.2.3.2.43.1 | 1.2.3.2.43.1 | 2026-06-12 | 2026-06-12 | 2026-04-16 | 0 | 6 | 3215 | 1 | 1 | 357ae9be-8a60-818f-a88e-eec76ded7930 | 357ae9be-8a60-81e4-ad42-e59d78d272c0 | -160.27 | 0 | As Soon As Possible | Auto Scheduled | AMETEK SAP XXL Project Plan Replan MSP Task.csv | AMETEK SAP XXL Project Plan Replan MSP Task.csv__2f0764ccac__2026-05-05T02-44-15-662Z | Eric Heisler | 57 | True |  | Not started | True  -160.27 0 1 0 0 0 26 | Wrong Dependency, Negative Float Critical 5 1 0  |  |  |  |  |
| 357ae9be-8a60-8147-b369-c3aedf60ac25 | 100 | Copy DS4-100 to DS4-110 Dev | (Unassigned) | 1.1.1.1.1 | 1.1.1.1.1 | 2025-05-07 | 2025-05-07 | 2025-05-07 | 100 | 5 | 85 | 0 | 2 |  | 357ae9be-8a60-810b-ae6c-e77ada18665c, 357ae9be-8a60-8155-a76e-dae87ee9ca51 | 0 | 0 | Finish No Earlier Than | Auto Scheduled | AMETEK SAP XXL Project Plan Replan MSP Task.csv | AMETEK SAP XXL Project Plan Replan MSP Task.csv__2f0764ccac__2026-05-05T02-44-15-662Z | COULD NOT BE DETERMINED |  |  |  | Done | True  0 0 2 0 0 0 24 | Low 0 0 0 True | 2025-05-07 |  |  |  |
| 357ae9be-8a60-8147-b970-fe2d829ad4fc | 1212 | Post Load Validation | OTC | 1.2.1.66.3 | 1.2.1.66.3 | 2026-04-14 | 2026-04-14 | 2026-04-14 | 100 | 5 | 1209 | 1 | 0 | 357ae9be-8a60-8100-bdcf-cb2f255750e1 |  | 0 | 0 | As Soon As Possible | Auto Scheduled | AMETEK SAP XXL Project Plan Replan MSP Task.csv | AMETEK SAP XXL Project Plan Replan MSP Task.csv__2f0764ccac__2026-05-05T02-44-15-662Z | James VanRiper |  |  |  | Done | True  0 0 0 0 0 0 12 | Low 0 0 0  |  |  |  |  |
| 357ae9be-8a60-8148-899e-f1356ea8eeb9 | 4446 | Manual File Staged and Posted "Ready" | OTC | 1.2.5.2.49.1 | 1.2.5.2.49.1 | 2026-10-07 | 2026-10-07 | 2026-04-20 | 0 | 6 | 4445 | 1 | 1 | 357ae9be-8a60-819f-a5d8-de81f7a71e54 | 357ae9be-8a60-8195-8a9f-c9ada017a5d0 | -43561 | 0 | Start No Earlier Than | Auto Scheduled | AMETEK SAP XXL Project Plan Replan MSP Task.csv | AMETEK SAP XXL Project Plan Replan MSP Task.csv__2f0764ccac__2026-05-05T02-44-15-662Z | Ric Haraida | 170 | True |  | Not started | True  -43561 0 1 0 0 0 26 | Negative Float Critical 2 0 0 True | 2026-04-06 |  |  |  |
| 357ae9be-8a60-8148-8f7b-eae199250a6e | 3052 | Simulate Load | Data | 1.2.3.2.15.3 | 1.2.3.2.15.3 | 2026-06-15 | 2026-06-16 | 2026-04-13 | 0 | 6 | 3049 | 0 | 1 |  | 357ae9be-8a60-81d0-8263-fe83f0e9b3bd | -196.52 | 0 | As Soon As Possible | Auto Scheduled | AMETEK SAP XXL Project Plan Replan MSP Task.csv | AMETEK SAP XXL Project Plan Replan MSP Task.csv__2f0764ccac__2026-05-05T02-44-15-662Z | Jyoti Nain | 64 | True |  | Not started | True  -196.52 0 1 0 0 0 26 | Negative Float, Open Start Critical 3 0 0  |  |  |  |  |
| 357ae9be-8a60-8148-903b-c443e941ad2f | 918 | Assign Tester ID's | Security | 1.3.3.7.2 | 1.3.3.7.2 | 2026-06-19 | 2026-06-22 | 2026-06-18 | 0 | 5 | 915 | 1 | 1 | 357ae9be-8a60-811e-9bb4-ef2a7dc6d026 | 357ae9be-8a60-8196-9fe6-f54478eceb7d | 68 | 0 | As Soon As Possible | Auto Scheduled | AMETEK SAP XXL Project Plan Replan MSP Task.csv | AMETEK SAP XXL Project Plan Replan MSP Task.csv__2f0764ccac__2026-05-05T02-44-15-662Z | Manjunatha Umesha | 4 | True |  | Not started | True  68 0 1 1 3 1 31 | Low 0 0 0  |  |  |  |  |
| 357ae9be-8a60-8148-978b-e21b0261fccb | 249 | Project kickoff | (Unassigned) | 1.1.2.1.1 | 1.1.2.1.1 | 2025-07-16 | 2025-07-16 | 2025-07-16 | 100 | 5 | 299 | 0 | 0 |  |  | 0 | 0 | Start No Earlier Than | Auto Scheduled | AMETEK SAP XXL Project Plan Replan MSP Task.csv | AMETEK SAP XXL Project Plan Replan MSP Task.csv__2f0764ccac__2026-05-05T02-44-15-662Z | COULD NOT BE DETERMINED |  |  |  | Done | True  0 0 0 0 0 0 12 | Low 0 0 0 True | 2025-07-16 |  |  |  |
| 357ae9be-8a60-8148-9b58-f75c580810e7 | 994 | Pre Load Validation | Finance | 1.2.1.19.2 | 1.2.1.19.2 | 2026-04-10 | 2026-04-10 | 2026-04-10 | 100 | 5 | 768 | 1 | 1 | 357ae9be-8a60-81c6-8eae-e06f4b4f42e2 | 357ae9be-8a60-812a-927c-ec4a7b08404c | 0 | 0 | As Soon As Possible | Auto Scheduled | AMETEK SAP XXL Project Plan Replan MSP Task.csv | AMETEK SAP XXL Project Plan Replan MSP Task.csv__2f0764ccac__2026-05-05T02-44-15-662Z | Kasey Hughes |  |  |  | Done | True  0 0 0 0 0 0 14 | Low 0 0 0  |  |  |  |  |
| 357ae9be-8a60-8148-9dc8-fe358f72ab95 | 3168 | Post Load Validation | PTM | 1.2.3.2.32.6 | 1.2.3.2.32.6 | 2026-06-17 | 2026-06-18 | 2026-04-21 | 0 | 6 | 3162 | 1 | 0 | 357ae9be-8a60-8187-97fe-d8850eba4d94 |  | -182.39 | 0 | As Soon As Possible | Auto Scheduled | AMETEK SAP XXL Project Plan Replan MSP Task.csv | AMETEK SAP XXL Project Plan Replan MSP Task.csv__2f0764ccac__2026-05-05T02-44-15-662Z | Brad Meseck | 58 | True |  | Not started | True  -182.39 0 0 0 0 0 20 | Negative Float, Open Finish Critical 3 0 0  |  |  |  |  |
| 357ae9be-8a60-8148-a5ac-fb815177e912 | 3258 | Load File Staged and Posted "Ready" | Finance | 1.2.3.2.52.1 | 1.2.3.2.52.1 | 2026-06-08 | 2026-06-08 | 2026-04-10 | 0 | 6 | 3257 | 0 | 1 |  | 357ae9be-8a60-8108-90f1-c7a2d99193b6 | -8971 | 0 | As Soon As Possible | Auto Scheduled | AMETEK SAP XXL Project Plan Replan MSP Task.csv | AMETEK SAP XXL Project Plan Replan MSP Task.csv__2f0764ccac__2026-05-05T02-44-15-662Z | Kasey Hughes | 59 | True |  | Not started | True  -8971 0 1 1 413 0 31 | Wrong Successor, Negative Float, Open Start Critical 6 0 1  |  |  |  |  |
| 357ae9be-8a60-8148-aa1d-faff221533ff | 3319 | RTR_CM18_WBS Element | (Unassigned) | 1.2.3.2.68 | 1.2.3.2.68 | 2026-06-08 | 2026-06-09 | 2026-04-17 | 0 | 5 | 2959 | 0 | 0 |  |  | -16.19 | 0 | As Soon As Possible | Auto Scheduled | AMETEK SAP XXL Project Plan Replan MSP Task.csv | AMETEK SAP XXL Project Plan Replan MSP Task.csv__2f0764ccac__2026-05-05T02-44-15-662Z | COULD NOT BE DETERMINED | 53 | True |  | Not started | True  -16.19 0 0 0 0 0 20 | Negative Float Critical 2 0 0  |  | 3320, 3321, 3323, 3324, 3322, 3325 | True |  |
| 357ae9be-8a60-8148-acdf-fd7d57db8372 | 2426 | Load | Finance | 1.2.4.2.1.2 | 1.2.4.2.1.2 | 2026-09-24 | 2026-09-24 | 2026-04-06 | 0 | 6 | 2424 | 1 | 1 | 357ae9be-8a60-8166-a9e9-cbccbf95b3d3 | 357ae9be-8a60-8164-9d0a-fda0094c8875 | -718.5 | 0 | As Soon As Possible | Auto Scheduled | AMETEK SAP XXL Project Plan Replan MSP Task.csv | AMETEK SAP XXL Project Plan Replan MSP Task.csv__2f0764ccac__2026-05-05T02-44-15-662Z | Kasey Hughes | 171 | True |  | Not started | True  -718.5 0 1 0 0 0 26 | Negative Float Critical 2 0 0  |  |  |  |  |
| 357ae9be-8a60-8148-b83a-ef04d9ceac97 | 4456 | PTP_CM29_Source_List | PTP | 1.2.5.2.51 | 1.2.5.2.51 | 2026-09-25 | 2026-10-05 | 2026-04-14 | 0 | 5 | 4162 | 0 | 0 |  |  | -87.47 | 0 | As Soon As Possible | Auto Scheduled | AMETEK SAP XXL Project Plan Replan MSP Task.csv | AMETEK SAP XXL Project Plan Replan MSP Task.csv__2f0764ccac__2026-05-05T02-44-15-662Z | Muniraju Surappachari | 174 | True |  | Not started | True  -87.47 0 0 0 0 0 20 | Negative Float Critical 2 0 0  |  | 4458, 4457, 4459 | True |  |
| 357ae9be-8a60-8148-bbe7-c548ad29af9b | 1156 | Run ALE Transaction to QS5 from DS4 130 | PTM | 1.2.1.40.1 | 1.2.1.40.1 | 2026-04-07 | 2026-04-07 | 2026-04-07 | 100 | 5 | 940 | 1 | 1 | 357ae9be-8a60-81dc-b1e2-e65885183926 | 357ae9be-8a60-81c1-9f50-d58106e03ab6 | 0 | 0 | As Soon As Possible | Auto Scheduled | AMETEK SAP XXL Project Plan Replan MSP Task.csv | AMETEK SAP XXL Project Plan Replan MSP Task.csv__2f0764ccac__2026-05-05T02-44-15-662Z | Eric Heisler |  |  |  | Done | True  0 0 1 0 0 0 18 | Low 0 0 0  |  |  |  |  |
| 357ae9be-8a60-8149-8ce2-d869ad683bb7 | 1994 | PTM_CM55_Class assignment to materials | PTM | 1.2.2.2.54 | 1.2.2.2.54 | 2026-05-22 | 2026-05-25 | 2026-04-17 | 0 | 5 | 2800 | 0 | 0 |  |  | -4.91 | 0 | As Soon As Possible | Auto Scheduled | AMETEK SAP XXL Project Plan Replan MSP Task.csv | AMETEK SAP XXL Project Plan Replan MSP Task.csv__2f0764ccac__2026-05-05T02-44-15-662Z | Brad Meseck | 38 | True |  | Not started | True  -4.91 0 0 0 0 0 20 | Negative Float High 2 0 0  |  | 1995, 2000, 1996, 1998, 1997, 1999 | True |  |
| 357ae9be-8a60-8149-90d8-f15375af7e2e | 1230 | Close Client | Basis | 1.1.1.7.3.3 | 1.1.1.7.3.3 | 2026-06-26 | 2026-06-26 | 2026-07-16 | 0 | 6 | 1227 | 1 | 1 | 357ae9be-8a60-81aa-be9a-c8613f1b642b | 357ae9be-8a60-8159-84f3-d89cd34cdf42 | -12841 | 0 | As Soon As Possible | Auto Scheduled | AMETEK SAP XXL Project Plan Replan MSP Task.csv | AMETEK SAP XXL Project Plan Replan MSP Task.csv__2f0764ccac__2026-05-05T02-44-15-662Z | Lokchetan Meghavath |  |  |  | Not started | True  -12841 0 1 0 0 0 18 | Negative Float Critical 2 0 0  |  |  |  |  |
| 357ae9be-8a60-8149-9743-e15d54e6b9a1 | 1111 | Post Load Validation | OTC | 1.2.1.50.3 | 1.2.1.50.3 | 2026-04-16 | 2026-04-16 | 2026-04-21 | 100 | 5 | 951 | 1 | 0 | 357ae9be-8a60-81ce-bc1d-dd7a1aeebdef |  | 0 | 0 | As Soon As Possible | Auto Scheduled | AMETEK SAP XXL Project Plan Replan MSP Task.csv | AMETEK SAP XXL Project Plan Replan MSP Task.csv__2f0764ccac__2026-05-05T02-44-15-662Z | Ric Haraida |  |  |  | Done | True  0 0 0 0 0 0 12 | Wrong Dependency High 3 1 0  |  |  |  |  |
| 357ae9be-8a60-8149-9a16-d25122eefa27 | 764 | OTC_CM19_Customer_Master - Bill-To | OTC | 1.2.1.13 | 1.2.1.13 | 2026-04-16 | 2026-04-16 | 2025-04-16 | 100 | 4 | 425 | 1 | 1 | 357ae9be-8a60-81ac-af61-f20e3ac4a88f | 357ae9be-8a60-8174-964d-efd5d68137ea | 0 | 0 | As Soon As Possible | Auto Scheduled | AMETEK SAP XXL Project Plan Replan MSP Task.csv | AMETEK SAP XXL Project Plan Replan MSP Task.csv__2f0764ccac__2026-05-05T02-44-15-662Z | Anitha Jothi |  |  |  | Done | True  0 0 1 1 8 1 23 | Low 0 0 0  |  |  |  |  |
| 357ae9be-8a60-8149-9d64-d5b3556ba5d0 | 2025 | Commodity Code/Tarif | (Unassigned) | 1.2.2.2.63 | 1.2.2.2.63 | 2026-05-26 | 2026-05-29 | 2026-04-16 | 0 | 5 | 2800 | 0 | 0 |  |  | -8.78 | 0 | As Soon As Possible | Auto Scheduled | AMETEK SAP XXL Project Plan Replan MSP Task.csv | AMETEK SAP XXL Project Plan Replan MSP Task.csv__2f0764ccac__2026-05-05T02-44-15-662Z | COULD NOT BE DETERMINED | 43 | True |  | Not started | True  -8.78 0 0 0 0 0 20 | Negative Float High 2 0 0  |  | 2026, 2027 | True |  |
| 357ae9be-8a60-8149-a301-d220fc7d7f8c | 2492 | OTC_CM19_Customer_Master - Bill-To | OTC | 1.2.4.2.12 | 1.2.4.2.12 | 2026-09-24 | 2026-09-24 | 2025-04-16 | 0 | 5 | 2898 | 0 | 0 |  |  | -643.5 | 0 | As Soon As Possible | Auto Scheduled | AMETEK SAP XXL Project Plan Replan MSP Task.csv | AMETEK SAP XXL Project Plan Replan MSP Task.csv__2f0764ccac__2026-05-05T02-44-15-662Z | Anitha Jothi | 526 | True |  | Not started | True  -643.5 0 0 0 0 0 20 | Negative Float, Open Start, Open Finish Critical 4 0 0  |  |  |  |  |
| 357ae9be-8a60-8149-a675-e2d193a745c4 | 1082 | Pre Load Validation | PTM | 1.2.1.34.2 | 1.2.1.34.2 | 2026-04-20 | 2026-04-20 | 2026-04-16 | 100 | 5 | 709 | 1 | 1 | 357ae9be-8a60-818c-a935-e82610089ed2 | 357ae9be-8a60-81a6-92f6-d908f07a9b29 | 0 | 0 | As Soon As Possible | Auto Scheduled | AMETEK SAP XXL Project Plan Replan MSP Task.csv | AMETEK SAP XXL Project Plan Replan MSP Task.csv__2f0764ccac__2026-05-05T02-44-15-662Z | Brad Meseck |  |  |  | Done | True  0 0 1 0 0 0 18 | Wrong Dependency High 3 1 0  |  |  |  |  |
| 357ae9be-8a60-8149-ad97-fdea27e16201 | 1746 | Simulate Load | Data | 1.2.2.2.10.3 | 1.2.2.2.10.3 | 2026-05-19 | 2026-05-19 | 2026-04-10 | 0 | 6 | 1743 | 1 | 1 | 357ae9be-8a60-813e-b7c7-f611d79c08a4 | 357ae9be-8a60-81b8-b5d2-fe7e40e21c28 | -16.52 | 0 | As Soon As Possible | Auto Scheduled | AMETEK SAP XXL Project Plan Replan MSP Task.csv | AMETEK SAP XXL Project Plan Replan MSP Task.csv__2f0764ccac__2026-05-05T02-44-15-662Z | Jyoti Nain | 39 | True | True | Not started | True  -16.52 0 1 0 0 0 26 | Negative Float Critical 2 0 0  |  |  |  |  |
| 357ae9be-8a60-8149-b121-f40a3f9d4f8b | 2744 | Post Load Validation | OTC | 1.2.4.2.56.2 | 1.2.4.2.56.2 | 2026-09-24 | 2026-09-24 | 2026-04-10 | 0 | 6 | 2742 | 1 | 0 | 357ae9be-8a60-81d2-87cd-ec378dbb895c |  | -643.5 | 0 | Finish No Earlier Than | Auto Scheduled | AMETEK SAP XXL Project Plan Replan MSP Task.csv | AMETEK SAP XXL Project Plan Replan MSP Task.csv__2f0764ccac__2026-05-05T02-44-15-662Z | James VanRiper | 167 | True |  | Not started | True  -643.5 0 0 0 0 0 20 | Negative Float, Open Finish Critical 3 0 0 True | 2026-04-20 |  |  |  |
| 357ae9be-8a60-8149-b297-f48afb2a029f | 807 | Post Load Validation | Finance | 1.2.1.5.6 | 1.2.1.5.6 | 2026-04-07 | 2026-04-07 | 2026-04-07 | 100 | 5 | 759 | 1 | 3 | 357ae9be-8a60-81c3-8769-cc236331bb6d | 357ae9be-8a60-81ac-b21c-ed8932fb2550, 357ae9be-8a60-81c7-96c1-d5aa84493c00, 357ae9be-8a60-8108-90f1-c7a2d99193b6 | 0 | 0 | As Soon As Possible | Auto Scheduled | AMETEK SAP XXL Project Plan Replan MSP Task.csv | AMETEK SAP XXL Project Plan Replan MSP Task.csv__2f0764ccac__2026-05-05T02-44-15-662Z | Kasey Hughes |  |  |  | Done | True  0 0 2 2 383 0 31 | Wrong Successor High 3 0 3  |  |  |  |  |
| 357ae9be-8a60-8149-be24-f0e0dfad3c19 | 4431 | Error and Defect Mitigation | PTM | 1.2.5.2.46.4 | 1.2.5.2.46.4 | 2026-10-02 | 2026-10-02 | 2026-04-16 | 0 | 6 | 4427 | 1 | 1 | 357ae9be-8a60-81d6-8a40-c3dc1959c0bf | 357ae9be-8a60-814d-a860-f67caeb34e6f | -726.02 | 0 | Finish No Earlier Than | Auto Scheduled | AMETEK SAP XXL Project Plan Replan MSP Task.csv | AMETEK SAP XXL Project Plan Replan MSP Task.csv__2f0764ccac__2026-05-05T02-44-15-662Z | Eric Heisler | 169 | True |  | Not started | True  -726.02 0 1 0 0 0 26 | Negative Float Critical 2 0 0 True | 2026-04-17 |  |  |  |
| 357ae9be-8a60-814a-82c2-f7a55872e084 | 3275 | GTS - Material initial load from S4 (Run Interface) | (Unassigned) | 1.2.3.2.55 | 1.2.3.2.55 | 2026-06-11 | 2026-06-15 | 2026-04-16 | 0 | 5 | 2959 | 0 | 0 |  |  | -23.78 | 0 | As Soon As Possible | Auto Scheduled | AMETEK SAP XXL Project Plan Replan MSP Task.csv | AMETEK SAP XXL Project Plan Replan MSP Task.csv__2f0764ccac__2026-05-05T02-44-15-662Z | COULD NOT BE DETERMINED | 60 | True |  | Not started | True  -23.78 0 0 0 0 0 20 | Negative Float Critical 2 0 0  |  | 3276, 3277 | True |  |
| 357ae9be-8a60-814a-8fb4-d7577706739d | 2000 | Post Load Validation | PTM | 1.2.2.2.54.6 | 1.2.2.2.54.6 | 2026-05-22 | 2026-05-25 | 2026-04-17 | 0 | 6 | 1994 | 1 | 0 | 357ae9be-8a60-81f3-b594-e039011327da |  | -39.27 | 0 | As Soon As Possible | Auto Scheduled | AMETEK SAP XXL Project Plan Replan MSP Task.csv | AMETEK SAP XXL Project Plan Replan MSP Task.csv__2f0764ccac__2026-05-05T02-44-15-662Z | Brad Meseck | 38 | True |  | Not started | True  -39.27 0 0 0 0 0 20 | Negative Float, Open Finish Critical 3 0 0  |  |  |  |  |
| 357ae9be-8a60-814a-a139-f875cd9c5de3 | 1066 | Load | Data | 1.2.1.32.5 | 1.2.1.32.5 | 2026-04-16 | 2026-04-16 | 2026-04-17 | 100 | 5 | 695 | 1 | 1 | 357ae9be-8a60-81ed-a280-e7c35b9e7255 | 357ae9be-8a60-816a-b42f-ccbb13bcdde0 | 0 | 0 | As Soon As Possible | Auto Scheduled | AMETEK SAP XXL Project Plan Replan MSP Task.csv | AMETEK SAP XXL Project Plan Replan MSP Task.csv__2f0764ccac__2026-05-05T02-44-15-662Z | Jyoti Nain |  |  |  | Done | True  0 0 1 0 0 0 18 | Low 0 0 0  |  |  |  |  |
| 357ae9be-8a60-814a-b11f-fa49bd036ce8 | 4283 | Post Load Validation | PTP | 1.2.5.2.19.6 | 1.2.5.2.19.6 | 2026-09-24 | 2026-09-24 | 2026-04-15 | 0 | 6 | 4277 | 1 | 3 | 357ae9be-8a60-814d-8735-d0a6c4327e60 | 357ae9be-8a60-81da-baab-cafe7d1f1a8f, 357ae9be-8a60-81e5-9b3f-c5ad24e97b87, 357ae9be-8a60-8145-b40c-d35c88561209 | -726.02 | 0 | As Soon As Possible | Auto Scheduled | AMETEK SAP XXL Project Plan Replan MSP Task.csv | AMETEK SAP XXL Project Plan Replan MSP Task.csv__2f0764ccac__2026-05-05T02-44-15-662Z | Nevin Varkey | 162 | True |  | Not started | True  -726.02 0 3 0 0 0 38 | Negative Float Critical 2 0 0  |  |  |  |  |
| 357ae9be-8a60-814a-b403-f1a3a964d5e9 | 4492 | Post Load Validation | OTC | 1.2.5.2.59.2 | 1.2.5.2.59.2 | 2026-10-01 | 2026-10-01 | 2026-04-16 | 0 | 6 | 4490 | 1 | 1 | 357ae9be-8a60-81a1-89f4-cde882b23561 | 357ae9be-8a60-81a1-9812-fee776d84020 | -712.27 | 0 | As Soon As Possible | Auto Scheduled | AMETEK SAP XXL Project Plan Replan MSP Task.csv | AMETEK SAP XXL Project Plan Replan MSP Task.csv__2f0764ccac__2026-05-05T02-44-15-662Z | James VanRiper | 168 | True |  | Not started | True  -712.27 0 1 0 0 0 26 | Negative Float Critical 2 0 0  |  |  |  |  |
| 357ae9be-8a60-814a-b929-eb87b46ac659 | 2794 | Functional Smoke Testing | Development;PTM;Finance;PMO;Europe IT lead;OTC;TESTING | 1.3.3.6.5 | 1.3.3.6.5 | 2026-06-02 | 2026-06-09 | 2026-06-25 | 0 | 5 | 2791 | 1 | 1 | 357ae9be-8a60-8133-a8bd-c9075993390d | 357ae9be-8a60-810a-9fa2-cf71f3578f1b | -1.5 | 0 | As Soon As Possible | Auto Scheduled | AMETEK SAP XXL Project Plan Replan MSP Task.csv | AMETEK SAP XXL Project Plan Replan MSP Task.csv__2f0764ccac__2026-05-05T02-44-15-662Z | Bijoykrishna Das |  |  |  | Not started | True  -1.5 0 0 0 0 0 14 | Negative Float High 2 0 0  |  |  |  |  |
| 357ae9be-8a60-814a-bcd1-e3c51083fd6a | 4517 | Pre Load Validation | Finance | 1.2.5.2.67.2 | 1.2.5.2.67.2 | 2026-09-24 | 2026-09-24 | 2026-04-10 | 0 | 6 | 4515 | 1 | 1 | 357ae9be-8a60-81bd-88ea-ecf738c80151 | 357ae9be-8a60-81f4-8177-f18d524e6d89 | -39061 | 0 | As Soon As Possible | Auto Scheduled | AMETEK SAP XXL Project Plan Replan MSP Task.csv | AMETEK SAP XXL Project Plan Replan MSP Task.csv__2f0764ccac__2026-05-05T02-44-15-662Z | Kasey Hughes | 167 | True |  | Not started | True  -39061 0 1 0 0 0 26 | Negative Float Critical 2 0 0  |  |  |  |  |
| 357ae9be-8a60-814a-bdf3-d4b4e5641c4c | 4317 | Load File Staged and Posted "Ready" | PTP;OTC | 1.2.5.2.25.1 | 1.2.5.2.25.1 | 2026-09-25 | 2026-09-28 | 2026-04-07 | 0 | 6 | 4316 | 1 | 0 | 357ae9be-8a60-81c7-b336-fd06c18191cb |  | -39421 | 0 | As Soon As Possible | Auto Scheduled | AMETEK SAP XXL Project Plan Replan MSP Task.csv | AMETEK SAP XXL Project Plan Replan MSP Task.csv__2f0764ccac__2026-05-05T02-44-15-662Z | Nevin Varkey | 174 | True |  | Not started | True  -39421 0 0 0 0 0 20 | Negative Float, Open Finish Critical 3 0 0  |  |  |  |  |
| 357ae9be-8a60-814a-bf31-ea704d2877ef | 840 | Forms | (Unassigned) | 1.3.2.5 | 1.3.2.5 | 2026-08-14 | 2026-08-14 | 2026-05-22 | 0 | 4 | 835 | 0 | 0 |  |  | 61 | 61 | Finish No Earlier Than | Auto Scheduled | AMETEK SAP XXL Project Plan Replan MSP Task.csv | AMETEK SAP XXL Project Plan Replan MSP Task.csv__2f0764ccac__2026-05-05T02-44-15-662Z | COULD NOT BE DETERMINED | 84 | True |  | Not started |   61 61 0 0 0 0 8 | Open Start, Open Finish Medium 2 0 0 True | 2026-08-14 |  |  |  |
| 357ae9be-8a60-814b-917a-dc7033595b70 | 1125 | Load | Data | 1.2.1.53.5 | 1.2.1.53.5 | 2026-04-23 | 2026-04-23 | 2026-04-10 | 100 | 5 | 702 | 1 | 1 | 357ae9be-8a60-81bc-b0a6-f724853cc828 | 357ae9be-8a60-8154-ae0e-ead0d892eee7 | 0 | 0 | Start No Earlier Than | Auto Scheduled | AMETEK SAP XXL Project Plan Replan MSP Task.csv | AMETEK SAP XXL Project Plan Replan MSP Task.csv__2f0764ccac__2026-05-05T02-44-15-662Z | Jyoti Nain |  |  |  | Done | True  0 0 1 0 0 0 18 | Low 0 0 0 True | 2026-04-17 |  |  |  |
| 357ae9be-8a60-814b-9f67-c01051c11265 | 2489 | Manual File Staged and Posted "Ready" | Finance | 1.2.4.2.11.1 | 1.2.4.2.11.1 | 2026-09-29 | 2026-09-29 | 2026-04-14 | 0 | 6 | 2488 | 1 | 1 | 357ae9be-8a60-814f-9909-dc7f6a9040f5 | 357ae9be-8a60-8133-912a-d9c61895017a | -42270 | 0 | Finish No Earlier Than | Auto Scheduled | AMETEK SAP XXL Project Plan Replan MSP Task.csv | AMETEK SAP XXL Project Plan Replan MSP Task.csv__2f0764ccac__2026-05-05T02-44-15-662Z | Kasey Hughes | 168 | True |  | Not started | True  -42270 0 1 0 0 0 26 | Wrong Dependency, Negative Float Critical 5 1 0 True | 2026-04-14 |  |  |  |
| 357ae9be-8a60-814b-a4d3-df52309ee439 | 4363 | Load | Data | 1.2.5.2.31.5 | 1.2.5.2.31.5 | 2026-10-02 | 2026-10-02 | 2026-04-17 | 0 | 6 | 4358 | 1 | 1 | 357ae9be-8a60-8178-893d-d8eafd27c514 | 357ae9be-8a60-8134-8694-e71622c183dd | -700.39 | 0 | As Soon As Possible | Auto Scheduled | AMETEK SAP XXL Project Plan Replan MSP Task.csv | AMETEK SAP XXL Project Plan Replan MSP Task.csv__2f0764ccac__2026-05-05T02-44-15-662Z | Jyoti Nain | 168 | True |  | Not started | True  -700.39 0 1 0 0 0 26 | Negative Float Critical 2 0 0  |  |  |  |  |
| 357ae9be-8a60-814b-a818-d663be665793 | 1141 | Simulate Load | Data | 1.2.1.68.3 | 1.2.1.68.3 | 2026-04-20 | 2026-04-20 | 2026-04-16 | 100 | 5 | 950 | 1 | 1 | 357ae9be-8a60-810c-b32f-e0ad826d8800 | 357ae9be-8a60-81b5-9f73-e6eb004abfa1 | 0 | 0 | As Soon As Possible | Auto Scheduled | AMETEK SAP XXL Project Plan Replan MSP Task.csv | AMETEK SAP XXL Project Plan Replan MSP Task.csv__2f0764ccac__2026-05-05T02-44-15-662Z | Jyoti Nain |  |  |  | Done | True  0 0 1 0 0 0 18 | Low 0 0 0  |  |  |  |  |
| 357ae9be-8a60-814c-8b80-e148eada318e | 3306 | Run report /SAPSLL/EMB_CNTRY_INIT | OTC | 1.2.3.2.65.1 | 1.2.3.2.65.1 | 2026-06-09 | 2026-06-09 | 2026-04-13 | 0 | 6 | 3305 | 1 | 1 | 357ae9be-8a60-81a4-855c-dad87d42e826 | 357ae9be-8a60-8135-882f-fa0aaa6f2485 | -131.52 | 0 | As Soon As Possible | Auto Scheduled | AMETEK SAP XXL Project Plan Replan MSP Task.csv | AMETEK SAP XXL Project Plan Replan MSP Task.csv__2f0764ccac__2026-05-05T02-44-15-662Z | James VanRiper | 57 | True |  | Not started | True  -131.52 0 1 0 0 0 26 | Negative Float Critical 2 0 0  |  |  |  |  |
| 357ae9be-8a60-814c-8cb2-cd8710ec5056 | 3089 | Manual File Staged and Posted "Ready" | Finance | 1.2.3.2.21.1 | 1.2.3.2.21.1 | 2026-06-15 | 2026-06-15 | 2026-04-10 | 0 | 6 | 3088 | 1 | 0 | 357ae9be-8a60-81d8-afd4-df5816aa9545 |  | -9781 | 0 | As Soon As Possible | Auto Scheduled | AMETEK SAP XXL Project Plan Replan MSP Task.csv | AMETEK SAP XXL Project Plan Replan MSP Task.csv__2f0764ccac__2026-05-05T02-44-15-662Z | Kasey Hughes | 66 | True |  | Not started | True  -9781 0 0 0 0 0 20 | Wrong Dependency, Negative Float, Open Finish Critical 6 1 0  |  |  |  |  |
| 357ae9be-8a60-814c-9142-d40bd9ab9779 | 3048 | Close Client | Basis | 1.2.3.2.14.9 | 1.2.3.2.14.9 | 2026-06-12 | 2026-06-12 | 2026-04-09 | 0 | 6 | 3039 | 1 | 0 | 357ae9be-8a60-81e7-850d-d75b77df227a |  | -8986 | 0 | As Soon As Possible | Auto Scheduled | AMETEK SAP XXL Project Plan Replan MSP Task.csv | AMETEK SAP XXL Project Plan Replan MSP Task.csv__2f0764ccac__2026-05-05T02-44-15-662Z | Lokchetan Meghavath | 64 | True |  | Not started | True  -8986 0 0 0 0 0 20 | Negative Float, Open Finish Critical 3 0 0  |  |  |  |  |
| 357ae9be-8a60-814c-9e94-d63f6bc45d55 | 2757 | GTS - HTS - Assign | (Unassigned) | 1.2.4.2.61 | 1.2.4.2.61 | 2026-10-01 | 2026-10-02 | 2026-04-16 | 0 | 5 | 2898 | 0 | 0 |  |  | -89.03 | 0 | As Soon As Possible | Auto Scheduled | AMETEK SAP XXL Project Plan Replan MSP Task.csv | AMETEK SAP XXL Project Plan Replan MSP Task.csv__2f0764ccac__2026-05-05T02-44-15-662Z | COULD NOT BE DETERMINED | 169 | True |  | Not started | True  -89.03 0 0 0 0 0 20 | Negative Float Critical 2 0 0  |  | 2758, 2759 | True |  |
| 357ae9be-8a60-814c-a715-fa1813895238 | 1207 | Post Load Validation | PTM | 1.2.1.37.6 | 1.2.1.37.6 | 2026-04-21 | 2026-04-21 | 2026-04-21 | 100 | 5 | 1195 | 0 | 0 |  |  | 0 | 0 | Start No Earlier Than | Auto Scheduled | AMETEK SAP XXL Project Plan Replan MSP Task.csv | AMETEK SAP XXL Project Plan Replan MSP Task.csv__2f0764ccac__2026-05-05T02-44-15-662Z | Brad Meseck |  |  |  | Done | True  0 0 0 0 0 0 12 | Low 0 0 0 True | 2026-04-21 |  |  |  |
| 357ae9be-8a60-814c-abc1-e95862a80c5b | 1821 | Simulate Load | Data | 1.2.2.2.22.3 | 1.2.2.2.22.3 | 2026-05-18 | 2026-05-18 | 2026-04-13 | 0 | 6 | 1818 | 1 | 1 | 357ae9be-8a60-81fd-aa99-de5b79400379 | 357ae9be-8a60-8105-b287-efa1280d878d | -11.52 | 0 | As Soon As Possible | Auto Scheduled | AMETEK SAP XXL Project Plan Replan MSP Task.csv | AMETEK SAP XXL Project Plan Replan MSP Task.csv__2f0764ccac__2026-05-05T02-44-15-662Z | Jyoti Nain | 35 | True | True | Not started | True  -11.52 0 1 0 0 0 26 | Negative Float Critical 2 0 0  |  |  |  |  |
| 357ae9be-8a60-814c-b106-c5a86bda32d1 | 2040 | Pre Load Validation | Finance | 1.2.2.2.67.2 | 1.2.2.2.67.2 | 2026-05-18 | 2026-05-18 | 2026-04-10 | 0 | 6 | 2038 | 1 | 1 | 357ae9be-8a60-8103-8329-f20784da45ca | 357ae9be-8a60-8128-bbf0-ff93f742bbc5 | -541 | 0 | As Soon As Possible | Auto Scheduled | AMETEK SAP XXL Project Plan Replan MSP Task.csv | AMETEK SAP XXL Project Plan Replan MSP Task.csv__2f0764ccac__2026-05-05T02-44-15-662Z | Kasey Hughes | 38 | True | True | Not started | True  -541 0 1 0 0 0 26 | Wrong Dependency, Negative Float Critical 5 1 0  |  |  |  |  |
| 357ae9be-8a60-814d-847f-e185ce7e42a7 | 642 | Security Transports | Security | 1.1.1.4.9 | 1.1.1.4.9 | 2026-02-05 | 2026-02-05 | 2026-02-05 | 100 | 5 | 88 | 1 | 2 | 357ae9be-8a60-8162-91ec-cf1baabe3c85 | 357ae9be-8a60-81b0-99fc-f3b06d5b962d, 357ae9be-8a60-8156-bcbe-d035d66c44b6 | 0 | 0 | As Soon As Possible | Auto Scheduled | AMETEK SAP XXL Project Plan Replan MSP Task.csv | AMETEK SAP XXL Project Plan Replan MSP Task.csv__2f0764ccac__2026-05-05T02-44-15-662Z | Manjunatha Umesha |  |  |  | Done | True  0 0 2 0 0 0 24 | Low 0 0 0  |  |  |  |  |
| 357ae9be-8a60-814d-8735-d0a6c4327e60 | 4282 | Load | Data | 1.2.5.2.19.5 | 1.2.5.2.19.5 | 2026-09-24 | 2026-09-24 | 2026-04-14 | 0 | 6 | 4277 | 0 | 1 |  | 357ae9be-8a60-814a-b11f-fa49bd036ce8 | -726.02 | 0 | As Soon As Possible | Auto Scheduled | AMETEK SAP XXL Project Plan Replan MSP Task.csv | AMETEK SAP XXL Project Plan Replan MSP Task.csv__2f0764ccac__2026-05-05T02-44-15-662Z | Jyoti Nain | 163 | True |  | Not started | True  -726.02 0 1 0 0 0 26 | Negative Float, Open Start Critical 3 0 0  |  |  |  |  |
| 357ae9be-8a60-814d-8b0d-f2ba60171555 | 242 | End User Training Exeuction | Training | 1.4.1.4 | 1.4.1.4 | 2026-07-10 | 2026-10-16 | 2026-10-16 | 0 | 4 | 215 | 0 | 0 |  |  | 16 | 16 | As Soon As Possible | Auto Scheduled | AMETEK SAP XXL Project Plan Replan MSP Task.csv | AMETEK SAP XXL Project Plan Replan MSP Task.csv__2f0764ccac__2026-05-05T02-44-15-662Z | Karen Zalnis |  |  |  | Not started |   16 16 0 0 0 0 0 | Low 0 0 0  |  | 913, 246 | True |  |
| 357ae9be-8a60-814d-8fda-d544693b8bda | 1916 | PTM_CM48_Equipment_Master_Service | PTM | 1.2.2.2.36 | 1.2.2.2.36 | 2026-05-18 | 2026-05-27 | 2026-04-21 | 0 | 5 | 2800 | 0 | 0 |  |  | -6.72 | 0 | As Soon As Possible | Auto Scheduled | AMETEK SAP XXL Project Plan Replan MSP Task.csv | AMETEK SAP XXL Project Plan Replan MSP Task.csv__2f0764ccac__2026-05-05T02-44-15-662Z | Brad Meseck | 36 | True |  | Not started | True  -6.72 0 0 0 0 0 20 | Negative Float High 2 0 0  |  | 1921, 1920, 1922, 1917, 1918, 1919 | True |  |
| 357ae9be-8a60-814d-95b9-ffb7a755ca18 | 4479 | Run material interface to GTS | OTC | 1.2.5.2.55.1 | 1.2.5.2.55.1 | 2026-09-29 | 2026-10-01 | 2026-04-16 | 0 | 6 | 4478 | 1 | 1 | 357ae9be-8a60-8114-ba70-d652a823b48b | 357ae9be-8a60-8120-a200-de882e5855c9 | -712.27 | 0 | Finish No Earlier Than | Auto Scheduled | AMETEK SAP XXL Project Plan Replan MSP Task.csv | AMETEK SAP XXL Project Plan Replan MSP Task.csv__2f0764ccac__2026-05-05T02-44-15-662Z | James VanRiper | 168 | True |  | Not started | True  -712.27 0 1 0 0 0 26 | Negative Float Critical 2 0 0 True | 2026-04-17 |  |  |  |
| 357ae9be-8a60-814d-9993-ef431fb68608 | 2497 | Update number range BP02 from Internal to External | OTC | 1.2.4.2.13.4 | 1.2.4.2.13.4 | 2026-09-29 | 2026-09-29 | 2026-04-10 | 0 | 6 | 2493 | 1 | 1 | 357ae9be-8a60-8128-bdf5-e1d3c94af282 | 357ae9be-8a60-8117-8970-ed0625cec930 | -40275 | 0 | As Soon As Possible | Auto Scheduled | AMETEK SAP XXL Project Plan Replan MSP Task.csv | AMETEK SAP XXL Project Plan Replan MSP Task.csv__2f0764ccac__2026-05-05T02-44-15-662Z | Ric Haraida | 172 | True |  | Not started | True  -40275 0 1 0 0 0 26 | Negative Float Critical 2 0 0  |  |  |  |  |
| 357ae9be-8a60-814d-9cd9-ecd7fbf439fc | 2036 | Load Descartes XML File | OTC | 1.2.2.2.66.1 | 1.2.2.2.66.1 | 2026-05-26 | 2026-05-26 | 2026-04-16 | 0 | 6 | 2035 | 1 | 2 | 357ae9be-8a60-81eb-b634-ff1d74677f47 | 357ae9be-8a60-81e2-809c-df100912a844, 357ae9be-8a60-81ec-8ad9-d9f5e61ffece | -51.02 | 0 | As Soon As Possible | Auto Scheduled | AMETEK SAP XXL Project Plan Replan MSP Task.csv | AMETEK SAP XXL Project Plan Replan MSP Task.csv__2f0764ccac__2026-05-05T02-44-15-662Z | James VanRiper | 40 | True |  | Not started | True  -51.02 0 2 2 439 0 37 | Wrong Dependency, Wrong Successor, Negative Float Critical 8 1 2  |  |  |  |  |
| 357ae9be-8a60-814d-a1db-f637e170c4a8 | 2709 | Post Load Validation | OTC | 1.2.4.2.49.3 | 1.2.4.2.49.3 | 2026-10-08 | 2026-10-08 | 2026-04-21 | 0 | 6 | 2706 | 1 | 0 | 357ae9be-8a60-8194-b402-c1ff5290da23 |  | -725 | 0 | As Soon As Possible | Auto Scheduled | AMETEK SAP XXL Project Plan Replan MSP Task.csv | AMETEK SAP XXL Project Plan Replan MSP Task.csv__2f0764ccac__2026-05-05T02-44-15-662Z | Ric Haraida | 170 | True |  | Not started | True  -725 0 0 0 0 0 20 | Wrong Dependency, Negative Float, Open Finish Critical 6 1 0  |  |  |  |  |
| 357ae9be-8a60-814d-a26c-d67710da181a | 4509 | Run report /SAPSLL/EMB_CNTRY_INIT | OTC | 1.2.5.2.65.1 | 1.2.5.2.65.1 | 2026-09-25 | 2026-09-25 | 2026-04-13 | 0 | 6 | 4508 | 1 | 1 | 357ae9be-8a60-816c-a2fc-f2984473d9a5 | 357ae9be-8a60-81b2-bf24-de1126110d2b | -653.52 | 0 | As Soon As Possible | Auto Scheduled | AMETEK SAP XXL Project Plan Replan MSP Task.csv | AMETEK SAP XXL Project Plan Replan MSP Task.csv__2f0764ccac__2026-05-05T02-44-15-662Z | James VanRiper | 165 | True |  | Not started | True  -653.52 0 1 0 0 0 26 | Negative Float Critical 2 0 0  |  |  |  |  |
| 357ae9be-8a60-814d-a860-f67caeb34e6f | 4432 | Load | Data | 1.2.5.2.46.5 | 1.2.5.2.46.5 | 2026-10-02 | 2026-10-05 | 2026-04-16 | 0 | 6 | 4427 | 1 | 1 | 357ae9be-8a60-8149-be24-f0e0dfad3c19 | 357ae9be-8a60-8166-ae69-e4572738ee05 | -726.02 | 0 | Start No Earlier Than | Auto Scheduled | AMETEK SAP XXL Project Plan Replan MSP Task.csv | AMETEK SAP XXL Project Plan Replan MSP Task.csv__2f0764ccac__2026-05-05T02-44-15-662Z | Jyoti Nain | 172 | True |  | Not started | True  -726.02 0 1 0 0 0 26 | Negative Float Critical 2 0 0 True | 2026-04-17 |  |  |  |
| 357ae9be-8a60-814d-a965-d81b07896743 | 3242 | OTC_CM22_Pricing_Condition | OTC | 1.2.3.2.49 | 1.2.3.2.49 | 2026-06-17 | 2026-06-18 | 2026-04-21 | 0 | 5 | 2959 | 0 | 0 |  |  | -23.41 | 0 | As Soon As Possible | Auto Scheduled | AMETEK SAP XXL Project Plan Replan MSP Task.csv | AMETEK SAP XXL Project Plan Replan MSP Task.csv__2f0764ccac__2026-05-05T02-44-15-662Z | Anitha Jothi | 58 | True |  | Not started | True  -23.41 0 0 0 0 0 20 | Negative Float Critical 2 0 0  |  | 3243, 3245, 3244 | True |  |
| 357ae9be-8a60-814d-a9ee-f6004b109629 | 1837 | Load | Data | 1.2.2.2.24.5 | 1.2.2.2.24.5 | 2026-05-20 | 2026-05-20 | 2026-04-15 | 0 | 6 | 1832 | 1 | 1 | 357ae9be-8a60-8127-a897-d9b628051bdd | 357ae9be-8a60-81b5-a3a5-c40db00435bc | -70.27 | 0 | As Soon As Possible | Auto Scheduled | AMETEK SAP XXL Project Plan Replan MSP Task.csv | AMETEK SAP XXL Project Plan Replan MSP Task.csv__2f0764ccac__2026-05-05T02-44-15-662Z | Jyoti Nain | 35 | True | True | Not started | True  -70.27 0 1 1 41 0 31 | Wrong Successor, Negative Float Critical 5 0 1  |  |  |  |  |

| id | uid | name | workstream | outlineNumber | wbs | start | finish | baselineFinish | pct | outlineLevel | parentUid | predCount | sucCount | predIds | sucIds | totalSlackDaysRaw | freeSlackDaysRaw | constraintType | taskMode | mspSourceFile | mspImportVersion | assignedTo | slipDays | isSlipped | isDue14 | status | cpm | scheduleQuality | constraintDate | childUids | isSummary |
| --- | --- | --- | --- | --- | --- | --- | --- | --- | --- | --- | --- | --- | --- | --- | --- | --- | --- | --- | --- | --- | --- | --- | --- | --- | --- | --- | --- | --- | --- | --- | --- |
| 357ae9be-8a60-814d-ae0e-f42e994a14e9 | 241 | Train the Trainer | (Unassigned) | 1.4.1.3 | 1.4.1.3 | 2026-08-03 | 2026-08-28 | 2026-08-28 | 0 | 4 | 215 | 0 | 0 |  |  | 16 | 16 | As Soon As Possible | Auto Scheduled | AMETEK SAP XXL Project Plan Replan MSP Task.csv | AMETEK SAP XXL Project Plan Replan MSP Task.csv__2f0764ccac__2026-05-05T02-44-15-662Z | COULD NOT BE DETERMINED |  |  |  | Not started |   16 16 0 0 0 0 0 | Low 0 0 0  |  | 247 | True |
| 357ae9be-8a60-814d-af84-c39761f10563 | 657 | Import Group 1 - Ent Structure | Development;PTM;Finance;PMO;Europe IT lead;OTC;TESTING | 1.1.1.4.18.1 | 1.1.1.4.18.1 | 2026-02-09 | 2026-02-09 | 2026-02-09 | 100 | 6 | 647 | 1 | 1 | 357ae9be-8a60-81d6-83f6-fe69a2b3d4d2 | 357ae9be-8a60-81fa-a63e-c9fa1c6121d9 | 0 | 0 | As Soon As Possible | Auto Scheduled | AMETEK SAP XXL Project Plan Replan MSP Task.csv | AMETEK SAP XXL Project Plan Replan MSP Task.csv__2f0764ccac__2026-05-05T02-44-15-662Z | Bijoykrishna Das |  |  |  | Done | True  0 0 0 0 0 0 14 | Low 0 0 0  |  |  |  |
| 357ae9be-8a60-814d-b14c-ff7f7174130b | 1295 | Manual Technical Tasks | Basis | 1.1.1.6.1.9 | 1.1.1.6.1.9 | 2026-05-21 | 2026-05-21 | 2026-05-18 | 0 | 6 | 3339 | 1 | 1 | 357ae9be-8a60-8180-8d80-db23f8759c9f | 357ae9be-8a60-8100-8dcc-dbb8060e4ac9 | -30.19 | 0 | As Soon As Possible | Auto Scheduled | AMETEK SAP XXL Project Plan Replan MSP Task.csv | AMETEK SAP XXL Project Plan Replan MSP Task.csv__2f0764ccac__2026-05-05T02-44-15-662Z | Lokchetan Meghavath | 3 | True |  | Not started | True  -30.19 0 1 0 0 0 26 | Negative Float Critical 2 0 0  |  |  |  |
| 357ae9be-8a60-814e-8a03-ec8c8ee51eaa | 757 | RTR_CM06_Bank_master | (Unassigned) | 1.2.1.10 | 1.2.1.10 | 2026-04-14 | 2026-04-16 | 2026-04-09 | 100 | 4 | 425 | 1 | 1 | 357ae9be-8a60-8137-a9be-e0506af141c2 | 357ae9be-8a60-8150-82ad-d0405838525a | 0 | 0 | As Soon As Possible | Auto Scheduled | AMETEK SAP XXL Project Plan Replan MSP Task.csv | AMETEK SAP XXL Project Plan Replan MSP Task.csv__2f0764ccac__2026-05-05T02-44-15-662Z | COULD NOT BE DETERMINED |  |  |  | Done | True  0 0 1 1 7 0 23 | Low 0 0 0  |  | 789, 794, 791, 792, 793, 790 | True |
| 357ae9be-8a60-814e-8d7f-d325e0069e09 | 4403 | VC_Characteristics | (Unassigned) | 1.2.5.2.38 | 1.2.5.2.38 | 2026-09-24 | 2026-09-25 | 2026-04-07 | 0 | 5 | 4162 | 0 | 0 |  |  | -82.69 | 0 | As Soon As Possible | Auto Scheduled | AMETEK SAP XXL Project Plan Replan MSP Task.csv | AMETEK SAP XXL Project Plan Replan MSP Task.csv__2f0764ccac__2026-05-05T02-44-15-662Z | COULD NOT BE DETERMINED | 171 | True |  | Not started | True  -82.69 0 0 0 0 0 20 | Negative Float Critical 2 0 0  |  | 4405, 4404 | True |
| 357ae9be-8a60-814e-995c-fb67fef11f05 | 2791 | ITC-2 | (Unassigned) | 1.3.3.6 | 1.3.3.6 | 2026-05-29 | 2026-06-19 | 2026-07-24 | 0 | 4 | 18 | 0 | 0 |  |  | -1.5 | 0 | As Soon As Possible | Auto Scheduled | AMETEK SAP XXL Project Plan Replan MSP Task.csv | AMETEK SAP XXL Project Plan Replan MSP Task.csv__2f0764ccac__2026-05-05T02-44-15-662Z | COULD NOT BE DETERMINED |  |  |  | Not started | True  -1.5 0 0 0 0 0 12 | Negative Float High 2 0 0  |  | 2796, 2949, 2948, 2794, 2798, 2795, 2793, 2797, 2792 | True |
| 357ae9be-8a60-814e-9a90-d4981b5ecfd9 | 3201 | Run ALE Transaction to QS5 from DS4 130 | PTM | 1.2.3.2.38.1 | 1.2.3.2.38.1 | 2026-06-08 | 2026-06-09 | 2026-04-06 | 0 | 6 | 3200 | 1 | 1 | 357ae9be-8a60-81f9-a360-cce969d92988 | 357ae9be-8a60-81fd-abcd-e8f630061abb | -139.52 | 0 | As Soon As Possible | Auto Scheduled | AMETEK SAP XXL Project Plan Replan MSP Task.csv | AMETEK SAP XXL Project Plan Replan MSP Task.csv__2f0764ccac__2026-05-05T02-44-15-662Z | Eric Heisler | 64 | True |  | Not started | True  -139.52 0 1 0 0 0 26 | Negative Float Critical 2 0 0  |  |  |  |
| 357ae9be-8a60-814e-9f6e-fefe7043b512 | 280 | Changes moved to Test System | (Unassigned) | 1.1.2.7.2 | 1.1.2.7.2 | 2026-05-14 | 2026-05-18 | 2025-11-25 | 0 | 5 | 278 | 1 | 1 | 357ae9be-8a60-81fc-835d-ca14be42748f | 357ae9be-8a60-8169-921b-c44297a8f37c | 68 | 0 | Start No Earlier Than | Auto Scheduled | AMETEK SAP XXL Project Plan Replan MSP Task.csv | AMETEK SAP XXL Project Plan Replan MSP Task.csv__2f0764ccac__2026-05-05T02-44-15-662Z | COULD NOT BE DETERMINED | 174 | True | True | Not started | True  68 0 1 0 0 0 26 | Low 0 0 0 True | 2026-04-30 |  |  |
| 357ae9be-8a60-814e-a320-ec1ac9bb1c59 | 2544 | Post Load Validation | PTP | 1.2.4.2.19.6 | 1.2.4.2.19.6 | 2026-09-24 | 2026-09-24 | 2026-04-15 | 0 | 6 | 2538 | 1 | 0 | 357ae9be-8a60-818b-a012-e74c7d3abc24 |  | -726 | 0 | As Soon As Possible | Auto Scheduled | AMETEK SAP XXL Project Plan Replan MSP Task.csv | AMETEK SAP XXL Project Plan Replan MSP Task.csv__2f0764ccac__2026-05-05T02-44-15-662Z | Nevin Varkey | 162 | True |  | Not started | True  -726 0 0 0 0 0 20 | Negative Float, Open Finish Critical 3 0 0  |  |  |  |
| 357ae9be-8a60-814e-a606-e752a4f234fe | 2549 | Error and Defect Mitigation | PTP | 1.2.4.2.20.4 | 1.2.4.2.20.4 | 2026-09-24 | 2026-09-24 | 2026-04-13 | 0 | 6 | 2545 | 1 | 0 | 357ae9be-8a60-8146-adac-e46b743e3b20 |  | -647.5 | 0 | As Soon As Possible | Auto Scheduled | AMETEK SAP XXL Project Plan Replan MSP Task.csv | AMETEK SAP XXL Project Plan Replan MSP Task.csv__2f0764ccac__2026-05-05T02-44-15-662Z | Nevin Varkey | 164 | True |  | Not started | True  -647.5 0 0 0 0 0 20 | Wrong Dependency, Negative Float, Open Finish Critical 6 1 0  |  |  |  |
| 357ae9be-8a60-814e-a982-dbc8bdac1d0d | 2570 | PTP_CM26_Material_Master - All Types | PTP | 1.2.4.2.24 | 1.2.4.2.24 | 2026-09-24 | 2026-09-28 | 2026-04-15 | 0 | 5 | 2898 | 0 | 0 |  |  | -90.5 | 0 | As Soon As Possible | Auto Scheduled | AMETEK SAP XXL Project Plan Replan MSP Task.csv | AMETEK SAP XXL Project Plan Replan MSP Task.csv__2f0764ccac__2026-05-05T02-44-15-662Z | Muniraju Surappachari | 166 | True |  | Not started | True  -90.5 0 0 0 0 0 20 | Negative Float Critical 2 0 0  |  | 2571, 2575, 2576, 2572, 2574, 2573 | True |
| 357ae9be-8a60-814e-aea0-f8877dab9901 | 3377 | Manual Technical Tasks | Basis | 1.1.1.8.1.9 | 1.1.1.8.1.9 | 2026-09-14 | 2026-09-14 | 2026-07-06 | 0 | 6 | 3368 | 1 | 1 | 357ae9be-8a60-81a4-ae6a-d96bdf165462 | 357ae9be-8a60-81fd-8c12-e1cbb8e610f7 | -90.75 | 0 | As Soon As Possible | Auto Scheduled | AMETEK SAP XXL Project Plan Replan MSP Task.csv | AMETEK SAP XXL Project Plan Replan MSP Task.csv__2f0764ccac__2026-05-05T02-44-15-662Z | Lokchetan Meghavath | 70 | True |  | Not started | True  -90.75 0 1 0 0 0 26 | Negative Float Critical 2 0 0  |  |  |  |
| 357ae9be-8a60-814e-b48a-c463d2a442bf | 2632 | Post Load Validation | PTM | 1.2.4.2.32.6 | 1.2.4.2.32.6 | 2026-10-05 | 2026-10-05 | 2026-04-21 | 0 | 6 | 2626 | 1 | 0 | 357ae9be-8a60-81a1-aaa5-e71fb76e3921 |  | -704.38 | 0 | Start No Earlier Than | Auto Scheduled | AMETEK SAP XXL Project Plan Replan MSP Task.csv | AMETEK SAP XXL Project Plan Replan MSP Task.csv__2f0764ccac__2026-05-05T02-44-15-662Z | Brad Meseck | 167 | True |  | Not started | True  -704.38 0 0 0 0 0 20 | Negative Float, Open Finish Critical 3 0 0 True | 2026-04-20 |  |  |
| 357ae9be-8a60-814e-b58f-f709204c728f | 2798 | Gate Review | (Unassigned) | 1.3.3.6.9 | 1.3.3.6.9 | 2026-06-17 | 2026-06-17 | 2026-07-23 | 0 | 5 | 2791 | 1 | 0 | 357ae9be-8a60-81aa-89a6-f1fb2ba8a7f6 |  | 831 | 831 | As Soon As Possible | Auto Scheduled | AMETEK SAP XXL Project Plan Replan MSP Task.csv | AMETEK SAP XXL Project Plan Replan MSP Task.csv__2f0764ccac__2026-05-05T02-44-15-662Z | COULD NOT BE DETERMINED |  |  |  | Not started |   831 831 0 0 0 0 0 | Open Finish Medium 1 0 0  |  |  |  |
| 357ae9be-8a60-814f-894a-d5693095163e | 767 | RTR_CM04_Cost_Center | (Unassigned) | 1.2.1.6 | 1.2.1.6 | 2026-04-07 | 2026-04-09 | 2026-04-09 | 100 | 4 | 425 | 1 | 2 | 357ae9be-8a60-8137-aae4-fff73a3c474f | 357ae9be-8a60-81f0-be29-f141e36af1c4, 357ae9be-8a60-8181-91de-df16746bfd2b | 0 | 0 | As Soon As Possible | Auto Scheduled | AMETEK SAP XXL Project Plan Replan MSP Task.csv | AMETEK SAP XXL Project Plan Replan MSP Task.csv__2f0764ccac__2026-05-05T02-44-15-662Z | COULD NOT BE DETERMINED |  |  |  | Done | True  0 0 2 2 4 0 29 | Low 0 0 0  |  | 959, 963, 961, 960, 964, 962 | True |
| 357ae9be-8a60-814f-9909-dc7f6a9040f5 | 2438 | Post Load Validation | Finance | 1.2.4.2.3.6 | 1.2.4.2.3.6 | 2026-09-29 | 2026-09-29 | 2026-04-08 | 0 | 6 | 2432 | 1 | 4 | 357ae9be-8a60-8181-a930-d0c84b2ad2a4 | 357ae9be-8a60-8145-9194-de4910f8b1a0, 357ae9be-8a60-81f5-9349-f183da999080, 357ae9be-8a60-811a-9740-f5ff0e5d34b5, 357ae9be-8a60-81de-ae15-de842048dbc0 | -718.5 | 0 | As Soon As Possible | Auto Scheduled | AMETEK SAP XXL Project Plan Replan MSP Task.csv | AMETEK SAP XXL Project Plan Replan MSP Task.csv__2f0764ccac__2026-05-05T02-44-15-662Z | Kasey Hughes | 174 | True |  | Not started | True  -718.5 0 3 3 1234 0 45 | Wrong Successor, Negative Float Critical 5 0 4  |  |  |  |
| 357ae9be-8a60-814f-9c77-f9482bedfaaf | 2616 | Error and Defect Mitigation | PTM | 1.2.4.2.30.4 | 1.2.4.2.30.4 | 2026-10-01 | 2026-10-01 | 2026-04-16 | 0 | 6 | 2612 | 1 | 1 | 357ae9be-8a60-811e-bd80-c11f457b97ec | 357ae9be-8a60-8191-a2a1-dce4ef781ddb | -700.38 | 0 | Finish No Earlier Than | Auto Scheduled | AMETEK SAP XXL Project Plan Replan MSP Task.csv | AMETEK SAP XXL Project Plan Replan MSP Task.csv__2f0764ccac__2026-05-05T02-44-15-662Z | Brad Meseck | 168 | True |  | Not started | True  -700.38 0 1 0 0 0 26 | Negative Float Critical 2 0 0 True | 2026-04-17 |  |  |
| 357ae9be-8a60-814f-a0a2-fa4e611e2872 | 2776 | RTR_CM17_Project Definition / Builder | (Unassigned) | 1.2.4.2.67 | 1.2.4.2.67 | 2026-09-24 | 2026-09-25 | 2026-04-17 | 0 | 5 | 2898 | 0 | 0 |  |  | -81.44 | 0 | As Soon As Possible | Auto Scheduled | AMETEK SAP XXL Project Plan Replan MSP Task.csv | AMETEK SAP XXL Project Plan Replan MSP Task.csv__2f0764ccac__2026-05-05T02-44-15-662Z | COULD NOT BE DETERMINED | 161 | True |  | Not started | True  -81.44 0 0 0 0 0 20 | Negative Float Critical 2 0 0  |  | 2779, 2782, 2777, 2780, 2778, 2781 | True |
| 357ae9be-8a60-814f-a6ec-da71a065b880 | 1104 | Load | Data | 1.2.1.48.5 | 1.2.1.48.5 | 2026-04-17 | 2026-04-17 | 2026-04-17 | 100 | 5 | 714 | 1 | 1 | 357ae9be-8a60-8155-8894-dc7fba20688b | 357ae9be-8a60-8155-a76e-dae87ee9ca51 | 0 | 0 | As Soon As Possible | Auto Scheduled | AMETEK SAP XXL Project Plan Replan MSP Task.csv | AMETEK SAP XXL Project Plan Replan MSP Task.csv__2f0764ccac__2026-05-05T02-44-15-662Z | Jyoti Nain |  |  |  | Done | True  0 0 1 1 344 0 23 | Wrong Successor High 3 0 1  |  |  |  |
| 357ae9be-8a60-814f-ad89-edc8c17fb7c1 | 965 | Load File Staged and Posted "Ready" | Finance | 1.2.1.9.1 | 1.2.1.9.1 | 2026-04-07 | 2026-04-07 | 2026-04-07 | 100 | 5 | 753 | 1 | 1 | 357ae9be-8a60-8150-91fa-f9e50f826277 | 357ae9be-8a60-81ba-8f50-ce4b6cf5cc1d | 0 | 0 | As Soon As Possible | Auto Scheduled | AMETEK SAP XXL Project Plan Replan MSP Task.csv | AMETEK SAP XXL Project Plan Replan MSP Task.csv__2f0764ccac__2026-05-05T02-44-15-662Z | Kasey Hughes |  |  |  | Done | True  0 0 1 0 0 0 18 | Low 0 0 0  |  |  |  |
| 357ae9be-8a60-814f-b388-fd6c98f507a0 | 889 | Technical Transports / BP Setup | Basis | 1.1.1.7.1.3 | 1.1.1.7.1.3 | 2026-06-12 | 2026-06-12 | 2026-06-30 | 0 | 6 | 3338 | 1 | 1 | 357ae9be-8a60-8111-aba6-e3685ccac787 | 357ae9be-8a60-812f-b111-c6112e6169d2 | -36.38 | 0 | As Soon As Possible | Auto Scheduled | AMETEK SAP XXL Project Plan Replan MSP Task.csv | AMETEK SAP XXL Project Plan Replan MSP Task.csv__2f0764ccac__2026-05-05T02-44-15-662Z | Lokchetan Meghavath |  |  |  | Not started | True  -36.38 0 0 0 0 0 14 | Negative Float Critical 2 0 0  |  |  |  |
| 357ae9be-8a60-814f-b485-f43de43a6228 | 3255 | Load | PTP | 1.2.3.2.51.2 | 1.2.3.2.51.2 | 2026-06-16 | 2026-06-17 | 2026-04-13 | 0 | 6 | 3253 | 1 | 1 | 357ae9be-8a60-8184-a2dd-e06846377ce6 | 357ae9be-8a60-8108-90f1-c7a2d99193b6 | -178.77 | 0 | As Soon As Possible | Auto Scheduled | AMETEK SAP XXL Project Plan Replan MSP Task.csv | AMETEK SAP XXL Project Plan Replan MSP Task.csv__2f0764ccac__2026-05-05T02-44-15-662Z | Nevin Varkey | 65 | True |  | Not started | True  -178.77 0 1 1 422 0 31 | Wrong Dependency, Wrong Successor, Negative Float Critical 8 1 1  |  |  |  |
| 357ae9be-8a60-814f-b82c-fec3d843586f | 2519 | Post Load Validation | PTP | 1.2.4.2.15.6 | 1.2.4.2.15.6 | 2026-10-07 | 2026-10-07 | 2026-04-14 | 0 | 6 | 2513 | 1 | 0 | 357ae9be-8a60-8172-899a-e0ef70f22ab8 |  | -718.5 | 0 | As Soon As Possible | Auto Scheduled | AMETEK SAP XXL Project Plan Replan MSP Task.csv | AMETEK SAP XXL Project Plan Replan MSP Task.csv__2f0764ccac__2026-05-05T02-44-15-662Z | Nevin Varkey | 176 | True |  | Not started | True  -718.5 0 0 0 0 0 20 | Negative Float, Open Finish Critical 3 0 0  |  |  |  |
| 357ae9be-8a60-814f-badb-cb3326e3f148 | 137 | Complete - Ready for Audit and Controls Review | (Unassigned) | 1.1.2.9.1.5.3 | 1.1.2.9.1.5.3 | 2025-08-04 | 2025-08-21 | 2025-08-21 | 100 | 7 | 29 | 1 | 0 | 357ae9be-8a60-8105-a93a-fa62de0be317 |  | 0 | 0 | As Soon As Possible | Auto Scheduled | AMETEK SAP XXL Project Plan Replan MSP Task.csv | AMETEK SAP XXL Project Plan Replan MSP Task.csv__2f0764ccac__2026-05-05T02-44-15-662Z | COULD NOT BE DETERMINED |  |  |  | Done | True  0 0 0 0 0 0 12 | Low 0 0 0  |  |  |  |
| 357ae9be-8a60-8150-82ad-d0405838525a | 758 | RTR_CM08_Exchange_Rates | (Unassigned) | 1.2.1.11 | 1.2.1.11 | 2026-04-09 | 2026-04-10 | 2026-04-10 | 100 | 4 | 425 | 1 | 1 | 357ae9be-8a60-814e-8a03-ec8c8ee51eaa | 357ae9be-8a60-81ac-af61-f20e3ac4a88f | 0 | 0 | As Soon As Possible | Auto Scheduled | AMETEK SAP XXL Project Plan Replan MSP Task.csv | AMETEK SAP XXL Project Plan Replan MSP Task.csv__2f0764ccac__2026-05-05T02-44-15-662Z | COULD NOT BE DETERMINED |  |  |  | Done | True  0 0 0 0 0 1 14 | Low 0 0 0  |  | 798, 801, 800, 796, 799, 797 | True |
| 357ae9be-8a60-8150-8481-d0c9baaeab5c | 906 | Manual activities group 2 | Development;PTM;Finance;PMO;Europe IT lead;OTC;TESTING | 1.1.1.7.2.4 | 1.1.1.7.2.4 | 2026-06-23 | 2026-06-23 | 2026-07-13 | 0 | 6 | 902 | 1 | 1 | 357ae9be-8a60-81df-b41c-f9fce2a3839b | 357ae9be-8a60-815e-a8f0-e7e80007b6ae | -37.25 | 0 | As Soon As Possible | Auto Scheduled | AMETEK SAP XXL Project Plan Replan MSP Task.csv | AMETEK SAP XXL Project Plan Replan MSP Task.csv__2f0764ccac__2026-05-05T02-44-15-662Z | Bijoykrishna Das |  |  |  | Not started | True  -37.25 0 1 0 0 0 18 | Negative Float Critical 2 0 0  |  |  |  |
| 357ae9be-8a60-8150-8fe8-cc0084906331 | 1050 | Load File Staged and Posted "Ready" | PTP | 1.2.1.30.1 | 1.2.1.30.1 | 2026-04-15 | 2026-04-15 | 2026-04-15 | 100 | 5 | 937 | 2 | 1 | 357ae9be-8a60-8166-9dbf-e1966cc91c01, 357ae9be-8a60-81ec-8ad9-d9f5e61ffece | 357ae9be-8a60-816f-b748-e2dd56b3ed95 | 0 | 0 | As Soon As Possible | Auto Scheduled | AMETEK SAP XXL Project Plan Replan MSP Task.csv | AMETEK SAP XXL Project Plan Replan MSP Task.csv__2f0764ccac__2026-05-05T02-44-15-662Z | Nevin Varkey |  |  |  | Done | True  0 0 1 0 0 0 18 | Wrong Dependency High 3 2 0  |  |  |  |
| 357ae9be-8a60-8150-91fa-f9e50f826277 | 787 | Post Load Validation | Finance | 1.2.1.3.3 | 1.2.1.3.3 | 2026-04-07 | 2026-04-07 | 2026-04-07 | 100 | 5 | 756 | 1 | 2 | 357ae9be-8a60-8186-93a8-f20ab9a1e69c | 357ae9be-8a60-812c-9462-efeb1a186968, 357ae9be-8a60-814f-ad89-edc8c17fb7c1 | 0 | 0 | As Soon As Possible | Auto Scheduled | AMETEK SAP XXL Project Plan Replan MSP Task.csv | AMETEK SAP XXL Project Plan Replan MSP Task.csv__2f0764ccac__2026-05-05T02-44-15-662Z | Kasey Hughes |  |  |  | Done | True  0 0 2 0 0 0 24 | Low 0 0 0  |  |  |  |
| 357ae9be-8a60-8150-977b-eeb5143f7de6 | 3206 | VC_Classification (Class Type 200) | (Unassigned) | 1.2.3.2.40 | 1.2.3.2.40 | 2026-06-11 | 2026-06-12 | 2026-04-16 | 0 | 5 | 2959 | 0 | 0 |  |  | -18.78 | 0 | As Soon As Possible | Auto Scheduled | AMETEK SAP XXL Project Plan Replan MSP Task.csv | AMETEK SAP XXL Project Plan Replan MSP Task.csv__2f0764ccac__2026-05-05T02-44-15-662Z | COULD NOT BE DETERMINED | 57 | True |  | Not started | True  -18.78 0 0 0 0 0 20 | Negative Float Critical 2 0 0  |  | 3207, 3208 | True |
| 357ae9be-8a60-8150-9ae3-cf0b9d178013 | 813 | Post Load Validation | Finance | 1.2.1.8.6 | 1.2.1.8.6 | 2026-04-09 | 2026-04-09 | 2026-04-09 | 100 | 5 | 760 | 1 | 0 | 357ae9be-8a60-815b-9426-ca1055e2c60b |  | 0 | 0 | As Soon As Possible | Auto Scheduled | AMETEK SAP XXL Project Plan Replan MSP Task.csv | AMETEK SAP XXL Project Plan Replan MSP Task.csv__2f0764ccac__2026-05-05T02-44-15-662Z | Kasey Hughes |  |  |  | Done | True  0 0 0 0 0 0 12 | Low 0 0 0  |  |  |  |
| 357ae9be-8a60-8150-a01f-e0fc8adf6143 | 4281 | Error and Defect Mitigation | PTP | 1.2.5.2.19.4 | 1.2.5.2.19.4 | 2026-10-01 | 2026-10-02 | 2026-04-14 | 0 | 6 | 4277 | 1 | 0 | 357ae9be-8a60-810a-ab36-e6cf95be2d2c |  | -691.77 | 0 | As Soon As Possible | Auto Scheduled | AMETEK SAP XXL Project Plan Replan MSP Task.csv | AMETEK SAP XXL Project Plan Replan MSP Task.csv__2f0764ccac__2026-05-05T02-44-15-662Z | Nevin Varkey | 171 | True |  | Not started | True  -691.77 0 0 0 0 0 20 | Negative Float, Open Finish Critical 3 0 0  |  |  |  |
| 357ae9be-8a60-8150-a345-d170849776e1 | 4458 | Load | PTP | 1.2.5.2.51.2 | 1.2.5.2.51.2 | 2026-10-02 | 2026-10-02 | 2026-04-13 | 0 | 6 | 4456 | 1 | 2 | 357ae9be-8a60-81cc-a542-d62954825610 | 357ae9be-8a60-811e-bb30-c3056950a1c7, 357ae9be-8a60-81c3-961b-efc687ca6b79 | -700.77 | 0 | Finish No Earlier Than | Auto Scheduled | AMETEK SAP XXL Project Plan Replan MSP Task.csv | AMETEK SAP XXL Project Plan Replan MSP Task.csv__2f0764ccac__2026-05-05T02-44-15-662Z | Nevin Varkey | 172 | True |  | Not started | True  -700.77 0 1 0 0 0 28 | Negative Float Critical 2 0 0 True | 2026-04-17 |  |  |
| 357ae9be-8a60-8151-84ee-c4d69568dbe7 | 1095 | Pre Load Validation | PTM | 1.2.1.47.2 | 1.2.1.47.2 | 2026-04-15 | 2026-04-15 | 2026-04-15 | 100 | 5 | 713 | 1 | 1 | 357ae9be-8a60-8187-907d-f23ec6498d0e | 357ae9be-8a60-81f7-83df-efbc214a3b7e | 0 | 0 | As Soon As Possible | Auto Scheduled | AMETEK SAP XXL Project Plan Replan MSP Task.csv | AMETEK SAP XXL Project Plan Replan MSP Task.csv__2f0764ccac__2026-05-05T02-44-15-662Z | Eric Heisler |  |  |  | Done | True  0 0 1 0 0 0 18 | Low 0 0 0  |  |  |  |
| 357ae9be-8a60-8151-8baa-f3eee86fd64c | 1091 | Error and Defect Mitigation | PTM | 1.2.1.35.4 | 1.2.1.35.4 | 2026-04-21 | 2026-04-21 | 2026-04-17 | 100 | 5 | 710 | 1 | 1 | 357ae9be-8a60-81f1-8836-f7fdef199fd6 | 357ae9be-8a60-8146-a101-ee6eeebfe426 | 0 | 0 | As Soon As Possible | Auto Scheduled | AMETEK SAP XXL Project Plan Replan MSP Task.csv | AMETEK SAP XXL Project Plan Replan MSP Task.csv__2f0764ccac__2026-05-05T02-44-15-662Z | Brad Meseck |  |  |  | Done | True  0 0 1 0 0 0 18 | Low 0 0 0  |  |  |  |
| 357ae9be-8a60-8151-8f99-cfea2f153d2d | 4500 | Load Descartes XML File | OTC | 1.2.5.2.62.1 | 1.2.5.2.62.1 | 2026-10-02 | 2026-10-02 | 2026-04-16 | 0 | 6 | 4499 | 2 | 1 | 357ae9be-8a60-81a1-9812-fee776d84020, 357ae9be-8a60-8122-b4ac-ffebdc4d2642 | 357ae9be-8a60-8155-b437-fcfe91190f21 | -693.02 | 0 | As Soon As Possible | Auto Scheduled | AMETEK SAP XXL Project Plan Replan MSP Task.csv | AMETEK SAP XXL Project Plan Replan MSP Task.csv__2f0764ccac__2026-05-05T02-44-15-662Z | James VanRiper | 169 | True |  | Not started | True  -693.02 0 1 0 0 0 26 | Wrong Dependency, Negative Float Critical 5 1 0  |  |  |  |
| 357ae9be-8a60-8151-9dec-d88d3b5733dd | 1232 | Update number range BP02 from Internal to External | OTC | 1.2.1.14.4 | 1.2.1.14.4 | 2026-04-09 | 2026-04-10 | 2026-04-10 | 100 | 5 | 763 | 1 | 1 | 357ae9be-8a60-81a7-a562-fb72ab05c1f3 | 357ae9be-8a60-81bf-a672-c7de31a62d4f | 0 | 0 | As Soon As Possible | Auto Scheduled | AMETEK SAP XXL Project Plan Replan MSP Task.csv | AMETEK SAP XXL Project Plan Replan MSP Task.csv__2f0764ccac__2026-05-05T02-44-15-662Z | Ric Haraida |  |  |  | Done | True  0 0 1 0 0 0 18 | Low 0 0 0  |  |  |  |
| 357ae9be-8a60-8151-ad6b-ee1d3da18424 | 741 | PTP_CM26_Material_Master - All Types | PTP | 1.2.1.25 | 1.2.1.25 | 2026-04-10 | 2026-04-15 | 2026-04-15 | 100 | 4 | 425 | 1 | 1 | 357ae9be-8a60-817b-950b-fe5a0d8ff63f | 357ae9be-8a60-816d-ae55-cec8c80de4d9 | 0 | 0 | As Soon As Possible | Auto Scheduled | AMETEK SAP XXL Project Plan Replan MSP Task.csv | AMETEK SAP XXL Project Plan Replan MSP Task.csv__2f0764ccac__2026-05-05T02-44-15-662Z | Muniraju Surappachari |  |  |  | Done | True  0 0 1 1 8 1 23 | Low 0 0 0  |  | 1025, 1022, 1024, 1021, 1020, 1023 | True |
| 357ae9be-8a60-8152-819e-e8b040f85155 | 3228 | Error and Defect Mitigation | PTM | 1.2.3.2.46.4 | 1.2.3.2.46.4 | 2026-06-12 | 2026-06-12 | 2026-04-16 | 0 | 6 | 3224 | 1 | 1 | 357ae9be-8a60-813f-9f1e-dfadcd8f8129 | 357ae9be-8a60-818d-bfbf-c0d752f4ba3b | -187.27 | 0 | As Soon As Possible | Auto Scheduled | AMETEK SAP XXL Project Plan Replan MSP Task.csv | AMETEK SAP XXL Project Plan Replan MSP Task.csv__2f0764ccac__2026-05-05T02-44-15-662Z | Eric Heisler | 57 | True |  | Not started | True  -187.27 0 1 0 0 0 26 | Negative Float Critical 2 0 0  |  |  |  |
| 357ae9be-8a60-8152-8b62-c139a90dae64 | 2460 | RTR_CM09_Activity_Type | (Unassigned) | 1.2.4.2.7 | 1.2.4.2.7 | 2026-09-29 | 2026-09-30 | 2026-04-09 | 0 | 5 | 2898 | 0 | 0 |  |  | -85 | 0 | As Soon As Possible | Auto Scheduled | AMETEK SAP XXL Project Plan Replan MSP Task.csv | AMETEK SAP XXL Project Plan Replan MSP Task.csv__2f0764ccac__2026-05-05T02-44-15-662Z | COULD NOT BE DETERMINED | 174 | True |  | Not started | True  -85 0 0 0 0 0 20 | Negative Float Critical 2 0 0  |  | 2462, 2463, 2466, 2464, 2461, 2465 | True |
| 357ae9be-8a60-8152-9d30-c77358e6a26a | 2783 | RTR_CM18_WBS Element | (Unassigned) | 1.2.4.2.68 | 1.2.4.2.68 | 2026-09-24 | 2026-09-25 | 2026-04-17 | 0 | 5 | 2898 | 0 | 0 |  |  | -81.44 | 0 | As Soon As Possible | Auto Scheduled | AMETEK SAP XXL Project Plan Replan MSP Task.csv | AMETEK SAP XXL Project Plan Replan MSP Task.csv__2f0764ccac__2026-05-05T02-44-15-662Z | COULD NOT BE DETERMINED | 161 | True |  | Not started | True  -81.44 0 0 0 0 0 20 | Negative Float Critical 2 0 0  |  | 2784, 2788, 2790, 2785, 2787, 2789, 2786 | True |
| 357ae9be-8a60-8152-9ef7-c98602e36bf6 | 1089 | Pre Load Validation | PTM | 1.2.1.35.2 | 1.2.1.35.2 | 2026-04-21 | 2026-04-21 | 2026-04-17 | 100 | 5 | 710 | 1 | 1 | 357ae9be-8a60-8189-a761-f14ec6641244 | 357ae9be-8a60-81f1-8836-f7fdef199fd6 | 0 | 0 | As Soon As Possible | Auto Scheduled | AMETEK SAP XXL Project Plan Replan MSP Task.csv | AMETEK SAP XXL Project Plan Replan MSP Task.csv__2f0764ccac__2026-05-05T02-44-15-662Z | Brad Meseck |  |  |  | Done | True  0 0 1 0 0 0 18 | Wrong Dependency High 3 1 0  |  |  |  |
| 357ae9be-8a60-8152-bc48-ce5f670d3f5e | 1981 | Load | PTP | 1.2.2.2.51.2 | 1.2.2.2.51.2 | 2026-05-26 | 2026-05-27 | 2026-04-13 | 0 | 6 | 1979 | 1 | 1 | 357ae9be-8a60-8138-a89a-cda70d45c3e3 | 357ae9be-8a60-8101-a382-e8a212fb3518 | -58.77 | 0 | As Soon As Possible | Auto Scheduled | AMETEK SAP XXL Project Plan Replan MSP Task.csv | AMETEK SAP XXL Project Plan Replan MSP Task.csv__2f0764ccac__2026-05-05T02-44-15-662Z | Nevin Varkey | 44 | True |  | Not started | True  -58.77 0 1 1 41 0 31 | Wrong Dependency, Wrong Successor, Negative Float Critical 8 1 1  |  |  |  |
| 357ae9be-8a60-8153-80fb-cd39eb608cd5 | 201 | Prod (PS4) Setup | (Unassigned) | 1.1.1.9 | 1.1.1.9 | 2026-09-07 | 2026-09-29 | 2025-04-07 | 0 | 4 | 5 | 0 | 0 |  |  | 29 | 29 | Start No Earlier Than | Auto Scheduled | AMETEK SAP XXL Project Plan Replan MSP Task.csv | AMETEK SAP XXL Project Plan Replan MSP Task.csv__2f0764ccac__2026-05-05T02-44-15-662Z | COULD NOT BE DETERMINED | 540 | True |  | Not started |   29 29 0 0 0 0 8 | Open Start, Open Finish Medium 2 0 0 True | 2026-09-07 |  |  |
| 357ae9be-8a60-8153-8e48-e73b72b653ee | 3118 | Load | Data | 1.2.3.2.25.5 | 1.2.3.2.25.5 | 2026-06-10 | 2026-06-11 | 2026-04-15 | 0 | 6 | 3113 | 1 | 1 | 357ae9be-8a60-810a-831d-fec95a9bb847 | 357ae9be-8a60-81c1-a7ef-d95d5e47841f | -145.27 | 0 | As Soon As Possible | Auto Scheduled | AMETEK SAP XXL Project Plan Replan MSP Task.csv | AMETEK SAP XXL Project Plan Replan MSP Task.csv__2f0764ccac__2026-05-05T02-44-15-662Z | Jyoti Nain | 57 | True |  | Not started | True  -145.27 0 1 0 0 0 26 | Negative Float Critical 2 0 0  |  |  |  |
| 357ae9be-8a60-8153-90a2-f87a769bce44 | 699 | GTS - ECCN - Assign | (Unassigned) | 1.2.1.60 | 1.2.1.60 | 2026-04-16 | 2026-04-16 | 2026-04-16 | 100 | 4 | 425 | 0 | 0 |  |  | 0 | 0 | As Soon As Possible | Auto Scheduled | AMETEK SAP XXL Project Plan Replan MSP Task.csv | AMETEK SAP XXL Project Plan Replan MSP Task.csv__2f0764ccac__2026-05-05T02-44-15-662Z | COULD NOT BE DETERMINED |  |  |  | Done | True  0 0 0 0 0 0 12 | Low 0 0 0  |  | 1180, 1181 | True |
| 357ae9be-8a60-8153-97cf-cf0929cab7d5 | 1688 | Load | Finance | 1.2.2.2.1.2 | 1.2.2.2.1.2 | 2026-05-18 | 2026-05-18 | 2026-04-06 | 0 | 6 | 1686 | 1 | 1 | 357ae9be-8a60-81a1-9648-e71d5898cbbb | 357ae9be-8a60-815e-bb84-e90438d3fdc9 | -76.52 | 0 | As Soon As Possible | Auto Scheduled | AMETEK SAP XXL Project Plan Replan MSP Task.csv | AMETEK SAP XXL Project Plan Replan MSP Task.csv__2f0764ccac__2026-05-05T02-44-15-662Z | Kasey Hughes | 42 | True | True | Not started | True  -76.52 0 1 0 0 0 26 | Negative Float Critical 2 0 0  |  |  |  |
| 357ae9be-8a60-8153-9a1a-f053920b49e7 | 2510 | Open client for BP number range update | Basis | 1.2.4.2.14.7 | 1.2.4.2.14.7 | 2026-09-29 | 2026-09-29 | 2026-04-09 | 0 | 6 | 2503 | 1 | 1 | 357ae9be-8a60-81df-96a7-e6d94bf1fd21 | 357ae9be-8a60-81b4-9a55-e4e99e3114f6 | -40305 | 0 | As Soon As Possible | Auto Scheduled | AMETEK SAP XXL Project Plan Replan MSP Task.csv | AMETEK SAP XXL Project Plan Replan MSP Task.csv__2f0764ccac__2026-05-05T02-44-15-662Z | Lokchetan Meghavath | 173 | True |  | Not started | True  -40305 0 1 0 0 0 26 | Wrong Dependency, Negative Float Critical 5 1 0  |  |  |  |
| 357ae9be-8a60-8153-adfd-e03d01755cb0 | 4270 | RTR_CM10_Credit_Management_Role | (Unassigned) | 1.2.5.2.18 | 1.2.5.2.18 | 2026-09-30 | 2026-10-02 | 2026-04-13 | 0 | 5 | 4162 | 0 | 0 |  |  | -87.6 | 0 | As Soon As Possible | Auto Scheduled | AMETEK SAP XXL Project Plan Replan MSP Task.csv | AMETEK SAP XXL Project Plan Replan MSP Task.csv__2f0764ccac__2026-05-05T02-44-15-662Z | COULD NOT BE DETERMINED | 172 | True |  | Not started | True  -87.6 0 0 0 0 0 20 | Negative Float Critical 2 0 0  |  | 4275, 4273, 4271, 4272, 4276, 4274 | True |
| 357ae9be-8a60-8153-b2bd-d3b8ed6d4a80 | 4212 | Post Load Validation | Finance | 1.2.5.2.8.6 | 1.2.5.2.8.6 | 2026-09-28 | 2026-09-28 | 2026-04-08 | 0 | 6 | 4206 | 1 | 0 | 357ae9be-8a60-8157-b194-ee08973377eb |  | -662.52 | 0 | As Soon As Possible | Auto Scheduled | AMETEK SAP XXL Project Plan Replan MSP Task.csv | AMETEK SAP XXL Project Plan Replan MSP Task.csv__2f0764ccac__2026-05-05T02-44-15-662Z | Kasey Hughes | 173 | True |  | Not started | True  -662.52 0 0 0 0 0 20 | Negative Float, Open Finish Critical 3 0 0  |  |  |  |
| 357ae9be-8a60-8154-858c-cae961219d56 | 3279 | Run material interface to GTS | OTC | 1.2.3.2.56.1 | 1.2.3.2.56.1 | 2026-06-08 | 2026-06-08 | 2026-04-10 | 0 | 6 | 3278 | 0 | 1 |  | 357ae9be-8a60-81ce-8d54-c19a401b7d89 | -121.52 | 0 | As Soon As Possible | Auto Scheduled | AMETEK SAP XXL Project Plan Replan MSP Task.csv | AMETEK SAP XXL Project Plan Replan MSP Task.csv__2f0764ccac__2026-05-05T02-44-15-662Z | James VanRiper | 59 | True |  | Not started | True  -121.52 0 1 0 0 0 26 | Negative Float, Open Start Critical 3 0 0  |  |  |  |
| 357ae9be-8a60-8154-8e79-d466acaf965d | 1828 | Simulate Load | Data | 1.2.2.2.23.3 | 1.2.2.2.23.3 | 2026-05-18 | 2026-05-18 | 2026-04-13 | 0 | 6 | 1825 | 1 | 1 | 357ae9be-8a60-810f-8b16-e663b6d04897 | 357ae9be-8a60-81e8-8787-fe3ecf2e589a | -8.02 | 0 | As Soon As Possible | Auto Scheduled | AMETEK SAP XXL Project Plan Replan MSP Task.csv | AMETEK SAP XXL Project Plan Replan MSP Task.csv__2f0764ccac__2026-05-05T02-44-15-662Z | Jyoti Nain | 35 | True | True | Not started | True  -8.02 0 1 0 0 0 26 | Negative Float High 2 0 0  |  |  |  |
| 357ae9be-8a60-8154-96d9-cc458efe7a6f | 754 | RTR_CM18_WBS Element | (Unassigned) | 1.2.1.69 | 1.2.1.69 | 2026-04-20 | 2026-04-21 | 2026-04-17 | 100 | 4 | 425 | 0 | 0 |  |  | 0 | 0 | As Soon As Possible | Auto Scheduled | AMETEK SAP XXL Project Plan Replan MSP Task.csv | AMETEK SAP XXL Project Plan Replan MSP Task.csv__2f0764ccac__2026-05-05T02-44-15-662Z | COULD NOT BE DETERMINED |  |  |  | Done | True  0 0 0 0 0 0 12 | Low 0 0 0  |  | 1147, 1146, 1149, 1145, 1148, 1150 | True |
| 357ae9be-8a60-8154-9a45-fb1f3ee50841 | 1905 | Simulate Load | Data | 1.2.2.2.34.3 | 1.2.2.2.34.3 | 2026-05-25 | 2026-05-25 | 2026-04-17 | 0 | 6 | 1902 | 1 | 1 | 357ae9be-8a60-815f-93d5-c41751b10d97 | 357ae9be-8a60-81c1-a7e6-de6352b5e171 | -47.27 | 0 | As Soon As Possible | Auto Scheduled | AMETEK SAP XXL Project Plan Replan MSP Task.csv | AMETEK SAP XXL Project Plan Replan MSP Task.csv__2f0764ccac__2026-05-05T02-44-15-662Z | Jyoti Nain | 38 | True |  | Not started | True  -47.27 0 1 0 0 0 26 | Negative Float Critical 2 0 0  |  |  |  |
| 357ae9be-8a60-8154-a356-c518b37732a5 | 1845 | Post Load Validation | PTP;OTC | 1.2.2.2.25.6 | 1.2.2.2.25.6 | 2026-05-21 | 2026-05-21 | 2026-04-15 | 0 | 6 | 1839 | 1 | 0 | 357ae9be-8a60-8107-8de5-cbde720ca998 |  | -25.27 | 0 | As Soon As Possible | Auto Scheduled | AMETEK SAP XXL Project Plan Replan MSP Task.csv | AMETEK SAP XXL Project Plan Replan MSP Task.csv__2f0764ccac__2026-05-05T02-44-15-662Z | Nevin Varkey | 36 | True |  | Not started | True  -25.27 0 0 0 0 0 20 | Negative Float, Open Finish Critical 3 0 0  |  |  |  |
| 357ae9be-8a60-8154-ab4d-dcd68d96804a | 4452 | Simulate Load | Data | 1.2.5.2.50.3 | 1.2.5.2.50.3 | 2026-10-08 | 2026-10-08 | 2026-04-20 | 0 | 6 | 4449 | 1 | 1 | 357ae9be-8a60-8182-af33-ced9856d41ef | 357ae9be-8a60-811c-9a87-f544c3ff3dd3 | -726.02 | 0 | As Soon As Possible | Auto Scheduled | AMETEK SAP XXL Project Plan Replan MSP Task.csv | AMETEK SAP XXL Project Plan Replan MSP Task.csv__2f0764ccac__2026-05-05T02-44-15-662Z | Jyoti Nain | 171 | True |  | Not started | True  -726.02 0 1 0 0 0 26 | Negative Float Critical 2 0 0  |  |  |  |
| 357ae9be-8a60-8154-ae0e-ead0d892eee7 | 1126 | Post Load Validation | Finance | 1.2.1.53.6 | 1.2.1.53.6 | 2026-04-23 | 2026-04-23 | 2026-04-13 | 100 | 5 | 702 | 1 | 0 | 357ae9be-8a60-814b-917a-dc7033595b70 |  | 0 | 0 | As Soon As Possible | Auto Scheduled | AMETEK SAP XXL Project Plan Replan MSP Task.csv | AMETEK SAP XXL Project Plan Replan MSP Task.csv__2f0764ccac__2026-05-05T02-44-15-662Z | Kasey Hughes |  |  |  | Done | True  0 0 0 0 0 0 12 | Low 0 0 0  |  |  |  |
| 357ae9be-8a60-8154-afc6-e6acd0029bd4 | 1294 | Security Manual Tasks | Security | 1.1.1.6.1.8 | 1.1.1.6.1.8 | 2026-05-21 | 2026-05-22 | 2026-05-18 | 0 | 6 | 3339 | 1 | 0 | 357ae9be-8a60-8180-8d80-db23f8759c9f |  | 10.5 | 10.5 | As Soon As Possible | Auto Scheduled | AMETEK SAP XXL Project Plan Replan MSP Task.csv | AMETEK SAP XXL Project Plan Replan MSP Task.csv__2f0764ccac__2026-05-05T02-44-15-662Z | Manjunatha Umesha | 4 | True |  | Not started |   10.5 10.5 0 0 0 0 8 | Open Finish Medium 1 0 0  |  |  |  |
| 357ae9be-8a60-8154-b471-ee04fef3c024 | 1937 | Post Load Validation | PTM | 1.2.2.2.41.2 | 1.2.2.2.41.2 | 2026-05-21 | 2026-05-22 | 2026-04-16 | 0 | 6 | 1935 | 1 | 0 | 357ae9be-8a60-81eb-97d2-de2821510778 |  | -30.27 | 0 | As Soon As Possible | Auto Scheduled | AMETEK SAP XXL Project Plan Replan MSP Task.csv | AMETEK SAP XXL Project Plan Replan MSP Task.csv__2f0764ccac__2026-05-05T02-44-15-662Z | Eric Heisler | 36 | True |  | Not started | True  -30.27 0 0 0 0 0 20 | Negative Float, Open Finish Critical 3 0 0  |  |  |  |
| 357ae9be-8a60-8154-b4c5-d1bd96db8b78 | 4385 | Post Load Validation | PTM | 1.2.5.2.34.6 | 1.2.5.2.34.6 | 2026-10-01 | 2026-10-02 | 2026-04-20 | 0 | 6 | 4379 | 1 | 0 | 357ae9be-8a60-8140-abbf-f82e2324b1c3 |  | -689.27 | 0 | As Soon As Possible | Auto Scheduled | AMETEK SAP XXL Project Plan Replan MSP Task.csv | AMETEK SAP XXL Project Plan Replan MSP Task.csv__2f0764ccac__2026-05-05T02-44-15-662Z | Brad Meseck | 165 | True |  | Not started | True  -689.27 0 0 0 0 0 20 | Negative Float, Open Finish Critical 3 0 0  |  |  |  |
| 357ae9be-8a60-8154-b740-ccb7f3b50fcc | 4374 | Pre Load Validation | PTM | 1.2.5.2.33.2 | 1.2.5.2.33.2 | 2026-09-29 | 2026-09-29 | 2026-04-16 | 0 | 6 | 4372 | 1 | 1 | 357ae9be-8a60-81b4-8e9a-ede2a5ab87bf | 357ae9be-8a60-8111-ab94-ff7a4474c3a9 | -41746 | 0 | As Soon As Possible | Auto Scheduled | AMETEK SAP XXL Project Plan Replan MSP Task.csv | AMETEK SAP XXL Project Plan Replan MSP Task.csv__2f0764ccac__2026-05-05T02-44-15-662Z | Brad Meseck | 166 | True |  | Not started | True  -41746 0 1 0 0 0 26 | Negative Float Critical 2 0 0  |  |  |  |
| 357ae9be-8a60-8155-80d2-c71316a4c7a1 | 3173 | Error and Defect Mitigation | PTM | 1.2.3.2.33.4 | 1.2.3.2.33.4 | 2026-06-12 | 2026-06-12 | 2026-04-16 | 0 | 6 | 3169 | 1 | 1 | 357ae9be-8a60-8143-81e6-f69d391cf512 | 357ae9be-8a60-81d5-822d-c4bb4d8aa129 | -173.77 | 0 | As Soon As Possible | Auto Scheduled | AMETEK SAP XXL Project Plan Replan MSP Task.csv | AMETEK SAP XXL Project Plan Replan MSP Task.csv__2f0764ccac__2026-05-05T02-44-15-662Z | Brad Meseck | 57 | True |  | Not started | True  -173.77 0 1 0 0 0 26 | Negative Float Critical 2 0 0  |  |  |  |
| 357ae9be-8a60-8155-8778-c56db49d19fd | 977 | Post Load Validation | PTP | 1.2.1.16.6 | 1.2.1.16.6 | 2026-04-14 | 2026-04-14 | 2026-04-14 | 100 | 5 | 765 | 1 | 0 | 357ae9be-8a60-816b-bd03-efee92b2ae6f |  | 0 | 0 | As Soon As Possible | Auto Scheduled | AMETEK SAP XXL Project Plan Replan MSP Task.csv | AMETEK SAP XXL Project Plan Replan MSP Task.csv__2f0764ccac__2026-05-05T02-44-15-662Z | Nevin Varkey |  |  |  | Done | True  0 0 0 0 0 0 12 | Low 0 0 0  |  |  |  |
| 357ae9be-8a60-8155-8894-dc7fba20688b | 1103 | Error and Defect Mitigation | PTM | 1.2.1.48.4 | 1.2.1.48.4 | 2026-04-17 | 2026-04-17 | 2026-04-17 | 100 | 5 | 714 | 1 | 1 | 357ae9be-8a60-816e-ac60-e48c25ae5532 | 357ae9be-8a60-814f-a6ec-da71a065b880 | 0 | 0 | As Soon As Possible | Auto Scheduled | AMETEK SAP XXL Project Plan Replan MSP Task.csv | AMETEK SAP XXL Project Plan Replan MSP Task.csv__2f0764ccac__2026-05-05T02-44-15-662Z | Eric Heisler |  |  |  | Done | True  0 0 1 0 0 0 18 | Low 0 0 0  |  |  |  |
| 357ae9be-8a60-8155-8ebe-cdd44cb5f0db | 4316 | PTP_CM26_Material_Master - SERV - Service Materials | PTP | 1.2.5.2.25 | 1.2.5.2.25 | 2026-09-25 | 2026-09-29 | 2026-04-15 | 0 | 5 | 4162 | 0 | 0 |  |  | -83.41 | 0 | As Soon As Possible | Auto Scheduled | AMETEK SAP XXL Project Plan Replan MSP Task.csv | AMETEK SAP XXL Project Plan Replan MSP Task.csv__2f0764ccac__2026-05-05T02-44-15-662Z | Muniraju Surappachari | 167 | True |  | Not started | True  -83.41 0 0 0 0 0 20 | Negative Float Critical 2 0 0  |  | 4317, 4320, 4318, 4321, 4319, 4322 | True |
| 357ae9be-8a60-8155-978f-efec5572fc84 | 1880 | Post Load Validation | PTM | 1.2.2.2.30.6 | 1.2.2.2.30.6 | 2026-05-26 | 2026-05-26 | 2026-04-17 | 0 | 6 | 1874 | 1 | 1 | 357ae9be-8a60-810b-85ac-eb1beed67247 | 357ae9be-8a60-8166-b06d-ec57c8a50304 | -62.39 | 0 | As Soon As Possible | Auto Scheduled | AMETEK SAP XXL Project Plan Replan MSP Task.csv | AMETEK SAP XXL Project Plan Replan MSP Task.csv__2f0764ccac__2026-05-05T02-44-15-662Z | Brad Meseck | 39 | True |  | Not started | True  -62.39 0 1 0 0 0 26 | Negative Float Critical 2 0 0  |  |  |  |
| 357ae9be-8a60-8155-9f91-e0c5780f687f | 2635 | Pre Load Validation | PTM | 1.2.4.2.33.2 | 1.2.4.2.33.2 | 2026-09-29 | 2026-09-29 | 2026-04-16 | 0 | 6 | 2633 | 1 | 1 | 357ae9be-8a60-8102-b889-c4be1d9cd8cc | 357ae9be-8a60-8127-9ded-c31899ec108f | -41745 | 0 | As Soon As Possible | Auto Scheduled | AMETEK SAP XXL Project Plan Replan MSP Task.csv | AMETEK SAP XXL Project Plan Replan MSP Task.csv__2f0764ccac__2026-05-05T02-44-15-662Z | Brad Meseck | 166 | True |  | Not started | True  -41745 0 1 0 0 0 26 | Wrong Dependency, Negative Float Critical 5 1 0  |  |  |  |
| 357ae9be-8a60-8155-a76e-dae87ee9ca51 | 106 | List of functional users | (Unassigned) | 1.1.1.2.1 | 1.1.1.2.1 | 2025-05-08 | 2025-05-08 | 2025-05-08 | 100 | 5 | 86 | 1 | 1 | 357ae9be-8a60-8147-b369-c3aedf60ac25 | 357ae9be-8a60-8102-a94c-cdab647a33ea | 0 | 0 | As Soon As Possible | Auto Scheduled | AMETEK SAP XXL Project Plan Replan MSP Task.csv | AMETEK SAP XXL Project Plan Replan MSP Task.csv__2f0764ccac__2026-05-05T02-44-15-662Z | COULD NOT BE DETERMINED |  |  |  | Done | True  0 0 1 0 0 0 18 | Low 0 0 0  |  |  |  |
| 357ae9be-8a60-8155-a922-ff398430159c | 2944 | Open Purchase Orders(Manual) | (Unassigned) | 1.2.2.4.5 | 1.2.2.4.5 | 2026-10-09 | 2026-10-12 | 2026-10-12 | 0 | 5 | 2801 | 1 | 0 | 357ae9be-8a60-81e3-b4fa-f1222ef8b771 |  | -90.25 | 0 | As Soon As Possible | Auto Scheduled | AMETEK SAP XXL Project Plan Replan MSP Task.csv | AMETEK SAP XXL Project Plan Replan MSP Task.csv__2f0764ccac__2026-05-05T02-44-15-662Z | COULD NOT BE DETERMINED |  |  |  | Not started | True  -90.25 0 0 0 0 0 12 | Wrong Dependency, Negative Float, Open Finish Critical 6 1 0  |  |  |  |
| 357ae9be-8a60-8155-b437-fcfe91190f21 | 4501 | Post Load Validation | OTC | 1.2.5.2.62.2 | 1.2.5.2.62.2 | 2026-10-02 | 2026-10-02 | 2026-04-16 | 0 | 6 | 4499 | 1 | 0 | 357ae9be-8a60-8151-8f99-cfea2f153d2d |  | -693.02 | 0 | As Soon As Possible | Auto Scheduled | AMETEK SAP XXL Project Plan Replan MSP Task.csv | AMETEK SAP XXL Project Plan Replan MSP Task.csv__2f0764ccac__2026-05-05T02-44-15-662Z | James VanRiper | 169 | True |  | Not started | True  -693.02 0 0 0 0 0 20 | Negative Float, Open Finish Critical 3 0 0  |  |  |  |
| 357ae9be-8a60-8155-b7da-f275e94eaaf6 | 2594 | Simulate Load | Data | 1.2.4.2.27.3 | 1.2.4.2.27.3 | 2026-09-29 | 2026-09-29 | 2026-04-16 | 0 | 6 | 2591 | 1 | 1 | 357ae9be-8a60-8116-b8b7-d28ea3430e4e | 357ae9be-8a60-81f9-8384-f06ee02fdf2b | -673.25 | 0 | As Soon As Possible | Auto Scheduled | AMETEK SAP XXL Project Plan Replan MSP Task.csv | AMETEK SAP XXL Project Plan Replan MSP Task.csv__2f0764ccac__2026-05-05T02-44-15-662Z | Jyoti Nain | 166 | True |  | Not started | True  -673.25 0 1 0 0 0 26 | Negative Float Critical 2 0 0  |  |  |  |

| id | uid | name | workstream | outlineNumber | wbs | start | finish | baselineFinish | pct | outlineLevel | parentUid | predCount | sucCount | predIds | sucIds | totalSlackDaysRaw | freeSlackDaysRaw | constraintType | taskMode | mspSourceFile | mspImportVersion | assignedTo | slipDays | isSlipped | isDue14 | status | cpm | scheduleQuality | constraintDate | childUids | isSummary |
| --- | --- | --- | --- | --- | --- | --- | --- | --- | --- | --- | --- | --- | --- | --- | --- | --- | --- | --- | --- | --- | --- | --- | --- | --- | --- | --- | --- | --- | --- | --- | --- |
| 357ae9be-8a60-8156-9cde-c6e00a6c3915 | 4511 | Post Load Validation | OTC | 1.2.5.2.65.3 | 1.2.5.2.65.3 | 2026-09-25 | 2026-09-25 | 2026-04-14 | 0 | 6 | 4508 | 1 | 0 | 357ae9be-8a60-81b2-bf24-de1126110d2b |  | -653.52 | 0 | As Soon As Possible | Auto Scheduled | AMETEK SAP XXL Project Plan Replan MSP Task.csv | AMETEK SAP XXL Project Plan Replan MSP Task.csv__2f0764ccac__2026-05-05T02-44-15-662Z | James VanRiper | 164 | True |  | Not started | True  -653.52 0 0 0 0 0 20 | Negative Float, Open Finish Critical 3 0 0  |  |  |  |
| 357ae9be-8a60-8156-a86f-ead964ad60c2 | 2576 | Post Load Validation | PTP | 1.2.4.2.24.6 | 1.2.4.2.24.6 | 2026-09-28 | 2026-09-28 | 2026-04-15 | 0 | 6 | 2570 | 1 | 3 | 357ae9be-8a60-8118-954c-ebe5e7ddd41b | 357ae9be-8a60-81fb-a42d-d36966b2e8cf, 357ae9be-8a60-81d3-9b0d-f6bfadfdb00a, 357ae9be-8a60-8144-9fa7-f5395f51a176 | -705.75 | 0 | As Soon As Possible | Auto Scheduled | AMETEK SAP XXL Project Plan Replan MSP Task.csv | AMETEK SAP XXL Project Plan Replan MSP Task.csv__2f0764ccac__2026-05-05T02-44-15-662Z | Nevin Varkey | 166 | True |  | Not started | True  -705.75 0 3 3 531 0 43 | Wrong Dependency, Wrong Successor, Negative Float Critical 8 1 3  |  |  |  |
| 357ae9be-8a60-8156-a9a7-e68186b68119 | 3061 | Extract File | Data | 1.2.3.2.17.1 | 1.2.3.2.17.1 | 2026-06-15 | 2026-06-15 | 2026-04-10 | 0 | 6 | 3060 | 1 | 1 | 357ae9be-8a60-8185-a2d9-d16ed2b25102 | 357ae9be-8a60-8177-8032-e09301b657ed | -185.02 | 0 | As Soon As Possible | Auto Scheduled | AMETEK SAP XXL Project Plan Replan MSP Task.csv | AMETEK SAP XXL Project Plan Replan MSP Task.csv__2f0764ccac__2026-05-05T02-44-15-662Z | Jyoti Nain | 66 | True |  | Not started | True  -185.02 0 1 1 459 0 31 | Wrong Dependency, Wrong Successor, Negative Float Critical 8 1 1  |  |  |  |
| 357ae9be-8a60-8156-af35-d73666b65652 | 3144 | Simulate Load | Data | 1.2.3.2.29.3 | 1.2.3.2.29.3 | 2026-06-11 | 2026-06-11 | 2026-04-16 | 0 | 6 | 3141 | 1 | 2 | 357ae9be-8a60-81cb-a4b5-cc9017ecec41 | 357ae9be-8a60-81e4-ad85-f3407bb2ec98, 357ae9be-8a60-815d-b5ea-d2e4cbd098fe | -190.27 | 0 | As Soon As Possible | Auto Scheduled | AMETEK SAP XXL Project Plan Replan MSP Task.csv | AMETEK SAP XXL Project Plan Replan MSP Task.csv__2f0764ccac__2026-05-05T02-44-15-662Z | Jyoti Nain | 56 | True |  | Not started | True  -190.27 0 2 2 464 0 37 | Wrong Successor, Negative Float Critical 5 0 2  |  |  |  |
| 357ae9be-8a60-8156-ba9a-d4a49f8bbadc | 3232 | Load File Staged and Posted "Ready" | PTM | 1.2.3.2.47.1 | 1.2.3.2.47.1 | 2026-06-15 | 2026-06-15 | 2026-04-16 | 0 | 6 | 3231 | 1 | 1 | 357ae9be-8a60-8123-8eaa-c9e863cb2bb1 | 357ae9be-8a60-811e-84fc-c1cccc854af7 | -11236 | 0 | As Soon As Possible | Auto Scheduled | AMETEK SAP XXL Project Plan Replan MSP Task.csv | AMETEK SAP XXL Project Plan Replan MSP Task.csv__2f0764ccac__2026-05-05T02-44-15-662Z | Eric Heisler | 60 | True |  | Not started | True  -11236 0 1 0 0 0 26 | Negative Float Critical 2 0 0  |  |  |  |
| 357ae9be-8a60-8156-bcbe-d035d66c44b6 | 671 | Security Manual Tasks | Security | 1.1.1.4.10 | 1.1.1.4.10 | 2026-02-05 | 2026-02-06 | 2026-02-06 | 100 | 5 | 88 | 1 | 0 | 357ae9be-8a60-814d-847f-e185ce7e42a7 |  | 0 | 0 | As Soon As Possible | Auto Scheduled | AMETEK SAP XXL Project Plan Replan MSP Task.csv | AMETEK SAP XXL Project Plan Replan MSP Task.csv__2f0764ccac__2026-05-05T02-44-15-662Z | Manjunatha Umesha |  |  |  | Done | True  0 0 0 0 0 0 12 | Low 0 0 0  |  |  |  |
| 357ae9be-8a60-8157-9104-d1dafb6d66a8 | 1195 | PTM_CM48_Equipment_Master_Service | PTM | 1.2.1.37 | 1.2.1.37 | 2026-04-21 | 2026-04-23 | 2026-04-21 | 100 | 4 | 425 | 0 | 0 |  |  | 0 | 0 | As Soon As Possible | Auto Scheduled | AMETEK SAP XXL Project Plan Replan MSP Task.csv | AMETEK SAP XXL Project Plan Replan MSP Task.csv__2f0764ccac__2026-05-05T02-44-15-662Z | Brad Meseck |  |  |  | Done | True  0 0 0 0 0 0 12 | Low 0 0 0  |  | 1205, 1206, 1202, 1207, 1204, 1203 | True |
| 357ae9be-8a60-8157-9876-ce52a930067b | 3025 | Manual File Staged and Posted "Ready" | Finance | 1.2.3.2.11.1 | 1.2.3.2.11.1 | 2026-06-11 | 2026-06-11 | 2026-04-14 | 0 | 6 | 3024 | 1 | 1 | 357ae9be-8a60-8185-8ff0-e7244c64b7d0 | 357ae9be-8a60-817c-8829-e85066f1b742 | -9511 | 0 | As Soon As Possible | Auto Scheduled | AMETEK SAP XXL Project Plan Replan MSP Task.csv | AMETEK SAP XXL Project Plan Replan MSP Task.csv__2f0764ccac__2026-05-05T02-44-15-662Z | Kasey Hughes | 58 | True |  | Not started | True  -9511 0 1 0 0 0 26 | Wrong Dependency, Negative Float Critical 5 1 0  |  |  |  |
| 357ae9be-8a60-8157-a04a-f9cfe59a7980 | 294 | Go-Live | (Unassigned) | 1.1.2.8 | 1.1.2.8 | 2026-10-01 | 2026-10-22 | 2026-01-22 | 0 | 4 | 248 | 0 | 0 |  |  | 0 | 0 | Start No Earlier Than | Auto Scheduled | AMETEK SAP XXL Project Plan Replan MSP Task.csv | AMETEK SAP XXL Project Plan Replan MSP Task.csv__2f0764ccac__2026-05-05T02-44-15-662Z | COULD NOT BE DETERMINED | 273 | True |  | Not started | True  0 0 0 0 0 0 20 | Low 0 0 0 True | 2026-09-24 | 295, 298, 296, 297 | True |
| 357ae9be-8a60-8157-a9e6-c2d2c47dc51a | 2614 | Pre Load Validation | PTM | 1.2.4.2.30.2 | 1.2.4.2.30.2 | 2026-09-29 | 2026-09-29 | 2026-04-16 | 0 | 6 | 2612 | 1 | 1 | 357ae9be-8a60-8194-9d07-ddefe67e6053 | 357ae9be-8a60-811e-bd80-c11f457b97ec | -700.38 | 0 | As Soon As Possible | Auto Scheduled | AMETEK SAP XXL Project Plan Replan MSP Task.csv | AMETEK SAP XXL Project Plan Replan MSP Task.csv__2f0764ccac__2026-05-05T02-44-15-662Z | Brad Meseck | 166 | True |  | Not started | True  -700.38 0 1 0 0 0 26 | Wrong Dependency, Negative Float Critical 5 1 0  |  |  |  |
| 357ae9be-8a60-8157-b194-ee08973377eb | 4211 | Load | Data | 1.2.5.2.8.5 | 1.2.5.2.8.5 | 2026-09-28 | 2026-09-28 | 2026-04-08 | 0 | 6 | 4206 | 1 | 1 | 357ae9be-8a60-8183-a13d-d57cdb6bbcf1 | 357ae9be-8a60-8153-b2bd-d3b8ed6d4a80 | -662.52 | 0 | As Soon As Possible | Auto Scheduled | AMETEK SAP XXL Project Plan Replan MSP Task.csv | AMETEK SAP XXL Project Plan Replan MSP Task.csv__2f0764ccac__2026-05-05T02-44-15-662Z | Jyoti Nain | 173 | True |  | Not started | True  -662.52 0 1 0 0 0 26 | Negative Float Critical 2 0 0  |  |  |  |
| 357ae9be-8a60-8158-8891-e0892731b771 | 2734 | Pre Load Validation | PTM | 1.2.4.2.54.2 | 1.2.4.2.54.2 | 2026-09-29 | 2026-09-30 | 2026-04-16 | 0 | 6 | 2732 | 1 | 1 | 357ae9be-8a60-8199-b0f0-fb5ba3dc4dfe | 357ae9be-8a60-8127-9f5c-fde14254ebe8 | -40875 | 0 | As Soon As Possible | Auto Scheduled | AMETEK SAP XXL Project Plan Replan MSP Task.csv | AMETEK SAP XXL Project Plan Replan MSP Task.csv__2f0764ccac__2026-05-05T02-44-15-662Z | Brad Meseck | 167 | True |  | Not started | True  -40875 0 1 0 0 0 26 | Negative Float Critical 2 0 0  |  |  |  |
| 357ae9be-8a60-8158-8e43-dc0568de2539 | 3099 | PTP_CM27_BP_Intercompany Customer | PTP | 1.2.3.2.23 | 1.2.3.2.23 | 2026-06-08 | 2026-06-09 | 2026-04-14 | 0 | 5 | 2959 | 0 | 0 |  |  | -16 | 0 | As Soon As Possible | Auto Scheduled | AMETEK SAP XXL Project Plan Replan MSP Task.csv | AMETEK SAP XXL Project Plan Replan MSP Task.csv__2f0764ccac__2026-05-05T02-44-15-662Z | Muniraju Surappachari | 56 | True |  | Not started | True  -16 0 0 0 0 0 20 | Negative Float Critical 2 0 0  |  | 3102, 3101, 3100, 3104, 3105, 3103 | True |
| 357ae9be-8a60-8158-a689-f6badb746d2d | 2991 | Manual Configuration Activities in QS5 | (Unassigned) | 1.2.3.2.6 | 1.2.3.2.6 | 2026-06-11 | 2026-06-19 | 2026-04-15 | 0 | 5 | 2959 | 1 | 0 | 357ae9be-8a60-8197-b715-cce665ac666e |  | -23.88 | 0 | As Soon As Possible | Auto Scheduled | AMETEK SAP XXL Project Plan Replan MSP Task.csv | AMETEK SAP XXL Project Plan Replan MSP Task.csv__2f0764ccac__2026-05-05T02-44-15-662Z | COULD NOT BE DETERMINED | 65 | True |  | Not started | True  -23.88 0 0 0 0 0 20 | Negative Float Critical 2 0 0  |  | 2994, 2993, 2995, 2992 | True |
| 357ae9be-8a60-8158-b5a6-edd1fd7be2fc | 2697 | Pre Load Validation | PTM | 1.2.4.2.47.2 | 1.2.4.2.47.2 | 2026-10-05 | 2026-10-05 | 2026-04-17 | 0 | 6 | 2695 | 1 | 1 | 357ae9be-8a60-81d9-a615-e2133af8ca96 | 357ae9be-8a60-810b-b32f-e4ac09ffff99 | -43560 | 0 | As Soon As Possible | Auto Scheduled | AMETEK SAP XXL Project Plan Replan MSP Task.csv | AMETEK SAP XXL Project Plan Replan MSP Task.csv__2f0764ccac__2026-05-05T02-44-15-662Z | Eric Heisler | 171 | True |  | Not started | True  -43560 0 1 0 0 0 26 | Negative Float Critical 2 0 0  |  |  |  |
| 357ae9be-8a60-8159-84f3-d89cd34cdf42 | 912 | Environment Ready for Build | PMO | 1.1.1.7.4 | 1.1.1.7.4 | 2026-06-26 | 2026-06-26 | 2025-03-13 | 0 | 5 | 884 | 1 | 0 | 357ae9be-8a60-8149-90d8-f15375af7e2e |  | -12841 | 0 | As Soon As Possible | Auto Scheduled | AMETEK SAP XXL Project Plan Replan MSP Task.csv | AMETEK SAP XXL Project Plan Replan MSP Task.csv__2f0764ccac__2026-05-05T02-44-15-662Z | Chris Hanily | 470 | True |  | Not started | True  -12841 0 0 0 0 0 20 | Negative Float, Open Finish Critical 3 0 0  |  |  |  |
| 357ae9be-8a60-8159-8dec-fe452a5e8d8e | 2503 | OTC_CM19_Customer_Master - Sold-To | OTC | 1.2.4.2.14 | 1.2.4.2.14 | 2026-09-29 | 2026-10-01 | 2026-04-10 | 0 | 5 | 2898 | 0 | 0 |  |  | -89.44 | 0 | As Soon As Possible | Auto Scheduled | AMETEK SAP XXL Project Plan Replan MSP Task.csv | AMETEK SAP XXL Project Plan Replan MSP Task.csv__2f0764ccac__2026-05-05T02-44-15-662Z | Anitha Jothi | 174 | True |  | Not started | True  -89.44 0 0 0 0 0 20 | Negative Float Critical 2 0 0  |  | 2504, 2507, 2510, 2506, 2509, 2508, 2511, 2512, 2505 | True |
| 357ae9be-8a60-8159-8f54-cc236a86404e | 4503 | Load | OTC | 1.2.5.2.63.1 | 1.2.5.2.63.1 | 2026-10-02 | 2026-10-06 | 2026-04-16 | 0 | 6 | 4502 | 1 | 1 | 357ae9be-8a60-81d2-bf7c-d196748509c1 | 357ae9be-8a60-8114-9781-ed28909ec9d2 | -712.27 | 0 | Finish No Earlier Than | Auto Scheduled | AMETEK SAP XXL Project Plan Replan MSP Task.csv | AMETEK SAP XXL Project Plan Replan MSP Task.csv__2f0764ccac__2026-05-05T02-44-15-662Z | James VanRiper | 173 | True |  | Not started | True  -712.27 0 1 0 0 0 26 | Negative Float Critical 2 0 0 True | 2026-04-20 |  |  |
| 357ae9be-8a60-8159-9197-c77bcd09f22a | 2638 | Load | Data | 1.2.4.2.33.5 | 1.2.4.2.33.5 | 2026-09-30 | 2026-09-30 | 2026-04-17 | 0 | 6 | 2633 | 1 | 1 | 357ae9be-8a60-8108-9978-f6a1aa687a24 | 357ae9be-8a60-8121-9c31-efb169c1629e | -695.75 | 0 | As Soon As Possible | Auto Scheduled | AMETEK SAP XXL Project Plan Replan MSP Task.csv | AMETEK SAP XXL Project Plan Replan MSP Task.csv__2f0764ccac__2026-05-05T02-44-15-662Z | Jyoti Nain | 166 | True |  | Not started | True  -695.75 0 1 0 0 0 26 | Negative Float Critical 2 0 0  |  |  |  |
| 357ae9be-8a60-8159-b1f5-ca1fd718d5fe | 1989 | Post Load Validation | Finance | 1.2.2.2.52.6 | 1.2.2.2.52.6 | 2026-05-21 | 2026-05-21 | 2026-04-13 | 0 | 6 | 1983 | 1 | 0 | 357ae9be-8a60-81be-955c-fdd5e9141514 |  | -29.52 | 0 | As Soon As Possible | Auto Scheduled | AMETEK SAP XXL Project Plan Replan MSP Task.csv | AMETEK SAP XXL Project Plan Replan MSP Task.csv__2f0764ccac__2026-05-05T02-44-15-662Z | Kasey Hughes | 38 | True |  | Not started | True  -29.52 0 0 0 0 0 20 | Negative Float, Open Finish Critical 3 0 0  |  |  |  |
| 357ae9be-8a60-815a-88f7-ce4ab477ce7a | 4315 | Post Load Validation | PTP | 1.2.5.2.24.6 | 1.2.5.2.24.6 | 2026-09-28 | 2026-09-28 | 2026-04-15 | 0 | 6 | 4309 | 1 | 3 | 357ae9be-8a60-8198-9adc-d0022ff6b6a7 | 357ae9be-8a60-8101-a3f5-fec79702f828, 357ae9be-8a60-817a-aba1-dd35162a9ee7, 357ae9be-8a60-81d5-8abf-da999b2142bb | -705.77 | 0 | As Soon As Possible | Auto Scheduled | AMETEK SAP XXL Project Plan Replan MSP Task.csv | AMETEK SAP XXL Project Plan Replan MSP Task.csv__2f0764ccac__2026-05-05T02-44-15-662Z | Nevin Varkey | 166 | True |  | Not started | True  -705.77 0 3 0 0 0 38 | Negative Float Critical 2 0 0  |  |  |  |
| 357ae9be-8a60-815a-a872-cfa7e721eb4e | 3282 | Run material interface to GTS | OTC | 1.2.3.2.57.1 | 1.2.3.2.57.1 | 2026-06-09 | 2026-06-09 | 2026-04-15 | 0 | 6 | 3281 | 1 | 3 | 357ae9be-8a60-8115-b963-f4ab5361bbc3 | 357ae9be-8a60-8108-90f1-c7a2d99193b6, 357ae9be-8a60-8161-a7ee-c6935d18bcd8, 357ae9be-8a60-81fc-bd71-e60bc3788633 | -131.52 | 0 | As Soon As Possible | Auto Scheduled | AMETEK SAP XXL Project Plan Replan MSP Task.csv | AMETEK SAP XXL Project Plan Replan MSP Task.csv__2f0764ccac__2026-05-05T02-44-15-662Z | James VanRiper | 55 | True |  | Not started | True  -131.52 0 3 3 520 0 43 | Wrong Successor, Negative Float Critical 5 0 3  |  |  |  |
| 357ae9be-8a60-815a-b4d0-c1f113e1e22d | 3198 | Run ALE Transaction to QS5 from DS4 130 | PTM | 1.2.3.2.37.1 | 1.2.3.2.37.1 | 2026-06-08 | 2026-06-08 | 2026-04-06 | 0 | 6 | 3197 | 0 | 1 |  | 357ae9be-8a60-81f9-a360-cce969d92988 | -139.52 | 0 | As Soon As Possible | Auto Scheduled | AMETEK SAP XXL Project Plan Replan MSP Task.csv | AMETEK SAP XXL Project Plan Replan MSP Task.csv__2f0764ccac__2026-05-05T02-44-15-662Z | Eric Heisler | 63 | True |  | Not started | True  -139.52 0 1 0 0 0 26 | Negative Float, Open Start Critical 3 0 0  |  |  |  |
| 357ae9be-8a60-815a-b65d-ff5a8adcc5cb | 4208 | Pre Load Validation | Finance | 1.2.5.2.8.2 | 1.2.5.2.8.2 | 2026-09-25 | 2026-09-25 | 2026-04-07 | 0 | 6 | 4206 | 1 | 1 | 357ae9be-8a60-8111-b710-ff87a842b6ed | 357ae9be-8a60-8119-9640-f8b3f0472b2f | -662.52 | 0 | As Soon As Possible | Auto Scheduled | AMETEK SAP XXL Project Plan Replan MSP Task.csv | AMETEK SAP XXL Project Plan Replan MSP Task.csv__2f0764ccac__2026-05-05T02-44-15-662Z | Kasey Hughes | 171 | True |  | Not started | True  -662.52 0 1 0 0 0 26 | Negative Float Critical 2 0 0  |  |  |  |
| 357ae9be-8a60-815a-bcb3-f1b9e63f8ba1 | 811 | Error and Defect Mitigation | Finance | 1.2.1.8.4 | 1.2.1.8.4 | 2026-04-09 | 2026-04-09 | 2026-04-09 | 100 | 5 | 760 | 1 | 1 | 357ae9be-8a60-81d9-9566-dcc0bde780f4 | 357ae9be-8a60-815b-9426-ca1055e2c60b | 0 | 0 | As Soon As Possible | Auto Scheduled | AMETEK SAP XXL Project Plan Replan MSP Task.csv | AMETEK SAP XXL Project Plan Replan MSP Task.csv__2f0764ccac__2026-05-05T02-44-15-662Z | Kasey Hughes |  |  |  | Done | True  0 0 1 0 0 0 18 | Low 0 0 0  |  |  |  |
| 357ae9be-8a60-815b-8362-e303e13c793d | 1737 | Load File Staged and Posted "Ready" | Data | 1.2.2.2.9.1 | 1.2.2.2.9.1 | 2026-05-21 | 2026-05-21 | 2026-04-08 | 0 | 6 | 1736 | 1 | 1 | 357ae9be-8a60-812a-8ff8-e70b785cc280 | 357ae9be-8a60-811f-a320-c2486ec2c466 | -30.02 | 0 | As Soon As Possible | Auto Scheduled | AMETEK SAP XXL Project Plan Replan MSP Task.csv | AMETEK SAP XXL Project Plan Replan MSP Task.csv__2f0764ccac__2026-05-05T02-44-15-662Z | Jyoti Nain | 43 | True |  | Not started | True  -30.02 0 1 0 0 0 26 | Wrong Dependency, Negative Float Critical 5 1 0  |  |  |  |
| 357ae9be-8a60-815b-841b-e7885fe805dc | 3215 | VC_Variant Tables | (Unassigned) | 1.2.3.2.43 | 1.2.3.2.43 | 2026-06-12 | 2026-06-12 | 2026-04-17 | 0 | 5 | 2959 | 0 | 0 |  |  | -20.03 | 0 | As Soon As Possible | Auto Scheduled | AMETEK SAP XXL Project Plan Replan MSP Task.csv | AMETEK SAP XXL Project Plan Replan MSP Task.csv__2f0764ccac__2026-05-05T02-44-15-662Z | COULD NOT BE DETERMINED | 56 | True |  | Not started | True  -20.03 0 0 0 0 0 20 | Negative Float Critical 2 0 0  |  | 3216, 3217 | True |
| 357ae9be-8a60-815b-905b-f20aa0982c86 | 2773 | GTS - SPL (Sanctioned party list) | (Unassigned) | 1.2.4.2.66 | 1.2.4.2.66 | 2026-10-02 | 2026-10-02 | 2026-04-16 | 0 | 5 | 2898 | 0 | 0 |  |  | -86.63 | 0 | As Soon As Possible | Auto Scheduled | AMETEK SAP XXL Project Plan Replan MSP Task.csv | AMETEK SAP XXL Project Plan Replan MSP Task.csv__2f0764ccac__2026-05-05T02-44-15-662Z | COULD NOT BE DETERMINED | 169 | True |  | Not started | True  -86.63 0 0 0 0 0 20 | Negative Float Critical 2 0 0  |  | 2775, 2774 | True |
| 357ae9be-8a60-815b-93ad-fb2b5893d830 | 1866 | Post Load Validation | PTP | 1.2.2.2.28.6 | 1.2.2.2.28.6 | 2026-05-22 | 2026-05-22 | 2026-04-16 | 0 | 6 | 1860 | 1 | 0 | 357ae9be-8a60-8173-8708-cc60de47cf76 |  | -34.27 | 0 | As Soon As Possible | Auto Scheduled | AMETEK SAP XXL Project Plan Replan MSP Task.csv | AMETEK SAP XXL Project Plan Replan MSP Task.csv__2f0764ccac__2026-05-05T02-44-15-662Z | Nevin Varkey | 36 | True |  | Not started | True  -34.27 0 0 0 0 0 20 | Negative Float, Open Finish Critical 3 0 0  |  |  |  |
| 357ae9be-8a60-815b-9426-ca1055e2c60b | 812 | Load | Data | 1.2.1.8.5 | 1.2.1.8.5 | 2026-04-09 | 2026-04-09 | 2026-04-09 | 100 | 5 | 760 | 1 | 1 | 357ae9be-8a60-815a-bcb3-f1b9e63f8ba1 | 357ae9be-8a60-8150-9ae3-cf0b9d178013 | 0 | 0 | As Soon As Possible | Auto Scheduled | AMETEK SAP XXL Project Plan Replan MSP Task.csv | AMETEK SAP XXL Project Plan Replan MSP Task.csv__2f0764ccac__2026-05-05T02-44-15-662Z | Jyoti Nain |  |  |  | Done | True  0 0 1 0 0 0 18 | Low 0 0 0  |  |  |  |
| 357ae9be-8a60-815b-9f14-e5b362b1d10f | 4449 | OTC_CM21_CMIR | OTC | 1.2.5.2.50 | 1.2.5.2.50 | 2026-10-08 | 2026-10-08 | 2026-04-21 | 0 | 5 | 4162 | 0 | 0 |  |  | -90.75 | 0 | As Soon As Possible | Auto Scheduled | AMETEK SAP XXL Project Plan Replan MSP Task.csv | AMETEK SAP XXL Project Plan Replan MSP Task.csv__2f0764ccac__2026-05-05T02-44-15-662Z | Anitha Jothi | 170 | True |  | Not started | True  -90.75 0 0 0 0 0 20 | Negative Float Critical 2 0 0  |  | 4455, 4453, 4450, 4452, 4451, 4454 | True |
| 357ae9be-8a60-815b-a5d7-f52b71d928c8 | 4271 | Load File Staged and Posted "Ready" | Finance | 1.2.5.2.18.1 | 1.2.5.2.18.1 | 2026-09-30 | 2026-09-30 | 2026-04-10 | 0 | 6 | 4270 | 1 | 1 | 357ae9be-8a60-81d1-8841-f9e0052c8453 | 357ae9be-8a60-8170-aa76-c9937833def6 | -42046 | 0 | As Soon As Possible | Auto Scheduled | AMETEK SAP XXL Project Plan Replan MSP Task.csv | AMETEK SAP XXL Project Plan Replan MSP Task.csv__2f0764ccac__2026-05-05T02-44-15-662Z | Kasey Hughes | 173 | True |  | Not started | True  -42046 0 1 0 0 0 26 | Negative Float Critical 2 0 0  |  |  |  |
| 357ae9be-8a60-815c-81a0-dfcc5e99da49 | 4439 | Load | Data | 1.2.5.2.47.5 | 1.2.5.2.47.5 | 2026-10-06 | 2026-10-07 | 2026-04-17 | 0 | 6 | 4434 | 1 | 2 | 357ae9be-8a60-8161-b0ff-f966c0f56153 | 357ae9be-8a60-816f-a77b-fa436af9082d, 357ae9be-8a60-8113-8003-d3128b981412 | -726.02 | 0 | As Soon As Possible | Auto Scheduled | AMETEK SAP XXL Project Plan Replan MSP Task.csv | AMETEK SAP XXL Project Plan Replan MSP Task.csv__2f0764ccac__2026-05-05T02-44-15-662Z | Jyoti Nain | 173 | True |  | Not started | True  -726.02 0 2 0 0 0 32 | Negative Float Critical 2 0 0  |  |  |  |
| 357ae9be-8a60-815c-8372-f9fec60c7a83 | 2469 | Pre Load Validation | Finance | 1.2.4.2.8.2 | 1.2.4.2.8.2 | 2026-09-25 | 2026-09-25 | 2026-04-07 | 0 | 6 | 2467 | 1 | 1 | 357ae9be-8a60-81d9-8220-fc7d64850038 | 357ae9be-8a60-81b0-a46f-f586265ab10c | -662.5 | 0 | As Soon As Possible | Auto Scheduled | AMETEK SAP XXL Project Plan Replan MSP Task.csv | AMETEK SAP XXL Project Plan Replan MSP Task.csv__2f0764ccac__2026-05-05T02-44-15-662Z | Kasey Hughes | 171 | True |  | Not started | True  -662.5 0 1 0 0 0 26 | Negative Float Critical 2 0 0  |  |  |  |
| 357ae9be-8a60-815c-8c5a-f63e5756be43 | 1918 | Pre Load Validation | PTM | 1.2.2.2.36.2 | 1.2.2.2.36.2 | 2026-05-26 | 2026-05-26 | 2026-04-20 | 0 | 6 | 1916 | 1 | 1 | 357ae9be-8a60-8120-841e-d3f95fb10d85 | 357ae9be-8a60-81af-bc4a-e7d232581ca1 | -3226 | 0 | As Soon As Possible | Auto Scheduled | AMETEK SAP XXL Project Plan Replan MSP Task.csv | AMETEK SAP XXL Project Plan Replan MSP Task.csv__2f0764ccac__2026-05-05T02-44-15-662Z | Brad Meseck | 36 | True |  | Not started | True  -3226 0 1 0 0 0 26 | Negative Float Critical 2 0 0  |  |  |  |
| 357ae9be-8a60-815c-997c-dfd952322937 | 4514 | Post Load Validation | OTC | 1.2.5.2.66.2 | 1.2.5.2.66.2 | 2026-10-02 | 2026-10-02 | 2026-04-16 | 0 | 6 | 4512 | 1 | 0 | 357ae9be-8a60-8122-b4ac-ffebdc4d2642 |  | -692.02 | 0 | As Soon As Possible | Auto Scheduled | AMETEK SAP XXL Project Plan Replan MSP Task.csv | AMETEK SAP XXL Project Plan Replan MSP Task.csv__2f0764ccac__2026-05-05T02-44-15-662Z | James VanRiper | 169 | True |  | Not started | True  -692.02 0 0 0 0 0 20 | Negative Float, Open Finish Critical 3 0 0  |  |  |  |
| 357ae9be-8a60-815c-a149-d950a72fb3f2 | 3100 | Load File Staged and Posted "Ready" | PTP;OTC | 1.2.3.2.23.1 | 1.2.3.2.23.1 | 2026-06-08 | 2026-06-08 | 2026-04-13 | 0 | 6 | 3099 | 0 | 0 |  |  | -7201 | 0 | As Soon As Possible | Auto Scheduled | AMETEK SAP XXL Project Plan Replan MSP Task.csv | AMETEK SAP XXL Project Plan Replan MSP Task.csv__2f0764ccac__2026-05-05T02-44-15-662Z | Nevin Varkey | 56 | True |  | Not started | True  -7201 0 0 0 0 0 20 | Negative Float, Open Start, Open Finish Critical 4 0 0  |  |  |  |
| 357ae9be-8a60-815c-b26d-d2e7ed669029 | 3137 | Simulate Load | Data | 1.2.3.2.28.3 | 1.2.3.2.28.3 | 2026-06-11 | 2026-06-11 | 2026-04-16 | 0 | 6 | 3134 | 1 | 1 | 357ae9be-8a60-819b-8faa-dccad424e34d | 357ae9be-8a60-8164-8112-e750c00d1f93 | -154.27 | 0 | As Soon As Possible | Auto Scheduled | AMETEK SAP XXL Project Plan Replan MSP Task.csv | AMETEK SAP XXL Project Plan Replan MSP Task.csv__2f0764ccac__2026-05-05T02-44-15-662Z | Jyoti Nain | 56 | True |  | Not started | True  -154.27 0 1 0 0 0 26 | Negative Float Critical 2 0 0  |  |  |  |
| 357ae9be-8a60-815c-b8a4-d185413f9be7 | 4414 | Post Load Validation | PTM | 1.2.5.2.41.2 | 1.2.5.2.41.2 | 2026-09-29 | 2026-09-29 | 2026-04-16 | 0 | 6 | 4412 | 1 | 0 | 357ae9be-8a60-8145-ae7e-d6e4066a7551 |  | -672.27 | 0 | As Soon As Possible | Auto Scheduled | AMETEK SAP XXL Project Plan Replan MSP Task.csv | AMETEK SAP XXL Project Plan Replan MSP Task.csv__2f0764ccac__2026-05-05T02-44-15-662Z | Eric Heisler | 166 | True |  | Not started | True  -672.27 0 0 0 0 0 20 | Negative Float, Open Finish Critical 3 0 0  |  |  |  |
| 357ae9be-8a60-815c-bf67-c4833f09610a | 780 | Load | Finance | 1.2.1.2.2 | 1.2.1.2.2 | 2026-04-06 | 2026-04-06 | 2026-04-06 | 100 | 5 | 755 | 1 | 1 | 357ae9be-8a60-811e-9d3e-e58033d8759e | 357ae9be-8a60-81f9-8103-c2590b210309 | 0 | 0 | As Soon As Possible | Auto Scheduled | AMETEK SAP XXL Project Plan Replan MSP Task.csv | AMETEK SAP XXL Project Plan Replan MSP Task.csv__2f0764ccac__2026-05-05T02-44-15-662Z | Kasey Hughes |  |  |  | Done | True  0 0 1 0 0 0 18 | Low 0 0 0  |  |  |  |
| 357ae9be-8a60-815d-83c2-c9d7bba0f5ca | 2582 | Load | Data | 1.2.4.2.25.5 | 1.2.4.2.25.5 | 2026-09-28 | 2026-09-28 | 2026-04-15 | 0 | 6 | 2577 | 1 | 1 | 357ae9be-8a60-815f-874b-f3b9637dfd8a | 357ae9be-8a60-8101-9503-e80b40c482cd | -667.25 | 0 | As Soon As Possible | Auto Scheduled | AMETEK SAP XXL Project Plan Replan MSP Task.csv | AMETEK SAP XXL Project Plan Replan MSP Task.csv__2f0764ccac__2026-05-05T02-44-15-662Z | Jyoti Nain | 166 | True |  | Not started | True  -667.25 0 1 0 0 0 26 | Negative Float Critical 2 0 0  |  |  |  |
| 357ae9be-8a60-815d-86e7-f39657a35ad7 | 2457 | Service Enterprise Setup | OTC | 1.2.4.2.6.2 | 1.2.4.2.6.2 | 2026-09-30 | 2026-10-06 | 2026-04-15 | 0 | 6 | 2455 | 2 | 0 | 357ae9be-8a60-814d-8b0d-f2ba60171555, 357ae9be-8a60-81ab-be7c-e62d6fc7bc76 |  | -89.13 | 0 | As Soon As Possible | Auto Scheduled | AMETEK SAP XXL Project Plan Replan MSP Task.csv | AMETEK SAP XXL Project Plan Replan MSP Task.csv__2f0764ccac__2026-05-05T02-44-15-662Z | Keith Riley | 174 | True |  | Not started | True  -89.13 0 0 0 0 1 20 | Wrong Dependency, Negative Float, Open Finish Critical 6 2 0  |  |  |  |
| 357ae9be-8a60-815d-8843-ee8bb476a4cc | 1948 | Run ALE Transaction to QS5 from DS4 130 | PTM | 1.2.2.2.45.1 | 1.2.2.2.45.1 | 2026-05-22 | 2026-05-25 | 2026-04-16 | 0 | 6 | 1947 | 1 | 1 | 357ae9be-8a60-816b-9130-dc8fbac80688 | 357ae9be-8a60-81cc-9018-f538b91ee690 | -46.02 | 0 | As Soon As Possible | Auto Scheduled | AMETEK SAP XXL Project Plan Replan MSP Task.csv | AMETEK SAP XXL Project Plan Replan MSP Task.csv__2f0764ccac__2026-05-05T02-44-15-662Z | Eric Heisler | 39 | True |  | Not started | True  -46.02 0 1 0 0 0 26 | Wrong Dependency, Negative Float Critical 5 1 0  |  |  |  |
| 357ae9be-8a60-815d-88e3-f0cca531c21d | 4190 | Simulate Load | Data | 1.2.5.2.5.3 | 1.2.5.2.5.3 | 2026-09-28 | 2026-09-28 | 2026-04-08 | 0 | 6 | 4187 | 1 | 1 | 357ae9be-8a60-81f4-970c-e95b60d4be16 | 357ae9be-8a60-8126-8f02-e07b209659d0 | -665.52 | 0 | As Soon As Possible | Auto Scheduled | AMETEK SAP XXL Project Plan Replan MSP Task.csv | AMETEK SAP XXL Project Plan Replan MSP Task.csv__2f0764ccac__2026-05-05T02-44-15-662Z | Jyoti Nain | 173 | True |  | Not started | True  -665.52 0 1 0 0 0 26 | Negative Float Critical 2 0 0  |  |  |  |
| 357ae9be-8a60-815d-899d-e290e2af5de3 | 2559 | Simulate Load | Data | 1.2.4.2.22.3 | 1.2.4.2.22.3 | 2026-09-24 | 2026-09-24 | 2026-04-13 | 0 | 6 | 2556 | 1 | 1 | 357ae9be-8a60-8172-b8b6-d7b5432aa17b | 357ae9be-8a60-81a7-83a1-e4fcdc41059a | -653.5 | 0 | As Soon As Possible | Auto Scheduled | AMETEK SAP XXL Project Plan Replan MSP Task.csv | AMETEK SAP XXL Project Plan Replan MSP Task.csv__2f0764ccac__2026-05-05T02-44-15-662Z | Jyoti Nain | 164 | True |  | Not started | True  -653.5 0 1 0 0 0 26 | Negative Float Critical 2 0 0  |  |  |  |
| 357ae9be-8a60-815d-8a03-f23e6bd97724 | 1931 | Post Load Validation | PTM | 1.2.2.2.39.2 | 1.2.2.2.39.2 | 2026-05-19 | 2026-05-20 | 2026-04-07 | 0 | 6 | 1929 | 1 | 1 | 357ae9be-8a60-81bf-bfca-c1e4fbbd06dd | 357ae9be-8a60-81eb-97d2-de2821510778 | -19.52 | 0 | As Soon As Possible | Auto Scheduled | AMETEK SAP XXL Project Plan Replan MSP Task.csv | AMETEK SAP XXL Project Plan Replan MSP Task.csv__2f0764ccac__2026-05-05T02-44-15-662Z | Eric Heisler | 43 | True | True | Not started | True  -19.52 0 1 0 0 0 26 | Wrong Successor, Negative Float Critical 5 0 1  |  |  |  |
| 357ae9be-8a60-815d-978b-dd09365dc99c | 1139 | Load File Staged and Posted "Ready" | Finance | 1.2.1.68.1 | 1.2.1.68.1 | 2026-04-20 | 2026-04-20 | 2026-04-10 | 100 | 5 | 950 | 1 | 0 | 357ae9be-8a60-81be-8698-c1c31a955ed7 |  | 0 | 0 | Start No Earlier Than | Auto Scheduled | AMETEK SAP XXL Project Plan Replan MSP Task.csv | AMETEK SAP XXL Project Plan Replan MSP Task.csv__2f0764ccac__2026-05-05T02-44-15-662Z | Kasey Hughes |  |  |  | Done | True  0 0 0 0 0 0 12 | Wrong Dependency High 3 1 0 True | 2026-04-20 |  |  |
| 357ae9be-8a60-815d-a9dc-cef0b30e4984 | 1734 | Load | Data | 1.2.2.2.8.5 | 1.2.2.2.8.5 | 2026-05-20 | 2026-05-20 | 2026-04-08 | 0 | 6 | 1729 | 1 | 1 | 357ae9be-8a60-819f-9913-ff22bc821c2c | 357ae9be-8a60-818e-81c6-e1e7370d590d | -20.52 | 0 | As Soon As Possible | Auto Scheduled | AMETEK SAP XXL Project Plan Replan MSP Task.csv | AMETEK SAP XXL Project Plan Replan MSP Task.csv__2f0764ccac__2026-05-05T02-44-15-662Z | Jyoti Nain | 42 | True | True | Not started | True  -20.52 0 1 0 0 0 26 | Negative Float Critical 2 0 0  |  |  |  |
| 357ae9be-8a60-815d-b3fe-f0caacd5f16e | 1902 | PTM_CM35_Inspection Plan | PTM | 1.2.2.2.34 | 1.2.2.2.34 | 2026-05-25 | 2026-05-26 | 2026-04-20 | 0 | 5 | 2800 | 0 | 0 |  |  | -6.72 | 0 | As Soon As Possible | Auto Scheduled | AMETEK SAP XXL Project Plan Replan MSP Task.csv | AMETEK SAP XXL Project Plan Replan MSP Task.csv__2f0764ccac__2026-05-05T02-44-15-662Z | Brad Meseck | 36 | True |  | Not started | True  -6.72 0 0 0 0 0 20 | Negative Float High 2 0 0  |  | 1908, 1905, 1904, 1907, 1906, 1903 | True |
| 357ae9be-8a60-815d-b5ea-d2e4cbd098fe | 276 | Firefighter log settings | (Unassigned) | 1.1.2.6.2 | 1.1.2.6.2 | 2026-05-08 | 2026-05-14 | 2025-10-31 | 0 | 5 | 274 | 1 | 1 | 357ae9be-8a60-81d1-9dab-c8371a875537 | 357ae9be-8a60-81a6-b077-d9f1e72a4909 | 122 | 0 | Start No Earlier Than | Auto Scheduled | AMETEK SAP XXL Project Plan Replan MSP Task.csv | AMETEK SAP XXL Project Plan Replan MSP Task.csv__2f0764ccac__2026-05-05T02-44-15-662Z | COULD NOT BE DETERMINED | 195 | True | True | Not started | True  122 0 1 0 0 0 26 | Low 0 0 0 True | 2026-04-30 |  |  |
| 357ae9be-8a60-815d-b90a-ebfa97225106 | 2780 | Error and Defect Mitigation | Finance | 1.2.4.2.67.4 | 1.2.4.2.67.4 | 2026-09-24 | 2026-09-24 | 2026-04-17 | 0 | 6 | 2776 | 1 | 1 | 357ae9be-8a60-8119-b318-d0712b22a3e6 | 357ae9be-8a60-81f1-8d72-d090fe9dbc77 | -651 | 0 | As Soon As Possible | Auto Scheduled | AMETEK SAP XXL Project Plan Replan MSP Task.csv | AMETEK SAP XXL Project Plan Replan MSP Task.csv__2f0764ccac__2026-05-05T02-44-15-662Z | Kasey Hughes | 160 | True |  | Not started | True  -651 0 1 0 0 0 26 | Negative Float Critical 2 0 0  |  |  |  |
| 357ae9be-8a60-815d-b926-c5ab34997416 | 2618 | Post Load Validation | PTM | 1.2.4.2.30.6 | 1.2.4.2.30.6 | 2026-10-01 | 2026-10-01 | 2026-04-17 | 0 | 6 | 2612 | 1 | 1 | 357ae9be-8a60-8191-a2a1-dce4ef781ddb | 357ae9be-8a60-81ce-8ed6-e0e738718238 | -700.38 | 0 | Finish No Earlier Than | Auto Scheduled | AMETEK SAP XXL Project Plan Replan MSP Task.csv | AMETEK SAP XXL Project Plan Replan MSP Task.csv__2f0764ccac__2026-05-05T02-44-15-662Z | Brad Meseck | 167 | True |  | Not started | True  -700.38 0 1 0 0 0 26 | Negative Float Critical 2 0 0 True | 2026-04-16 |  |  |
| 357ae9be-8a60-815d-bbf0-d2d991b54a63 | 827 | Load | Data | 1.2.1.14.8 | 1.2.1.14.8 | 2026-04-09 | 2026-04-09 | 2026-04-09 | 100 | 5 | 763 | 1 | 1 | 357ae9be-8a60-8168-8b5b-eb457f5cae0e | 357ae9be-8a60-81d2-9c7d-de1e662b63dd | 0 | 0 | As Soon As Possible | Auto Scheduled | AMETEK SAP XXL Project Plan Replan MSP Task.csv | AMETEK SAP XXL Project Plan Replan MSP Task.csv__2f0764ccac__2026-05-05T02-44-15-662Z | Jyoti Nain |  |  |  | Done | True  0 0 1 0 0 0 18 | Low 0 0 0  |  |  |  |
| 357ae9be-8a60-815d-bc36-c377f910c35c | 34 | Complete - Ready for Security Review | Security | 1.1.2.9.1.3.2 | 1.1.2.9.1.3.2 | 2025-04-21 | 2025-08-15 | 2025-08-15 | 100 | 7 | 27 | 0 | 1 |  | 357ae9be-8a60-81a4-a54b-c3e652190fc0 | 0 | 0 | Start No Earlier Than | Auto Scheduled | AMETEK SAP XXL Project Plan Replan MSP Task.csv | AMETEK SAP XXL Project Plan Replan MSP Task.csv__2f0764ccac__2026-05-05T02-44-15-662Z | Manjunatha Umesha |  |  |  | Done | True  0 0 0 0 0 0 14 | Low 0 0 0 True | 2025-04-21 |  |  |
| 357ae9be-8a60-815e-84eb-dbf04962b32f | 641 | Connect Systems and Validate | Basis | 1.1.1.4.7 | 1.1.1.4.7 | 2026-02-05 | 2026-02-05 | 2026-02-05 | 100 | 5 | 88 | 1 | 0 | 357ae9be-8a60-8162-91ec-cf1baabe3c85 |  | 0 | 0 | As Soon As Possible | Auto Scheduled | AMETEK SAP XXL Project Plan Replan MSP Task.csv | AMETEK SAP XXL Project Plan Replan MSP Task.csv__2f0764ccac__2026-05-05T02-44-15-662Z | Lokchetan Meghavath |  |  |  | Done | True  0 0 0 0 0 0 12 | Low 0 0 0  |  |  |  |
| 357ae9be-8a60-815e-8e37-f3c99ebbbaec | 693 | PTP_CM27_BP_Intercompany Supplier | PTP | 1.2.1.23 | 1.2.1.23 | 2026-04-13 | 2026-04-14 | 2026-04-14 | 100 | 4 | 425 | 1 | 1 | 357ae9be-8a60-8131-bbd1-f93732506cf1 | 357ae9be-8a60-817b-950b-fe5a0d8ff63f | 0 | 0 | As Soon As Possible | Auto Scheduled | AMETEK SAP XXL Project Plan Replan MSP Task.csv | AMETEK SAP XXL Project Plan Replan MSP Task.csv__2f0764ccac__2026-05-05T02-44-15-662Z | Muniraju Surappachari |  |  |  | Done | True  0 0 1 1 1 1 23 | Low 0 0 0  |  | 1018, 1017, 1015, 1019, 1016, 1014 | True |
| 357ae9be-8a60-815e-97d9-dc756c2bf8ce | 3140 | Post Load Validation | PTP | 1.2.3.2.28.6 | 1.2.3.2.28.6 | 2026-06-12 | 2026-06-12 | 2026-04-16 | 0 | 6 | 3134 | 1 | 0 | 357ae9be-8a60-8162-a375-db3c03e92916 |  | -154.27 | 0 | As Soon As Possible | Auto Scheduled | AMETEK SAP XXL Project Plan Replan MSP Task.csv | AMETEK SAP XXL Project Plan Replan MSP Task.csv__2f0764ccac__2026-05-05T02-44-15-662Z | Nevin Varkey | 57 | True |  | Not started | True  -154.27 0 0 0 0 0 20 | Negative Float, Open Finish Critical 3 0 0  |  |  |  |
| 357ae9be-8a60-815e-99c5-fbdcba258fb0 | 290 | UAT (User Acceptance Testing) - ITC-3 - with roles | TESTING | 1.1.2.7.6 | 1.1.2.7.6 | 2026-06-11 | 2026-07-02 | 2026-01-09 | 0 | 5 | 278 | 1 | 1 | 357ae9be-8a60-8196-9ce7-d918ccb0b9dd | 357ae9be-8a60-817a-a425-eff75cc6b30b | 68 | 0 | Start No Earlier Than | Auto Scheduled | AMETEK SAP XXL Project Plan Replan MSP Task.csv | AMETEK SAP XXL Project Plan Replan MSP Task.csv__2f0764ccac__2026-05-05T02-44-15-662Z | Kishore Kakarla | 174 | True |  | Not started | True  68 0 1 0 0 0 26 | Low 0 0 0 True | 2026-04-30 |  |  |
| 357ae9be-8a60-815e-a67d-cd717867b760 | 3333 | Bank and Cash | (Unassigned) | 1.2.3.4.4 | 1.2.3.4.4 | 2026-06-23 | 2026-06-23 | 2026-06-23 | 0 | 5 | 3326 | 1 | 0 | 357ae9be-8a60-8140-9156-f5d93ee23e66 |  | -196.52 | 0 | As Soon As Possible | Auto Scheduled | AMETEK SAP XXL Project Plan Replan MSP Task.csv | AMETEK SAP XXL Project Plan Replan MSP Task.csv__2f0764ccac__2026-05-05T02-44-15-662Z | COULD NOT BE DETERMINED |  |  |  | Not started | True  -196.52 0 0 0 0 0 12 | Negative Float, Open Finish Critical 3 0 0  |  |  |  |
| 357ae9be-8a60-815e-a8f0-e7e80007b6ae | 907 | Import Group 3 - prior to transactions | Development;PTM;Finance;PMO;Europe IT lead;OTC;TESTING | 1.1.1.7.2.5 | 1.1.1.7.2.5 | 2026-06-24 | 2026-06-24 | 2026-07-13 | 0 | 6 | 902 | 1 | 1 | 357ae9be-8a60-8150-8481-d0c9baaeab5c | 357ae9be-8a60-8169-ac3f-d59165e81ef5 | -298.02 | 0 | As Soon As Possible | Auto Scheduled | AMETEK SAP XXL Project Plan Replan MSP Task.csv | AMETEK SAP XXL Project Plan Replan MSP Task.csv__2f0764ccac__2026-05-05T02-44-15-662Z | Bijoykrishna Das |  |  |  | Not started | True  -298.02 0 1 0 0 0 18 | Negative Float Critical 2 0 0  |  |  |  |
| 357ae9be-8a60-815e-b092-ff91aeade286 | 4389 | Simulate Load | Data | 1.2.5.2.35.3 | 1.2.5.2.35.3 | 2026-10-01 | 2026-10-01 | 2026-04-17 | 0 | 6 | 4386 | 1 | 1 | 357ae9be-8a60-813c-aa67-e55287381e4f | 357ae9be-8a60-8106-b0ff-ceb12add4d9b | -695.77 | 0 | As Soon As Possible | Auto Scheduled | AMETEK SAP XXL Project Plan Replan MSP Task.csv | AMETEK SAP XXL Project Plan Replan MSP Task.csv__2f0764ccac__2026-05-05T02-44-15-662Z | Jyoti Nain | 167 | True |  | Not started | True  -695.77 0 1 0 0 0 26 | Negative Float Critical 2 0 0  |  |  |  |
| 357ae9be-8a60-815e-ba1b-f35e35e5e5a6 | 700 | GTS - HTS - Create | (Unassigned) | 1.2.1.61 | 1.2.1.61 | 2026-04-06 | 2026-04-06 | 2026-04-06 | 100 | 4 | 425 | 0 | 0 |  |  | 0 | 0 | As Soon As Possible | Auto Scheduled | AMETEK SAP XXL Project Plan Replan MSP Task.csv | AMETEK SAP XXL Project Plan Replan MSP Task.csv__2f0764ccac__2026-05-05T02-44-15-662Z | COULD NOT BE DETERMINED |  |  |  | Done | True  0 0 0 0 0 0 12 | Low 0 0 0  |  | 1182, 1183 | True |
| 357ae9be-8a60-815e-bb84-e90438d3fdc9 | 1689 | Post Load Validation | Finance | 1.2.2.2.1.3 | 1.2.2.2.1.3 | 2026-05-18 | 2026-05-18 | 2026-04-06 | 0 | 6 | 1686 | 1 | 1 | 357ae9be-8a60-8153-97cf-cf0929cab7d5 | 357ae9be-8a60-81b3-b6aa-ffaac809cf16 | -76.52 | 0 | As Soon As Possible | Auto Scheduled | AMETEK SAP XXL Project Plan Replan MSP Task.csv | AMETEK SAP XXL Project Plan Replan MSP Task.csv__2f0764ccac__2026-05-05T02-44-15-662Z | Kasey Hughes | 42 | True | True | Not started | True  -76.52 0 1 1 31 0 31 | Wrong Successor, Negative Float Critical 5 0 1  |  |  |  |
| 357ae9be-8a60-815f-8597-d72213c75c19 | 4171 | RTR_CM01_GL_Account_Master to CC 1000 | (Unassigned) | 1.2.5.2.3 | 1.2.5.2.3 | 2026-09-25 | 2026-09-30 | 2026-04-09 | 0 | 5 | 4162 | 0 | 1 |  | 357ae9be-8a60-812f-85bf-d49c1d4fc08a | -89.81 | 0 | As Soon As Possible | Auto Scheduled | AMETEK SAP XXL Project Plan Replan MSP Task.csv | AMETEK SAP XXL Project Plan Replan MSP Task.csv__2f0764ccac__2026-05-05T02-44-15-662Z | COULD NOT BE DETERMINED | 174 | True |  | Not started | True  -89.81 0 1 0 0 0 26 | Negative Float Critical 2 0 0  |  | 4172, 4176, 4177, 4178, 4175, 4174, 4173, 4179 | True |
| 357ae9be-8a60-815f-874b-f3b9637dfd8a | 2581 | Error and Defect Mitigation | PTP;OTC | 1.2.4.2.25.4 | 1.2.4.2.25.4 | 2026-09-28 | 2026-09-28 | 2026-04-15 | 0 | 6 | 2577 | 1 | 1 | 357ae9be-8a60-819b-a9f8-f3059d876fbd | 357ae9be-8a60-815d-83c2-c9d7bba0f5ca | -667.25 | 0 | As Soon As Possible | Auto Scheduled | AMETEK SAP XXL Project Plan Replan MSP Task.csv | AMETEK SAP XXL Project Plan Replan MSP Task.csv__2f0764ccac__2026-05-05T02-44-15-662Z | Nevin Varkey | 166 | True |  | Not started | True  -667.25 0 1 0 0 0 26 | Negative Float Critical 2 0 0  |  |  |  |
| 357ae9be-8a60-815f-8794-fa18bc05082d | 76 | Assigned to Testing Cycle | TESTING | 1.1.2.10.2.4 | 1.1.2.10.2.4 | 2025-03-13 | 2025-03-13 | 2025-03-13 | 100 | 6 | 62 | 0 | 0 |  |  | 0 | 0 | As Soon As Possible | Auto Scheduled | AMETEK SAP XXL Project Plan Replan MSP Task.csv | AMETEK SAP XXL Project Plan Replan MSP Task.csv__2f0764ccac__2026-05-05T02-44-15-662Z | Kishore Kakarla |  |  |  | Done | True  0 0 0 0 0 0 12 | Low 0 0 0  |  |  |  |
| 357ae9be-8a60-815f-8946-d0ddc3093181 | 856 | Connect Systems and Validate | Basis | 1.1.1.5.1.5 | 1.1.1.5.1.5 | 2026-04-30 | 2026-04-30 | 2026-05-14 | 100 | 6 | 3340 | 1 | 1 | 357ae9be-8a60-8197-ae77-fb4784875d35 | 357ae9be-8a60-81f3-a3fb-d85aa3f49b30 | 0 | 0 | As Soon As Possible | Auto Scheduled | AMETEK SAP XXL Project Plan Replan MSP Task.csv | AMETEK SAP XXL Project Plan Replan MSP Task.csv__2f0764ccac__2026-05-05T02-44-15-662Z | Lokchetan Meghavath |  |  |  | Done | True  0 0 1 0 0 0 18 | Low 0 0 0  |  |  |  |
| 357ae9be-8a60-815f-8954-fc0054c2207c | 4368 | Simulate Load | Data | 1.2.5.2.32.3 | 1.2.5.2.32.3 | 2026-10-05 | 2026-10-05 | 2026-04-20 | 0 | 6 | 4365 | 1 | 1 | 357ae9be-8a60-8185-a230-f73bf978822c | 357ae9be-8a60-8186-aa37-f5d80ed6ee19 | -700.39 | 0 | Finish No Earlier Than | Auto Scheduled | AMETEK SAP XXL Project Plan Replan MSP Task.csv | AMETEK SAP XXL Project Plan Replan MSP Task.csv__2f0764ccac__2026-05-05T02-44-15-662Z | Jyoti Nain | 168 | True |  | Not started | True  -700.39 0 1 0 0 0 26 | Negative Float Critical 2 0 0 True | 2026-04-17 |  |  |
| 357ae9be-8a60-815f-8b19-f44739a583fb | 2533 | Pre Load Validation | Finance | 1.2.4.2.18.2 | 1.2.4.2.18.2 | 2026-09-30 | 2026-09-30 | 2026-04-10 | 0 | 6 | 2531 | 1 | 1 | 357ae9be-8a60-818e-b1f8-cdaa7ee321c8 | 357ae9be-8a60-818d-90a1-ed7101496413 | -42045 | 0 | As Soon As Possible | Auto Scheduled | AMETEK SAP XXL Project Plan Replan MSP Task.csv | AMETEK SAP XXL Project Plan Replan MSP Task.csv__2f0764ccac__2026-05-05T02-44-15-662Z | Kasey Hughes | 173 | True |  | Not started | True  -42045 0 1 0 0 0 26 | Negative Float Critical 2 0 0  |  |  |  |
| 357ae9be-8a60-815f-9331-ea71dfc6716a | 4245 | Simulate Load | Data | 1.2.5.2.14.3 | 1.2.5.2.14.3 | 2026-09-30 | 2026-09-30 | 2026-04-09 | 0 | 6 | 4242 | 2 | 1 | 357ae9be-8a60-81fc-8ed1-c15af66a0e09, 357ae9be-8a60-8105-bb11-e5515e5ce67b | 357ae9be-8a60-8182-bace-dba100022b97 | -718.52 | 0 | As Soon As Possible | Auto Scheduled | AMETEK SAP XXL Project Plan Replan MSP Task.csv | AMETEK SAP XXL Project Plan Replan MSP Task.csv__2f0764ccac__2026-05-05T02-44-15-662Z | Jyoti Nain | 174 | True |  | Not started | True  -718.52 0 1 0 0 0 26 | Negative Float Critical 2 0 0  |  |  |  |

| id | uid | name | workstream | outlineNumber | wbs | start | finish | baselineFinish | pct | outlineLevel | parentUid | predCount | sucCount | predIds | sucIds | totalSlackDaysRaw | freeSlackDaysRaw | constraintType | taskMode | mspSourceFile | mspImportVersion | assignedTo | slipDays | isSlipped | isDue14 | status | cpm | scheduleQuality | constraintDate | childUids | isSummary | isOverdueStart |
| --- | --- | --- | --- | --- | --- | --- | --- | --- | --- | --- | --- | --- | --- | --- | --- | --- | --- | --- | --- | --- | --- | --- | --- | --- | --- | --- | --- | --- | --- | --- | --- | --- |
| 357ae9be-8a60-815f-93d5-c41751b10d97 | 1904 | Pre Load Validation | PTM | 1.2.2.2.34.2 | 1.2.2.2.34.2 | 2026-05-25 | 2026-05-25 | 2026-04-17 | 0 | 6 | 1902 | 1 | 1 | 357ae9be-8a60-81de-a5fb-e7ecf7da5267 | 357ae9be-8a60-8154-9a45-fb1f3ee50841 | -2836 | 0 | As Soon As Possible | Auto Scheduled | AMETEK SAP XXL Project Plan Replan MSP Task.csv | AMETEK SAP XXL Project Plan Replan MSP Task.csv__2f0764ccac__2026-05-05T02-44-15-662Z | Brad Meseck | 38 | True |  | Not started | True  -2836 0 1 0 0 0 26 | Wrong Dependency, Negative Float Critical 5 1 0  |  |  |  |  |
| 357ae9be-8a60-815f-9501-f55e31b783c3 | 872 | Import Group 3 - prior to transactions | Development;PTM;Finance;PMO;Europe IT lead;OTC;TESTING | 1.1.1.5.2.5 | 1.1.1.5.2.5 | 2026-05-12 | 2026-05-12 | 2026-05-25 | 0 | 6 | 867 | 1 | 1 | 357ae9be-8a60-818e-9931-df8e6f1719d0 | 357ae9be-8a60-813e-a17b-d9bee8aec470 | -204.02 | 0 | As Soon As Possible | Auto Scheduled | AMETEK SAP XXL Project Plan Replan MSP Task.csv | AMETEK SAP XXL Project Plan Replan MSP Task.csv__2f0764ccac__2026-05-05T02-44-15-662Z | Bijoykrishna Das |  |  | True | Not started | True  -204.02 0 1 0 0 0 18 | Negative Float Critical 2 0 0  |  |  |  |  |
| 357ae9be-8a60-815f-98c9-d88398a3f9f2 | 1002 | Error and Defect Mitigation | PTP | 1.2.1.20.4 | 1.2.1.20.4 | 2026-04-13 | 2026-04-13 | 2026-04-14 | 100 | 5 | 752 | 1 | 0 | 357ae9be-8a60-81c7-9a3f-ef9279205d97 |  | 0 | 0 | As Soon As Possible | Auto Scheduled | AMETEK SAP XXL Project Plan Replan MSP Task.csv | AMETEK SAP XXL Project Plan Replan MSP Task.csv__2f0764ccac__2026-05-05T02-44-15-662Z | Nevin Varkey |  |  |  | Done | True  0 0 0 0 0 0 12 | Low 0 0 0  |  |  |  |  |
| 357ae9be-8a60-815f-a009-cf6d68a662c6 | 3032 | Open client for BP number range update | Basis | 1.2.3.2.13.3 | 1.2.3.2.13.3 | 2026-06-11 | 2026-06-11 | 2026-04-09 | 0 | 6 | 3029 | 1 | 1 | 357ae9be-8a60-8101-ab0f-e94ffe0140fd | 357ae9be-8a60-81b9-84a1-d6d7a03a86bc | -8956 | 0 | As Soon As Possible | Auto Scheduled | AMETEK SAP XXL Project Plan Replan MSP Task.csv | AMETEK SAP XXL Project Plan Replan MSP Task.csv__2f0764ccac__2026-05-05T02-44-15-662Z | Lokchetan Meghavath | 63 | True |  | Not started | True  -8956 0 1 0 0 0 26 | Wrong Dependency, Negative Float Critical 5 1 0  |  |  |  |  |
| 357ae9be-8a60-815f-a360-fe130b15678f | 4416 | Run ALE Transaction to QS5 from DS4 130 | PTM | 1.2.5.2.42.1 | 1.2.5.2.42.1 | 2026-09-29 | 2026-09-29 | 2026-04-16 | 0 | 6 | 4415 | 1 | 1 | 357ae9be-8a60-81e5-9fc0-d1e94d3624fd | 357ae9be-8a60-8192-b131-f2118b353511 | -688.02 | 0 | As Soon As Possible | Auto Scheduled | AMETEK SAP XXL Project Plan Replan MSP Task.csv | AMETEK SAP XXL Project Plan Replan MSP Task.csv__2f0764ccac__2026-05-05T02-44-15-662Z | Eric Heisler | 166 | True |  | Not started | True  -688.02 0 1 0 0 0 26 | Negative Float Critical 2 0 0  |  |  |  |  |
| 357ae9be-8a60-815f-b171-f1b001db5eeb | 4320 | Error and Defect Mitigation | PTP;OTC | 1.2.5.2.25.4 | 1.2.5.2.25.4 | 2026-09-28 | 2026-09-28 | 2026-04-15 | 0 | 6 | 4316 | 1 | 1 | 357ae9be-8a60-81ee-9dc1-cee50843cace | 357ae9be-8a60-81ba-96b1-c0533b227b88 | -667.27 | 0 | As Soon As Possible | Auto Scheduled | AMETEK SAP XXL Project Plan Replan MSP Task.csv | AMETEK SAP XXL Project Plan Replan MSP Task.csv__2f0764ccac__2026-05-05T02-44-15-662Z | Nevin Varkey | 166 | True |  | Not started | True  -667.27 0 1 0 0 0 26 | Negative Float Critical 2 0 0  |  |  |  |  |
| 357ae9be-8a60-815f-beaf-cd46247f5cb3 | 1956 | Post Load Validation | PTM | 1.2.2.2.46.6 | 1.2.2.2.46.6 | 2026-05-25 | 2026-05-25 | 2026-04-16 | 0 | 6 | 1950 | 1 | 1 | 357ae9be-8a60-812e-b105-d4bd153b4c77 | 357ae9be-8a60-816c-bc31-d42762250de7 | -67.27 | 0 | As Soon As Possible | Auto Scheduled | AMETEK SAP XXL Project Plan Replan MSP Task.csv | AMETEK SAP XXL Project Plan Replan MSP Task.csv__2f0764ccac__2026-05-05T02-44-15-662Z | Eric Heisler | 39 | True |  | Not started | True  -67.27 0 1 0 0 0 26 | Negative Float Critical 2 0 0  |  |  |  |  |
| 357ae9be-8a60-8160-9c56-e07d479eb32a | 3181 | Load | Data | 1.2.3.2.34.5 | 1.2.3.2.34.5 | 2026-06-15 | 2026-06-15 | 2026-04-20 | 0 | 6 | 3176 | 1 | 1 | 357ae9be-8a60-8143-b3be-daee569dd8cf | 357ae9be-8a60-81db-b7d7-fd7f9d1352a0 | -167.27 | 0 | As Soon As Possible | Auto Scheduled | AMETEK SAP XXL Project Plan Replan MSP Task.csv | AMETEK SAP XXL Project Plan Replan MSP Task.csv__2f0764ccac__2026-05-05T02-44-15-662Z | Jyoti Nain | 56 | True |  | Not started | True  -167.27 0 1 0 0 0 26 | Negative Float Critical 2 0 0  |  |  |  |  |
| 357ae9be-8a60-8160-9ddb-fc6e1417f753 | 3151 | Simulate Load | Data | 1.2.3.2.30.3 | 1.2.3.2.30.3 | 2026-06-11 | 2026-06-15 | 2026-04-16 | 0 | 6 | 3148 | 1 | 1 | 357ae9be-8a60-811e-870d-dd2c54b54d56 | 357ae9be-8a60-81e8-9a39-d9c777564c77 | -182.39 | 0 | As Soon As Possible | Auto Scheduled | AMETEK SAP XXL Project Plan Replan MSP Task.csv | AMETEK SAP XXL Project Plan Replan MSP Task.csv__2f0764ccac__2026-05-05T02-44-15-662Z | Jyoti Nain | 60 | True |  | Not started | True  -182.39 0 1 0 0 0 26 | Negative Float Critical 2 0 0  |  |  |  |  |
| 357ae9be-8a60-8160-b390-e28f3bd2f24c | 695 | PTM_CM40_Work Center Conversion | PTM | 1.2.1.32 | 1.2.1.32 | 2026-04-16 | 2026-04-16 | 2026-04-20 | 100 | 4 | 425 | 0 | 0 |  |  | 0 | 0 | As Soon As Possible | Auto Scheduled | AMETEK SAP XXL Project Plan Replan MSP Task.csv | AMETEK SAP XXL Project Plan Replan MSP Task.csv__2f0764ccac__2026-05-05T02-44-15-662Z | Brad Meseck |  |  |  | Done | True  0 0 0 0 0 0 12 | Low 0 0 0  |  | 1066, 1067, 1062, 1063, 1065, 1064 | True |  |
| 357ae9be-8a60-8160-b40a-d82d5a63ab3d | 4221 | Load File Staged and Posted "Ready" | Finance | 1.2.5.2.10.1 | 1.2.5.2.10.1 | 2026-09-25 | 2026-09-25 | 2026-04-09 | 0 | 6 | 4220 | 1 | 1 | 357ae9be-8a60-8143-b520-ecb1941edd8d | 357ae9be-8a60-8182-813b-e09bf94d12da | -658.52 | 0 | As Soon As Possible | Auto Scheduled | AMETEK SAP XXL Project Plan Replan MSP Task.csv | AMETEK SAP XXL Project Plan Replan MSP Task.csv__2f0764ccac__2026-05-05T02-44-15-662Z | Kasey Hughes | 169 | True |  | Not started | True  -658.52 0 1 0 0 0 26 | Negative Float Critical 2 0 0  |  |  |  |  |
| 357ae9be-8a60-8160-bb55-efe4c5e15469 | 1889 | Extract File | Data | 1.2.2.2.32.1 | 1.2.2.2.32.1 | 2026-05-21 | 2026-05-21 | 2026-04-16 | 0 | 6 | 1888 | 1 | 1 | 357ae9be-8a60-81ec-9429-c1f9da3e9a09 | 357ae9be-8a60-810c-82e9-ffc16aba0440 | -53.77 | 0 | As Soon As Possible | Auto Scheduled | AMETEK SAP XXL Project Plan Replan MSP Task.csv | AMETEK SAP XXL Project Plan Replan MSP Task.csv__2f0764ccac__2026-05-05T02-44-15-662Z | Jyoti Nain | 35 | True |  | Not started | True  -53.77 0 1 0 0 0 26 | Negative Float Critical 2 0 0  |  |  |  |  |
| 357ae9be-8a60-8161-82ce-dd51ec62c6a3 | 1942 | Run ALE Transaction to QS5 from DS4 130 | PTM | 1.2.2.2.43.1 | 1.2.2.2.43.1 | 2026-05-22 | 2026-05-22 | 2026-04-16 | 0 | 6 | 1941 | 1 | 1 | 357ae9be-8a60-816b-9130-dc8fbac80688 | 357ae9be-8a60-81b2-a7bf-ce732059ecee | -40.27 | 0 | As Soon As Possible | Auto Scheduled | AMETEK SAP XXL Project Plan Replan MSP Task.csv | AMETEK SAP XXL Project Plan Replan MSP Task.csv__2f0764ccac__2026-05-05T02-44-15-662Z | Eric Heisler | 36 | True |  | Not started | True  -40.27 0 1 0 0 0 26 | Wrong Dependency, Negative Float Critical 5 1 0  |  |  |  |  |
| 357ae9be-8a60-8161-852c-e5a6205210b3 | 713 | PTM_CM52_Super_BOM | PTM | 1.2.1.47 | 1.2.1.47 | 2026-04-15 | 2026-04-21 | 2026-04-16 | 100 | 4 | 425 | 0 | 0 |  |  | 0 | 0 | As Soon As Possible | Auto Scheduled | AMETEK SAP XXL Project Plan Replan MSP Task.csv | AMETEK SAP XXL Project Plan Replan MSP Task.csv__2f0764ccac__2026-05-05T02-44-15-662Z | Brad Meseck |  |  |  | Done | True  0 0 0 0 0 0 12 | Low 0 0 0  |  | 1098, 1097, 1095, 1094, 1099, 1096 | True |  |
| 357ae9be-8a60-8161-8626-e030f3b90871 | 2433 | Load File Staged and Posted "Ready" | Finance | 1.2.4.2.3.1 | 1.2.4.2.3.1 | 2026-09-25 | 2026-09-25 | 2026-04-07 | 0 | 6 | 2432 | 1 | 1 | 357ae9be-8a60-817c-a312-c693daa64b6e | 357ae9be-8a60-811e-8bd6-c6fafb841a8a | -718.5 | 0 | Start No Earlier Than | Auto Scheduled | AMETEK SAP XXL Project Plan Replan MSP Task.csv | AMETEK SAP XXL Project Plan Replan MSP Task.csv__2f0764ccac__2026-05-05T02-44-15-662Z | Kasey Hughes | 171 | True |  | Not started | True  -718.5 0 1 0 0 0 26 | Wrong Dependency, Negative Float Critical 5 1 0 True | 2026-04-06 |  |  |  |
| 357ae9be-8a60-8161-878e-c3fd355c1dfe | 2689 | Load File Staged and Posted "Ready" | PTM | 1.2.4.2.46.1 | 1.2.4.2.46.1 | 2026-09-29 | 2026-09-29 | 2026-04-15 | 0 | 6 | 2688 | 1 | 1 | 357ae9be-8a60-81d8-b3a1-c0e88fdfae1f | 357ae9be-8a60-811a-b602-f83a880e6527 | -43560 | 0 | As Soon As Possible | Auto Scheduled | AMETEK SAP XXL Project Plan Replan MSP Task.csv | AMETEK SAP XXL Project Plan Replan MSP Task.csv__2f0764ccac__2026-05-05T02-44-15-662Z | Eric Heisler | 167 | True |  | Not started | True  -43560 0 1 0 0 0 26 | Wrong Dependency, Negative Float Critical 5 1 0  |  |  |  |  |
| 357ae9be-8a60-8161-8be1-c073a0f7c658 | 3269 | Load File Staged and Posted "Ready" | PTM | 1.2.3.2.54.1 | 1.2.3.2.54.1 | 2026-06-12 | 2026-06-12 | 2026-04-16 | 0 | 6 | 3268 | 1 | 1 | 357ae9be-8a60-8105-8ebe-e88a086ba9ef | 357ae9be-8a60-8105-a7d5-d83259d25803 | -9556 | 0 | As Soon As Possible | Auto Scheduled | AMETEK SAP XXL Project Plan Replan MSP Task.csv | AMETEK SAP XXL Project Plan Replan MSP Task.csv__2f0764ccac__2026-05-05T02-44-15-662Z | Sam Penrod | 57 | True |  | Not started | True  -9556 0 1 0 0 0 26 | Wrong Dependency, Negative Float Critical 5 1 0  |  |  |  |  |
| 357ae9be-8a60-8161-a7ee-c6935d18bcd8 | 833 | Create Migration Data Project in DMC | Data | 1.1.1.4.21 | 1.1.1.4.21 | 2026-04-03 | 2026-04-06 | 2026-04-06 | 100 | 5 | 88 | 1 | 1 | 357ae9be-8a60-81af-8a8a-c45cecf52a2e | 357ae9be-8a60-813c-b53e-d758eb3e8aaf | 0 | 0 | As Soon As Possible | Auto Scheduled | AMETEK SAP XXL Project Plan Replan MSP Task.csv | AMETEK SAP XXL Project Plan Replan MSP Task.csv__2f0764ccac__2026-05-05T02-44-15-662Z | Jyoti Nain |  |  |  | Done | True  0 0 1 0 0 0 18 | Low 0 0 0  |  |  |  |  |
| 357ae9be-8a60-8161-b0ff-f966c0f56153 | 4438 | Error and Defect Mitigation | PTM | 1.2.5.2.47.4 | 1.2.5.2.47.4 | 2026-10-06 | 2026-10-06 | 2026-04-17 | 0 | 6 | 4434 | 1 | 1 | 357ae9be-8a60-8143-bf1d-f5a4b1c67878 | 357ae9be-8a60-815c-81a0-dfcc5e99da49 | -726.02 | 0 | As Soon As Possible | Auto Scheduled | AMETEK SAP XXL Project Plan Replan MSP Task.csv | AMETEK SAP XXL Project Plan Replan MSP Task.csv__2f0764ccac__2026-05-05T02-44-15-662Z | Eric Heisler | 172 | True |  | Not started | True  -726.02 0 1 0 0 0 26 | Negative Float Critical 2 0 0  |  |  |  |  |
| 357ae9be-8a60-8161-baa9-e5c8f9ebc40e | 960 | Pre Load Validation | Finance | 1.2.1.6.2 | 1.2.1.6.2 | 2026-04-08 | 2026-04-08 | 2026-04-08 | 100 | 5 | 767 | 1 | 1 | 357ae9be-8a60-811e-8c0e-f570ba9642e2 | 357ae9be-8a60-8146-8071-f1cf16d2681c | 0 | 0 | As Soon As Possible | Auto Scheduled | AMETEK SAP XXL Project Plan Replan MSP Task.csv | AMETEK SAP XXL Project Plan Replan MSP Task.csv__2f0764ccac__2026-05-05T02-44-15-662Z | Kasey Hughes |  |  |  | Done | True  0 0 1 0 0 0 18 | Low 0 0 0  |  |  |  |  |
| 357ae9be-8a60-8162-8574-fe26fc0fd6f4 | 2962 | Load | Finance | 1.2.3.2.1.2 | 1.2.3.2.1.2 | 2026-06-08 | 2026-06-08 | 2026-04-06 | 0 | 6 | 2960 | 1 | 1 | 357ae9be-8a60-8108-a3f9-e0e30d6cc8b9 | 357ae9be-8a60-81c0-8623-f78795353752 | -196.52 | 0 | As Soon As Possible | Auto Scheduled | AMETEK SAP XXL Project Plan Replan MSP Task.csv | AMETEK SAP XXL Project Plan Replan MSP Task.csv__2f0764ccac__2026-05-05T02-44-15-662Z | Kasey Hughes | 63 | True |  | Not started | True  -196.52 0 1 0 0 0 26 | Negative Float Critical 2 0 0  |  |  |  |  |
| 357ae9be-8a60-8162-87a7-de28bb7ef31f | 3164 | Pre Load Validation | PTM | 1.2.3.2.32.2 | 1.2.3.2.32.2 | 2026-06-16 | 2026-06-17 | 2026-04-20 | 0 | 6 | 3162 | 1 | 1 | 357ae9be-8a60-81cf-8e07-d81fbe1523d2 | 357ae9be-8a60-81f2-92f1-f3f6eac20fdb | -182.39 | 0 | As Soon As Possible | Auto Scheduled | AMETEK SAP XXL Project Plan Replan MSP Task.csv | AMETEK SAP XXL Project Plan Replan MSP Task.csv__2f0764ccac__2026-05-05T02-44-15-662Z | Brad Meseck | 58 | True |  | Not started | True  -182.39 0 1 0 0 0 26 | Negative Float Critical 2 0 0  |  |  |  |  |
| 357ae9be-8a60-8162-91ec-cf1baabe3c85 | 640 | Technical Transports / BP Setup | Basis | 1.1.1.4.5 | 1.1.1.4.5 | 2026-02-04 | 2026-02-04 | 2026-02-04 | 100 | 5 | 88 | 0 | 3 |  | 357ae9be-8a60-815e-84eb-dbf04962b32f, 357ae9be-8a60-814d-847f-e185ce7e42a7, 357ae9be-8a60-813e-a770-caf64bc994c6 | 0 | 0 | As Soon As Possible | Auto Scheduled | AMETEK SAP XXL Project Plan Replan MSP Task.csv | AMETEK SAP XXL Project Plan Replan MSP Task.csv__2f0764ccac__2026-05-05T02-44-15-662Z | Lokchetan Meghavath |  |  |  | Done | True  0 0 3 0 0 0 30 | Low 0 0 0  |  |  |  |  |
| 357ae9be-8a60-8162-a375-db3c03e92916 | 3139 | Load | Data | 1.2.3.2.28.5 | 1.2.3.2.28.5 | 2026-06-11 | 2026-06-12 | 2026-04-16 | 0 | 6 | 3134 | 1 | 1 | 357ae9be-8a60-8164-8112-e750c00d1f93 | 357ae9be-8a60-815e-97d9-dc756c2bf8ce | -154.27 | 0 | As Soon As Possible | Auto Scheduled | AMETEK SAP XXL Project Plan Replan MSP Task.csv | AMETEK SAP XXL Project Plan Replan MSP Task.csv__2f0764ccac__2026-05-05T02-44-15-662Z | Jyoti Nain | 57 | True |  | Not started | True  -154.27 0 1 0 0 0 26 | Negative Float Critical 2 0 0  |  |  |  |  |
| 357ae9be-8a60-8162-bad5-e08ffb0a4cec | 882 | Service Enterprise Setup | OTC | 1.2.1.7.2 | 1.2.1.7.2 | 2026-04-08 | 2026-04-15 | 2026-04-15 | 100 | 5 | 881 | 3 | 0 | 357ae9be-8a60-81da-8aea-f14b75b5a5d3, 357ae9be-8a60-81c0-a605-d1917e4681be, 357ae9be-8a60-813c-ba4e-f0b7b9201b7f |  | 0 | 0 | As Soon As Possible | Auto Scheduled | AMETEK SAP XXL Project Plan Replan MSP Task.csv | AMETEK SAP XXL Project Plan Replan MSP Task.csv__2f0764ccac__2026-05-05T02-44-15-662Z | Keith Riley |  |  |  | Done | True  0 0 0 0 0 0 12 | Low 0 0 0  |  |  |  |  |
| 357ae9be-8a60-8163-84fd-f9d0ff240ac7 | 2722 | Load File Staged and Posted "Ready" | Finance | 1.2.4.2.52.1 | 1.2.4.2.52.1 | 2026-09-24 | 2026-09-24 | 2026-04-10 | 0 | 6 | 2721 | 0 | 3 |  | 357ae9be-8a60-8125-8286-d7af3f5eeee5, 357ae9be-8a60-81e2-809c-df100912a844, 357ae9be-8a60-811e-9d3e-e58033d8759e | -41670 | 0 | Start No Earlier Than | Auto Scheduled | AMETEK SAP XXL Project Plan Replan MSP Task.csv | AMETEK SAP XXL Project Plan Replan MSP Task.csv__2f0764ccac__2026-05-05T02-44-15-662Z | Kasey Hughes | 167 | True |  | Not started | True  -41670 0 3 3 851 0 43 | Wrong Successor, Negative Float, Open Start Critical 6 0 3 True | 2026-04-15 |  |  |  |
| 357ae9be-8a60-8163-a675-fe2bede6e7eb | 1892 | Error and Defect Mitigation | PTM | 1.2.2.2.32.4 | 1.2.2.2.32.4 | 2026-05-27 | 2026-05-27 | 2026-04-20 | 0 | 6 | 1888 | 1 | 1 | 357ae9be-8a60-81b7-83c6-f8d51b8728a7 | 357ae9be-8a60-8179-a42e-f4475e9fe31e | -62.39 | 0 | As Soon As Possible | Auto Scheduled | AMETEK SAP XXL Project Plan Replan MSP Task.csv | AMETEK SAP XXL Project Plan Replan MSP Task.csv__2f0764ccac__2026-05-05T02-44-15-662Z | Brad Meseck | 37 | True |  | Not started | True  -62.39 0 1 0 0 0 26 | Negative Float Critical 2 0 0  |  |  |  |  |
| 357ae9be-8a60-8163-b3a8-c3261f7d7cb0 | 1145 | Load File Staged and Posted "Ready" | Finance | 1.2.1.69.1 | 1.2.1.69.1 | 2026-04-20 | 2026-04-20 | 2026-04-10 | 100 | 5 | 754 | 1 | 1 | 357ae9be-8a60-815d-978b-dd09365dc99c | 357ae9be-8a60-810d-a588-db17e8f7a773 | 0 | 0 | Start No Earlier Than | Auto Scheduled | AMETEK SAP XXL Project Plan Replan MSP Task.csv | AMETEK SAP XXL Project Plan Replan MSP Task.csv__2f0764ccac__2026-05-05T02-44-15-662Z | Kasey Hughes |  |  |  | Done | True  0 0 1 0 0 0 18 | Wrong Dependency High 3 1 0 True | 2026-04-17 |  |  |  |
| 357ae9be-8a60-8164-8112-e750c00d1f93 | 3138 | Error and Defect Mitigation | PTP | 1.2.3.2.28.4 | 1.2.3.2.28.4 | 2026-06-11 | 2026-06-11 | 2026-04-16 | 0 | 6 | 3134 | 1 | 1 | 357ae9be-8a60-815c-b26d-d2e7ed669029 | 357ae9be-8a60-8162-a375-db3c03e92916 | -154.27 | 0 | As Soon As Possible | Auto Scheduled | AMETEK SAP XXL Project Plan Replan MSP Task.csv | AMETEK SAP XXL Project Plan Replan MSP Task.csv__2f0764ccac__2026-05-05T02-44-15-662Z | Nevin Varkey | 56 | True |  | Not started | True  -154.27 0 1 0 0 0 26 | Negative Float Critical 2 0 0  |  |  |  |  |
| 357ae9be-8a60-8164-8b7d-ef05053a585e | 2556 | PTP_CM27_BP_Intercompany Supplier | PTP | 1.2.4.2.22 | 1.2.4.2.22 | 2026-09-24 | 2026-09-25 | 2026-04-14 | 0 | 5 | 2898 | 0 | 0 |  |  | -81.69 | 0 | As Soon As Possible | Auto Scheduled | AMETEK SAP XXL Project Plan Replan MSP Task.csv | AMETEK SAP XXL Project Plan Replan MSP Task.csv__2f0764ccac__2026-05-05T02-44-15-662Z | Muniraju Surappachari | 164 | True |  | Not started | True  -81.69 0 0 0 0 0 20 | Negative Float Critical 2 0 0  |  | 2561, 2557, 2559, 2558, 2562, 2560 | True |  |
| 357ae9be-8a60-8164-8e79-d4d1629bb100 | 970 | Post Load Validation | Finance | 1.2.1.9.6 | 1.2.1.9.6 | 2026-04-08 | 2026-04-08 | 2026-04-08 | 100 | 5 | 753 | 1 | 0 | 357ae9be-8a60-81f9-8a2b-d925c8573245 |  | 0 | 0 | As Soon As Possible | Auto Scheduled | AMETEK SAP XXL Project Plan Replan MSP Task.csv | AMETEK SAP XXL Project Plan Replan MSP Task.csv__2f0764ccac__2026-05-05T02-44-15-662Z | Kasey Hughes |  |  |  | Done | True  0 0 0 0 0 0 12 | Low 0 0 0  |  |  |  |  |
| 357ae9be-8a60-8164-9d0a-fda0094c8875 | 2427 | Post Load Validation | Finance | 1.2.4.2.1.3 | 1.2.4.2.1.3 | 2026-09-24 | 2026-09-24 | 2026-04-06 | 0 | 6 | 2424 | 1 | 2 | 357ae9be-8a60-8148-acdf-fd7d57db8372 | 357ae9be-8a60-8145-9194-de4910f8b1a0, 357ae9be-8a60-817c-b996-df6f26f27ab2 | -718.5 | 0 | As Soon As Possible | Auto Scheduled | AMETEK SAP XXL Project Plan Replan MSP Task.csv | AMETEK SAP XXL Project Plan Replan MSP Task.csv__2f0764ccac__2026-05-05T02-44-15-662Z | Kasey Hughes | 171 | True |  | Not started | True  -718.5 0 2 2 604 0 37 | Wrong Successor, Negative Float Critical 5 0 2  |  |  |  |  |
| 357ae9be-8a60-8164-ad60-eb3d656b75b3 | 892 | Validate Syniti Connections to QS5 | Data | 1.1.1.7.1.6 | 1.1.1.7.1.6 | 2026-06-17 | 2026-06-17 | 2026-07-03 | 0 | 6 | 3338 | 1 | 0 | 357ae9be-8a60-8167-b0ab-f07e70c41731 |  | -37.25 | 0 | As Soon As Possible | Auto Scheduled | AMETEK SAP XXL Project Plan Replan MSP Task.csv | AMETEK SAP XXL Project Plan Replan MSP Task.csv__2f0764ccac__2026-05-05T02-44-15-662Z | Jyoti Nain |  |  |  | Not started | True  -37.25 0 0 0 0 0 12 | Negative Float, Open Finish Critical 3 0 0  |  |  |  |  |
| 357ae9be-8a60-8164-b87f-d06e7eba6c39 | 1767 | Pre Load Validation | OTC | 1.2.2.2.14.2 | 1.2.2.2.14.2 | 2026-05-21 | 2026-05-21 | 2026-04-09 | 0 | 6 | 1765 | 1 | 0 | 357ae9be-8a60-81b8-95f5-d49dbdc3b29e |  | -1741 | 0 | As Soon As Possible | Auto Scheduled | AMETEK SAP XXL Project Plan Replan MSP Task.csv | AMETEK SAP XXL Project Plan Replan MSP Task.csv__2f0764ccac__2026-05-05T02-44-15-662Z | Ric Haraida | 42 | True |  | Not started | True  -1741 0 0 0 0 0 20 | Negative Float, Open Finish Critical 3 0 0  |  |  |  |  |
| 357ae9be-8a60-8164-bed5-e3e983e68023 | 3260 | Simulate Load | Data | 1.2.3.2.52.3 | 1.2.3.2.52.3 | 2026-06-08 | 2026-06-09 | 2026-04-10 | 0 | 6 | 3257 | 1 | 1 | 357ae9be-8a60-818e-9640-e49481105f98 | 357ae9be-8a60-812d-83f5-d6ccdb92ab00 | -149.52 | 0 | As Soon As Possible | Auto Scheduled | AMETEK SAP XXL Project Plan Replan MSP Task.csv | AMETEK SAP XXL Project Plan Replan MSP Task.csv__2f0764ccac__2026-05-05T02-44-15-662Z | Jyoti Nain | 60 | True |  | Not started | True  -149.52 0 1 0 0 0 26 | Negative Float Critical 2 0 0  |  |  |  |  |
| 357ae9be-8a60-8165-80ae-c2cfcf621d98 | 1798 | Load | Data | 1.2.2.2.18.5 | 1.2.2.2.18.5 | 2026-05-25 | 2026-05-26 | 2026-04-10 | 0 | 6 | 1793 | 1 | 1 | 357ae9be-8a60-811b-bb50-cde174c37e84 | 357ae9be-8a60-8138-a89a-cda70d45c3e3 | -58.77 | 0 | As Soon As Possible | Auto Scheduled | AMETEK SAP XXL Project Plan Replan MSP Task.csv | AMETEK SAP XXL Project Plan Replan MSP Task.csv__2f0764ccac__2026-05-05T02-44-15-662Z | Jyoti Nain | 46 | True |  | Not started | True  -58.77 0 1 0 0 0 26 | Wrong Dependency, Negative Float Critical 5 1 0  |  |  |  |  |
| 357ae9be-8a60-8165-8103-f2b012647189 | 791 | Simulate Load | Data | 1.2.1.10.3 | 1.2.1.10.3 | 2026-04-15 | 2026-04-15 | 2026-04-09 | 100 | 5 | 757 | 0 | 1 |  | 357ae9be-8a60-8196-bb5c-d5df25346ba5 | 0 | 0 | Start No Earlier Than | Auto Scheduled | AMETEK SAP XXL Project Plan Replan MSP Task.csv | AMETEK SAP XXL Project Plan Replan MSP Task.csv__2f0764ccac__2026-05-05T02-44-15-662Z | Jyoti Nain |  |  |  | Done | True  0 0 1 0 0 0 18 | Low 0 0 0 True | 2026-04-15 |  |  |  |
| 357ae9be-8a60-8165-81b8-dade2b73c0fa | 1169 | Post Load Validation | PTM | 1.2.1.46.2 | 1.2.1.46.2 | 2026-04-20 | 2026-04-20 | 2026-04-17 | 100 | 5 | 946 | 1 | 0 | 357ae9be-8a60-8179-8ca8-ddbf65713903 |  | 0 | 0 | As Soon As Possible | Auto Scheduled | AMETEK SAP XXL Project Plan Replan MSP Task.csv | AMETEK SAP XXL Project Plan Replan MSP Task.csv__2f0764ccac__2026-05-05T02-44-15-662Z | Eric Heisler |  |  |  | Done | True  0 0 0 0 0 0 12 | Low 0 0 0  |  |  |  |  |
| 357ae9be-8a60-8165-879e-ff7efed7f937 | 1757 | Pre Load Validation | OTC | 1.2.2.2.13.2 | 1.2.2.2.13.2 | 2026-05-21 | 2026-05-21 | 2026-04-08 | 0 | 6 | 1755 | 1 | 2 | 357ae9be-8a60-81df-9f74-e49791a7288b | 357ae9be-8a60-813c-ba12-fb438770d64d, 357ae9be-8a60-8150-82ad-d0405838525a | -4471 | 0 | As Soon As Possible | Auto Scheduled | AMETEK SAP XXL Project Plan Replan MSP Task.csv | AMETEK SAP XXL Project Plan Replan MSP Task.csv__2f0764ccac__2026-05-05T02-44-15-662Z | Ric Haraida | 43 | True |  | Not started | True  -4471 0 2 2 100 0 37 | Wrong Successor, Negative Float Critical 5 0 2  |  |  |  |  |
| 357ae9be-8a60-8165-8c21-ff05b92526ac | 299 | Initiation & Planning | (Unassigned) | 1.1.2.1 | 1.1.2.1 | 2025-02-17 | 2026-02-17 | 2026-02-17 | 100 | 4 | 248 | 0 | 0 |  |  | 0 | 0 | As Soon As Possible | Auto Scheduled | AMETEK SAP XXL Project Plan Replan MSP Task.csv | AMETEK SAP XXL Project Plan Replan MSP Task.csv__2f0764ccac__2026-05-05T02-44-15-662Z | COULD NOT BE DETERMINED |  |  |  | Done | True  0 0 0 0 0 0 12 | Low 0 0 0  |  | 249, 251, 252, 250 | True |  |
| 357ae9be-8a60-8165-9b87-ed6c66319a47 | 1198 | Simulate Load | Data | 1.2.1.36.3 | 1.2.1.36.3 | 2026-04-21 | 2026-04-21 | 2026-04-17 | 100 | 5 | 1194 | 1 | 1 | 357ae9be-8a60-81ed-8ed2-d1c23b0ddaeb | 357ae9be-8a60-81ef-905d-d7a65cc86da2 | 0 | 0 | As Soon As Possible | Auto Scheduled | AMETEK SAP XXL Project Plan Replan MSP Task.csv | AMETEK SAP XXL Project Plan Replan MSP Task.csv__2f0764ccac__2026-05-05T02-44-15-662Z | Jyoti Nain |  |  |  | Done | True  0 0 1 0 0 0 18 | Low 0 0 0  |  |  |  |  |
| 357ae9be-8a60-8165-9c48-cf23b4092ef4 | 1119 | Load | PTP | 1.2.1.52.2 | 1.2.1.52.2 | 2026-04-17 | 2026-04-20 | 2026-04-13 | 100 | 5 | 704 | 1 | 1 | 357ae9be-8a60-813c-92e4-e6e886f188f2 | 357ae9be-8a60-8153-80fb-cd39eb608cd5 | 0 | 0 | Finish No Earlier Than | Auto Scheduled | AMETEK SAP XXL Project Plan Replan MSP Task.csv | AMETEK SAP XXL Project Plan Replan MSP Task.csv__2f0764ccac__2026-05-05T02-44-15-662Z | Nevin Varkey |  |  |  | Done | True  0 0 0 0 0 0 14 | Wrong Dependency, Wrong Successor Critical 6 1 1 True | 2026-04-17 |  |  |  |
| 357ae9be-8a60-8165-aae3-ebf2a676ec29 | 283 | Final Review Rule Set and update the recommendations | (Unassigned) | 1.1.2.4.5 | 1.1.2.4.5 | 2025-10-31 | 2026-05-04 | 2025-11-05 | 60 | 5 | 267 | 1 | 1 | 357ae9be-8a60-81ab-be7c-e62d6fc7bc76 | 357ae9be-8a60-8199-a7af-e68fbfb59764 | 135.4 | 135.4 | As Soon As Possible | Auto Scheduled | AMETEK SAP XXL Project Plan Replan MSP Task.csv | AMETEK SAP XXL Project Plan Replan MSP Task.csv__2f0764ccac__2026-05-05T02-44-15-662Z | COULD NOT BE DETERMINED | 180 | True |  | In progress |   135.4 135.4 1 1 179 0 19 | Out Of Sequence Risk Medium 2 0 0  |  |  |  |  |
| 357ae9be-8a60-8165-b39c-f45184c710c2 | 1076 | Pre Load Validation | PTM | 1.2.1.33.2 | 1.2.1.33.2 | 2026-04-16 | 2026-04-16 | 2026-04-20 | 100 | 5 | 707 | 1 | 1 | 357ae9be-8a60-816a-b42f-ccbb13bcdde0 | 357ae9be-8a60-81ee-8501-fc4052ddffe4 | 0 | 0 | As Soon As Possible | Auto Scheduled | AMETEK SAP XXL Project Plan Replan MSP Task.csv | AMETEK SAP XXL Project Plan Replan MSP Task.csv__2f0764ccac__2026-05-05T02-44-15-662Z | Brad Meseck |  |  |  | Done | True  0 0 0 0 0 0 14 | Low 0 0 0  |  |  |  |  |
| 357ae9be-8a60-8165-bb8f-f37088e1693e | 1881 | PTM_CM40_Work Center Conversion | PTM | 1.2.2.2.31 | 1.2.2.2.31 | 2026-05-21 | 2026-05-26 | 2026-04-20 | 0 | 5 | 2800 | 0 | 0 |  |  | -7.8 | 0 | As Soon As Possible | Auto Scheduled | AMETEK SAP XXL Project Plan Replan MSP Task.csv | AMETEK SAP XXL Project Plan Replan MSP Task.csv__2f0764ccac__2026-05-05T02-44-15-662Z | Brad Meseck | 36 | True |  | Not started | True  -7.8 0 0 0 0 0 20 | Negative Float High 2 0 0  |  | 1883, 1885, 1884, 1886, 1887, 1882 | True |  |
| 357ae9be-8a60-8165-bc48-d4fc7fccbddb | 4365 | PTM_CM38_Routing Conversion | PTM | 1.2.5.2.32 | 1.2.5.2.32 | 2026-09-29 | 2026-10-05 | 2026-04-21 | 0 | 5 | 4162 | 0 | 0 |  |  | -88.05 | 0 | As Soon As Possible | Auto Scheduled | AMETEK SAP XXL Project Plan Replan MSP Task.csv | AMETEK SAP XXL Project Plan Replan MSP Task.csv__2f0764ccac__2026-05-05T02-44-15-662Z | Brad Meseck | 167 | True |  | Not started | True  -88.05 0 0 0 0 0 20 | Negative Float Critical 2 0 0  |  | 4366, 4368, 4370, 4367, 4369, 4371 | True |  |
| 357ae9be-8a60-8165-bfc0-eec719389d3f | 4461 | Load File Staged and Posted "Ready" | Finance | 1.2.5.2.52.1 | 1.2.5.2.52.1 | 2026-09-24 | 2026-09-24 | 2026-04-10 | 0 | 6 | 4460 | 0 | 2 |  | 357ae9be-8a60-8116-9d9b-ed7d86ca6356, 357ae9be-8a60-81bd-88ea-ecf738c80151 | -41671 | 0 | Start No Earlier Than | Auto Scheduled | AMETEK SAP XXL Project Plan Replan MSP Task.csv | AMETEK SAP XXL Project Plan Replan MSP Task.csv__2f0764ccac__2026-05-05T02-44-15-662Z | Kasey Hughes | 167 | True |  | Not started | True  -41671 0 2 0 0 0 32 | Negative Float, Open Start Critical 3 0 0 True | 2026-04-15 |  |  |  |
| 357ae9be-8a60-8166-8550-d154be0a3717 | 3153 | Load | Data | 1.2.3.2.30.5 | 1-Apr | 2026-06-15 | 2026-06-15 | 2026-04-16 | 0 | 6 | 3148 | 1 | 1 | 357ae9be-8a60-81e8-9a39-d9c777564c77 | 357ae9be-8a60-8104-b8e3-e89dc44950c7 | -182.39 | 0 | As Soon As Possible | Auto Scheduled | AMETEK SAP XXL Project Plan Replan MSP Task.csv | AMETEK SAP XXL Project Plan Replan MSP Task.csv__2f0764ccac__2026-05-05T02-44-15-662Z | Jyoti Nain | 60 | True |  | Not started | True  -182.39 0 1 0 0 0 26 | Negative Float Critical 2 0 0  |  |  |  |  |
| 357ae9be-8a60-8166-8560-db211999bb9a | 254 | Install GRC AC components | (Unassigned) | 1.1.2.2.1 | 1.1.2.2.1 | 2025-07-28 | 2025-08-01 | 2025-08-01 | 100 | 5 | 253 | 0 | 0 |  |  | 0 | 0 | Start No Earlier Than | Auto Scheduled | AMETEK SAP XXL Project Plan Replan MSP Task.csv | AMETEK SAP XXL Project Plan Replan MSP Task.csv__2f0764ccac__2026-05-05T02-44-15-662Z | COULD NOT BE DETERMINED |  |  |  | Done | True  0 0 0 0 0 0 12 | Low 0 0 0 True | 2025-07-28 |  |  |  |
| 357ae9be-8a60-8166-95dc-e7c3cbbbd48a | 3176 | PTM_CM35_Inspection Plan | PTM | 1.2.3.2.34 | 1.2.3.2.34 | 2026-06-15 | 2026-06-16 | 2026-04-20 | 0 | 5 | 2959 | 0 | 0 |  |  | -21.72 | 0 | As Soon As Possible | Auto Scheduled | AMETEK SAP XXL Project Plan Replan MSP Task.csv | AMETEK SAP XXL Project Plan Replan MSP Task.csv__2f0764ccac__2026-05-05T02-44-15-662Z | Brad Meseck | 57 | True |  | Not started | True  -21.72 0 0 0 0 0 20 | Negative Float Critical 2 0 0  |  | 3179, 3180, 3181, 3178, 3182, 3177 | True |  |
| 357ae9be-8a60-8166-95ec-da182ba4da49 | 836 | Reports | (Unassigned) | 1.3.2.1 | 1.3.2.1 | 2026-05-04 | 2026-08-14 | 2026-05-22 | 0 | 4 | 835 | 0 | 0 |  |  | 61 | 61 | Finish No Earlier Than | Auto Scheduled | AMETEK SAP XXL Project Plan Replan MSP Task.csv | AMETEK SAP XXL Project Plan Replan MSP Task.csv__2f0764ccac__2026-05-05T02-44-15-662Z | COULD NOT BE DETERMINED | 84 | True |  | Not started |   61 61 0 0 0 0 8 | Open Start, Open Finish Medium 2 0 0 True | 2026-08-14 |  |  | True |
| 357ae9be-8a60-8166-9715-c8d420463ad1 | 266 | BRF+ decision tables | (Unassigned) | 1.1.2.3.2 | 1.1.2.3.2 | 2026-03-31 | 2026-04-06 | 2026-04-06 | 100 | 5 | 264 | 1 | 0 | 357ae9be-8a60-8136-ab32-dcd8e1b4889f |  | 0 | 0 | As Soon As Possible | Auto Scheduled | AMETEK SAP XXL Project Plan Replan MSP Task.csv | AMETEK SAP XXL Project Plan Replan MSP Task.csv__2f0764ccac__2026-05-05T02-44-15-662Z | COULD NOT BE DETERMINED |  |  |  | Done | True  0 0 0 0 0 0 12 | Low 0 0 0  |  |  |  |  |
| 357ae9be-8a60-8166-97d3-c4b7d93ac49c | 991 | Load | Data | 1.2.1.18.5 | 1.2.1.18.5 | 2026-04-10 | 2026-04-15 | 2026-04-13 | 100 | 5 | 766 | 1 | 1 | 357ae9be-8a60-8198-aa92-f625c92ab0ec | 357ae9be-8a60-8144-9fa7-f5395f51a176 | 0 | 0 | As Soon As Possible | Auto Scheduled | AMETEK SAP XXL Project Plan Replan MSP Task.csv | AMETEK SAP XXL Project Plan Replan MSP Task.csv__2f0764ccac__2026-05-05T02-44-15-662Z | Jyoti Nain |  |  |  | Done | True  0 0 1 0 0 1 18 | Low 0 0 0  |  |  |  |  |
| 357ae9be-8a60-8166-9dbf-e1966cc91c01 | 251 | Landscape design | (Unassigned) | 1.1.2.1.3 | 1.1.2.1.3 | 2025-08-18 | 2025-08-19 | 2025-08-19 | 100 | 5 | 299 | 1 | 0 | 357ae9be-8a60-81af-9699-c8a375eaed29 |  | 0 | 0 | Finish No Earlier Than | Auto Scheduled | AMETEK SAP XXL Project Plan Replan MSP Task.csv | AMETEK SAP XXL Project Plan Replan MSP Task.csv__2f0764ccac__2026-05-05T02-44-15-662Z | COULD NOT BE DETERMINED |  |  |  | Done | True  0 0 0 0 0 0 12 | Low 0 0 0 True | 2025-08-19 |  |  |  |
| 357ae9be-8a60-8166-a82e-c64493562d3e | 1031 | Post Load Validation | PTP;OTC | 1.2.1.26.6 | 1.2.1.26.6 | 2026-04-15 | 2026-04-15 | 2026-04-15 | 100 | 5 | 748 | 1 | 0 | 357ae9be-8a60-8109-bc85-e8fdc818bcc9 |  | 0 | 0 | As Soon As Possible | Auto Scheduled | AMETEK SAP XXL Project Plan Replan MSP Task.csv | AMETEK SAP XXL Project Plan Replan MSP Task.csv__2f0764ccac__2026-05-05T02-44-15-662Z | Nevin Varkey |  |  |  | Done | True  0 0 0 0 0 0 12 | Low 0 0 0  |  |  |  |  |
| 357ae9be-8a60-8166-a9e9-cbccbf95b3d3 | 2425 | Manual File Staged and Posted "Ready" | Finance | 1.2.4.2.1.1 | 1.2.4.2.1.1 | 2026-09-24 | 2026-09-24 | 2026-04-06 | 0 | 6 | 2424 | 1 | 1 | 357ae9be-8a60-8107-ad19-eb3f9a8b23bc | 357ae9be-8a60-8148-acdf-fd7d57db8372 | -718.5 | 0 | Start No Earlier Than | Auto Scheduled | AMETEK SAP XXL Project Plan Replan MSP Task.csv | AMETEK SAP XXL Project Plan Replan MSP Task.csv__2f0764ccac__2026-05-05T02-44-15-662Z | Kasey Hughes | 171 | True |  | Not started | True  -718.5 0 1 0 0 0 26 | Wrong Dependency, Negative Float Critical 5 1 0 True | 2026-04-06 |  |  |  |
| 357ae9be-8a60-8166-ab4a-d670a33fd6b1 | 1724 | Pre Load Validation | Finance | 1.2.2.2.7.2 | 1.2.2.2.7.2 | 2026-05-21 | 2026-05-22 | 2026-04-09 | 0 | 6 | 1722 | 1 | 1 | 357ae9be-8a60-8182-84ca-d464cacd38c3 | 357ae9be-8a60-8132-a904-e3948a3b082a | -38.02 | 0 | As Soon As Possible | Auto Scheduled | AMETEK SAP XXL Project Plan Replan MSP Task.csv | AMETEK SAP XXL Project Plan Replan MSP Task.csv__2f0764ccac__2026-05-05T02-44-15-662Z | Kasey Hughes | 43 | True |  | Not started | True  -38.02 0 1 0 0 0 26 | Negative Float Critical 2 0 0  |  |  |  |  |
| 357ae9be-8a60-8166-ac69-e0fd549061d9 | 2430 | Load | Finance | 1.2.4.2.2.2 | 1.2.4.2.2.2 | 2026-09-24 | 2026-09-25 | 2026-04-07 | 0 | 6 | 2428 | 1 | 1 | 357ae9be-8a60-81b9-a680-ccb4ab1a635e | 357ae9be-8a60-817c-a312-c693daa64b6e | -718.5 | 0 | As Soon As Possible | Auto Scheduled | AMETEK SAP XXL Project Plan Replan MSP Task.csv | AMETEK SAP XXL Project Plan Replan MSP Task.csv__2f0764ccac__2026-05-05T02-44-15-662Z | Kasey Hughes | 171 | True |  | Not started | True  -718.5 0 1 0 0 0 26 | Negative Float Critical 2 0 0  |  |  |  |  |
| 357ae9be-8a60-8166-ae69-e4572738ee05 | 4433 | Post Load Validation | PTM | 1.2.5.2.46.6 | 1.2.5.2.46.6 | 2026-10-05 | 2026-10-05 | 2026-04-16 | 0 | 6 | 4427 | 1 | 1 | 357ae9be-8a60-814d-a860-f67caeb34e6f | 357ae9be-8a60-8125-9f41-c19534e57992 | -726.02 | 0 | As Soon As Possible | Auto Scheduled | AMETEK SAP XXL Project Plan Replan MSP Task.csv | AMETEK SAP XXL Project Plan Replan MSP Task.csv__2f0764ccac__2026-05-05T02-44-15-662Z | Eric Heisler | 172 | True |  | Not started | True  -726.02 0 1 0 0 0 26 | Negative Float Critical 2 0 0  |  |  |  |  |
| 357ae9be-8a60-8166-b06d-ec57c8a50304 | 1883 | Pre Load Validation | PTM | 1.2.2.2.31.2 | 1.2.2.2.31.2 | 2026-05-26 | 2026-05-26 | 2026-04-17 | 0 | 6 | 1881 | 1 | 1 | 357ae9be-8a60-8155-978f-efec5572fc84 | 357ae9be-8a60-81c4-a00c-f109fb560207 | -62.39 | 0 | As Soon As Possible | Auto Scheduled | AMETEK SAP XXL Project Plan Replan MSP Task.csv | AMETEK SAP XXL Project Plan Replan MSP Task.csv__2f0764ccac__2026-05-05T02-44-15-662Z | Brad Meseck | 39 | True |  | Not started | True  -62.39 0 1 0 0 0 26 | Negative Float Critical 2 0 0  |  |  |  |  |
| 357ae9be-8a60-8166-b687-cc770f18f669 | 2717 | PTP_CM29_Source_List | PTP | 1.2.4.2.51 | 1.2.4.2.51 | 2026-09-25 | 2026-10-05 | 2026-04-14 | 0 | 5 | 2898 | 0 | 0 |  |  | -87.47 | 0 | As Soon As Possible | Auto Scheduled | AMETEK SAP XXL Project Plan Replan MSP Task.csv | AMETEK SAP XXL Project Plan Replan MSP Task.csv__2f0764ccac__2026-05-05T02-44-15-662Z | Muniraju Surappachari | 174 | True |  | Not started | True  -87.47 0 0 0 0 0 20 | Negative Float Critical 2 0 0  |  | 2720, 2719, 2718 | True |  |
| 357ae9be-8a60-8167-835b-d3a200cdec30 | 938 | VC_Object Dependencies | (Unassigned) | 1.2.1.38 | 1.2.1.38 | 2026-04-06 | 2026-04-06 | 2026-04-06 | 100 | 4 | 425 | 0 | 0 |  |  | 0 | 0 | As Soon As Possible | Auto Scheduled | AMETEK SAP XXL Project Plan Replan MSP Task.csv | AMETEK SAP XXL Project Plan Replan MSP Task.csv__2f0764ccac__2026-05-05T02-44-15-662Z | COULD NOT BE DETERMINED |  |  |  | Done | True  0 0 0 0 0 0 12 | Low 0 0 0  |  | 1151, 1153 | True |  |
| 357ae9be-8a60-8167-8acc-c370f1c0644c | 3308 | Post Load Validation | OTC | 1.2.3.2.65.3 | 1.2.3.2.65.3 | 2026-06-09 | 2026-06-09 | 2026-04-14 | 0 | 6 | 3305 | 1 | 0 | 357ae9be-8a60-8135-882f-fa0aaa6f2485 |  | -131.52 | 0 | As Soon As Possible | Auto Scheduled | AMETEK SAP XXL Project Plan Replan MSP Task.csv | AMETEK SAP XXL Project Plan Replan MSP Task.csv__2f0764ccac__2026-05-05T02-44-15-662Z | James VanRiper | 56 | True |  | Not started | True  -131.52 0 0 0 0 0 20 | Negative Float, Open Finish Critical 3 0 0  |  |  |  |  |
| 357ae9be-8a60-8167-8cd5-e4a082211fa8 | 296 | Final risk analysis | (Unassigned) | 1.1.2.8.3 | 1.1.2.8.3 | 2026-10-12 | 2026-10-20 | 2026-01-20 | 0 | 5 | 294 | 1 | 1 | 357ae9be-8a60-8120-9cf3-d64d180cb302 | 357ae9be-8a60-813b-9104-c416a0c2e2e0 | 12 | 0 | As Soon As Possible | Auto Scheduled | AMETEK SAP XXL Project Plan Replan MSP Task.csv | AMETEK SAP XXL Project Plan Replan MSP Task.csv__2f0764ccac__2026-05-05T02-44-15-662Z | COULD NOT BE DETERMINED | 273 | True |  | Not started | True  12 0 1 0 0 0 26 | Low 0 0 0  |  |  |  |  |
| 357ae9be-8a60-8167-9092-cabc9008cd1c | 3078 | Error and Defect Mitigation | PTP | 1.2.3.2.19.4 | 1.2.3.2.19.4 | 2026-06-15 | 2026-06-16 | 2026-04-14 | 0 | 6 | 3074 | 1 | 0 | 357ae9be-8a60-81ea-b0ec-d860c66a4eba |  | -169.77 | 0 | As Soon As Possible | Auto Scheduled | AMETEK SAP XXL Project Plan Replan MSP Task.csv | AMETEK SAP XXL Project Plan Replan MSP Task.csv__2f0764ccac__2026-05-05T02-44-15-662Z | Nevin Varkey | 63 | True |  | Not started | True  -169.77 0 0 0 0 0 20 | Negative Float, Open Finish Critical 3 0 0  |  |  |  |  |
| 357ae9be-8a60-8167-921f-f937c2e9cb75 | 1035 | Error and Defect Mitigation | PTM | 1.2.1.27.4 | 1.2.1.27.4 | 2026-04-14 | 2026-04-15 | 2026-04-15 | 100 | 5 | 749 | 1 | 1 | 357ae9be-8a60-81f4-aab5-c9f63036bcec | 357ae9be-8a60-8116-a89f-e32fe30423ef | 0 | 0 | As Soon As Possible | Auto Scheduled | AMETEK SAP XXL Project Plan Replan MSP Task.csv | AMETEK SAP XXL Project Plan Replan MSP Task.csv__2f0764ccac__2026-05-05T02-44-15-662Z | Eric Heisler |  |  |  | Done | True  0 0 1 0 0 0 18 | Low 0 0 0  |  |  |  |  |
| 357ae9be-8a60-8167-980b-dd42fc63a5c8 | 3361 | Run Costing for Data Identified | Data | 1.3.3.8.3 | 1.3.3.8.3 | 2026-10-08 | 2026-10-09 | 2026-10-09 | 0 | 5 | 22 | 1 | 1 | 357ae9be-8a60-81a5-8ac3-d07ad90f4d64 | 357ae9be-8a60-819f-9b2f-ff945e2a22d6 | -355 | 0 | As Soon As Possible | Auto Scheduled | AMETEK SAP XXL Project Plan Replan MSP Task.csv | AMETEK SAP XXL Project Plan Replan MSP Task.csv__2f0764ccac__2026-05-05T02-44-15-662Z | Jyoti Nain |  |  |  | Not started | True  -355 0 1 0 0 0 18 | Negative Float Critical 2 0 0  |  |  |  |  |
| 357ae9be-8a60-8167-981a-df6d505bf122 | 2651 | Error and Defect Mitigation | PTM | 1.2.4.2.35.4 | 1.2.4.2.35.4 | 2026-10-01 | 2026-10-01 | 2026-04-17 | 0 | 6 | 2647 | 1 | 1 | 357ae9be-8a60-81fc-bc9e-dddf2a7ce0ac | 357ae9be-8a60-81e3-82d0-dd54bea173c6 | -695.75 | 0 | As Soon As Possible | Auto Scheduled | AMETEK SAP XXL Project Plan Replan MSP Task.csv | AMETEK SAP XXL Project Plan Replan MSP Task.csv__2f0764ccac__2026-05-05T02-44-15-662Z | Brad Meseck | 167 | True |  | Not started | True  -695.75 0 1 0 0 0 26 | Negative Float Critical 2 0 0  |  |  |  |  |
| 357ae9be-8a60-8167-98e1-dd003212701a | 2740 | Run material interface to GTS | OTC | 1.2.4.2.55.1 | 1.2.4.2.55.1 | 2026-09-29 | 2026-10-01 | 2026-04-16 | 0 | 6 | 2739 | 1 | 1 | 357ae9be-8a60-8176-a0fd-c38e449f8c7d | 357ae9be-8a60-8141-824b-e8fd9d3a2e0b | -712.25 | 0 | Finish No Earlier Than | Auto Scheduled | AMETEK SAP XXL Project Plan Replan MSP Task.csv | AMETEK SAP XXL Project Plan Replan MSP Task.csv__2f0764ccac__2026-05-05T02-44-15-662Z | James VanRiper | 168 | True |  | Not started | True  -712.25 0 1 0 0 0 26 | Wrong Dependency, Negative Float Critical 5 1 0 True | 2026-04-17 |  |  |  |
| 357ae9be-8a60-8167-9e4b-e3aee0aa7005 | 1038 | Extract File | Data | 1.2.1.28.1 | 1.2.1.28.1 | 2026-04-15 | 2026-04-15 | 2026-04-15 | 100 | 5 | 703 | 2 | 1 | 357ae9be-8a60-8166-9dbf-e1966cc91c01, 357ae9be-8a60-81ec-8ad9-d9f5e61ffece | 357ae9be-8a60-810a-9aaa-c8027866138a | 0 | 0 | As Soon As Possible | Auto Scheduled | AMETEK SAP XXL Project Plan Replan MSP Task.csv | AMETEK SAP XXL Project Plan Replan MSP Task.csv__2f0764ccac__2026-05-05T02-44-15-662Z | Jyoti Nain |  |  |  | Done | True  0 0 1 1 303 0 23 | Wrong Dependency, Wrong Successor Critical 6 2 1  |  |  |  |  |

| id | uid | name | workstream | outlineNumber | wbs | start | finish | baselineFinish | pct | outlineLevel | parentUid | predCount | sucCount | predIds | sucIds | totalSlackDaysRaw | freeSlackDaysRaw | constraintType | taskMode | mspSourceFile | mspImportVersion | assignedTo | slipDays | isSlipped | isDue14 | status | cpm | scheduleQuality | constraintDate | childUids | isSummary | isOverdueStart |
| --- | --- | --- | --- | --- | --- | --- | --- | --- | --- | --- | --- | --- | --- | --- | --- | --- | --- | --- | --- | --- | --- | --- | --- | --- | --- | --- | --- | --- | --- | --- | --- | --- |
| 357ae9be-8a60-8167-9eeb-c3f210acc318 | 3287 | GTS - ECCN - Assign | (Unassigned) | 1.2.3.2.59 | 1.2.3.2.59 | 2026-06-15 | 2026-06-16 | 2026-04-16 | 0 | 5 | 2959 | 0 | 0 |  |  | -23.78 | 0 | As Soon As Possible | Auto Scheduled | AMETEK SAP XXL Project Plan Replan MSP Task.csv | AMETEK SAP XXL Project Plan Replan MSP Task.csv__2f0764ccac__2026-05-05T02-44-15-662Z | COULD NOT BE DETERMINED | 61 | True |  | Not started | True  -23.78 0 0 0 0 0 20 | Negative Float Critical 2 0 0  |  | 3289, 3288 | True |  |
| 357ae9be-8a60-8167-aa28-f6026dc07d6e | 4199 | RTR_CM09_Activity_Type | (Unassigned) | 1.2.5.2.7 | 1.2.5.2.7 | 2026-09-29 | 2026-09-30 | 2026-04-09 | 0 | 5 | 4162 | 0 | 0 |  |  | -85 | 0 | As Soon As Possible | Auto Scheduled | AMETEK SAP XXL Project Plan Replan MSP Task.csv | AMETEK SAP XXL Project Plan Replan MSP Task.csv__2f0764ccac__2026-05-05T02-44-15-662Z | COULD NOT BE DETERMINED | 174 | True |  | Not started | True  -85 0 0 0 0 0 20 | Negative Float Critical 2 0 0  |  | 4201, 4202, 4200, 4203, 4204, 4205 | True |  |
| 357ae9be-8a60-8167-abda-dafd8e1538ba | 1290 | Best Practice / Country Validation | Basis | 1.1.1.6.1.4 | 1.1.1.6.1.4 | 2026-05-25 | 2026-05-25 | 2026-05-13 | 0 | 6 | 3339 | 1 | 1 | 357ae9be-8a60-81fe-8223-d8b03bbc9a83 | 357ae9be-8a60-81b3-9029-d651db7edab4 | 7 | 0 | As Soon As Possible | Auto Scheduled | AMETEK SAP XXL Project Plan Replan MSP Task.csv | AMETEK SAP XXL Project Plan Replan MSP Task.csv__2f0764ccac__2026-05-05T02-44-15-662Z | Lokchetan Meghavath | 12 | True |  | Not started | True  7 0 1 0 0 0 26 | Low 0 0 0  |  |  |  |  |
| 357ae9be-8a60-8167-b0ab-f07e70c41731 | 891 | Connect Systems and Validate | Basis | 1.1.1.7.1.5 | 1.1.1.7.1.5 | 2026-06-15 | 2026-06-16 | 2026-07-02 | 0 | 6 | 3338 | 1 | 1 | 357ae9be-8a60-811c-9422-fe433027e1dc | 357ae9be-8a60-8164-ad60-eb3d656b75b3 | -37.25 | 0 | As Soon As Possible | Auto Scheduled | AMETEK SAP XXL Project Plan Replan MSP Task.csv | AMETEK SAP XXL Project Plan Replan MSP Task.csv__2f0764ccac__2026-05-05T02-44-15-662Z | Lokchetan Meghavath |  |  |  | Not started | True  -37.25 0 1 0 0 0 18 | Negative Float Critical 2 0 0  |  |  |  |  |
| 357ae9be-8a60-8167-b8b5-c2ec38a57569 | 2003 | Post Load Validation | OTC | 1.2.2.2.55.2 | 1.2.2.2.55.2 | 2026-05-25 | 2026-05-25 | 2026-04-16 | 0 | 6 | 2001 | 1 | 1 | 357ae9be-8a60-8139-852f-d3d3eb0fc62a | 357ae9be-8a60-8113-8f8e-ebedd8499781 | -70.27 | 0 | As Soon As Possible | Auto Scheduled | AMETEK SAP XXL Project Plan Replan MSP Task.csv | AMETEK SAP XXL Project Plan Replan MSP Task.csv__2f0764ccac__2026-05-05T02-44-15-662Z | James VanRiper | 39 | True |  | Not started | True  -70.27 0 1 0 0 0 26 | Negative Float Critical 2 0 0  |  |  |  |  |
| 357ae9be-8a60-8168-8076-d13e0d77cd2a | 2681 | Post Load Validation | PTM | 1.2.4.2.43.2 | 1.2.4.2.43.2 | 2026-09-30 | 2026-09-30 | 2026-04-17 | 0 | 6 | 2679 | 1 | 1 | 357ae9be-8a60-81c5-ad01-efd18624f82d | 357ae9be-8a60-81ea-844f-c9305591ceef | -682.25 | 0 | As Soon As Possible | Auto Scheduled | AMETEK SAP XXL Project Plan Replan MSP Task.csv | AMETEK SAP XXL Project Plan Replan MSP Task.csv__2f0764ccac__2026-05-05T02-44-15-662Z | Eric Heisler | 166 | True |  | Not started | True  -682.25 0 1 0 0 0 26 | Negative Float Critical 2 0 0  |  |  |  |  |
| 357ae9be-8a60-8168-8818-caae662d4e3d | 1744 | Load File Staged and Posted "Ready" | Finance | 1.2.2.2.10.1 | 1.2.2.2.10.1 | 2026-05-19 | 2026-05-19 | 2026-04-09 | 0 | 6 | 1743 | 1 | 1 | 357ae9be-8a60-819d-910b-da3deb9b68af | 357ae9be-8a60-813e-b7c7-f611d79c08a4 | -16.52 | 0 | As Soon As Possible | Auto Scheduled | AMETEK SAP XXL Project Plan Replan MSP Task.csv | AMETEK SAP XXL Project Plan Replan MSP Task.csv__2f0764ccac__2026-05-05T02-44-15-662Z | Kasey Hughes | 40 | True | True | Not started | True  -16.52 0 1 0 0 0 26 | Wrong Dependency, Negative Float Critical 5 1 0  |  |  |  |  |
| 357ae9be-8a60-8168-8aa8-e9b4122475fc | 688 | ITC-1 Defect Correction / Retesting / Mitigation / Close | TESTING | 1.3.3.5.5 | 1.3.3.5.5 | 2026-05-06 | 2026-05-19 | 2026-05-29 | 25 | 5 | 19 | 1 | 1 | 357ae9be-8a60-81f6-81ad-c1ff46855c97 | 357ae9be-8a60-8108-9b1b-c3ffa160b043 | 124 | 0 | As Soon As Possible | Auto Scheduled | AMETEK SAP XXL Project Plan Replan MSP Task.csv | AMETEK SAP XXL Project Plan Replan MSP Task.csv__2f0764ccac__2026-05-05T02-44-15-662Z | Kishore Kakarla |  |  | True | In progress | True  124 0 1 1 4 1 23 | Low 0 0 0  |  |  |  |  |
| 357ae9be-8a60-8168-8b5b-eb457f5cae0e | 826 | Error and Defect Mitigation | OTC | 1.2.1.14.7 | 1.2.1.14.7 | 2026-04-09 | 2026-04-09 | 2026-04-09 | 100 | 5 | 763 | 1 | 1 | 357ae9be-8a60-8196-8f5b-e45aae4e7e4c | 357ae9be-8a60-815d-bbf0-d2d991b54a63 | 0 | 0 | As Soon As Possible | Auto Scheduled | AMETEK SAP XXL Project Plan Replan MSP Task.csv | AMETEK SAP XXL Project Plan Replan MSP Task.csv__2f0764ccac__2026-05-05T02-44-15-662Z | Ric Haraida |  |  |  | Done | True  0 0 1 0 0 0 18 | Wrong Dependency High 3 1 0  |  |  |  |  |
| 357ae9be-8a60-8168-93fe-f65f60ac645e | 4478 | GTS - Material initial load from S4 (Run Interface) | (Unassigned) | 1.2.5.2.55 | 1.2.5.2.55 | 2026-09-29 | 2026-10-01 | 2026-04-16 | 0 | 5 | 4162 | 0 | 0 |  |  | -89.03 | 0 | As Soon As Possible | Auto Scheduled | AMETEK SAP XXL Project Plan Replan MSP Task.csv | AMETEK SAP XXL Project Plan Replan MSP Task.csv__2f0764ccac__2026-05-05T02-44-15-662Z | COULD NOT BE DETERMINED | 168 | True |  | Not started | True  -89.03 0 0 0 0 0 20 | Negative Float Critical 2 0 0  |  | 4480, 4479 | True |  |
| 357ae9be-8a60-8168-9a3a-d70eac40a76e | 3074 | PTP_CM27_Vendor Master | PTP | 1.2.3.2.19 | 1.2.3.2.19 | 2026-06-08 | 2026-06-16 | 2026-04-15 | 0 | 5 | 2959 | 0 | 0 |  |  | -23.78 | 0 | As Soon As Possible | Auto Scheduled | AMETEK SAP XXL Project Plan Replan MSP Task.csv | AMETEK SAP XXL Project Plan Replan MSP Task.csv__2f0764ccac__2026-05-05T02-44-15-662Z | Muniraju Surappachari | 62 | True |  | Not started | True  -23.78 0 0 0 0 0 20 | Negative Float Critical 2 0 0  |  | 3075, 3078, 3079, 3076, 3080, 3077 | True |  |
| 357ae9be-8a60-8168-a14b-d4a2fa4ff5e0 | 2572 | Pre Load Validation | PTP;OTC | 1.2.4.2.24.2 | 1.2.4.2.24.2 | 2026-09-24 | 2026-09-25 | 2026-04-14 | 0 | 6 | 2570 | 1 | 1 | 357ae9be-8a60-814e-a320-ec1ac9bb1c59 | 357ae9be-8a60-8194-bc72-d9af97a0d3fa | -726 | 0 | As Soon As Possible | Auto Scheduled | AMETEK SAP XXL Project Plan Replan MSP Task.csv | AMETEK SAP XXL Project Plan Replan MSP Task.csv__2f0764ccac__2026-05-05T02-44-15-662Z | Nevin Varkey | 164 | True |  | Not started | True  -726 0 1 0 0 0 26 | Wrong Dependency, Negative Float Critical 5 1 0  |  |  |  |  |
| 357ae9be-8a60-8168-bbdb-d1f6a0ee5341 | 4505 | SPL Master File | (Unassigned) | 1.2.5.2.64 | 1.2.5.2.64 | 2026-10-02 | 2026-10-02 | 2025-03-13 | 0 | 5 | 4162 | 0 | 0 |  |  | -86.38 | 0 | As Soon As Possible | Auto Scheduled | AMETEK SAP XXL Project Plan Replan MSP Task.csv | AMETEK SAP XXL Project Plan Replan MSP Task.csv__2f0764ccac__2026-05-05T02-44-15-662Z | COULD NOT BE DETERMINED | 568 | True |  | Not started | True  -86.38 0 0 0 0 0 20 | Negative Float Critical 2 0 0  |  | 4506, 4507 | True |  |
| 357ae9be-8a60-8169-921b-c44297a8f37c | 287 | Connector configuration (S4 / LDAP Connector) | (Unassigned) | 1.1.2.7.3 | 1.1.2.7.3 | 2026-05-19 | 2026-05-21 | 2025-11-28 | 0 | 5 | 278 | 1 | 1 | 357ae9be-8a60-814e-9f6e-fefe7043b512 | 357ae9be-8a60-81cb-8fbf-fbaa96ac686d | 68 | 0 | Start No Earlier Than | Auto Scheduled | AMETEK SAP XXL Project Plan Replan MSP Task.csv | AMETEK SAP XXL Project Plan Replan MSP Task.csv__2f0764ccac__2026-05-05T02-44-15-662Z | COULD NOT BE DETERMINED | 174 | True |  | Not started | True  68 0 1 0 0 0 26 | Low 0 0 0 True | 2026-04-30 |  |  |  |
| 357ae9be-8a60-8169-9784-d03a3c1e8662 | 2531 | RTR_CM10_Credit_Management_Role | (Unassigned) | 1.2.4.2.18 | 1.2.4.2.18 | 2026-09-30 | 2026-10-02 | 2026-04-13 | 0 | 5 | 2898 | 0 | 0 |  |  | -87.59 | 0 | As Soon As Possible | Auto Scheduled | AMETEK SAP XXL Project Plan Replan MSP Task.csv | AMETEK SAP XXL Project Plan Replan MSP Task.csv__2f0764ccac__2026-05-05T02-44-15-662Z | COULD NOT BE DETERMINED | 172 | True |  | Not started | True  -87.59 0 0 0 0 0 20 | Negative Float Critical 2 0 0  |  | 2533, 2535, 2534, 2532, 2537, 2536 | True |  |
| 357ae9be-8a60-8169-ac3f-d59165e81ef5 | 908 | Manual Activities Group 3 | Development;PTM;Finance;PMO;Europe IT lead;OTC;TESTING | 1.1.1.7.2.6 | 1.1.1.7.2.6 | 2026-06-24 | 2026-06-25 | 2026-07-14 | 0 | 6 | 902 | 1 | 1 | 357ae9be-8a60-815e-a8f0-e7e80007b6ae | 357ae9be-8a60-8137-bdf0-e91de2c32281 | -37.25 | 0 | As Soon As Possible | Auto Scheduled | AMETEK SAP XXL Project Plan Replan MSP Task.csv | AMETEK SAP XXL Project Plan Replan MSP Task.csv__2f0764ccac__2026-05-05T02-44-15-662Z | Bijoykrishna Das |  |  |  | Not started | True  -37.25 0 1 0 0 0 18 | Negative Float Critical 2 0 0  |  |  |  |  |
| 357ae9be-8a60-816a-9c88-f091a77453d9 | 1803 | Simulate Load | Data | 1.2.2.2.19.3 | 1.2.2.2.19.3 | 2026-05-25 | 2026-05-25 | 2026-04-14 | 0 | 6 | 1800 | 1 | 1 | 357ae9be-8a60-8178-b56f-e81fbac20a4e | 357ae9be-8a60-816e-a1c6-da9cc7cdc2de | -49.77 | 0 | As Soon As Possible | Auto Scheduled | AMETEK SAP XXL Project Plan Replan MSP Task.csv | AMETEK SAP XXL Project Plan Replan MSP Task.csv__2f0764ccac__2026-05-05T02-44-15-662Z | Jyoti Nain | 41 | True |  | Not started | True  -49.77 0 1 0 0 0 26 | Negative Float Critical 2 0 0  |  |  |  |  |
| 357ae9be-8a60-816a-b42f-ccbb13bcdde0 | 1067 | Post Load Validation | PTM | 1.2.1.32.6 | 1.2.1.32.6 | 2026-04-16 | 2026-04-16 | 2026-04-20 | 100 | 5 | 695 | 1 | 1 | 357ae9be-8a60-814a-a139-f875cd9c5de3 | 357ae9be-8a60-8165-b39c-f45184c710c2 | 0 | 0 | As Soon As Possible | Auto Scheduled | AMETEK SAP XXL Project Plan Replan MSP Task.csv | AMETEK SAP XXL Project Plan Replan MSP Task.csv__2f0764ccac__2026-05-05T02-44-15-662Z | Brad Meseck |  |  |  | Done | True  0 0 1 0 0 0 18 | Low 0 0 0  |  |  |  |  |
| 357ae9be-8a60-816a-bb31-c440e596cfae | 1875 | Extract File | Data | 1.2.2.2.30.1 | 1.2.2.2.30.1 | 2026-05-21 | 2026-05-21 | 2026-04-16 | 0 | 6 | 1874 | 1 | 3 | 357ae9be-8a60-81b6-ab8b-c4b14f1485e0 | 357ae9be-8a60-811c-a632-c761fdfa4cc5, 357ae9be-8a60-81ac-af61-f20e3ac4a88f, 357ae9be-8a60-8162-bad5-e08ffb0a4cec | -62.39 | 0 | As Soon As Possible | Auto Scheduled | AMETEK SAP XXL Project Plan Replan MSP Task.csv | AMETEK SAP XXL Project Plan Replan MSP Task.csv__2f0764ccac__2026-05-05T02-44-15-662Z | Jyoti Nain | 35 | True |  | Not started | True  -62.39 0 3 3 114 0 43 | Wrong Dependency, Wrong Successor, Negative Float Critical 8 1 3  |  |  |  |  |
| 357ae9be-8a60-816a-bdbe-d3030aeb2e33 | 4475 | Error and Defect Mitigation | PTM | 1.2.5.2.54.4 | 1.2.5.2.54.4 | 2026-09-30 | 2026-09-30 | 2026-04-16 | 0 | 6 | 4471 | 1 | 1 | 357ae9be-8a60-8108-8304-fe9dc6d28665 | 357ae9be-8a60-8115-9952-f4b3cd512c4b | -681.27 | 0 | As Soon As Possible | Auto Scheduled | AMETEK SAP XXL Project Plan Replan MSP Task.csv | AMETEK SAP XXL Project Plan Replan MSP Task.csv__2f0764ccac__2026-05-05T02-44-15-662Z | Brad Meseck | 167 | True |  | Not started | True  -681.27 0 1 0 0 0 26 | Negative Float Critical 2 0 0  |  |  |  |  |
| 357ae9be-8a60-816b-809f-c3f0028ecfb4 | 3059 | Post Load Validation | OTC | 1.2.3.2.16.3 | 1.2.3.2.16.3 | 2026-06-15 | 2026-06-15 | 2026-04-10 | 0 | 6 | 3056 | 1 | 0 | 357ae9be-8a60-8117-a158-cbe8ace6609a |  | -163.52 | 0 | As Soon As Possible | Auto Scheduled | AMETEK SAP XXL Project Plan Replan MSP Task.csv | AMETEK SAP XXL Project Plan Replan MSP Task.csv__2f0764ccac__2026-05-05T02-44-15-662Z | Ric Haraida | 66 | True |  | Not started | True  -163.52 0 0 0 0 0 20 | Negative Float, Open Finish Critical 3 0 0  |  |  |  |  |
| 357ae9be-8a60-816b-8b01-db21125c79cc | 837 | Interfaces | (Unassigned) | 1.3.2.2 | 1.3.2.2 | 2026-05-04 | 2026-08-14 | 2026-05-22 | 0 | 4 | 835 | 0 | 0 |  |  | 61 | 61 | Start No Earlier Than | Auto Scheduled | AMETEK SAP XXL Project Plan Replan MSP Task.csv | AMETEK SAP XXL Project Plan Replan MSP Task.csv__2f0764ccac__2026-05-05T02-44-15-662Z | COULD NOT BE DETERMINED | 84 | True |  | Not started |   61 61 0 0 0 0 8 | Open Start, Open Finish Medium 2 0 0 True | 2026-05-04 |  |  | True |
| 357ae9be-8a60-816b-9130-dc8fbac80688 | 1940 | Post Load Validation | PTM | 1.2.2.2.42.2 | 1.2.2.2.42.2 | 2026-05-21 | 2026-05-22 | 2026-04-16 | 0 | 6 | 1938 | 1 | 2 | 357ae9be-8a60-811c-bca4-fc03ac0c3268 | 357ae9be-8a60-8101-a382-e8a212fb3518, 357ae9be-8a60-8139-9352-dab0a56c53e8 | -46.02 | 0 | As Soon As Possible | Auto Scheduled | AMETEK SAP XXL Project Plan Replan MSP Task.csv | AMETEK SAP XXL Project Plan Replan MSP Task.csv__2f0764ccac__2026-05-05T02-44-15-662Z | Eric Heisler | 36 | True |  | Not started | True  -46.02 0 2 2 73 0 37 | Wrong Successor, Negative Float Critical 5 0 2  |  |  |  |  |
| 357ae9be-8a60-816b-a234-f41a5d72c961 | 644 | Validate Fiori | Basis | 1.1.1.4.12 | 1.1.1.4.12 | 2026-02-06 | 2026-02-06 | 2026-02-06 | 100 | 5 | 88 | 1 | 3 | 357ae9be-8a60-81b0-99fc-f3b06d5b962d | 357ae9be-8a60-8199-a80d-cc97cf320c83, 357ae9be-8a60-81e7-8379-c71bf14618d7, 357ae9be-8a60-81f5-9a42-e4f0a47e1507 | 0 | 0 | As Soon As Possible | Auto Scheduled | AMETEK SAP XXL Project Plan Replan MSP Task.csv | AMETEK SAP XXL Project Plan Replan MSP Task.csv__2f0764ccac__2026-05-05T02-44-15-662Z | Lokchetan Meghavath |  |  |  | Done | True  0 0 0 0 0 0 18 | Low 0 0 0  |  |  |  |  |
| 357ae9be-8a60-816b-b0c2-d545a91db5ce | 3068 | Load File Staged and Posted "Ready" | Finance | 1.2.3.2.18.1 | 1.2.3.2.18.1 | 2026-06-15 | 2026-06-15 | 2026-04-10 | 0 | 6 | 3067 | 1 | 1 | 357ae9be-8a60-8185-a2d9-d16ed2b25102 | 357ae9be-8a60-81dd-92a5-dfcc7deacf21 | -10726 | 0 | As Soon As Possible | Auto Scheduled | AMETEK SAP XXL Project Plan Replan MSP Task.csv | AMETEK SAP XXL Project Plan Replan MSP Task.csv__2f0764ccac__2026-05-05T02-44-15-662Z | Kasey Hughes | 66 | True |  | Not started | True  -10726 0 1 0 0 0 26 | Wrong Dependency, Negative Float Critical 5 1 0  |  |  |  |  |
| 357ae9be-8a60-816b-b66c-cc96cc70bb41 | 1851 | Load | Data | 1.2.2.2.26.5 | 1.2.2.2.26.5 | 2026-05-20 | 2026-05-21 | 2026-04-15 | 0 | 6 | 1846 | 1 | 1 | 357ae9be-8a60-8171-b015-f586e694fecc | 357ae9be-8a60-819c-aa40-e834724723c1 | -70.27 | 0 | As Soon As Possible | Auto Scheduled | AMETEK SAP XXL Project Plan Replan MSP Task.csv | AMETEK SAP XXL Project Plan Replan MSP Task.csv__2f0764ccac__2026-05-05T02-44-15-662Z | Jyoti Nain | 36 | True |  | Not started | True  -70.27 0 1 0 0 0 26 | Negative Float Critical 2 0 0  |  |  |  |  |
| 357ae9be-8a60-816b-bd03-efee92b2ae6f | 976 | Load | Data | 1.2.1.16.5 | 1.2.1.16.5 | 2026-04-10 | 2026-04-14 | 2026-04-14 | 100 | 5 | 765 | 1 | 1 | 357ae9be-8a60-81c6-b44c-d3d7597dfd0f | 357ae9be-8a60-8155-8778-c56db49d19fd | 0 | 0 | As Soon As Possible | Auto Scheduled | AMETEK SAP XXL Project Plan Replan MSP Task.csv | AMETEK SAP XXL Project Plan Replan MSP Task.csv__2f0764ccac__2026-05-05T02-44-15-662Z | Jyoti Nain |  |  |  | Done | True  0 0 1 0 0 1 18 | Low 0 0 0  |  |  |  |  |
| 357ae9be-8a60-816c-823c-c1b9c1b61c3b | 1789 | Simulate Load | Data | 1.2.2.2.17.3 | 1.2.2.2.17.3 | 2026-05-25 | 2026-05-25 | 2026-04-10 | 0 | 6 | 1786 | 0 | 1 |  | 357ae9be-8a60-81c9-86d6-e1261b986497 | -65.02 | 0 | As Soon As Possible | Auto Scheduled | AMETEK SAP XXL Project Plan Replan MSP Task.csv | AMETEK SAP XXL Project Plan Replan MSP Task.csv__2f0764ccac__2026-05-05T02-44-15-662Z | Jyoti Nain | 45 | True |  | Not started | True  -65.02 0 1 0 0 0 26 | Negative Float, Open Start Critical 3 0 0  |  |  |  |  |
| 357ae9be-8a60-816c-82c5-eccfacc01a0f | 2574 | Error and Defect Mitigation | PTP | 1.2.4.2.24.4 | 1.2.4.2.24.4 | 2026-09-25 | 2026-09-25 | 2026-04-14 | 0 | 6 | 2570 | 1 | 1 | 357ae9be-8a60-8194-bc72-d9af97a0d3fa | 357ae9be-8a60-8118-954c-ebe5e7ddd41b | -726 | 0 | As Soon As Possible | Auto Scheduled | AMETEK SAP XXL Project Plan Replan MSP Task.csv | AMETEK SAP XXL Project Plan Replan MSP Task.csv__2f0764ccac__2026-05-05T02-44-15-662Z | Nevin Varkey | 164 | True |  | Not started | True  -726 0 1 0 0 0 26 | Negative Float Critical 2 0 0  |  |  |  |  |
| 357ae9be-8a60-816c-844b-f828a9b29bdb | 1946 | Post Load Validation | PTM | 1.2.2.2.44.2 | 1.2.2.2.44.2 | 2026-05-22 | 2026-05-25 | 2026-04-17 | 0 | 6 | 1944 | 1 | 0 | 357ae9be-8a60-81da-84f0-dcf7c80e6adf |  | -40.27 | 0 | As Soon As Possible | Auto Scheduled | AMETEK SAP XXL Project Plan Replan MSP Task.csv | AMETEK SAP XXL Project Plan Replan MSP Task.csv__2f0764ccac__2026-05-05T02-44-15-662Z | Eric Heisler | 38 | True |  | Not started | True  -40.27 0 0 0 0 0 20 | Negative Float, Open Finish Critical 3 0 0  |  |  |  |  |
| 357ae9be-8a60-816c-8aec-dde08700e2d7 | 1251 | Post Load Validation | PTP;OTC | 1.2.1.24.6 | 1.2.1.24.6 | 2026-04-14 | 2026-04-14 | 2026-04-14 | 100 | 5 | 1245 | 1 | 0 | 357ae9be-8a60-81d0-8b99-d51a46959c2c |  | 0 | 0 | As Soon As Possible | Auto Scheduled | AMETEK SAP XXL Project Plan Replan MSP Task.csv | AMETEK SAP XXL Project Plan Replan MSP Task.csv__2f0764ccac__2026-05-05T02-44-15-662Z | Nevin Varkey |  |  |  | Done | True  0 0 0 0 0 0 12 | Wrong Dependency High 3 1 0  |  |  |  |  |
| 357ae9be-8a60-816c-8bb3-f43e740478cc | 3191 | Load File Staged and Posted "Ready" | PTM | 1.2.3.2.36.1 | 1.2.3.2.36.1 | 2026-06-16 | 2026-06-16 | 2026-04-20 | 0 | 6 | 3190 | 1 | 1 | 357ae9be-8a60-8112-97aa-e6d3508c898f | 357ae9be-8a60-8136-974a-f4fd1d7e108b | -10426 | 0 | As Soon As Possible | Auto Scheduled | AMETEK SAP XXL Project Plan Replan MSP Task.csv | AMETEK SAP XXL Project Plan Replan MSP Task.csv__2f0764ccac__2026-05-05T02-44-15-662Z | Brad Meseck | 57 | True |  | Not started | True  -10426 0 1 0 0 0 26 | Negative Float Critical 2 0 0  |  |  |  |  |
| 357ae9be-8a60-816c-9756-cb4b3534e9a0 | 3324 | Load | Data | 1.2.3.2.68.5 | 1.2.3.2.68.5 | 2026-06-08 | 2026-06-09 | 2026-04-17 | 0 | 6 | 3319 | 1 | 1 | 357ae9be-8a60-8134-ab00-dd64a7314796 | 357ae9be-8a60-81b6-8d57-de4d65e4cbe5 | -129.52 | 0 | As Soon As Possible | Auto Scheduled | AMETEK SAP XXL Project Plan Replan MSP Task.csv | AMETEK SAP XXL Project Plan Replan MSP Task.csv__2f0764ccac__2026-05-05T02-44-15-662Z | Jyoti Nain | 53 | True |  | Not started | True  -129.52 0 1 0 0 0 26 | Negative Float Critical 2 0 0  |  |  |  |  |
| 357ae9be-8a60-816c-a116-e1dc875ac858 | 895 | Manual Technical Tasks | Basis | 1.1.1.7.1.9 | 1.1.1.7.1.9 | 2026-06-15 | 2026-06-15 | 2026-07-06 | 0 | 6 | 3338 | 1 | 1 | 357ae9be-8a60-812f-b111-c6112e6169d2 | 357ae9be-8a60-81eb-8d67-d6df52782048 | -36.38 | 0 | As Soon As Possible | Auto Scheduled | AMETEK SAP XXL Project Plan Replan MSP Task.csv | AMETEK SAP XXL Project Plan Replan MSP Task.csv__2f0764ccac__2026-05-05T02-44-15-662Z | Lokchetan Meghavath |  |  |  | Not started | True  -36.38 0 1 0 0 0 18 | Negative Float Critical 2 0 0  |  |  |  |  |
| 357ae9be-8a60-816c-a2fc-f2984473d9a5 | 4489 | Post Load Validation | OTC | 1.2.5.2.58.2 | 1.2.5.2.58.2 | 2026-09-25 | 2026-09-25 | 2026-04-13 | 0 | 6 | 4487 | 1 | 1 | 357ae9be-8a60-8110-9112-e95f30836724 | 357ae9be-8a60-814d-a26c-d67710da181a | -653.52 | 0 | As Soon As Possible | Auto Scheduled | AMETEK SAP XXL Project Plan Replan MSP Task.csv | AMETEK SAP XXL Project Plan Replan MSP Task.csv__2f0764ccac__2026-05-05T02-44-15-662Z | James VanRiper | 165 | True |  | Not started | True  -653.52 0 1 0 0 0 26 | Negative Float Critical 2 0 0  |  |  |  |  |
| 357ae9be-8a60-816c-a955-f517ebe8c18c | 4532 | Inventory | (Unassigned) | 1.2.5.4.1 | 1.2.5.4.1 | 2026-10-01 | 2026-10-01 | 2026-10-01 | 0 | 5 | 4531 | 2 | 5 | 357ae9be-8a60-81d2-b413-e8ebd9ac365c, 357ae9be-8a60-8132-b9d5-c57d0f14703b | 357ae9be-8a60-8175-84a0-f6ecf6feb7e8, 357ae9be-8a60-81c9-9de8-e8f1dc7bf44a, 357ae9be-8a60-8199-9424-f915b90ff71e, 357ae9be-8a60-8194-b0fa-e682c7fca9ef, 357ae9be-8a60-81fd-8576-ee3e5ffd6888 | -280.77 | 0 | As Soon As Possible | Auto Scheduled | AMETEK SAP XXL Project Plan Replan MSP Task.csv | AMETEK SAP XXL Project Plan Replan MSP Task.csv__2f0764ccac__2026-05-05T02-44-15-662Z | COULD NOT BE DETERMINED |  |  |  | Not started | True  -280.77 0 5 0 0 0 42 | Negative Float Critical 2 0 0  |  |  |  |  |
| 357ae9be-8a60-816c-ad9a-cf035f1ccd99 | 29 | Order to Cash | (Unassigned) | 1.1.2.9.1.5 | 1.1.2.9.1.5 | 2025-04-07 | 2025-08-21 | 2025-08-21 | 100 | 6 | 25 | 0 | 0 |  |  | 0 | 0 | As Soon As Possible | Auto Scheduled | AMETEK SAP XXL Project Plan Replan MSP Task.csv | AMETEK SAP XXL Project Plan Replan MSP Task.csv__2f0764ccac__2026-05-05T02-44-15-662Z | COULD NOT BE DETERMINED |  |  |  | Done | True  0 0 0 0 0 0 12 | Low 0 0 0  |  | 38, 137, 37 | True |  |
| 357ae9be-8a60-816c-b1e5-c2b23837ce56 | 866 | Release Security roles to Functional Team | Security | 1.1.1.5.1.15 | 1.1.1.5.1.15 | 2026-05-05 | 2026-05-05 | 2026-05-19 | 0 | 6 | 3340 | 1 | 0 | 357ae9be-8a60-819a-93ea-f080e6e6a5ef |  | -203.02 | 0 | As Soon As Possible | Auto Scheduled | AMETEK SAP XXL Project Plan Replan MSP Task.csv | AMETEK SAP XXL Project Plan Replan MSP Task.csv__2f0764ccac__2026-05-05T02-44-15-662Z | Manjunatha Umesha |  |  |  | Not started | True  -203.02 0 0 0 0 0 12 | Negative Float, Open Finish Critical 3 0 0  |  |  |  | True |
| 357ae9be-8a60-816c-b986-e85b6ee5928d | 1309 | Import Group 4 - workbench / dev work | Development | 1.1.1.6.2.7 | 1.1.1.6.2.7 | 2026-05-29 | 2026-05-29 | 2026-05-26 | 0 | 6 | 1302 | 1 | 1 | 357ae9be-8a60-8123-922a-c49fc5877537 | 357ae9be-8a60-812f-bd16-e6cc1920554e | 36.5 | 0 | As Soon As Possible | Auto Scheduled | AMETEK SAP XXL Project Plan Replan MSP Task.csv | AMETEK SAP XXL Project Plan Replan MSP Task.csv__2f0764ccac__2026-05-05T02-44-15-662Z | Bijoykrishna Das | 3 | True |  | Not started | True  36.5 0 1 0 0 0 26 | Wrong Dependency High 3 1 0  |  |  |  |  |
| 357ae9be-8a60-816c-bc31-d42762250de7 | 1958 | Load File Staged and Posted "Ready" | PTM | 1.2.2.2.47.1 | 1.2.2.2.47.1 | 2026-05-25 | 2026-05-25 | 2026-04-16 | 0 | 6 | 1957 | 1 | 1 | 357ae9be-8a60-815f-beaf-cd46247f5cb3 | 357ae9be-8a60-81f3-bedb-c2d9f81325ba | -4036 | 0 | As Soon As Possible | Auto Scheduled | AMETEK SAP XXL Project Plan Replan MSP Task.csv | AMETEK SAP XXL Project Plan Replan MSP Task.csv__2f0764ccac__2026-05-05T02-44-15-662Z | Eric Heisler | 39 | True |  | Not started | True  -4036 0 1 0 0 0 26 | Negative Float Critical 2 0 0  |  |  |  |  |
| 357ae9be-8a60-816d-83dc-eb1a223baf6c | 4370 | Load | Data | 1.2.5.2.32.5 | 1.2.5.2.32.5 | 2026-10-05 | 2026-10-05 | 2026-04-20 | 0 | 6 | 4365 | 1 | 1 | 357ae9be-8a60-8186-aa37-f5d80ed6ee19 | 357ae9be-8a60-819a-b6ec-e06c59daead0 | -704.39 | 0 | Start No Earlier Than | Auto Scheduled | AMETEK SAP XXL Project Plan Replan MSP Task.csv | AMETEK SAP XXL Project Plan Replan MSP Task.csv__2f0764ccac__2026-05-05T02-44-15-662Z | Jyoti Nain | 168 | True |  | Not started | True  -704.39 0 1 0 0 0 26 | Negative Float Critical 2 0 0 True | 2026-04-20 |  |  |  |
| 357ae9be-8a60-816d-9625-f98f39902f87 | 3002 | Post Load Validation | Finance | 1.2.3.2.7.6 | 1.2.3.2.7.6 | 2026-06-12 | 2026-06-15 | 2026-04-09 | 0 | 6 | 2996 | 1 | 0 | 357ae9be-8a60-81fc-9ee0-ea551c5d3fda |  | -158.02 | 0 | As Soon As Possible | Auto Scheduled | AMETEK SAP XXL Project Plan Replan MSP Task.csv | AMETEK SAP XXL Project Plan Replan MSP Task.csv__2f0764ccac__2026-05-05T02-44-15-662Z | Kasey Hughes | 67 | True |  | Not started | True  -158.02 0 0 0 0 0 20 | Negative Float, Open Finish Critical 3 0 0  |  |  |  |  |
| 357ae9be-8a60-816d-97be-f863ce9722dd | 2660 | Post Load Validation | PTM | 1.2.4.2.36.6 | 1.2.4.2.36.6 | 2026-09-24 | 2026-09-24 | 2026-04-21 | 0 | 6 | 2654 | 0 | 0 |  |  | -644.5 | 0 | Start No Earlier Than | Auto Scheduled | AMETEK SAP XXL Project Plan Replan MSP Task.csv | AMETEK SAP XXL Project Plan Replan MSP Task.csv__2f0764ccac__2026-05-05T02-44-15-662Z | Brad Meseck | 156 | True |  | Not started | True  -644.5 0 0 0 0 0 20 | Negative Float, Open Start, Open Finish Critical 4 0 0 True | 2026-04-21 |  |  |  |
| 357ae9be-8a60-816d-a0ac-ddf2cb50281f | 3155 | PTM_CM40_Work Center Conversion | PTM | 1.2.3.2.31 | 1.2.3.2.31 | 2026-06-11 | 2026-06-16 | 2026-04-20 | 0 | 5 | 2959 | 0 | 0 |  |  | -22.8 | 0 | As Soon As Possible | Auto Scheduled | AMETEK SAP XXL Project Plan Replan MSP Task.csv | AMETEK SAP XXL Project Plan Replan MSP Task.csv__2f0764ccac__2026-05-05T02-44-15-662Z | Brad Meseck | 57 | True |  | Not started | True  -22.8 0 0 0 0 0 20 | Negative Float Critical 2 0 0  |  | 3158, 3160, 3156, 3157, 3161, 3159 | True |  |
| 357ae9be-8a60-816d-ace0-e131bec653fa | 3285 | Load Descartes XML File | OTC | 1.2.3.2.58.1 | 1.2.3.2.58.1 | 2026-06-08 | 2026-06-08 | 2026-04-06 | 0 | 6 | 3284 | 0 | 0 |  |  | -120.52 | 0 | As Soon As Possible | Auto Scheduled | AMETEK SAP XXL Project Plan Replan MSP Task.csv | AMETEK SAP XXL Project Plan Replan MSP Task.csv__2f0764ccac__2026-05-05T02-44-15-662Z | James VanRiper | 63 | True |  | Not started | True  -120.52 0 0 0 0 0 20 | Negative Float, Open Start, Open Finish Critical 4 0 0  |  |  |  |  |
| 357ae9be-8a60-816d-ae55-cec8c80de4d9 | 748 | PTP_CM26_Material_Master - SERV - Service Materials | PTP | 1.2.1.26 | 1.2.1.26 | 2026-04-07 | 2026-04-15 | 2026-04-15 | 100 | 4 | 425 | 1 | 1 | 357ae9be-8a60-8151-ad6b-ee1d3da18424 | 357ae9be-8a60-8129-9c37-e7c6a71bbf70 | 0 | 0 | As Soon As Possible | Auto Scheduled | AMETEK SAP XXL Project Plan Replan MSP Task.csv | AMETEK SAP XXL Project Plan Replan MSP Task.csv__2f0764ccac__2026-05-05T02-44-15-662Z | Muniraju Surappachari |  |  |  | Done | True  0 0 1 1 8 1 23 | Low 0 0 0  |  | 1030, 1026, 1031, 1027, 1029, 1028 | True |  |
| 357ae9be-8a60-816d-b083-ff588f14a12e | 2675 | Post Load Validation | PTM | 1.2.4.2.41.2 | 1.2.4.2.41.2 | 2026-09-29 | 2026-09-29 | 2026-04-16 | 0 | 6 | 2673 | 1 | 0 | 357ae9be-8a60-8125-9b6b-e1afa72116e1 |  | -672.25 | 0 | As Soon As Possible | Auto Scheduled | AMETEK SAP XXL Project Plan Replan MSP Task.csv | AMETEK SAP XXL Project Plan Replan MSP Task.csv__2f0764ccac__2026-05-05T02-44-15-662Z | Eric Heisler | 166 | True |  | Not started | True  -672.25 0 0 0 0 0 20 | Negative Float, Open Finish Critical 3 0 0  |  |  |  |  |
| 357ae9be-8a60-816d-b2e6-e3b889b4d35c | 3010 | RTR_CM06_Bank_master | (Unassigned) | 1.2.3.2.9 | 1.2.3.2.9 | 2026-06-08 | 2026-06-12 | 2026-04-09 | 0 | 5 | 2959 | 0 | 0 |  |  | -21.06 | 0 | As Soon As Possible | Auto Scheduled | AMETEK SAP XXL Project Plan Replan MSP Task.csv | AMETEK SAP XXL Project Plan Replan MSP Task.csv__2f0764ccac__2026-05-05T02-44-15-662Z | COULD NOT BE DETERMINED | 64 | True |  | Not started | True  -21.06 0 0 0 0 0 20 | Negative Float Critical 2 0 0  |  | 3012, 3015, 3016, 3011, 3013, 3014 | True |  |
| 357ae9be-8a60-816d-b3a2-cdb968f57839 | 68 | Order to Cash | (Unassigned) | 1.1.2.10.4 | 1.1.2.10.4 | 2025-03-13 | 2025-03-13 | 2025-03-13 | 100 | 5 | 55 | 0 | 0 |  |  | 0 | 0 | As Soon As Possible | Auto Scheduled | AMETEK SAP XXL Project Plan Replan MSP Task.csv | AMETEK SAP XXL Project Plan Replan MSP Task.csv__2f0764ccac__2026-05-05T02-44-15-662Z | COULD NOT BE DETERMINED |  |  |  | Done | True  0 0 0 0 0 0 12 | Low 0 0 0  |  | 81, 83, 82, 84 | True |  |
| 357ae9be-8a60-816d-ba63-fb2912a24ed2 | 2609 | Error and Defect Mitigation | PTP | 1.2.4.2.29.4 | 1.2.4.2.29.4 | 2026-09-29 | 2026-09-29 | 2026-04-16 | 0 | 6 | 2605 | 1 | 1 | 357ae9be-8a60-8176-a0fd-c38e449f8c7d | 357ae9be-8a60-8103-b2bc-ed218fbc500d | -676.25 | 0 | As Soon As Possible | Auto Scheduled | AMETEK SAP XXL Project Plan Replan MSP Task.csv | AMETEK SAP XXL Project Plan Replan MSP Task.csv__2f0764ccac__2026-05-05T02-44-15-662Z | Nevin Varkey | 166 | True |  | Not started | True  -676.25 0 1 0 0 0 26 | Wrong Dependency, Negative Float Critical 5 1 0  |  |  |  |  |
| 357ae9be-8a60-816e-8516-c6a67a0ab091 | 1148 | Error and Defect Mitigation | Finance | 1.2.1.69.4 | 1.2.1.69.4 | 2026-04-20 | 2026-04-20 | 2026-04-17 | 100 | 5 | 754 | 1 | 1 | 357ae9be-8a60-8109-90cf-c808e2ac3b5a | 357ae9be-8a60-8135-8b8a-edb3e6f48b50 | 0 | 0 | As Soon As Possible | Auto Scheduled | AMETEK SAP XXL Project Plan Replan MSP Task.csv | AMETEK SAP XXL Project Plan Replan MSP Task.csv__2f0764ccac__2026-05-05T02-44-15-662Z | Kasey Hughes |  |  |  | Done | True  0 0 1 0 0 0 18 | Low 0 0 0  |  |  |  |  |
| 357ae9be-8a60-816e-860f-ec09e9d611a3 | 4342 | Load | Data | 1.2.5.2.28.5 | 1.2.5.2.28.5 | 2026-09-29 | 2026-09-30 | 2026-04-16 | 0 | 6 | 4337 | 1 | 1 | 357ae9be-8a60-817a-9851-f38ed06724af | 357ae9be-8a60-81fb-b27e-eb462bf557cd | -676.27 | 0 | As Soon As Possible | Auto Scheduled | AMETEK SAP XXL Project Plan Replan MSP Task.csv | AMETEK SAP XXL Project Plan Replan MSP Task.csv__2f0764ccac__2026-05-05T02-44-15-662Z | Jyoti Nain | 167 | True |  | Not started | True  -676.27 0 1 0 0 0 26 | Negative Float Critical 2 0 0  |  |  |  |  |
| 357ae9be-8a60-816e-94d2-ee506a27ddc4 | 4286 | Pre Load Validation | PTP | 1.2.5.2.20.2 | 1.2.5.2.20.2 | 2026-09-24 | 2026-09-24 | 2026-04-10 | 0 | 6 | 4284 | 1 | 1 | 357ae9be-8a60-8113-922c-cb8b2d2521a7 | 357ae9be-8a60-81d1-9d81-e05d3d5e0d01 | -653.52 | 0 | As Soon As Possible | Auto Scheduled | AMETEK SAP XXL Project Plan Replan MSP Task.csv | AMETEK SAP XXL Project Plan Replan MSP Task.csv__2f0764ccac__2026-05-05T02-44-15-662Z | Nevin Varkey | 167 | True |  | Not started | True  -653.52 0 1 0 0 0 26 | Negative Float Critical 2 0 0  |  |  |  |  |
| 357ae9be-8a60-816e-958a-f82cda11bace | 2007 | GTS - Vendors initial load from S4 (Run Interface) | (Unassigned) | 1.2.2.2.57 | 1.2.2.2.57 | 2026-05-19 | 2026-05-19 | 2026-04-15 | 0 | 5 | 2800 | 0 | 0 |  |  | -1.44 | 0 | As Soon As Possible | Auto Scheduled | AMETEK SAP XXL Project Plan Replan MSP Task.csv | AMETEK SAP XXL Project Plan Replan MSP Task.csv__2f0764ccac__2026-05-05T02-44-15-662Z | COULD NOT BE DETERMINED | 34 | True | True | Not started | True  -1.44 0 0 0 0 0 20 | Negative Float High 2 0 0  |  | 2008, 2009 | True |  |
| 357ae9be-8a60-816e-9f46-f8486f9d44d5 | 2748 | GTS - ECCN - Create | (Unassigned) | 1.2.4.2.58 | 1.2.4.2.58 | 2026-09-24 | 2026-09-25 | 2026-04-13 | 0 | 5 | 2898 | 0 | 0 |  |  | -81.31 | 0 | As Soon As Possible | Auto Scheduled | AMETEK SAP XXL Project Plan Replan MSP Task.csv | AMETEK SAP XXL Project Plan Replan MSP Task.csv__2f0764ccac__2026-05-05T02-44-15-662Z | COULD NOT BE DETERMINED | 165 | True |  | Not started | True  -81.31 0 0 0 0 0 20 | Negative Float Critical 2 0 0  |  | 2750, 2749 | True |  |
| 357ae9be-8a60-816e-a1c6-da9cc7cdc2de | 1804 | Error and Defect Mitigation | PTP | 1.2.2.2.19.4 | 1.2.2.2.19.4 | 2026-05-25 | 2026-05-26 | 2026-04-14 | 0 | 6 | 1800 | 1 | 0 | 357ae9be-8a60-816a-9c88-f091a77453d9 |  | -49.77 | 0 | As Soon As Possible | Auto Scheduled | AMETEK SAP XXL Project Plan Replan MSP Task.csv | AMETEK SAP XXL Project Plan Replan MSP Task.csv__2f0764ccac__2026-05-05T02-44-15-662Z | Nevin Varkey | 42 | True |  | Not started | True  -49.77 0 0 0 0 0 20 | Negative Float, Open Finish Critical 3 0 0  |  |  |  |  |
| 357ae9be-8a60-816e-aa21-da504fdc02cf | 2739 | GTS - Material initial load from S4 (Run Interface) | (Unassigned) | 1.2.4.2.55 | 1.2.4.2.55 | 2026-09-29 | 2026-10-01 | 2026-04-16 | 0 | 5 | 2898 | 0 | 0 |  |  | -89.03 | 0 | As Soon As Possible | Auto Scheduled | AMETEK SAP XXL Project Plan Replan MSP Task.csv | AMETEK SAP XXL Project Plan Replan MSP Task.csv__2f0764ccac__2026-05-05T02-44-15-662Z | COULD NOT BE DETERMINED | 168 | True |  | Not started | True  -89.03 0 0 0 0 0 20 | Negative Float Critical 2 0 0  |  | 2741, 2740 | True |  |
| 357ae9be-8a60-816e-ac60-e48c25ae5532 | 1102 | Simulate Load | Data | 1.2.1.48.3 | 1.2.1.48.3 | 2026-04-16 | 2026-04-17 | 2026-04-17 | 100 | 5 | 714 | 1 | 1 | 357ae9be-8a60-811b-a7a5-ed9b5894af75 | 357ae9be-8a60-8155-8894-dc7fba20688b | 0 | 0 | As Soon As Possible | Auto Scheduled | AMETEK SAP XXL Project Plan Replan MSP Task.csv | AMETEK SAP XXL Project Plan Replan MSP Task.csv__2f0764ccac__2026-05-05T02-44-15-662Z | Jyoti Nain |  |  |  | Done | True  0 0 1 0 0 0 18 | Low 0 0 0  |  |  |  |  |
| 357ae9be-8a60-816e-af41-c14436fd6ae0 | 1808 | Extract File(Will Extract from LFA1) | PTP | 1.2.2.2.20.1 | 1.2.2.2.20.1 | 2026-05-18 | 2026-05-18 | 2026-04-10 | 0 | 6 | 1807 | 0 | 2 |  | 357ae9be-8a60-811c-a632-c761fdfa4cc5, 357ae9be-8a60-8161-a7ee-c6935d18bcd8 | -11.52 | 0 | As Soon As Possible | Auto Scheduled | AMETEK SAP XXL Project Plan Replan MSP Task.csv | AMETEK SAP XXL Project Plan Replan MSP Task.csv__2f0764ccac__2026-05-05T02-44-15-662Z | Nevin Varkey | 38 | True | True | Not started | True  -11.52 0 2 2 77 0 37 | Wrong Successor, Negative Float, Open Start Critical 6 0 2  |  |  |  |  |
| 357ae9be-8a60-816e-bc81-d9a94880e92e | 1885 | Error and Defect Mitigation | PTM | 1.2.2.2.31.4 | 1.2.2.2.31.4 | 2026-05-26 | 2026-05-26 | 2026-04-17 | 0 | 6 | 1881 | 1 | 1 | 357ae9be-8a60-81c4-a00c-f109fb560207 | 357ae9be-8a60-81c7-9518-f825e8f2772a | -62.39 | 0 | As Soon As Possible | Auto Scheduled | AMETEK SAP XXL Project Plan Replan MSP Task.csv | AMETEK SAP XXL Project Plan Replan MSP Task.csv__2f0764ccac__2026-05-05T02-44-15-662Z | Brad Meseck | 39 | True |  | Not started | True  -62.39 0 1 0 0 0 26 | Negative Float Critical 2 0 0  |  |  |  |  |
| 357ae9be-8a60-816e-bd43-ca22eeef1b34 | 2553 | Manual File Staged and Posted "Ready" | Finance | 1.2.4.2.21.1 | 1.2.4.2.21.1 | 2026-10-01 | 2026-10-01 | 2026-04-10 | 0 | 6 | 2552 | 1 | 0 | 357ae9be-8a60-8173-85d2-ffceab2bc257 |  | -41100 | 0 | Start No Earlier Than | Auto Scheduled | AMETEK SAP XXL Project Plan Replan MSP Task.csv | AMETEK SAP XXL Project Plan Replan MSP Task.csv__2f0764ccac__2026-05-05T02-44-15-662Z | Kasey Hughes | 174 | True |  | Not started | True  -41100 0 0 0 0 0 20 | Wrong Dependency, Negative Float, Open Finish Critical 6 1 0 True | 2026-04-15 |  |  |  |
| 357ae9be-8a60-816f-80fe-c4974f7c227c | 2578 | Load File Staged and Posted "Ready" | PTP;OTC | 1.2.4.2.25.1 | 1.2.4.2.25.1 | 2026-09-25 | 2026-09-25 | 2026-04-07 | 0 | 6 | 2577 | 1 | 0 | 357ae9be-8a60-81d9-97a1-d8800c6089d8 |  | -39420 | 0 | As Soon As Possible | Auto Scheduled | AMETEK SAP XXL Project Plan Replan MSP Task.csv | AMETEK SAP XXL Project Plan Replan MSP Task.csv__2f0764ccac__2026-05-05T02-44-15-662Z | Nevin Varkey | 171 | True |  | Not started | True  -39420 0 0 0 0 0 20 | Wrong Dependency, Negative Float, Open Finish Critical 6 1 0  |  |  |  |  |
| 357ae9be-8a60-816f-86bb-ffc92c6c01e6 | 984 | Manual File Staged and Posted "Ready" | OTC | 1.2.1.17.1 | 1.2.1.17.1 | 2026-04-10 | 2026-04-10 | 2026-04-10 | 100 | 5 | 771 | 1 | 1 | 357ae9be-8a60-81a9-a799-fb2443f06fc1 | 357ae9be-8a60-8107-b5dd-e39e8a613c14 | 0 | 0 | Start No Earlier Than | Auto Scheduled | AMETEK SAP XXL Project Plan Replan MSP Task.csv | AMETEK SAP XXL Project Plan Replan MSP Task.csv__2f0764ccac__2026-05-05T02-44-15-662Z | Ric Haraida |  |  |  | Done | True  0 0 0 0 0 0 14 | Low 0 0 0 True | 2026-04-06 |  |  |  |
| 357ae9be-8a60-816f-a77b-fa436af9082d | 4440 | Post Load Validation | PTM | 1.2.5.2.47.6 | 1.2.5.2.47.6 | 2026-10-07 | 2026-10-07 | 2026-04-20 | 0 | 6 | 4434 | 1 | 0 | 357ae9be-8a60-815c-81a0-dfcc5e99da49 |  | -717.02 | 0 | As Soon As Possible | Auto Scheduled | AMETEK SAP XXL Project Plan Replan MSP Task.csv | AMETEK SAP XXL Project Plan Replan MSP Task.csv__2f0764ccac__2026-05-05T02-44-15-662Z | Eric Heisler | 170 | True |  | Not started | True  -717.02 0 0 0 0 0 20 | Negative Float, Open Finish Critical 3 0 0  |  |  |  |  |
| 357ae9be-8a60-816f-b748-e2dd56b3ed95 | 1051 | Pre Load Validation | PTP | 1.2.1.30.2 | 1.2.1.30.2 | 2026-04-15 | 2026-04-15 | 2026-04-15 | 100 | 5 | 937 | 1 | 1 | 357ae9be-8a60-8150-8fe8-cc0084906331 | 357ae9be-8a60-8192-8bdf-dfd213d023eb | 0 | 0 | As Soon As Possible | Auto Scheduled | AMETEK SAP XXL Project Plan Replan MSP Task.csv | AMETEK SAP XXL Project Plan Replan MSP Task.csv__2f0764ccac__2026-05-05T02-44-15-662Z | Nevin Varkey |  |  |  | Done | True  0 0 1 0 0 0 18 | Low 0 0 0  |  |  |  |  |
| 357ae9be-8a60-816f-b754-ca5bed645e5f | 3389 | Import Group 3 - prior to transactions | Development;PTM;Finance;PMO;Europe IT lead;OTC;TESTING | 1.1.1.8.2.5 | 1.1.1.8.2.5 | 2026-09-22 | 2026-09-22 | 2026-07-13 | 0 | 6 | 3384 | 1 | 1 | 357ae9be-8a60-8118-993f-ceeea0cb3239 | 357ae9be-8a60-818c-a647-fbf7124dde5d | -726.02 | 0 | As Soon As Possible | Auto Scheduled | AMETEK SAP XXL Project Plan Replan MSP Task.csv | AMETEK SAP XXL Project Plan Replan MSP Task.csv__2f0764ccac__2026-05-05T02-44-15-662Z | Bijoykrishna Das | 71 | True |  | Not started | True  -726.02 0 1 0 0 0 26 | Negative Float Critical 2 0 0  |  |  |  |  |
| 357ae9be-8a60-816f-bb63-ece5e94786fe | 2726 | Load | Data | 1.2.4.2.52.5 | 1.2.4.2.52.5 | 2026-10-02 | 2026-10-02 | 2026-04-10 | 0 | 6 | 2721 | 1 | 1 | 357ae9be-8a60-81c9-8aac-cdcd16198d69 | 357ae9be-8a60-81a1-b784-e78d81cb2ed2 | -694.5 | 0 | Start No Earlier Than | Auto Scheduled | AMETEK SAP XXL Project Plan Replan MSP Task.csv | AMETEK SAP XXL Project Plan Replan MSP Task.csv__2f0764ccac__2026-05-05T02-44-15-662Z | Jyoti Nain | 175 | True |  | Not started | True  -694.5 0 1 0 0 0 26 | Negative Float Critical 2 0 0 True | 2026-04-17 |  |  |  |
| 357ae9be-8a60-8170-824a-c76b536cc75e | 2664 | VC_Characteristics | (Unassigned) | 1.2.4.2.38 | 1.2.4.2.38 | 2026-09-24 | 2026-09-25 | 2026-04-07 | 0 | 5 | 2898 | 0 | 0 |  |  | -82.69 | 0 | As Soon As Possible | Auto Scheduled | AMETEK SAP XXL Project Plan Replan MSP Task.csv | AMETEK SAP XXL Project Plan Replan MSP Task.csv__2f0764ccac__2026-05-05T02-44-15-662Z | COULD NOT BE DETERMINED | 171 | True |  | Not started | True  -82.69 0 0 0 0 0 20 | Negative Float Critical 2 0 0  |  | 2665, 2666 | True |  |
| 357ae9be-8a60-8170-861b-eb0ee55681a7 | 3356 | Open Sales Orders(Manual) | (Unassigned) | 1.2.4.4.6 | 1.2.4.4.6 | 2026-10-09 | 2026-10-12 | 2026-10-12 | 0 | 5 | 3350 | 1 | 0 | 357ae9be-8a60-8192-a781-cd2922407469 |  | -40.16 | 0 | As Soon As Possible | Auto Scheduled | AMETEK SAP XXL Project Plan Replan MSP Task.csv | AMETEK SAP XXL Project Plan Replan MSP Task.csv__2f0764ccac__2026-05-05T02-44-15-662Z | COULD NOT BE DETERMINED |  |  |  | Not started | True  -40.16 0 0 0 0 0 12 | Negative Float, Open Finish Critical 3 0 0  |  |  |  |  |
| 357ae9be-8a60-8170-8855-d16fcd417c75 | 2494 | Load File Staged and Posted "Ready" | OTC | 1.2.4.2.13.1 | 1.2.4.2.13.1 | 2026-09-29 | 2026-09-29 | 2026-04-08 | 0 | 6 | 2493 | 1 | 1 | 357ae9be-8a60-814f-9909-dc7f6a9040f5 | 357ae9be-8a60-8125-970d-fc892cccb65b | -42990 | 0 | As Soon As Possible | Auto Scheduled | AMETEK SAP XXL Project Plan Replan MSP Task.csv | AMETEK SAP XXL Project Plan Replan MSP Task.csv__2f0764ccac__2026-05-05T02-44-15-662Z | Ric Haraida | 174 | True |  | Not started | True  -42990 0 1 0 0 0 26 | Wrong Dependency, Negative Float Critical 5 1 0  |  |  |  |  |

| id | uid | name | workstream | outlineNumber | wbs | start | finish | baselineFinish | pct | outlineLevel | parentUid | predCount | sucCount | predIds | sucIds | totalSlackDaysRaw | freeSlackDaysRaw | constraintType | taskMode | mspSourceFile | mspImportVersion | assignedTo | slipDays | isSlipped | isDue14 | status | cpm | scheduleQuality | constraintDate | childUids | isSummary |
| --- | --- | --- | --- | --- | --- | --- | --- | --- | --- | --- | --- | --- | --- | --- | --- | --- | --- | --- | --- | --- | --- | --- | --- | --- | --- | --- | --- | --- | --- | --- | --- |
| 357ae9be-8a60-8170-aa76-c9937833def6 | 4272 | Pre Load Validation | Finance | 1.2.5.2.18.2 | 1.2.5.2.18.2 | 2026-09-30 | 2026-10-01 | 2026-04-10 | 0 | 6 | 4270 | 1 | 1 | 357ae9be-8a60-815b-a5d7-f52b71d928c8 | 357ae9be-8a60-8138-a474-c96f1ccf6263 | -42046 | 0 | As Soon As Possible | Auto Scheduled | AMETEK SAP XXL Project Plan Replan MSP Task.csv | AMETEK SAP XXL Project Plan Replan MSP Task.csv__2f0764ccac__2026-05-05T02-44-15-662Z | Kasey Hughes | 174 | True |  | Not started | True  -42046 0 1 0 0 0 26 | Negative Float Critical 2 0 0  |  |  |  |
| 357ae9be-8a60-8170-bdfb-fedaf1a674e6 | 3239 | Manual File Staged and Posted "Ready" | PTM | 1.2.3.2.48.1 | 1.2.3.2.48.1 | 2026-06-17 | 2026-06-17 | 2026-04-17 | 0 | 6 | 3238 | 1 | 1 | 357ae9be-8a60-818d-b3b7-e81cfab2aacb | 357ae9be-8a60-8137-9a85-eb2bcbd520a8 | -11236 | 0 | As Soon As Possible | Auto Scheduled | AMETEK SAP XXL Project Plan Replan MSP Task.csv | AMETEK SAP XXL Project Plan Replan MSP Task.csv__2f0764ccac__2026-05-05T02-44-15-662Z | Eric Heisler | 61 | True |  | Not started | True  -11236 0 1 0 0 0 26 | Wrong Dependency, Negative Float Critical 5 1 0  |  |  |  |
| 357ae9be-8a60-8171-8829-eed06c41d87a | 3041 | Pre Load Validation | OTC | 1.2.3.2.14.2 | 1.2.3.2.14.2 | 2026-06-11 | 2026-06-11 | 2026-04-09 | 0 | 6 | 3039 | 1 | 0 | 357ae9be-8a60-8194-9ce2-ec55b328e578 |  | -8941 | 0 | As Soon As Possible | Auto Scheduled | AMETEK SAP XXL Project Plan Replan MSP Task.csv | AMETEK SAP XXL Project Plan Replan MSP Task.csv__2f0764ccac__2026-05-05T02-44-15-662Z | Ric Haraida | 63 | True |  | Not started | True  -8941 0 0 0 0 0 20 | Negative Float, Open Finish Critical 3 0 0  |  |  |  |
| 357ae9be-8a60-8171-8d09-c5b743683a84 | 1777 | Pre Load Validation | PTP | 1.2.2.2.15.2 | 1.2.2.2.15.2 | 2026-05-25 | 2026-05-25 | 2026-04-10 | 0 | 6 | 1775 | 1 | 1 | 357ae9be-8a60-81d3-86e6-eadfb7969d7a | 357ae9be-8a60-812c-8a2b-c7867ae1ecef | -76.52 | 0 | As Soon As Possible | Auto Scheduled | AMETEK SAP XXL Project Plan Replan MSP Task.csv | AMETEK SAP XXL Project Plan Replan MSP Task.csv__2f0764ccac__2026-05-05T02-44-15-662Z | Nevin Varkey | 45 | True |  | Not started | True  -76.52 0 1 0 0 0 26 | Wrong Successor, Negative Float Critical 5 0 1  |  |  |  |
| 357ae9be-8a60-8171-9374-ee1be1168ab7 | 3133 | Post Load Validation | PTP | 1.2.3.2.27.6 | 1.2.3.2.27.6 | 2026-06-08 | 2026-06-08 | 2026-04-15 | 0 | 6 | 3127 | 1 | 0 | 357ae9be-8a60-810a-b074-e99362abbfb2 |  | -125.52 | 0 | As Soon As Possible | Auto Scheduled | AMETEK SAP XXL Project Plan Replan MSP Task.csv | AMETEK SAP XXL Project Plan Replan MSP Task.csv__2f0764ccac__2026-05-05T02-44-15-662Z | Nevin Varkey | 54 | True |  | Not started | True  -125.52 0 0 0 0 0 20 | Negative Float, Open Finish Critical 3 0 0  |  |  |  |
| 357ae9be-8a60-8171-94ea-ed061f91237e | 2428 | RTR_CM03_Cost Center Hierarchy | (Unassigned) | 1.2.4.2.2 | 1.2.4.2.2 | 2026-09-24 | 2026-09-25 | 2026-04-07 | 0 | 5 | 2898 | 0 | 1 |  | 357ae9be-8a60-8145-9194-de4910f8b1a0 | -89.81 | 0 | As Soon As Possible | Auto Scheduled | AMETEK SAP XXL Project Plan Replan MSP Task.csv | AMETEK SAP XXL Project Plan Replan MSP Task.csv__2f0764ccac__2026-05-05T02-44-15-662Z | COULD NOT BE DETERMINED | 171 | True |  | Not started | True  -89.81 0 1 1 536 0 31 | Wrong Successor, Negative Float Critical 5 0 1  |  | 2430, 2431, 2429 | True |
| 357ae9be-8a60-8171-a18d-d5bc58fb0592 | 4193 | Post Load Validation | Finance | 1.2.5.2.5.6 | 1.2.5.2.5.6 | 2026-09-28 | 2026-09-29 | 2026-04-09 | 0 | 6 | 4187 | 1 | 0 | 357ae9be-8a60-8131-b2af-e48fa165536d |  | -665.52 | 0 | As Soon As Possible | Auto Scheduled | AMETEK SAP XXL Project Plan Replan MSP Task.csv | AMETEK SAP XXL Project Plan Replan MSP Task.csv__2f0764ccac__2026-05-05T02-44-15-662Z | Kasey Hughes | 173 | True |  | Not started | True  -665.52 0 0 0 0 0 20 | Negative Float, Open Finish Critical 3 0 0  |  |  |  |
| 357ae9be-8a60-8171-adbc-d8d313eb21f0 | 4318 | Pre Load Validation | PTP;OTC | 1.2.5.2.25.2 | 1.2.5.2.25.2 | 2026-09-28 | 2026-09-28 | 2026-04-14 | 0 | 6 | 4316 | 1 | 1 | 357ae9be-8a60-8198-9adc-d0022ff6b6a7 | 357ae9be-8a60-81ee-9dc1-cee50843cace | -40036 | 0 | As Soon As Possible | Auto Scheduled | AMETEK SAP XXL Project Plan Replan MSP Task.csv | AMETEK SAP XXL Project Plan Replan MSP Task.csv__2f0764ccac__2026-05-05T02-44-15-662Z | Nevin Varkey | 167 | True |  | Not started | True  -40036 0 1 0 0 0 26 | Negative Float Critical 2 0 0  |  |  |  |
| 357ae9be-8a60-8171-b015-f586e694fecc | 1850 | Error and Defect Mitigation | PTM | 1.2.2.2.26.4 | 1.2.2.2.26.4 | 2026-05-20 | 2026-05-20 | 2026-04-15 | 0 | 6 | 1846 | 1 | 1 | 357ae9be-8a60-81bc-8468-d3249e5e4458 | 357ae9be-8a60-816b-b66c-cc96cc70bb41 | -70.27 | 0 | As Soon As Possible | Auto Scheduled | AMETEK SAP XXL Project Plan Replan MSP Task.csv | AMETEK SAP XXL Project Plan Replan MSP Task.csv__2f0764ccac__2026-05-05T02-44-15-662Z | Eric Heisler | 35 | True | True | Not started | True  -70.27 0 1 0 0 0 26 | Negative Float Critical 2 0 0  |  |  |  |
| 357ae9be-8a60-8172-899a-e0ef70f22ab8 | 2518 | Load | Data | 1.2.4.2.15.5 | 1.2.4.2.15.5 | 2026-10-06 | 2026-10-07 | 2026-04-14 | 0 | 6 | 2513 | 1 | 1 | 357ae9be-8a60-8176-b0e0-dde154b09e8d | 357ae9be-8a60-814f-b82c-fec3d843586f | -718.5 | 0 | As Soon As Possible | Auto Scheduled | AMETEK SAP XXL Project Plan Replan MSP Task.csv | AMETEK SAP XXL Project Plan Replan MSP Task.csv__2f0764ccac__2026-05-05T02-44-15-662Z | Jyoti Nain | 176 | True |  | Not started | True  -718.5 0 1 0 0 0 26 | Negative Float Critical 2 0 0  |  |  |  |
| 357ae9be-8a60-8172-95d7-f08cb5837bec | 973 | Pre Load Validation | PTP | 1.2.1.16.2 | 1.2.1.16.2 | 2026-04-10 | 2026-04-10 | 2026-04-10 | 100 | 5 | 765 | 1 | 1 | 357ae9be-8a60-81cd-8a6c-cbc50bc14c08 | 357ae9be-8a60-81e9-8d3a-c6760459bab9 | 0 | 0 | As Soon As Possible | Auto Scheduled | AMETEK SAP XXL Project Plan Replan MSP Task.csv | AMETEK SAP XXL Project Plan Replan MSP Task.csv__2f0764ccac__2026-05-05T02-44-15-662Z | Nevin Varkey |  |  |  | Done | True  0 0 1 0 0 0 18 | Low 0 0 0  |  |  |  |
| 357ae9be-8a60-8172-a12a-f83e1215c838 | 2770 | Run report /SAPSLL/EMB_CNTRY_INIT | OTC | 1.2.4.2.65.1 | 1.2.4.2.65.1 | 2026-09-25 | 2026-09-25 | 2026-04-13 | 0 | 6 | 2769 | 1 | 1 | 357ae9be-8a60-81c3-813c-dbcdc8c6cceb | 357ae9be-8a60-8143-be8a-efd9c44d7895 | -653.5 | 0 | As Soon As Possible | Auto Scheduled | AMETEK SAP XXL Project Plan Replan MSP Task.csv | AMETEK SAP XXL Project Plan Replan MSP Task.csv__2f0764ccac__2026-05-05T02-44-15-662Z | James VanRiper | 165 | True |  | Not started | True  -653.5 0 1 0 0 0 26 | Negative Float Critical 2 0 0  |  |  |  |
| 357ae9be-8a60-8172-af25-c2cf0e81dc2a | 83 | Testing Complete | TESTING | 1.1.2.10.4.3 | 1.1.2.10.4.3 | 2025-03-13 | 2025-03-13 | 2025-03-13 | 100 | 6 | 68 | 0 | 0 |  |  | 0 | 0 | As Soon As Possible | Auto Scheduled | AMETEK SAP XXL Project Plan Replan MSP Task.csv | AMETEK SAP XXL Project Plan Replan MSP Task.csv__2f0764ccac__2026-05-05T02-44-15-662Z | Kishore Kakarla |  |  |  | Done | True  0 0 0 0 0 0 12 | Low 0 0 0  |  |  |  |
| 357ae9be-8a60-8172-b8b6-d7b5432aa17b | 2558 | Pre Load Validation | PTP;OTC | 1.2.4.2.22.2 | 1.2.4.2.22.2 | 2026-09-24 | 2026-09-24 | 2026-04-13 | 0 | 6 | 2556 | 1 | 1 | 357ae9be-8a60-8145-88c2-f27870c04ab9 | 357ae9be-8a60-815d-899d-e290e2af5de3 | -39210 | 0 | As Soon As Possible | Auto Scheduled | AMETEK SAP XXL Project Plan Replan MSP Task.csv | AMETEK SAP XXL Project Plan Replan MSP Task.csv__2f0764ccac__2026-05-05T02-44-15-662Z | Nevin Varkey | 164 | True |  | Not started | True  -39210 0 1 0 0 0 26 | Negative Float Critical 2 0 0  |  |  |  |
| 357ae9be-8a60-8172-ba47-ecdb909b1f4a | 853 | Client Config / Validation | Basis | 1.1.1.5.1.2 | 1.1.1.5.1.2 | 2026-04-27 | 2026-04-27 | 2026-05-11 | 100 | 6 | 3340 | 1 | 1 | 357ae9be-8a60-813c-b53e-d758eb3e8aaf | 357ae9be-8a60-81e2-8342-c839241aac90 | 0 | 0 | As Soon As Possible | Auto Scheduled | AMETEK SAP XXL Project Plan Replan MSP Task.csv | AMETEK SAP XXL Project Plan Replan MSP Task.csv__2f0764ccac__2026-05-05T02-44-15-662Z | Lokchetan Meghavath |  |  |  | Done | True  0 0 1 0 0 0 18 | Wrong Dependency High 3 1 0  |  |  |  |
| 357ae9be-8a60-8172-bbeb-ea59cce9fa87 | 4407 | Run ALE Transaction to QS5 from DS4 130 | PTM | 1.2.5.2.39.1 | 1.2.5.2.39.1 | 2026-09-25 | 2026-09-25 | 2026-04-07 | 0 | 6 | 4406 | 1 | 1 | 357ae9be-8a60-81b4-a15e-f2b53adaaab4 | 357ae9be-8a60-818f-8a11-f9d2f587053e | -661.52 | 0 | As Soon As Possible | Auto Scheduled | AMETEK SAP XXL Project Plan Replan MSP Task.csv | AMETEK SAP XXL Project Plan Replan MSP Task.csv__2f0764ccac__2026-05-05T02-44-15-662Z | Eric Heisler | 171 | True |  | Not started | True  -661.52 0 1 0 0 0 26 | Negative Float Critical 2 0 0  |  |  |  |
| 357ae9be-8a60-8172-bd33-c5cc52b05f77 | 1792 | Post Load Validation | PTP | 1.2.2.2.17.6 | 1.2.2.2.17.6 | 2026-05-28 | 2026-05-28 | 2026-04-13 | 0 | 6 | 1786 | 1 | 0 | 357ae9be-8a60-81b6-9b9b-f1b1488f39ff |  | -65.02 | 0 | As Soon As Possible | Auto Scheduled | AMETEK SAP XXL Project Plan Replan MSP Task.csv | AMETEK SAP XXL Project Plan Replan MSP Task.csv__2f0764ccac__2026-05-05T02-44-15-662Z | Nevin Varkey | 45 | True |  | Not started | True  -65.02 0 0 0 0 0 20 | Negative Float, Open Finish Critical 3 0 0  |  |  |  |
| 357ae9be-8a60-8172-beeb-f6c9e1ad92ad | 77 | Specs Completed | (Unassigned) | 1.1.2.10.3.1 | 1.1.2.10.3.1 | 2025-03-13 | 2025-03-13 | 2025-03-13 | 100 | 6 | 65 | 0 | 0 |  |  | 0 | 0 | As Soon As Possible | Auto Scheduled | AMETEK SAP XXL Project Plan Replan MSP Task.csv | AMETEK SAP XXL Project Plan Replan MSP Task.csv__2f0764ccac__2026-05-05T02-44-15-662Z | COULD NOT BE DETERMINED |  |  |  | Done | True  0 0 0 0 0 0 12 | Low 0 0 0  |  |  |  |
| 357ae9be-8a60-8173-8156-e15d77bd8d31 | 2707 | Manual File Staged and Posted "Ready" | OTC | 1.2.4.2.49.1 | 1.2.4.2.49.1 | 2026-10-07 | 2026-10-07 | 2026-04-20 | 0 | 6 | 2706 | 1 | 1 | 357ae9be-8a60-81b4-9a08-caf58c9aff37 | 357ae9be-8a60-8194-b402-c1ff5290da23 | -43560 | 0 | Start No Earlier Than | Auto Scheduled | AMETEK SAP XXL Project Plan Replan MSP Task.csv | AMETEK SAP XXL Project Plan Replan MSP Task.csv__2f0764ccac__2026-05-05T02-44-15-662Z | Ric Haraida | 170 | True |  | Not started | True  -43560 0 1 0 0 0 26 | Negative Float Critical 2 0 0 True | 2026-04-06 |  |  |
| 357ae9be-8a60-8173-85d2-ffceab2bc257 | 2535 | Error and Defect Mitigation | Finance | 1.2.4.2.18.4 | 1.2.4.2.18.4 | 2026-10-01 | 2026-10-01 | 2026-04-10 | 0 | 6 | 2531 | 1 | 1 | 357ae9be-8a60-818d-90a1-ed7101496413 | 357ae9be-8a60-8194-8b31-ebdfccfeb50e | -700.75 | 0 | As Soon As Possible | Auto Scheduled | AMETEK SAP XXL Project Plan Replan MSP Task.csv | AMETEK SAP XXL Project Plan Replan MSP Task.csv__2f0764ccac__2026-05-05T02-44-15-662Z | Kasey Hughes | 174 | True |  | Not started | True  -700.75 0 1 1 542 0 31 | Wrong Successor, Negative Float Critical 5 0 1  |  |  |  |
| 357ae9be-8a60-8173-8708-cc60de47cf76 | 1865 | Load | Data | 1.2.2.2.28.5 | 1.2.2.2.28.5 | 2026-05-21 | 2026-05-22 | 2026-04-16 | 0 | 6 | 1860 | 1 | 1 | 357ae9be-8a60-8108-ae01-ffbbdc191886 | 357ae9be-8a60-815b-93ad-fb2b5893d830 | -34.27 | 0 | As Soon As Possible | Auto Scheduled | AMETEK SAP XXL Project Plan Replan MSP Task.csv | AMETEK SAP XXL Project Plan Replan MSP Task.csv__2f0764ccac__2026-05-05T02-44-15-662Z | Jyoti Nain | 36 | True |  | Not started | True  -34.27 0 1 0 0 0 26 | Negative Float Critical 2 0 0  |  |  |  |
| 357ae9be-8a60-8173-89df-e5f5848be953 | 3004 | Load File Staged and Posted "Ready" | Finance | 1.2.3.2.8.1 | 1.2.3.2.8.1 | 2026-06-09 | 2026-06-09 | 2026-04-07 | 0 | 6 | 3003 | 1 | 1 | 357ae9be-8a60-8177-a79b-f1bbe8d82d00 | 357ae9be-8a60-81a8-9319-f276d3dadefe | -140.52 | 0 | As Soon As Possible | Auto Scheduled | AMETEK SAP XXL Project Plan Replan MSP Task.csv | AMETEK SAP XXL Project Plan Replan MSP Task.csv__2f0764ccac__2026-05-05T02-44-15-662Z | Kasey Hughes | 63 | True |  | Not started | True  -140.52 0 1 0 0 0 26 | Wrong Dependency, Negative Float Critical 5 1 0  |  |  |  |
| 357ae9be-8a60-8173-a126-ec5c11b80de0 | 1136 | Error and Defect Mitigation | PTM | 1.2.1.55.4 | 1.2.1.55.4 | 2026-04-16 | 2026-04-16 | 2026-04-16 | 100 | 5 | 715 | 1 | 1 | 357ae9be-8a60-8114-9ddd-c9ed98d76f10 | 357ae9be-8a60-8145-8cfc-ffe1928bbe0d | 0 | 0 | As Soon As Possible | Auto Scheduled | AMETEK SAP XXL Project Plan Replan MSP Task.csv | AMETEK SAP XXL Project Plan Replan MSP Task.csv__2f0764ccac__2026-05-05T02-44-15-662Z | Brad Meseck |  |  |  | Done | True  0 0 1 0 0 0 18 | Low 0 0 0  |  |  |  |
| 357ae9be-8a60-8173-a225-fa38f6783e1b | 2661 | VC_Object Dependencies | (Unassigned) | 1.2.4.2.37 | 1.2.4.2.37 | 2026-09-24 | 2026-09-24 | 2026-04-06 | 0 | 5 | 2898 | 0 | 0 |  |  | -82.69 | 0 | As Soon As Possible | Auto Scheduled | AMETEK SAP XXL Project Plan Replan MSP Task.csv | AMETEK SAP XXL Project Plan Replan MSP Task.csv__2f0764ccac__2026-05-05T02-44-15-662Z | COULD NOT BE DETERMINED | 171 | True |  | Not started | True  -82.69 0 0 0 0 0 20 | Negative Float Critical 2 0 0  |  | 2662, 2663 | True |
| 357ae9be-8a60-8173-a309-f25314369f9f | 3392 | Import Group 5 - Config to support dev workbench | Development | 1.1.1.8.2.8 | 1.1.1.8.2.8 | 2026-09-23 | 2026-09-23 | 2026-07-15 | 0 | 6 | 3384 | 1 | 1 | 357ae9be-8a60-81aa-9825-d99fa03138a1 | 357ae9be-8a60-81ce-a502-febace550237 | -726.02 | 0 | As Soon As Possible | Auto Scheduled | AMETEK SAP XXL Project Plan Replan MSP Task.csv | AMETEK SAP XXL Project Plan Replan MSP Task.csv__2f0764ccac__2026-05-05T02-44-15-662Z | Bijoykrishna Das | 70 | True |  | Not started | True  -726.02 0 1 0 0 0 26 | Negative Float Critical 2 0 0  |  |  |  |
| 357ae9be-8a60-8173-bd4d-d87d8f989ace | 1773 | Update number range BP02 from Internal to External | OTC | 1.2.2.2.14.8 | 1.2.2.2.14.8 | 2026-05-21 | 2026-05-21 | 2026-04-09 | 0 | 6 | 1765 | 1 | 1 | 357ae9be-8a60-817f-ae06-d0bd95dce1f6 | 357ae9be-8a60-8191-b54d-fcc8a2a3e0cd | -1786 | 0 | As Soon As Possible | Auto Scheduled | AMETEK SAP XXL Project Plan Replan MSP Task.csv | AMETEK SAP XXL Project Plan Replan MSP Task.csv__2f0764ccac__2026-05-05T02-44-15-662Z | Ric Haraida | 42 | True |  | Not started | True  -1786 0 1 0 0 0 26 | Negative Float Critical 2 0 0  |  |  |  |
| 357ae9be-8a60-8174-8c84-c35ad925910e | 1243 | Extend GL to all Company Codes | Finance | 1.2.1.4.7 | 1.2.1.4.7 | 2026-04-08 | 2026-04-09 | 2026-04-09 | 100 | 5 | 740 | 1 | 1 | 357ae9be-8a60-8122-937d-cf575dce70be | 357ae9be-8a60-811b-8aa8-d8f1d117000c | 0 | 0 | As Soon As Possible | Auto Scheduled | AMETEK SAP XXL Project Plan Replan MSP Task.csv | AMETEK SAP XXL Project Plan Replan MSP Task.csv__2f0764ccac__2026-05-05T02-44-15-662Z | Kasey Hughes |  |  |  | Done | True  0 0 1 0 0 0 18 | Wrong Dependency High 3 1 0  |  |  |  |
| 357ae9be-8a60-8174-90b9-f9f0b93f1546 | 830 | Change Request to NS2 | Basis | 1.1.1.4.1 | 1.1.1.4.1 | 2025-03-13 | 2025-03-13 | 2025-03-13 | 100 | 5 | 88 | 0 | 0 |  |  | 0 | 0 | As Soon As Possible | Auto Scheduled | AMETEK SAP XXL Project Plan Replan MSP Task.csv | AMETEK SAP XXL Project Plan Replan MSP Task.csv__2f0764ccac__2026-05-05T02-44-15-662Z | Lokchetan Meghavath |  |  |  | Done | True  0 0 0 0 0 0 12 | Low 0 0 0  |  |  |  |
| 357ae9be-8a60-8174-94e3-e3250f915d20 | 710 | PTM_CM35_Inspection Plan | PTM | 1.2.1.35 | 1.2.1.35 | 2026-04-21 | 2026-04-22 | 2026-04-20 | 100 | 4 | 425 | 0 | 0 |  |  | 0 | 0 | As Soon As Possible | Auto Scheduled | AMETEK SAP XXL Project Plan Replan MSP Task.csv | AMETEK SAP XXL Project Plan Replan MSP Task.csv__2f0764ccac__2026-05-05T02-44-15-662Z | Brad Meseck |  |  |  | Done | True  0 0 0 0 0 0 12 | Low 0 0 0  |  | 1092, 1091, 1089, 1088, 1093, 1090 | True |
| 357ae9be-8a60-8174-964d-efd5d68137ea | 763 | OTC_CM19_Customer_Master - Ship-To | OTC | 1.2.1.14 | 1.2.1.14 | 2026-04-08 | 2026-04-10 | 2026-04-13 | 100 | 4 | 425 | 1 | 1 | 357ae9be-8a60-8149-9a16-d25122eefa27 | 357ae9be-8a60-8181-8191-e719cc7d6851 | 0 | 0 | As Soon As Possible | Auto Scheduled | AMETEK SAP XXL Project Plan Replan MSP Task.csv | AMETEK SAP XXL Project Plan Replan MSP Task.csv__2f0764ccac__2026-05-05T02-44-15-662Z | Anitha Jothi |  |  |  | Done | True  0 0 1 1 2 1 23 | Low 0 0 0  |  | 824, 1232, 827, 826, 825, 1231, 1233, 828, 823 | True |
| 357ae9be-8a60-8174-a2dc-c58e95f8bdd9 | 3331 | Open AR | (Unassigned) | 1.2.3.4.2 | 1.2.3.4.2 | 2026-06-22 | 2026-06-22 | 2026-06-22 | 0 | 5 | 3326 | 1 | 1 | 357ae9be-8a60-812b-99d2-f7a1aa058a4c | 357ae9be-8a60-8140-9156-f5d93ee23e66 | -196.52 | 0 | As Soon As Possible | Auto Scheduled | AMETEK SAP XXL Project Plan Replan MSP Task.csv | AMETEK SAP XXL Project Plan Replan MSP Task.csv__2f0764ccac__2026-05-05T02-44-15-662Z | COULD NOT BE DETERMINED |  |  |  | Not started | True  -196.52 0 1 0 0 0 18 | Wrong Dependency, Negative Float Critical 5 1 0  |  |  |  |
| 357ae9be-8a60-8174-a6a6-ccad5369af93 | 4233 | Load File Staged and Posted "Ready" | OTC | 1.2.5.2.13.1 | 1.2.5.2.13.1 | 2026-09-29 | 2026-09-29 | 2026-04-08 | 0 | 6 | 4232 | 1 | 1 | 357ae9be-8a60-817f-ac30-d49da3420dd8 | 357ae9be-8a60-81d0-ba9b-fac3ecf31398 | -42991 | 0 | As Soon As Possible | Auto Scheduled | AMETEK SAP XXL Project Plan Replan MSP Task.csv | AMETEK SAP XXL Project Plan Replan MSP Task.csv__2f0764ccac__2026-05-05T02-44-15-662Z | Ric Haraida | 174 | True |  | Not started | True  -42991 0 1 0 0 0 26 | Negative Float Critical 2 0 0  |  |  |  |
| 357ae9be-8a60-8174-b2fe-c8bd76346ecd | 989 | Simulate Load | Data | 1.2.1.18.3 | 1.2.1.18.3 | 2026-04-10 | 2026-04-10 | 2026-04-10 | 100 | 5 | 766 | 2 | 1 | 357ae9be-8a60-8194-a81d-d5498b21f1e0, 357ae9be-8a60-813a-8c88-f03f957c1587 | 357ae9be-8a60-8198-aa92-f625c92ab0ec | 0 | 0 | As Soon As Possible | Auto Scheduled | AMETEK SAP XXL Project Plan Replan MSP Task.csv | AMETEK SAP XXL Project Plan Replan MSP Task.csv__2f0764ccac__2026-05-05T02-44-15-662Z | Jyoti Nain |  |  |  | Done | True  0 0 0 0 0 1 14 | Low 0 0 0  |  |  |  |
| 357ae9be-8a60-8175-84a0-f6ecf6feb7e8 | 4533 | Open AR | (Unassigned) | 1.2.5.4.2 | 1.2.5.4.2 | 2026-10-01 | 2026-10-02 | 2026-10-02 | 0 | 5 | 4531 | 1 | 1 | 357ae9be-8a60-816c-a955-f517ebe8c18c | 357ae9be-8a60-81e5-9b57-dd6babfdd484 | -280.77 | 0 | As Soon As Possible | Auto Scheduled | AMETEK SAP XXL Project Plan Replan MSP Task.csv | AMETEK SAP XXL Project Plan Replan MSP Task.csv__2f0764ccac__2026-05-05T02-44-15-662Z | COULD NOT BE DETERMINED |  |  |  | Not started | True  -280.77 0 1 0 0 0 18 | Negative Float Critical 2 0 0  |  |  |  |
| 357ae9be-8a60-8175-8cf7-fe9fa0651108 | 2964 | RTR_CM03_Cost Center Hierarchy | (Unassigned) | 1.2.3.2.2 | 1.2.3.2.2 | 2026-06-09 | 2026-06-09 | 2026-04-07 | 0 | 5 | 2959 | 0 | 3 |  | 357ae9be-8a60-816c-ad9a-cf035f1ccd99, 357ae9be-8a60-8145-abcf-ead9952da254, 357ae9be-8a60-812a-927c-ec4a7b08404c | -24.56 | 0 | As Soon As Possible | Auto Scheduled | AMETEK SAP XXL Project Plan Replan MSP Task.csv | AMETEK SAP XXL Project Plan Replan MSP Task.csv__2f0764ccac__2026-05-05T02-44-15-662Z | COULD NOT BE DETERMINED | 63 | True |  | Not started | True  -24.56 0 3 3 535 0 43 | Wrong Successor, Negative Float Critical 5 0 3  |  | 2967, 2966, 2965 | True |
| 357ae9be-8a60-8175-910f-dade95c57ddd | 1910 | Load File Staged and Posted "Ready" | PTM | 1.2.2.2.35.1 | 1.2.2.2.35.1 | 2026-05-25 | 2026-05-25 | 2026-04-17 | 0 | 6 | 1909 | 1 | 1 | 357ae9be-8a60-81de-a5fb-e7ecf7da5267 | 357ae9be-8a60-8102-810b-ffb76e852364 | -3226 | 0 | As Soon As Possible | Auto Scheduled | AMETEK SAP XXL Project Plan Replan MSP Task.csv | AMETEK SAP XXL Project Plan Replan MSP Task.csv__2f0764ccac__2026-05-05T02-44-15-662Z | Brad Meseck | 38 | True |  | Not started | True  -3226 0 1 0 0 0 26 | Wrong Dependency, Negative Float Critical 5 1 0  |  |  |  |
| 357ae9be-8a60-8175-93b5-f63dc74484b8 | 1869 | Pre Load Validation | PTP | 1.2.2.2.29.2 | 1.2.2.2.29.2 | 2026-05-21 | 2026-05-21 | 2026-04-15 | 0 | 6 | 1867 | 1 | 1 | 357ae9be-8a60-81d4-bba3-c7b09227d12b | 357ae9be-8a60-8190-a12b-da3a9cac7964 | -4216 | 0 | As Soon As Possible | Auto Scheduled | AMETEK SAP XXL Project Plan Replan MSP Task.csv | AMETEK SAP XXL Project Plan Replan MSP Task.csv__2f0764ccac__2026-05-05T02-44-15-662Z | Nevin Varkey | 36 | True |  | Not started | True  -4216 0 1 0 0 0 26 | Negative Float Critical 2 0 0  |  |  |  |
| 357ae9be-8a60-8175-9626-ebacde7180e2 | 3234 | Simulate Load | Data | 1.2.3.2.47.3 | 1.2.3.2.47.3 | 2026-06-15 | 2026-06-16 | 2026-04-17 | 0 | 6 | 3231 | 1 | 1 | 357ae9be-8a60-811e-84fc-c1cccc854af7 | 357ae9be-8a60-8129-8416-f2cfae7deb32 | -187.27 | 0 | As Soon As Possible | Auto Scheduled | AMETEK SAP XXL Project Plan Replan MSP Task.csv | AMETEK SAP XXL Project Plan Replan MSP Task.csv__2f0764ccac__2026-05-05T02-44-15-662Z | Jyoti Nain | 60 | True |  | Not started | True  -187.27 0 1 0 0 0 26 | Negative Float Critical 2 0 0  |  |  |  |
| 357ae9be-8a60-8175-9bc5-d3ee8da00162 | 1297 | Fiori App Activation | Development | 1.1.1.6.1.11 | 1.1.1.6.1.11 | 2026-05-22 | 2026-05-22 | 2026-05-19 | 0 | 6 | 3339 | 1 | 1 | 357ae9be-8a60-8100-8dcc-dbb8060e4ac9 | 357ae9be-8a60-8191-a47a-df196e181f29 | -241.52 | 0 | As Soon As Possible | Auto Scheduled | AMETEK SAP XXL Project Plan Replan MSP Task.csv | AMETEK SAP XXL Project Plan Replan MSP Task.csv__2f0764ccac__2026-05-05T02-44-15-662Z | Bijoykrishna Das | 3 | True |  | Not started | True  -241.52 0 1 0 0 0 26 | Negative Float Critical 2 0 0  |  |  |  |
| 357ae9be-8a60-8175-af6e-d692bd9fa4ab | 1703 | RTR_CM05_Profit_Center | (Unassigned) | 1.2.2.2.4 | 1.2.2.2.4 | 2026-05-19 | 2026-05-20 | 2026-04-07 | 0 | 5 | 2800 | 0 | 0 |  |  | -7.94 | 0 | As Soon As Possible | Auto Scheduled | AMETEK SAP XXL Project Plan Replan MSP Task.csv | AMETEK SAP XXL Project Plan Replan MSP Task.csv__2f0764ccac__2026-05-05T02-44-15-662Z | COULD NOT BE DETERMINED | 43 | True | True | Not started | True  -7.94 0 0 0 0 0 20 | Negative Float High 2 0 0  |  | 1709, 1707, 1708, 1704, 1706, 1705 | True |
| 357ae9be-8a60-8176-9f03-d9a3072ad486 | 4284 | PTP_CM27_Vendor Master - Mass Maintenance - LFA1-WERKR | PTP | 1.2.5.2.20 | 1.2.5.2.20 | 2026-09-24 | 2026-09-24 | 2026-04-15 | 0 | 5 | 4162 | 0 | 0 |  |  | -81.69 | 0 | As Soon As Possible | Auto Scheduled | AMETEK SAP XXL Project Plan Replan MSP Task.csv | AMETEK SAP XXL Project Plan Replan MSP Task.csv__2f0764ccac__2026-05-05T02-44-15-662Z | Muniraju Surappachari | 162 | True |  | Not started | True  -81.69 0 0 0 0 0 20 | Negative Float Critical 2 0 0  |  | 4285, 4286, 4289, 4288, 4287, 4290 | True |
| 357ae9be-8a60-8176-a0fd-c38e449f8c7d | 2608 | Simulate Load | Data | 1.2.4.2.29.3 | 1.2.4.2.29.3 | 2026-09-29 | 2026-09-29 | 2026-04-16 | 0 | 6 | 2605 | 1 | 2 | 357ae9be-8a60-81e1-bf74-c4732c9e6224 | 357ae9be-8a60-81bf-bd43-c94da4989471, 357ae9be-8a60-81da-8aea-f14b75b5a5d3 | -712.25 | 0 | As Soon As Possible | Auto Scheduled | AMETEK SAP XXL Project Plan Replan MSP Task.csv | AMETEK SAP XXL Project Plan Replan MSP Task.csv__2f0764ccac__2026-05-05T02-44-15-662Z | Jyoti Nain | 166 | True |  | Not started | True  -712.25 0 2 2 715 0 37 | Wrong Successor, Negative Float Critical 5 0 2  |  |  |  |
| 357ae9be-8a60-8176-b0e0-dde154b09e8d | 2517 | Error and Defect Mitigation | PTP | 1.2.4.2.15.4 | 1.2.4.2.15.4 | 2026-10-02 | 2026-10-06 | 2026-04-14 | 0 | 6 | 2513 | 1 | 1 | 357ae9be-8a60-81d6-a791-e5766a44b129 | 357ae9be-8a60-8172-899a-e0ef70f22ab8 | -718.5 | 0 | As Soon As Possible | Auto Scheduled | AMETEK SAP XXL Project Plan Replan MSP Task.csv | AMETEK SAP XXL Project Plan Replan MSP Task.csv__2f0764ccac__2026-05-05T02-44-15-662Z | Nevin Varkey | 175 | True |  | Not started | True  -718.5 0 1 0 0 0 26 | Negative Float Critical 2 0 0  |  |  |  |
| 357ae9be-8a60-8176-b9f0-d0737a2c422c | 1062 | Extract File | Data | 1.2.1.32.1 | 1.2.1.32.1 | 2026-04-16 | 2026-04-16 | 2026-04-16 | 100 | 5 | 695 | 1 | 1 | 357ae9be-8a60-8130-88eb-ce801b94b7af | 357ae9be-8a60-81ec-8a8b-c4d81b51fbfb | 0 | 0 | As Soon As Possible | Auto Scheduled | AMETEK SAP XXL Project Plan Replan MSP Task.csv | AMETEK SAP XXL Project Plan Replan MSP Task.csv__2f0764ccac__2026-05-05T02-44-15-662Z | Jyoti Nain |  |  |  | Done | True  0 0 1 0 0 0 18 | Wrong Dependency High 3 1 0  |  |  |  |
| 357ae9be-8a60-8176-baef-ee9da430e290 | 876 | Create Migration Data Project in DMC | Data | 1.1.1.5.3.2 | 1.1.1.5.3.2 | 2026-05-14 | 2026-05-14 | 2026-05-28 | 0 | 6 | 1226 | 1 | 1 | 357ae9be-8a60-8142-893f-c75618e34291 | 357ae9be-8a60-81f2-ace4-d2324c0b7816 | -65.52 | 0 | As Soon As Possible | Auto Scheduled | AMETEK SAP XXL Project Plan Replan MSP Task.csv | AMETEK SAP XXL Project Plan Replan MSP Task.csv__2f0764ccac__2026-05-05T02-44-15-662Z | Jyoti Nain |  |  | True | Not started | True  -65.52 0 1 0 0 0 18 | Negative Float Critical 2 0 0  |  |  |  |
| 357ae9be-8a60-8176-be0a-e672e3348137 | 925 | Test Kickoff | PMO | 1.3.3.8.5 | 1.3.3.8.5 | 2026-08-17 | 2026-08-17 | 2026-08-06 | 0 | 5 | 22 | 1 | 1 | 357ae9be-8a60-8116-ab4e-dd9324687cda | 357ae9be-8a60-81dc-bde3-d618436406b1 | -355 | 0 | Must Start On | Auto Scheduled | AMETEK SAP XXL Project Plan Replan MSP Task.csv | AMETEK SAP XXL Project Plan Replan MSP Task.csv__2f0764ccac__2026-05-05T02-44-15-662Z | Renee DiTullio | 11 | True |  | Not started | True  -355 0 1 0 0 1 26 | Negative Float Critical 2 0 0 True | 2026-08-17 |  |  |
| 357ae9be-8a60-8177-8032-e09301b657ed | 75 | Testing Complete | TESTING | 1.1.2.10.2.3 | 1.1.2.10.2.3 | 2025-03-13 | 2025-03-13 | 2025-03-13 | 100 | 6 | 62 | 0 | 0 |  |  | 0 | 0 | As Soon As Possible | Auto Scheduled | AMETEK SAP XXL Project Plan Replan MSP Task.csv | AMETEK SAP XXL Project Plan Replan MSP Task.csv__2f0764ccac__2026-05-05T02-44-15-662Z | Kishore Kakarla |  |  |  | Done | True  0 0 0 0 0 0 12 | Low 0 0 0  |  |  |  |
| 357ae9be-8a60-8177-8091-ec25c346ff35 | 3107 | Extract File | Data | 1.2.3.2.24.1 | 1.2.3.2.24.1 | 2026-06-08 | 2026-06-09 | 2026-04-13 | 0 | 6 | 3106 | 1 | 0 | 357ae9be-8a60-81c1-9add-ec09fa3dbaac |  | -127.27 | 0 | As Soon As Possible | Auto Scheduled | AMETEK SAP XXL Project Plan Replan MSP Task.csv | AMETEK SAP XXL Project Plan Replan MSP Task.csv__2f0764ccac__2026-05-05T02-44-15-662Z | Jyoti Nain | 57 | True |  | Not started | True  -127.27 0 0 0 0 0 20 | Wrong Dependency, Negative Float, Open Finish Critical 6 1 0  |  |  |  |
| 357ae9be-8a60-8177-9595-eb74156de19a | 2589 | Load | Data | 1.2.4.2.26.5 | 1.2.4.2.26.5 | 2026-09-28 | 2026-09-28 | 2026-04-15 | 0 | 6 | 2584 | 1 | 1 | 357ae9be-8a60-81d4-8f95-eb0bf0dc09fb | 357ae9be-8a60-81d8-b3a1-c0e88fdfae1f | -726 | 0 | As Soon As Possible | Auto Scheduled | AMETEK SAP XXL Project Plan Replan MSP Task.csv | AMETEK SAP XXL Project Plan Replan MSP Task.csv__2f0764ccac__2026-05-05T02-44-15-662Z | Jyoti Nain | 166 | True |  | Not started | True  -726 0 1 0 0 0 26 | Negative Float Critical 2 0 0  |  |  |  |
| 357ae9be-8a60-8177-9ed9-ef1dd4b3beee | 4297 | Pre Load Validation | PTP;OTC | 1.2.5.2.22.2 | 1.2.5.2.22.2 | 2026-09-24 | 2026-09-24 | 2026-04-13 | 0 | 6 | 4295 | 1 | 1 | 357ae9be-8a60-81da-baab-cafe7d1f1a8f | 357ae9be-8a60-81cf-967c-e3879f0970ff | -39211 | 0 | As Soon As Possible | Auto Scheduled | AMETEK SAP XXL Project Plan Replan MSP Task.csv | AMETEK SAP XXL Project Plan Replan MSP Task.csv__2f0764ccac__2026-05-05T02-44-15-662Z | Nevin Varkey | 164 | True |  | Not started | True  -39211 0 1 0 0 0 26 | Negative Float Critical 2 0 0  |  |  |  |
| 357ae9be-8a60-8177-a098-e443c737773f | 987 | Extract File | Data | 1.2.1.18.1 | 1.2.1.18.1 | 2026-04-10 | 2026-04-10 | 2026-04-10 | 100 | 5 | 766 | 1 | 2 | 357ae9be-8a60-81a9-a799-fb2443f06fc1 | 357ae9be-8a60-8194-a81d-d5498b21f1e0, 357ae9be-8a60-8181-a902-f5385ade7cb8 | 0 | 0 | As Soon As Possible | Auto Scheduled | AMETEK SAP XXL Project Plan Replan MSP Task.csv | AMETEK SAP XXL Project Plan Replan MSP Task.csv__2f0764ccac__2026-05-05T02-44-15-662Z | Jyoti Nain |  |  |  | Done | True  0 0 2 0 0 0 24 | Low 0 0 0  |  |  |  |
| 357ae9be-8a60-8177-a79b-f1bbe8d82d00 | 2967 | Post Load Validation | Finance | 1.2.3.2.2.3 | 1.2.3.2.2.3 | 2026-06-09 | 2026-06-09 | 2026-04-07 | 0 | 6 | 2964 | 1 | 2 | 357ae9be-8a60-819b-a215-cd3ad5a03e0f | 357ae9be-8a60-816c-ad9a-cf035f1ccd99, 357ae9be-8a60-815e-8e37-f3c99ebbbaec | -196.52 | 0 | As Soon As Possible | Auto Scheduled | AMETEK SAP XXL Project Plan Replan MSP Task.csv | AMETEK SAP XXL Project Plan Replan MSP Task.csv__2f0764ccac__2026-05-05T02-44-15-662Z | Kasey Hughes | 63 | True |  | Not started | True  -196.52 0 2 2 485 0 37 | Wrong Successor, Negative Float Critical 5 0 2  |  |  |  |
| 357ae9be-8a60-8177-a98a-ce740e88ed29 | 4393 | PTM_CM48_Equipment_Master_Service | PTM | 1.2.5.2.36 | 1.2.5.2.36 | 2026-09-24 | 2026-10-02 | 2026-04-21 | 0 | 5 | 4162 | 0 | 0 |  |  | -86.97 | 0 | As Soon As Possible | Auto Scheduled | AMETEK SAP XXL Project Plan Replan MSP Task.csv | AMETEK SAP XXL Project Plan Replan MSP Task.csv__2f0764ccac__2026-05-05T02-44-15-662Z | Brad Meseck | 164 | True |  | Not started | True  -86.97 0 0 0 0 0 20 | Negative Float Critical 2 0 0  |  | 4395, 4394, 4398, 4399, 4396, 4397 | True |
| 357ae9be-8a60-8177-b228-f674811f4308 | 2731 | Post Load Validation | PTM | 1.2.4.2.53.3 | 1.2.4.2.53.3 | 2026-09-29 | 2026-10-01 | 2026-04-16 | 0 | 6 | 2728 | 1 | 0 | 357ae9be-8a60-8188-8010-c7439fc80ab3 |  | -688.75 | 0 | Finish No Earlier Than | Auto Scheduled | AMETEK SAP XXL Project Plan Replan MSP Task.csv | AMETEK SAP XXL Project Plan Replan MSP Task.csv__2f0764ccac__2026-05-05T02-44-15-662Z | Brad Meseck | 168 | True |  | Not started | True  -688.75 0 0 0 0 0 20 | Negative Float, Open Finish Critical 3 0 0 True | 2026-04-20 |  |  |
| 357ae9be-8a60-8177-b359-c354c25608bc | 4379 | PTM_CM35_Inspection Plan | PTM | 1.2.5.2.34 | 1.2.5.2.34 | 2026-09-30 | 2026-10-02 | 2026-04-20 | 0 | 5 | 4162 | 0 | 0 |  |  | -86.97 | 0 | As Soon As Possible | Auto Scheduled | AMETEK SAP XXL Project Plan Replan MSP Task.csv | AMETEK SAP XXL Project Plan Replan MSP Task.csv__2f0764ccac__2026-05-05T02-44-15-662Z | Brad Meseck | 165 | True |  | Not started | True  -86.97 0 0 0 0 0 20 | Negative Float Critical 2 0 0  |  | 4380, 4383, 4384, 4385, 4381, 4382 | True |
| 357ae9be-8a60-8178-893d-d8eafd27c514 | 4362 | Error and Defect Mitigation | PTM | 1.2.5.2.31.4 | 1.2.5.2.31.4 | 2026-10-02 | 2026-10-02 | 2026-04-17 | 0 | 6 | 4358 | 1 | 1 | 357ae9be-8a60-81f5-bd58-cd925c50c7af | 357ae9be-8a60-814b-a4d3-df52309ee439 | -700.39 | 0 | As Soon As Possible | Auto Scheduled | AMETEK SAP XXL Project Plan Replan MSP Task.csv | AMETEK SAP XXL Project Plan Replan MSP Task.csv__2f0764ccac__2026-05-05T02-44-15-662Z | Brad Meseck | 168 | True |  | Not started | True  -700.39 0 1 0 0 0 26 | Negative Float Critical 2 0 0  |  |  |  |
| 357ae9be-8a60-8178-a829-e92cfc3d21d2 | 220 | Publish Training Materials to SP/LMS | Training | 1.4.1.1.7 | 1.4.1.1.7 | 2026-08-31 | 2026-09-07 | 2026-08-10 | 0 | 5 | 216 | 1 | 0 | 357ae9be-8a60-811f-8c92-cfb2c88118f5 |  | 45 | 45 | Finish No Earlier Than | Auto Scheduled | AMETEK SAP XXL Project Plan Replan MSP Task.csv | AMETEK SAP XXL Project Plan Replan MSP Task.csv__2f0764ccac__2026-05-05T02-44-15-662Z | Karen Zalnis | 28 | True |  | Not started |   45 45 0 0 0 0 8 | Open Finish Medium 1 0 0 True | 2026-08-28 |  |  |
| 357ae9be-8a60-8178-ab79-d4cac8b2cc3d | 844 | FICO | (Unassigned) | 1.3.1.1 | 1.3.1.1 | 2026-05-04 | 2026-05-29 | 2026-05-22 | 3 | 4 | 843 | 0 | 0 |  |  | 116 | 116 | As Soon As Possible | Auto Scheduled | AMETEK SAP XXL Project Plan Replan MSP Task.csv | AMETEK SAP XXL Project Plan Replan MSP Task.csv__2f0764ccac__2026-05-05T02-44-15-662Z | COULD NOT BE DETERMINED | 7 | True |  | Not started |   116 116 0 0 0 0 8 | Open Start, Open Finish Medium 2 0 0  |  |  |  |
| 357ae9be-8a60-8178-b1f6-f869bc288b6e | 2554 | Load | Finance | 1.2.4.2.21.2 | 1.2.4.2.21.2 | 2026-10-02 | 2026-10-02 | 2026-04-13 | 0 | 6 | 2552 | 1 | 1 | 357ae9be-8a60-81a2-8ca5-d23c802c0264 | 357ae9be-8a60-810c-b6ec-c614044f2851 | -699.75 | 0 | As Soon As Possible | Auto Scheduled | AMETEK SAP XXL Project Plan Replan MSP Task.csv | AMETEK SAP XXL Project Plan Replan MSP Task.csv__2f0764ccac__2026-05-05T02-44-15-662Z | Kasey Hughes | 172 | True |  | Not started | True  -699.75 0 1 0 0 0 26 | Wrong Dependency, Negative Float Critical 5 1 0  |  |  |  |
| 357ae9be-8a60-8178-b56f-e81fbac20a4e | 1802 | Pre Load Validation | PTP | 1.2.2.2.19.2 | 1.2.2.2.19.2 | 2026-05-25 | 2026-05-25 | 2026-04-10 | 0 | 6 | 1800 | 1 | 1 | 357ae9be-8a60-8115-a4ba-c80ebd485f2f | 357ae9be-8a60-816a-9c88-f091a77453d9 | -49.77 | 0 | As Soon As Possible | Auto Scheduled | AMETEK SAP XXL Project Plan Replan MSP Task.csv | AMETEK SAP XXL Project Plan Replan MSP Task.csv__2f0764ccac__2026-05-05T02-44-15-662Z | Nevin Varkey | 45 | True |  | Not started | True  -49.77 0 1 0 0 0 26 | Negative Float Critical 2 0 0  |  |  |  |
| 357ae9be-8a60-8178-be83-e2f18afdb588 | 281 | Prepare/Share the Ruleset Draft with all the functional leads for inputs | (Unassigned) | 1.1.2.4.3 | 1.1.2.4.3 | 2025-09-17 | 2025-09-24 | 2025-09-24 | 100 | 5 | 267 | 1 | 1 | 357ae9be-8a60-8129-858a-d04f4c744c5c | 357ae9be-8a60-81ab-be7c-e62d6fc7bc76 | 0 | 0 | As Soon As Possible | Auto Scheduled | AMETEK SAP XXL Project Plan Replan MSP Task.csv | AMETEK SAP XXL Project Plan Replan MSP Task.csv__2f0764ccac__2026-05-05T02-44-15-662Z | COULD NOT BE DETERMINED |  |  |  | Done | True  0 0 1 0 0 0 18 | Low 0 0 0  |  |  |  |
| 357ae9be-8a60-8179-8966-e9366ede534c | 4528 | Post Load Validation | Finance | 1.2.5.2.68.6 | 1.2.5.2.68.6 | 2026-09-24 | 2026-09-25 | 2026-04-17 | 0 | 6 | 4522 | 1 | 0 | 357ae9be-8a60-81a7-9cdc-c03fa59eac86 |  | -651.52 | 0 | As Soon As Possible | Auto Scheduled | AMETEK SAP XXL Project Plan Replan MSP Task.csv | AMETEK SAP XXL Project Plan Replan MSP Task.csv__2f0764ccac__2026-05-05T02-44-15-662Z | Kasey Hughes | 161 | True |  | Not started | True  -651.52 0 0 0 0 0 20 | Negative Float, Open Finish Critical 3 0 0  |  |  |  |
| 357ae9be-8a60-8179-8ca8-ddbf65713903 | 1168 | Run ALE Transaction to QS5 from DS4 130 | PTM | 1.2.1.46.1 | 1.2.1.46.1 | 2026-04-17 | 2026-04-20 | 2026-04-16 | 100 | 5 | 946 | 1 | 1 | 357ae9be-8a60-81c0-9714-cbf76c5b0677 | 357ae9be-8a60-8165-81b8-dade2b73c0fa | 0 | 0 | Finish No Earlier Than | Auto Scheduled | AMETEK SAP XXL Project Plan Replan MSP Task.csv | AMETEK SAP XXL Project Plan Replan MSP Task.csv__2f0764ccac__2026-05-05T02-44-15-662Z | Eric Heisler |  |  |  | Done | True  0 0 1 0 0 0 18 | Wrong Dependency High 3 1 0 True | 2026-04-17 |  |  |
| 357ae9be-8a60-8179-91ef-cc35ec714e1f | 1726 | Error and Defect Mitigation | Finance | 1.2.2.2.7.4 | 1.2.2.2.7.4 | 2026-05-22 | 2026-05-22 | 2026-04-09 | 0 | 6 | 1722 | 1 | 1 | 357ae9be-8a60-8132-a904-e3948a3b082a | 357ae9be-8a60-81c5-9a11-c820c15a1e93 | -38.02 | 0 | As Soon As Possible | Auto Scheduled | AMETEK SAP XXL Project Plan Replan MSP Task.csv | AMETEK SAP XXL Project Plan Replan MSP Task.csv__2f0764ccac__2026-05-05T02-44-15-662Z | Kasey Hughes | 43 | True |  | Not started | True  -38.02 0 1 0 0 0 26 | Negative Float Critical 2 0 0  |  |  |  |
| 357ae9be-8a60-8179-9b45-e1f8f495ccb7 | 3301 | Post Load Validation | OTC | 1.2.3.2.63.2 | 1.2.3.2.63.2 | 2026-06-18 | 2026-06-19 | 2026-04-16 | 0 | 6 | 3299 | 1 | 0 | 357ae9be-8a60-810e-9543-c436e324efc4 |  | -190.27 | 0 | As Soon As Possible | Auto Scheduled | AMETEK SAP XXL Project Plan Replan MSP Task.csv | AMETEK SAP XXL Project Plan Replan MSP Task.csv__2f0764ccac__2026-05-05T02-44-15-662Z | James VanRiper | 64 | True |  | Not started | True  -190.27 0 0 0 0 0 20 | Negative Float, Open Finish Critical 3 0 0  |  |  |  |
| 357ae9be-8a60-8179-a42e-f4475e9fe31e | 1893 | Load | Data | 1.2.2.2.32.5 | 1.2.2.2.32.5 | 2026-05-27 | 2026-05-27 | 2026-04-20 | 0 | 6 | 1888 | 1 | 1 | 357ae9be-8a60-8163-a675-fe2bede6e7eb | 357ae9be-8a60-81da-b4c3-e05641eb458b | -62.39 | 0 | As Soon As Possible | Auto Scheduled | AMETEK SAP XXL Project Plan Replan MSP Task.csv | AMETEK SAP XXL Project Plan Replan MSP Task.csv__2f0764ccac__2026-05-05T02-44-15-662Z | Jyoti Nain | 37 | True |  | Not started | True  -62.39 0 1 0 0 0 26 | Negative Float Critical 2 0 0  |  |  |  |
| 357ae9be-8a60-8179-a775-d5d9355ea241 | 3104 | Load | Data | 1.2.3.2.23.5 | 1.2.3.2.23.5 | 2026-06-08 | 2026-06-08 | 2026-04-14 | 0 | 6 | 3099 | 1 | 2 | 357ae9be-8a60-81a1-8251-c199d31f13c7 | 357ae9be-8a60-81e4-ad85-f3407bb2ec98, 357ae9be-8a60-8166-8560-db211999bb9a | -128.02 | 0 | As Soon As Possible | Auto Scheduled | AMETEK SAP XXL Project Plan Replan MSP Task.csv | AMETEK SAP XXL Project Plan Replan MSP Task.csv__2f0764ccac__2026-05-05T02-44-15-662Z | Jyoti Nain | 55 | True |  | Not started | True  -128.02 0 2 2 742 0 37 | Wrong Successor, Negative Float Critical 5 0 2  |  |  |  |
| 357ae9be-8a60-8179-bede-cc837cf2f539 | 1041 | Error and Defect Mitigation | PTP | 1.2.1.28.4 | 1.2.1.28.4 | 2026-04-17 | 2026-04-17 | 2026-04-16 | 100 | 5 | 703 | 1 | 0 | 357ae9be-8a60-8137-9aa6-dc07a32cec9d |  | 0 | 0 | Start No Earlier Than | Auto Scheduled | AMETEK SAP XXL Project Plan Replan MSP Task.csv | AMETEK SAP XXL Project Plan Replan MSP Task.csv__2f0764ccac__2026-05-05T02-44-15-662Z | Nevin Varkey |  |  |  | Done | True  0 0 0 0 0 0 12 | Low 0 0 0 True | 2026-04-17 |  |  |
| 357ae9be-8a60-817a-8b67-c89a7dff18e5 | 2487 | Post Load Validation | Finance | 1.2.4.2.10.6 | 1.2.4.2.10.6 | 2026-09-25 | 2026-09-28 | 2026-04-10 | 0 | 6 | 2481 | 1 | 0 | 357ae9be-8a60-81c8-a940-dd913ea00426 |  | -658.5 | 0 | As Soon As Possible | Auto Scheduled | AMETEK SAP XXL Project Plan Replan MSP Task.csv | AMETEK SAP XXL Project Plan Replan MSP Task.csv__2f0764ccac__2026-05-05T02-44-15-662Z | Kasey Hughes | 171 | True |  | Not started | True  -658.5 0 0 0 0 0 20 | Negative Float, Open Finish Critical 3 0 0  |  |  |  |
| 357ae9be-8a60-817a-8cd9-c02de6f3e77b | 2013 | GTS - ECCN - Assign | (Unassigned) | 1.2.2.2.59 | 1.2.2.2.59 | 2026-05-25 | 2026-05-26 | 2026-04-16 | 0 | 5 | 2800 | 0 | 0 |  |  | -8.78 | 0 | As Soon As Possible | Auto Scheduled | AMETEK SAP XXL Project Plan Replan MSP Task.csv | AMETEK SAP XXL Project Plan Replan MSP Task.csv__2f0764ccac__2026-05-05T02-44-15-662Z | COULD NOT BE DETERMINED | 40 | True |  | Not started | True  -8.78 0 0 0 0 0 20 | Negative Float High 2 0 0  |  | 2014, 2015 | True |

| id | uid | name | workstream | outlineNumber | wbs | start | finish | baselineFinish | pct | outlineLevel | parentUid | predCount | sucCount | predIds | sucIds | totalSlackDaysRaw | freeSlackDaysRaw | constraintType | taskMode | mspSourceFile | mspImportVersion | assignedTo | slipDays | isSlipped | isDue14 | status | cpm | scheduleQuality | constraintDate | childUids | isSummary |
| --- | --- | --- | --- | --- | --- | --- | --- | --- | --- | --- | --- | --- | --- | --- | --- | --- | --- | --- | --- | --- | --- | --- | --- | --- | --- | --- | --- | --- | --- | --- | --- |
| 357ae9be-8a60-817a-8cfb-ef1a68f2b7b5 | 3096 | Error and Defect Mitigation | PTP;OTC | 1.2.3.2.22.4 | 1.2.3.2.22.4 | 2026-06-08 | 2026-06-09 | 2026-04-13 | 0 | 6 | 3092 | 1 | 1 | 357ae9be-8a60-81b5-a3d7-c805460f451d | 357ae9be-8a60-812a-b365-f66486aec910 | -131.52 | 0 | As Soon As Possible | Auto Scheduled | AMETEK SAP XXL Project Plan Replan MSP Task.csv | AMETEK SAP XXL Project Plan Replan MSP Task.csv__2f0764ccac__2026-05-05T02-44-15-662Z | Nevin Varkey | 57 | True |  | Not started | True  -131.52 0 1 0 0 0 26 | Negative Float Critical 2 0 0  |  |  |  |
| 357ae9be-8a60-817a-9851-f38ed06724af | 4341 | Error and Defect Mitigation | PTP | 1.2.5.2.28.4 | 1.2.5.2.28.4 | 2026-09-29 | 2026-09-29 | 2026-04-16 | 0 | 6 | 4337 | 1 | 1 | 357ae9be-8a60-81fb-b292-fa6330c3db5c | 357ae9be-8a60-816e-860f-ec09e9d611a3 | -676.27 | 0 | As Soon As Possible | Auto Scheduled | AMETEK SAP XXL Project Plan Replan MSP Task.csv | AMETEK SAP XXL Project Plan Replan MSP Task.csv__2f0764ccac__2026-05-05T02-44-15-662Z | Nevin Varkey | 166 | True |  | Not started | True  -676.27 0 1 0 0 0 26 | Negative Float Critical 2 0 0  |  |  |  |
| 357ae9be-8a60-817a-9c00-c835b155be49 | 3105 | Post Load Validation | PTP;OTC | 1.2.3.2.23.6 | 1.2.3.2.23.6 | 2026-06-08 | 2026-06-09 | 2026-04-14 | 0 | 6 | 3099 | 1 | 0 | 357ae9be-8a60-8179-a775-d5d9355ea241 |  | -128.02 | 0 | As Soon As Possible | Auto Scheduled | AMETEK SAP XXL Project Plan Replan MSP Task.csv | AMETEK SAP XXL Project Plan Replan MSP Task.csv__2f0764ccac__2026-05-05T02-44-15-662Z | Nevin Varkey | 56 | True |  | Not started | True  -128.02 0 0 0 0 0 20 | Wrong Dependency, Negative Float, Open Finish Critical 6 1 0  |  |  |  |
| 357ae9be-8a60-817a-9c2a-c6c4850767bd | 2044 | Post Load Validation | Finance | 1.2.2.2.67.6 | 1.2.2.2.67.6 | 2026-05-19 | 2026-05-19 | 2026-04-17 | 0 | 6 | 2038 | 1 | 0 | 357ae9be-8a60-81a5-8e25-ce4e922f987d |  | -9.02 | 0 | As Soon As Possible | Auto Scheduled | AMETEK SAP XXL Project Plan Replan MSP Task.csv | AMETEK SAP XXL Project Plan Replan MSP Task.csv__2f0764ccac__2026-05-05T02-44-15-662Z | Kasey Hughes | 32 | True | True | Not started | True  -9.02 0 0 0 0 0 20 | Negative Float, Open Finish High 3 0 0  |  |  |  |
| 357ae9be-8a60-817a-9c9c-ebab91fc7869 | 1707 | Error and Defect Mitigation | Finance | 1.2.2.2.4.4 | 1.2.2.2.4.4 | 2026-05-19 | 2026-05-19 | 2026-04-07 | 0 | 6 | 1703 | 1 | 1 | 357ae9be-8a60-81d7-8686-ec107d5296e5 | 357ae9be-8a60-81af-89dd-d525f332804f | -63.52 | 0 | As Soon As Possible | Auto Scheduled | AMETEK SAP XXL Project Plan Replan MSP Task.csv | AMETEK SAP XXL Project Plan Replan MSP Task.csv__2f0764ccac__2026-05-05T02-44-15-662Z | Kasey Hughes | 42 | True | True | Not started | True  -63.52 0 1 0 0 0 26 | Negative Float Critical 2 0 0  |  |  |  |
| 357ae9be-8a60-817a-a425-eff75cc6b30b | 291 | Issue resolution | (Unassigned) | 1.1.2.7.7 | 1.1.2.7.7 | 2026-07-03 | 2026-07-16 | 2026-01-23 | 0 | 5 | 278 | 1 | 1 | 357ae9be-8a60-815e-99c5-fbdcba258fb0 | 357ae9be-8a60-817c-b996-df6f26f27ab2 | 68 | 0 | Start No Earlier Than | Auto Scheduled | AMETEK SAP XXL Project Plan Replan MSP Task.csv | AMETEK SAP XXL Project Plan Replan MSP Task.csv__2f0764ccac__2026-05-05T02-44-15-662Z | COULD NOT BE DETERMINED | 174 | True |  | Not started | True  68 0 1 0 0 0 26 | Low 0 0 0 True | 2026-04-30 |  |  |
| 357ae9be-8a60-817a-aba1-dd35162a9ee7 | 4338 | Load File Staged and Posted "Ready" | PTP | 1.2.5.2.28.1 | 1.2.5.2.28.1 | 2026-09-29 | 2026-09-29 | 2026-04-15 | 0 | 6 | 4337 | 2 | 1 | 357ae9be-8a60-815a-88f7-ce4ab477ce7a, 357ae9be-8a60-8183-a0d2-d2ac8860e8c6 | 357ae9be-8a60-8188-b7bc-c33b3ce957d1 | -40576 | 0 | As Soon As Possible | Auto Scheduled | AMETEK SAP XXL Project Plan Replan MSP Task.csv | AMETEK SAP XXL Project Plan Replan MSP Task.csv__2f0764ccac__2026-05-05T02-44-15-662Z | Nevin Varkey | 167 | True |  | Not started | True  -40576 0 1 0 0 0 26 | Negative Float Critical 2 0 0  |  |  |  |
| 357ae9be-8a60-817a-afe8-e5e3801fb7e8 | 1759 | Update number range BP02 from Internal to External | OTC | 1.2.2.2.13.4 | 1.2.2.2.13.4 | 2026-05-21 | 2026-05-21 | 2026-04-10 | 0 | 6 | 1755 | 1 | 1 | 357ae9be-8a60-81bf-88b4-de4f088a3648 | 357ae9be-8a60-81e8-b9c4-c6b40b9071e7 | -1756 | 0 | As Soon As Possible | Auto Scheduled | AMETEK SAP XXL Project Plan Replan MSP Task.csv | AMETEK SAP XXL Project Plan Replan MSP Task.csv__2f0764ccac__2026-05-05T02-44-15-662Z | Ric Haraida | 41 | True |  | Not started | True  -1756 0 1 0 0 0 26 | Negative Float Critical 2 0 0  |  |  |  |
| 357ae9be-8a60-817a-bd23-fe36762be0f9 | 2622 | Simulate Load | Data | 1.2.4.2.31.3 | 1.2.4.2.31.3 | 2026-10-02 | 2026-10-02 | 2026-04-17 | 0 | 6 | 2619 | 1 | 1 | 357ae9be-8a60-81ce-8ed6-e0e738718238 | 357ae9be-8a60-81e3-bd35-e40878ae49c2 | -700.38 | 0 | As Soon As Possible | Auto Scheduled | AMETEK SAP XXL Project Plan Replan MSP Task.csv | AMETEK SAP XXL Project Plan Replan MSP Task.csv__2f0764ccac__2026-05-05T02-44-15-662Z | Jyoti Nain | 168 | True |  | Not started | True  -700.38 0 1 0 0 0 26 | Negative Float Critical 2 0 0  |  |  |  |
| 357ae9be-8a60-817b-8265-e02e7dcf908e | 3146 | Load | Data | 1.2.3.2.29.5 | 1.2.3.2.29.5 | 2026-06-11 | 2026-06-12 | 2026-04-16 | 0 | 6 | 3141 | 1 | 1 | 357ae9be-8a60-8110-a770-f45be745f892 | 357ae9be-8a60-81f0-ab65-cf422c7f0541 | -154.27 | 0 | As Soon As Possible | Auto Scheduled | AMETEK SAP XXL Project Plan Replan MSP Task.csv | AMETEK SAP XXL Project Plan Replan MSP Task.csv__2f0764ccac__2026-05-05T02-44-15-662Z | Jyoti Nain | 57 | True |  | Not started | True  -154.27 0 1 0 0 0 26 | Negative Float Critical 2 0 0  |  |  |  |
| 357ae9be-8a60-817b-950b-fe5a0d8ff63f | 1245 | PTP_CM27_BP_Intercompany Customer | PTP | 1.2.1.24 | 1.2.1.24 | 2026-04-13 | 2026-04-14 | 2026-04-14 | 100 | 4 | 425 | 1 | 1 | 357ae9be-8a60-815e-8e37-f3c99ebbbaec | 357ae9be-8a60-8151-ad6b-ee1d3da18424 | 0 | 0 | As Soon As Possible | Auto Scheduled | AMETEK SAP XXL Project Plan Replan MSP Task.csv | AMETEK SAP XXL Project Plan Replan MSP Task.csv__2f0764ccac__2026-05-05T02-44-15-662Z | Muniraju Surappachari |  |  |  | Done | True  0 0 1 1 4 0 23 | Low 0 0 0  |  | 1249, 1246, 1251, 1247, 1248, 1250 | True |
| 357ae9be-8a60-817b-ad1e-de699978a427 | 4402 | Post Load Validation | PTM | 1.2.5.2.37.2 | 1.2.5.2.37.2 | 2026-09-24 | 2026-09-24 | 2026-04-06 | 0 | 6 | 4400 | 1 | 1 | 357ae9be-8a60-81b1-8511-e3c1bcc62876 | 357ae9be-8a60-81d1-85f5-fea66247f689 | -661.52 | 0 | As Soon As Possible | Auto Scheduled | AMETEK SAP XXL Project Plan Replan MSP Task.csv | AMETEK SAP XXL Project Plan Replan MSP Task.csv__2f0764ccac__2026-05-05T02-44-15-662Z | Eric Heisler | 171 | True |  | Not started | True  -661.52 0 1 0 0 0 26 | Negative Float Critical 2 0 0  |  |  |  |
| 357ae9be-8a60-817b-afc9-f3ac047438ed | 2684 | Post Load Validation | PTM | 1.2.4.2.44.2 | 1.2.4.2.44.2 | 2026-09-30 | 2026-10-01 | 2026-04-17 | 0 | 6 | 2682 | 1 | 0 | 357ae9be-8a60-81ea-844f-c9305591ceef |  | -682.25 | 0 | As Soon As Possible | Auto Scheduled | AMETEK SAP XXL Project Plan Replan MSP Task.csv | AMETEK SAP XXL Project Plan Replan MSP Task.csv__2f0764ccac__2026-05-05T02-44-15-662Z | Eric Heisler | 167 | True |  | Not started | True  -682.25 0 0 0 0 0 20 | Negative Float, Open Finish Critical 3 0 0  |  |  |  |
| 357ae9be-8a60-817b-b2e2-d24c86d733ad | 3079 | Load | Data | 1.2.3.2.19.5 | 1.2.3.2.19.5 | 2026-06-08 | 2026-06-08 | 2026-04-14 | 0 | 6 | 3074 | 0 | 1 |  | 357ae9be-8a60-81d2-837d-fa4d8a880bdd | -190.27 | 0 | As Soon As Possible | Auto Scheduled | AMETEK SAP XXL Project Plan Replan MSP Task.csv | AMETEK SAP XXL Project Plan Replan MSP Task.csv__2f0764ccac__2026-05-05T02-44-15-662Z | Jyoti Nain | 55 | True |  | Not started | True  -190.27 0 1 0 0 0 26 | Negative Float, Open Start Critical 3 0 0  |  |  |  |
| 357ae9be-8a60-817b-bb07-dd68aa343bb9 | 4372 | PTM_CM36_Production Version Conversion | PTM | 1.2.5.2.33 | 1.2.5.2.33 | 2026-09-29 | 2026-09-30 | 2026-04-17 | 0 | 5 | 4162 | 0 | 0 |  |  | -86.97 | 0 | As Soon As Possible | Auto Scheduled | AMETEK SAP XXL Project Plan Replan MSP Task.csv | AMETEK SAP XXL Project Plan Replan MSP Task.csv__2f0764ccac__2026-05-05T02-44-15-662Z | Brad Meseck | 166 | True |  | Not started | True  -86.97 0 0 0 0 0 20 | Negative Float Critical 2 0 0  |  | 4375, 4374, 4376, 4373, 4377, 4378 | True |
| 357ae9be-8a60-817b-bfe7-e05c80450247 | 57 | In Draft | (Unassigned) | 1.1.2.9.1.1.1 | 1.1.2.9.1.1.1 | 2025-06-16 | 2025-07-15 | 2025-07-15 | 100 | 7 | 56 | 0 | 0 |  |  | 0 | 0 | Finish No Earlier Than | Auto Scheduled | AMETEK SAP XXL Project Plan Replan MSP Task.csv | AMETEK SAP XXL Project Plan Replan MSP Task.csv__2f0764ccac__2026-05-05T02-44-15-662Z | COULD NOT BE DETERMINED |  |  |  | Done | True  0 0 0 0 0 0 12 | Low 0 0 0 True | 2025-07-15 |  |  |
| 357ae9be-8a60-817c-8829-e85066f1b742 | 3026 | Load | Finance | 1.2.3.2.11.2 | 1.2.3.2.11.2 | 2026-06-11 | 2026-06-12 | 2026-04-15 | 0 | 6 | 3024 | 1 | 1 | 357ae9be-8a60-8157-9876-ce52a930067b | 357ae9be-8a60-819a-b347-c4ddecd86ece | -158.52 | 0 | As Soon As Possible | Auto Scheduled | AMETEK SAP XXL Project Plan Replan MSP Task.csv | AMETEK SAP XXL Project Plan Replan MSP Task.csv__2f0764ccac__2026-05-05T02-44-15-662Z | Kasey Hughes | 58 | True |  | Not started | True  -158.52 0 1 0 0 0 26 | Negative Float Critical 2 0 0  |  |  |  |
| 357ae9be-8a60-817c-895b-e3b547a648dc | 3072 | Load | Data | 1.2.3.2.18.5 | 1.2.3.2.18.5 | 2026-06-15 | 2026-06-16 | 2026-04-10 | 0 | 6 | 3067 | 1 | 1 | 357ae9be-8a60-81d8-afd4-df5816aa9545 | 357ae9be-8a60-8184-a2dd-e06846377ce6 | -178.77 | 0 | As Soon As Possible | Auto Scheduled | AMETEK SAP XXL Project Plan Replan MSP Task.csv | AMETEK SAP XXL Project Plan Replan MSP Task.csv__2f0764ccac__2026-05-05T02-44-15-662Z | Jyoti Nain | 67 | True |  | Not started | True  -178.77 0 1 0 0 0 26 | Wrong Dependency, Negative Float Critical 5 1 0  |  |  |  |
| 357ae9be-8a60-817c-a0c9-f09c8601bf07 | 669 | Dev Environment Release from SAP | (Unassigned) | 1.1.1.4.2 | 1.1.1.4.2 | 2026-01-08 | 2026-01-08 | 2026-01-08 | 100 | 5 | 88 | 0 | 1 |  | 357ae9be-8a60-8180-a627-ebef5a0c2655 | 0 | 0 | Start No Earlier Than | Auto Scheduled | AMETEK SAP XXL Project Plan Replan MSP Task.csv | AMETEK SAP XXL Project Plan Replan MSP Task.csv__2f0764ccac__2026-05-05T02-44-15-662Z | NS2 |  |  |  | Done | True  0 0 1 0 0 0 18 | Low 0 0 0 True | 2026-01-08 |  |  |
| 357ae9be-8a60-817c-a0de-c30deff2d949 | 698 | GTS - ECCN - Create | (Unassigned) | 1.2.1.59 | 1.2.1.59 | 2026-04-06 | 2026-04-13 | 2026-04-13 | 100 | 4 | 425 | 0 | 0 |  |  | 0 | 0 | As Soon As Possible | Auto Scheduled | AMETEK SAP XXL Project Plan Replan MSP Task.csv | AMETEK SAP XXL Project Plan Replan MSP Task.csv__2f0764ccac__2026-05-05T02-44-15-662Z | COULD NOT BE DETERMINED |  |  |  | Done | True  0 0 0 0 0 0 12 | Low 0 0 0  |  | 1179, 1178 | True |
| 357ae9be-8a60-817c-a312-c693daa64b6e | 2431 | Post Load Validation | Finance | 1.2.4.2.2.3 | 1.2.4.2.2.3 | 2026-09-25 | 2026-09-25 | 2026-04-07 | 0 | 6 | 2428 | 1 | 1 | 357ae9be-8a60-8166-ac69-e0fd549061d9 | 357ae9be-8a60-8145-9194-de4910f8b1a0 | -718.5 | 0 | As Soon As Possible | Auto Scheduled | AMETEK SAP XXL Project Plan Replan MSP Task.csv | AMETEK SAP XXL Project Plan Replan MSP Task.csv__2f0764ccac__2026-05-05T02-44-15-662Z | Kasey Hughes | 171 | True |  | Not started | True  -718.5 0 1 1 536 0 31 | Wrong Successor, Negative Float Critical 5 0 1  |  |  |  |
| 357ae9be-8a60-817c-b996-df6f26f27ab2 | 292 | End-user training | Training | 1.1.2.7.8 | 1.1.2.7.8 | 2026-07-17 | 2026-07-24 | 2026-02-02 | 0 | 5 | 278 | 1 | 1 | 357ae9be-8a60-817a-a425-eff75cc6b30b | 357ae9be-8a60-81cd-81d1-c0de95ecfbcb | 68 | 0 | Start No Earlier Than | Auto Scheduled | AMETEK SAP XXL Project Plan Replan MSP Task.csv | AMETEK SAP XXL Project Plan Replan MSP Task.csv__2f0764ccac__2026-05-05T02-44-15-662Z | Karen Zalnis | 172 | True |  | Not started | True  68 0 0 0 0 0 22 | Low 0 0 0 True | 2026-04-30 |  |  |
| 357ae9be-8a60-817c-bd6e-d059f9655056 | 955 | GTS - SPL (Sanctioned party list) | (Unassigned) | 1.2.1.67 | 1.2.1.67 | 2026-04-16 | 2026-04-16 | 2026-04-16 | 100 | 4 | 425 | 0 | 0 |  |  | 0 | 0 | As Soon As Possible | Auto Scheduled | AMETEK SAP XXL Project Plan Replan MSP Task.csv | AMETEK SAP XXL Project Plan Replan MSP Task.csv__2f0764ccac__2026-05-05T02-44-15-662Z | COULD NOT BE DETERMINED |  |  |  | Done | True  0 0 0 0 0 0 12 | Low 0 0 0  |  | 1188, 1189 | True |
| 357ae9be-8a60-817d-89d2-c8d88343aa7c | 2477 | Simulate Load | Data | 1.2.4.2.9.3 | 1.2.4.2.9.3 | 2026-09-24 | 2026-09-24 | 2026-04-09 | 0 | 6 | 2474 | 0 | 1 |  | 357ae9be-8a60-81d2-9961-cea0bf8d4c47 | -690.5 | 0 | Start No Earlier Than | Auto Scheduled | AMETEK SAP XXL Project Plan Replan MSP Task.csv | AMETEK SAP XXL Project Plan Replan MSP Task.csv__2f0764ccac__2026-05-05T02-44-15-662Z | Jyoti Nain | 168 | True |  | Not started | True  -690.5 0 1 0 0 0 26 | Negative Float, Open Start Critical 3 0 0 True | 2026-04-15 |  |  |
| 357ae9be-8a60-817d-8c66-d73c1a869d3c | 252 | Project plan finalization | (Unassigned) | 1.1.2.1.4 | 1.1.2.1.4 | 2026-02-16 | 2026-02-17 | 2026-02-17 | 100 | 5 | 299 | 0 | 1 |  | 357ae9be-8a60-81c5-84f1-c75ccee56860 | 0 | 0 | Start No Earlier Than | Auto Scheduled | AMETEK SAP XXL Project Plan Replan MSP Task.csv | AMETEK SAP XXL Project Plan Replan MSP Task.csv__2f0764ccac__2026-05-05T02-44-15-662Z | COULD NOT BE DETERMINED |  |  |  | Done | True  0 0 1 0 0 0 18 | Low 0 0 0 True | 2026-02-16 |  |  |
| 357ae9be-8a60-817d-8f7d-deb5d8bc2b17 | 4508 | Initialize Embargo situation | (Unassigned) | 1.2.5.2.65 | 1.2.5.2.65 | 2026-09-25 | 2026-09-25 | 2026-04-14 | 0 | 5 | 4162 | 0 | 0 |  |  | -81.69 | 0 | As Soon As Possible | Auto Scheduled | AMETEK SAP XXL Project Plan Replan MSP Task.csv | AMETEK SAP XXL Project Plan Replan MSP Task.csv__2f0764ccac__2026-05-05T02-44-15-662Z | COULD NOT BE DETERMINED | 164 | True |  | Not started | True  -81.69 0 0 0 0 0 20 | Negative Float Critical 2 0 0  |  | 4509, 4511, 4510 | True |
| 357ae9be-8a60-817d-912f-d0e22c220708 | 3016 | Post Load Validation | Finance | 1.2.3.2.9.6 | 1.2.3.2.9.6 | 2026-06-09 | 2026-06-09 | 2026-04-09 | 0 | 6 | 3010 | 1 | 0 | 357ae9be-8a60-8131-b8ae-e7b2519f4dca |  | -168.52 | 0 | As Soon As Possible | Auto Scheduled | AMETEK SAP XXL Project Plan Replan MSP Task.csv | AMETEK SAP XXL Project Plan Replan MSP Task.csv__2f0764ccac__2026-05-05T02-44-15-662Z | Kasey Hughes | 61 | True |  | Not started | True  -168.52 0 0 0 0 0 20 | Wrong Dependency, Negative Float, Open Finish Critical 6 1 0  |  |  |  |
| 357ae9be-8a60-817d-9392-eebffc048abf | 1751 | Manual File Staged and Posted "Ready" | Finance | 1.2.2.2.11.1 | 1.2.2.2.11.1 | 2026-05-21 | 2026-05-21 | 2026-04-14 | 0 | 6 | 1750 | 1 | 1 | 357ae9be-8a60-812a-8ff8-e70b785cc280 | 357ae9be-8a60-813c-a514-f4b73a3a715d | -2311 | 0 | As Soon As Possible | Auto Scheduled | AMETEK SAP XXL Project Plan Replan MSP Task.csv | AMETEK SAP XXL Project Plan Replan MSP Task.csv__2f0764ccac__2026-05-05T02-44-15-662Z | Kasey Hughes | 37 | True |  | Not started | True  -2311 0 1 0 0 0 26 | Wrong Dependency, Negative Float Critical 5 1 0  |  |  |  |
| 357ae9be-8a60-817d-9950-fe4ef1fd243e | 1834 | Pre Load Validation | PTP;OTC | 1.2.2.2.24.2 | 1.2.2.2.24.2 | 2026-05-18 | 2026-05-19 | 2026-04-14 | 0 | 6 | 1832 | 1 | 1 | 357ae9be-8a60-81a6-975b-ed9ff06b79f5 | 357ae9be-8a60-8116-a1a3-f6ac1693be49 | -70.27 | 0 | As Soon As Possible | Auto Scheduled | AMETEK SAP XXL Project Plan Replan MSP Task.csv | AMETEK SAP XXL Project Plan Replan MSP Task.csv__2f0764ccac__2026-05-05T02-44-15-662Z | Nevin Varkey | 35 | True | True | Not started | True  -70.27 0 1 0 0 0 26 | Wrong Dependency, Negative Float Critical 5 1 0  |  |  |  |
| 357ae9be-8a60-817d-9ff6-c59e3efb8777 | 2026 | Load | OTC | 1.2.2.2.63.1 | 1.2.2.2.63.1 | 2026-05-26 | 2026-05-28 | 2026-04-16 | 0 | 6 | 2025 | 1 | 1 | 357ae9be-8a60-81eb-b634-ff1d74677f47 | 357ae9be-8a60-81b0-8751-d8d632a9bade | -70.27 | 0 | As Soon As Possible | Auto Scheduled | AMETEK SAP XXL Project Plan Replan MSP Task.csv | AMETEK SAP XXL Project Plan Replan MSP Task.csv__2f0764ccac__2026-05-05T02-44-15-662Z | James VanRiper | 42 | True |  | Not started | True  -70.27 0 1 0 0 0 26 | Wrong Dependency, Negative Float Critical 5 1 0  |  |  |  |
| 357ae9be-8a60-817d-b258-ef9b07b323f1 | 3091 | Post Load Validation | Finance | 1.2.3.2.21.3 | 1.2.3.2.21.3 | 2026-06-17 | 2026-06-17 | 2026-04-13 | 0 | 6 | 3088 | 1 | 0 | 357ae9be-8a60-81ba-a4c4-cc35e34a4349 |  | -177.77 | 0 | As Soon As Possible | Auto Scheduled | AMETEK SAP XXL Project Plan Replan MSP Task.csv | AMETEK SAP XXL Project Plan Replan MSP Task.csv__2f0764ccac__2026-05-05T02-44-15-662Z | Kasey Hughes | 65 | True |  | Not started | True  -177.77 0 0 0 0 0 20 | Negative Float, Open Finish Critical 3 0 0  |  |  |  |
| 357ae9be-8a60-817d-b433-fe2c101bf1b5 | 2528 | Error and Defect Mitigation | PTP | 1.2.4.2.17.4 | 1.2.4.2.17.4 | 2026-10-01 | 2026-10-01 | 2026-04-10 | 0 | 6 | 2524 | 1 | 1 | 357ae9be-8a60-8133-a47d-fb21486401c5 | 357ae9be-8a60-81db-9abf-e69c30846126 | -707 | 0 | As Soon As Possible | Auto Scheduled | AMETEK SAP XXL Project Plan Replan MSP Task.csv | AMETEK SAP XXL Project Plan Replan MSP Task.csv__2f0764ccac__2026-05-05T02-44-15-662Z | Nevin Varkey | 174 | True |  | Not started | True  -707 0 1 0 0 0 26 | Negative Float Critical 2 0 0  |  |  |  |
| 357ae9be-8a60-817e-9396-fc66a6c2f43d | 1718 | Open Client | Basis | 1.2.2.2.6.1 | 1.2.2.2.6.1 | 2026-05-21 | 2026-05-21 | 2026-04-06 | 0 | 6 | 1717 | 0 | 0 |  |  | -1441 | 0 | As Soon As Possible | Auto Scheduled | AMETEK SAP XXL Project Plan Replan MSP Task.csv | AMETEK SAP XXL Project Plan Replan MSP Task.csv__2f0764ccac__2026-05-05T02-44-15-662Z | Lokchetan Meghavath | 45 | True |  | Not started | True  -1441 0 0 0 0 0 20 | Negative Float, Open Start, Open Finish Critical 4 0 0  |  |  |  |
| 357ae9be-8a60-817e-a9a1-de2ed273ea35 | 796 | Load File Staged and Posted "Ready" | Finance | 1.2.1.11.1 | 1.2.1.11.1 | 2026-04-09 | 2026-04-09 | 2026-04-09 | 100 | 5 | 758 | 1 | 1 | 357ae9be-8a60-81cb-876e-d1051fc0a159 | 357ae9be-8a60-81eb-ad7a-ec398c361fe5 | 0 | 0 | As Soon As Possible | Auto Scheduled | AMETEK SAP XXL Project Plan Replan MSP Task.csv | AMETEK SAP XXL Project Plan Replan MSP Task.csv__2f0764ccac__2026-05-05T02-44-15-662Z | Kasey Hughes |  |  |  | Done | True  0 0 1 0 0 1 18 | Low 0 0 0  |  |  |  |
| 357ae9be-8a60-817e-a9e8-d071da68587c | 2458 | Close Client | Basis | 1.2.4.2.6.3 | 1.2.4.2.6.3 | 2026-09-24 | 2026-09-24 | 2026-04-06 | 0 | 6 | 2455 | 0 | 0 |  |  | -38520 | 0 | As Soon As Possible | Auto Scheduled | AMETEK SAP XXL Project Plan Replan MSP Task.csv | AMETEK SAP XXL Project Plan Replan MSP Task.csv__2f0764ccac__2026-05-05T02-44-15-662Z | Lokchetan Meghavath | 171 | True |  | Not started | True  -38520 0 0 0 0 0 20 | Negative Float, Open Start, Open Finish Critical 4 0 0  |  |  |  |
| 357ae9be-8a60-817e-b450-f3d1d5c324bf | 2986 | Pre Load Validation | Finance | 1.2.3.2.5.2 | 1.2.3.2.5.2 | 2026-06-10 | 2026-06-10 | 2026-04-08 | 0 | 6 | 2984 | 1 | 1 | 357ae9be-8a60-8121-bb22-fe2b510893e1 | 357ae9be-8a60-81f9-8aa5-e7a991d83437 | -183.52 | 0 | As Soon As Possible | Auto Scheduled | AMETEK SAP XXL Project Plan Replan MSP Task.csv | AMETEK SAP XXL Project Plan Replan MSP Task.csv__2f0764ccac__2026-05-05T02-44-15-662Z | Kasey Hughes | 63 | True |  | Not started | True  -183.52 0 1 0 0 0 26 | Negative Float Critical 2 0 0  |  |  |  |
| 357ae9be-8a60-817f-968c-d2b33f69e607 | 1796 | Simulate Load | Data | 1.2.2.2.18.3 | 1.2.2.2.18.3 | 2026-05-25 | 2026-05-25 | 2026-04-10 | 0 | 6 | 1793 | 1 | 1 | 357ae9be-8a60-81c3-9889-ecfa8eb03333 | 357ae9be-8a60-811b-bb50-cde174c37e84 | -58.77 | 0 | As Soon As Possible | Auto Scheduled | AMETEK SAP XXL Project Plan Replan MSP Task.csv | AMETEK SAP XXL Project Plan Replan MSP Task.csv__2f0764ccac__2026-05-05T02-44-15-662Z | Jyoti Nain | 45 | True |  | Not started | True  -58.77 0 1 0 0 0 26 | Negative Float Critical 2 0 0  |  |  |  |
| 357ae9be-8a60-817f-97e6-d94cfc34f1af | 3212 | VC_Configuration Profiles | (Unassigned) | 1.2.3.2.42 | 1.2.3.2.42 | 2026-06-11 | 2026-06-12 | 2026-04-16 | 0 | 5 | 2959 | 0 | 0 |  |  | -20.75 | 0 | As Soon As Possible | Auto Scheduled | AMETEK SAP XXL Project Plan Replan MSP Task.csv | AMETEK SAP XXL Project Plan Replan MSP Task.csv__2f0764ccac__2026-05-05T02-44-15-662Z | COULD NOT BE DETERMINED | 57 | True |  | Not started | True  -20.75 0 0 0 0 0 20 | Negative Float Critical 2 0 0  |  | 3214, 3213 | True |
| 357ae9be-8a60-817f-9998-d7854fe892fc | 2790 | UAT Mock Data Loads Complete | PMO | 1.2.4.2.68.7 | 1.2.4.2.68.7 | 2026-09-24 | 2026-09-24 | 2026-04-21 | 0 | 6 | 2783 | 0 | 0 |  |  | -38505 | 0 | As Soon As Possible | Auto Scheduled | AMETEK SAP XXL Project Plan Replan MSP Task.csv | AMETEK SAP XXL Project Plan Replan MSP Task.csv__2f0764ccac__2026-05-05T02-44-15-662Z | Mark George | 156 | True |  | Not started | True  -38505 0 0 0 0 0 20 | Negative Float, Open Start, Open Finish Critical 4 0 0  |  |  |  |
| 357ae9be-8a60-817f-a172-cc0cc6717f14 | 3369 | System Refresh Basis(Workinig with NS2) | Basis | 1.1.1.8.1.1 | 1.1.1.8.1.1 | 2026-09-07 | 2026-09-08 | 2026-06-19 | 0 | 6 | 3368 | 0 | 1 |  | 357ae9be-8a60-81f3-b470-e486cf842928 | 0 | 0 | Must Start On | Auto Scheduled | AMETEK SAP XXL Project Plan Replan MSP Task.csv | AMETEK SAP XXL Project Plan Replan MSP Task.csv__2f0764ccac__2026-05-05T02-44-15-662Z | Lokchetan Meghavath | 81 | True |  | Not started | True  0 0 1 0 0 0 26 | Open Start Medium 1 0 0 True | 2026-09-07 |  |  |
| 357ae9be-8a60-817f-a397-e435f0e0827d | 2481 | RTR_CM08_Exchange_Rates | (Unassigned) | 1.2.4.2.10 | 1.2.4.2.10 | 2026-09-25 | 2026-09-28 | 2026-04-10 | 0 | 5 | 2898 | 0 | 0 |  |  | -82.31 | 0 | As Soon As Possible | Auto Scheduled | AMETEK SAP XXL Project Plan Replan MSP Task.csv | AMETEK SAP XXL Project Plan Replan MSP Task.csv__2f0764ccac__2026-05-05T02-44-15-662Z | COULD NOT BE DETERMINED | 171 | True |  | Not started | True  -82.31 0 0 0 0 0 20 | Negative Float Critical 2 0 0  |  | 2483, 2485, 2487, 2482, 2484, 2486 | True |
| 357ae9be-8a60-817f-a3a6-c45c235db3cf | 2795 | Assign Tester ID's | Security | 1.3.3.6.2 | 1.3.3.6.2 | 2026-05-29 | 2026-06-01 | 2026-06-18 | 0 | 5 | 2791 | 1 | 1 | 357ae9be-8a60-81b3-ae9a-cc86e380a852 | 357ae9be-8a60-8135-826c-f28e7e4d6568 | -12 | 0 | As Soon As Possible | Auto Scheduled | AMETEK SAP XXL Project Plan Replan MSP Task.csv | AMETEK SAP XXL Project Plan Replan MSP Task.csv__2f0764ccac__2026-05-05T02-44-15-662Z | Manjunatha Umesha |  |  |  | Not started | True  -12 0 1 1 3 1 23 | Negative Float Critical 2 0 0  |  |  |  |
| 357ae9be-8a60-817f-a806-fbc0e091f3af | 1696 | Pre Load Validation | Finance | 1.2.2.2.3.2 | 1.2.2.2.3.2 | 2026-05-19 | 2026-05-20 | 2026-04-07 | 0 | 6 | 1694 | 1 | 1 | 357ae9be-8a60-81dd-9592-c64ad2325610 | 357ae9be-8a60-81df-98a1-f72510b9046d | -76.52 | 0 | As Soon As Possible | Auto Scheduled | AMETEK SAP XXL Project Plan Replan MSP Task.csv | AMETEK SAP XXL Project Plan Replan MSP Task.csv__2f0764ccac__2026-05-05T02-44-15-662Z | Kasey Hughes | 43 | True | True | Not started | True  -76.52 0 1 0 0 0 26 | Negative Float Critical 2 0 0  |  |  |  |
| 357ae9be-8a60-817f-ac30-d49da3420dd8 | 4177 | Post Load Validation | Finance | 1.2.5.2.3.6 | 1.2.5.2.3.6 | 2026-09-29 | 2026-09-29 | 2026-04-08 | 0 | 6 | 4171 | 1 | 5 | 357ae9be-8a60-813b-b1b0-dd2c217bee9b | 357ae9be-8a60-81ac-8c42-edec7d97a293, 357ae9be-8a60-81a2-861f-c22aa97163f8, 357ae9be-8a60-8127-8085-d2f50c3b8da9, 357ae9be-8a60-8174-a6a6-ccad5369af93, 357ae9be-8a60-818a-8e36-d0becaf94836 | -718.52 | 0 | As Soon As Possible | Auto Scheduled | AMETEK SAP XXL Project Plan Replan MSP Task.csv | AMETEK SAP XXL Project Plan Replan MSP Task.csv__2f0764ccac__2026-05-05T02-44-15-662Z | Kasey Hughes | 174 | True |  | Not started | True  -718.52 0 5 0 0 0 50 | Negative Float Critical 2 0 0  |  |  |  |
| 357ae9be-8a60-817f-ae06-d0bd95dce1f6 | 1772 | Open client for BP number range update | Basis | 1.2.2.2.14.7 | 1.2.2.2.14.7 | 2026-05-21 | 2026-05-21 | 2026-04-09 | 0 | 6 | 1765 | 1 | 1 | 357ae9be-8a60-8198-987d-fbbb3a10c0bc | 357ae9be-8a60-8173-bd4d-d87d8f989ace | -1786 | 0 | As Soon As Possible | Auto Scheduled | AMETEK SAP XXL Project Plan Replan MSP Task.csv | AMETEK SAP XXL Project Plan Replan MSP Task.csv__2f0764ccac__2026-05-05T02-44-15-662Z | Lokchetan Meghavath | 42 | True |  | Not started | True  -1786 0 1 0 0 0 26 | Wrong Dependency, Negative Float Critical 5 1 0  |  |  |  |
| 357ae9be-8a60-817f-bc29-d4eefef83161 | 1019 | Post Load Validation | PTP;OTC | 1.2.1.23.6 | 1.2.1.23.6 | 2026-04-14 | 2026-04-14 | 2026-04-14 | 100 | 5 | 693 | 1 | 0 | 357ae9be-8a60-811b-86be-fd41e706a321 |  | 0 | 0 | As Soon As Possible | Auto Scheduled | AMETEK SAP XXL Project Plan Replan MSP Task.csv | AMETEK SAP XXL Project Plan Replan MSP Task.csv__2f0764ccac__2026-05-05T02-44-15-662Z | Nevin Varkey |  |  |  | Done | True  0 0 0 0 0 0 12 | Wrong Dependency High 3 1 0  |  |  |  |
| 357ae9be-8a60-8180-8a3a-c9263bbfcc43 | 2658 | Error and Defect Mitigation | PTM | 1.2.4.2.36.4 | 1.2.4.2.36.4 | 2026-10-02 | 2026-10-02 | 2026-04-21 | 0 | 6 | 2654 | 1 | 1 | 357ae9be-8a60-81ea-9131-cf0d24af7207 | 357ae9be-8a60-81b9-82ce-d0a7b0260051 | -695.75 | 0 | As Soon As Possible | Auto Scheduled | AMETEK SAP XXL Project Plan Replan MSP Task.csv | AMETEK SAP XXL Project Plan Replan MSP Task.csv__2f0764ccac__2026-05-05T02-44-15-662Z | Brad Meseck | 164 | True |  | Not started | True  -695.75 0 1 0 0 0 26 | Negative Float Critical 2 0 0  |  |  |  |
| 357ae9be-8a60-8180-8d80-db23f8759c9f | 1293 | Security Transports | Security | 1.1.1.6.1.7 | 1.1.1.6.1.7 | 2026-05-21 | 2026-05-21 | 2026-05-15 | 0 | 6 | 3339 | 1 | 2 | 357ae9be-8a60-818f-80a6-d8c478ba9f00 | 357ae9be-8a60-8154-afc6-e6acd0029bd4, 357ae9be-8a60-814d-b14c-ff7f7174130b | -241.52 | 0 | As Soon As Possible | Auto Scheduled | AMETEK SAP XXL Project Plan Replan MSP Task.csv | AMETEK SAP XXL Project Plan Replan MSP Task.csv__2f0764ccac__2026-05-05T02-44-15-662Z | Manjunatha Umesha | 6 | True |  | Not started | True  -241.52 0 2 0 0 0 32 | Negative Float Critical 2 0 0  |  |  |  |
| 357ae9be-8a60-8180-8f7c-eefc47c94dd2 | 673 | Release Security roles to Functional Team | Security | 1.1.1.4.17 | 1.1.1.4.17 | 2026-02-09 | 2026-02-09 | 2026-02-09 | 100 | 5 | 88 | 1 | 0 | 357ae9be-8a60-81d6-83f6-fe69a2b3d4d2 |  | 0 | 0 | As Soon As Possible | Auto Scheduled | AMETEK SAP XXL Project Plan Replan MSP Task.csv | AMETEK SAP XXL Project Plan Replan MSP Task.csv__2f0764ccac__2026-05-05T02-44-15-662Z | Manjunatha Umesha |  |  |  | Done | True  0 0 0 0 0 0 12 | Low 0 0 0  |  |  |  |
| 357ae9be-8a60-8180-a2bf-f38742db3729 | 1996 | Pre Load Validation | PTM | 1.2.2.2.54.2 | 1.2.2.2.54.2 | 2026-05-22 | 2026-05-22 | 2026-04-16 | 0 | 6 | 1994 | 1 | 1 | 357ae9be-8a60-8132-a9f0-f065eb34435f | 357ae9be-8a60-8185-97ec-d53d670c511c | -2356 | 0 | As Soon As Possible | Auto Scheduled | AMETEK SAP XXL Project Plan Replan MSP Task.csv | AMETEK SAP XXL Project Plan Replan MSP Task.csv__2f0764ccac__2026-05-05T02-44-15-662Z | Brad Meseck | 36 | True |  | Not started | True  -2356 0 1 0 0 0 26 | Negative Float Critical 2 0 0  |  |  |  |
| 357ae9be-8a60-8180-a627-ebef5a0c2655 | 670 | Release Setup ID's and Access | Security | 1.1.1.4.3 | 1.1.1.4.3 | 2026-01-08 | 2026-01-08 | 2026-01-08 | 100 | 5 | 88 | 1 | 1 | 357ae9be-8a60-817c-a0c9-f09c8601bf07 | 357ae9be-8a60-8199-b596-f4e3100aa72b | 0 | 0 | As Soon As Possible | Auto Scheduled | AMETEK SAP XXL Project Plan Replan MSP Task.csv | AMETEK SAP XXL Project Plan Replan MSP Task.csv__2f0764ccac__2026-05-05T02-44-15-662Z | Manjunatha Umesha |  |  |  | Done | True  0 0 0 0 0 0 14 | Low 0 0 0  |  |  |  |
| 357ae9be-8a60-8180-bf92-f7073842d3c6 | 2565 | Pre Load Validation | PTP;OTC | 1.2.4.2.23.2 | 1.2.4.2.23.2 | 2026-09-24 | 2026-09-24 | 2026-04-13 | 0 | 6 | 2563 | 0 | 1 |  | 357ae9be-8a60-81e6-9517-dc50430e6dc2 | -39000 | 0 | As Soon As Possible | Auto Scheduled | AMETEK SAP XXL Project Plan Replan MSP Task.csv | AMETEK SAP XXL Project Plan Replan MSP Task.csv__2f0764ccac__2026-05-05T02-44-15-662Z | Nevin Varkey | 164 | True |  | Not started | True  -39000 0 1 0 0 0 26 | Negative Float, Open Start Critical 3 0 0  |  |  |  |
| 357ae9be-8a60-8181-8191-e719cc7d6851 | 762 | OTC_CM19_Customer_Master - Sold-To | OTC | 1.2.1.15 | 1.2.1.15 | 2026-04-08 | 2026-04-10 | 2026-04-10 | 100 | 4 | 425 | 1 | 1 | 357ae9be-8a60-8174-964d-efd5d68137ea | 357ae9be-8a60-81fa-920c-c1088950f221 | 0 | 0 | As Soon As Possible | Auto Scheduled | AMETEK SAP XXL Project Plan Replan MSP Task.csv | AMETEK SAP XXL Project Plan Replan MSP Task.csv__2f0764ccac__2026-05-05T02-44-15-662Z | Anitha Jothi |  |  |  | Done | True  0 0 1 0 0 1 18 | Low 0 0 0  |  | 822, 820, 817, 1240, 819, 1242, 821, 818, 1241 | True |
| 357ae9be-8a60-8181-91de-df16746bfd2b | 760 | RTR_CM09_Activity_Type | (Unassigned) | 1.2.1.8 | 1.2.1.8 | 2026-04-08 | 2026-04-09 | 2026-04-09 | 100 | 4 | 425 | 1 | 1 | 357ae9be-8a60-814f-894a-d5693095163e | 357ae9be-8a60-8137-a9be-e0506af141c2 | 0 | 0 | As Soon As Possible | Auto Scheduled | AMETEK SAP XXL Project Plan Replan MSP Task.csv | AMETEK SAP XXL Project Plan Replan MSP Task.csv__2f0764ccac__2026-05-05T02-44-15-662Z | COULD NOT BE DETERMINED |  |  |  | Done | True  0 0 1 1 2 0 23 | Low 0 0 0  |  | 813, 811, 812, 808, 809, 810 | True |
| 357ae9be-8a60-8181-95f1-f6b35ac2e7fa | 3093 | Load File Staged and Posted "Ready" | PTP;OTC | 1.2.3.2.22.1 | 1.2.3.2.22.1 | 2026-06-08 | 2026-06-08 | 2026-04-13 | 0 | 6 | 3092 | 1 | 1 | 357ae9be-8a60-81d2-837d-fa4d8a880bdd | 357ae9be-8a60-81ed-8b9c-d26549fc1775 | -7891 | 0 | As Soon As Possible | Auto Scheduled | AMETEK SAP XXL Project Plan Replan MSP Task.csv | AMETEK SAP XXL Project Plan Replan MSP Task.csv__2f0764ccac__2026-05-05T02-44-15-662Z | Nevin Varkey | 56 | True |  | Not started | True  -7891 0 1 0 0 0 26 | Wrong Dependency, Negative Float Critical 5 1 0  |  |  |  |
| 357ae9be-8a60-8181-a902-f5385ade7cb8 | 999 | Extract File | Data | 1.2.1.20.1 | 1.2.1.20.1 | 2026-04-10 | 2026-04-10 | 2026-04-10 | 100 | 5 | 752 | 1 | 1 | 357ae9be-8a60-8177-a098-e443c737773f | 357ae9be-8a60-813a-898d-f2752dcc1fe0 | 0 | 0 | As Soon As Possible | Auto Scheduled | AMETEK SAP XXL Project Plan Replan MSP Task.csv | AMETEK SAP XXL Project Plan Replan MSP Task.csv__2f0764ccac__2026-05-05T02-44-15-662Z | Jyoti Nain |  |  |  | Done | True  0 0 1 0 0 0 18 | Low 0 0 0  |  |  |  |
| 357ae9be-8a60-8181-a92d-e4e135604429 | 1201 | Post Load Validation | PTM | 1.2.1.36.6 | 1.2.1.36.6 | 2026-04-21 | 2026-04-22 | 2026-04-20 | 100 | 5 | 1194 | 1 | 1 | 357ae9be-8a60-81b8-88ee-f911612fa3a6 | 357ae9be-8a60-8122-ac37-debd07d88176 | 0 | 0 | As Soon As Possible | Auto Scheduled | AMETEK SAP XXL Project Plan Replan MSP Task.csv | AMETEK SAP XXL Project Plan Replan MSP Task.csv__2f0764ccac__2026-05-05T02-44-15-662Z | Brad Meseck |  |  |  | Done | True  0 0 1 0 0 0 18 | Low 0 0 0  |  |  |  |
| 357ae9be-8a60-8181-a930-d0c84b2ad2a4 | 2437 | Load | Data | 1.2.4.2.3.5 | 1.2.4.2.3.5 | 2026-09-29 | 2026-09-29 | 2026-04-08 | 0 | 6 | 2432 | 1 | 1 | 357ae9be-8a60-81ff-8fa4-da3fbefd464f | 357ae9be-8a60-814f-9909-dc7f6a9040f5 | -718.5 | 0 | As Soon As Possible | Auto Scheduled | AMETEK SAP XXL Project Plan Replan MSP Task.csv | AMETEK SAP XXL Project Plan Replan MSP Task.csv__2f0764ccac__2026-05-05T02-44-15-662Z | Jyoti Nain | 174 | True |  | Not started | True  -718.5 0 1 0 0 0 26 | Negative Float Critical 2 0 0  |  |  |  |
| 357ae9be-8a60-8181-ac33-c37e95ecea45 | 3334 | Open Purchase Orders(Manual) | (Unassigned) | 1.2.3.4.5 | 1.2.3.4.5 | 2026-06-22 | 2026-06-23 | 2026-06-23 | 0 | 5 | 3326 | 1 | 0 | 357ae9be-8a60-812b-99d2-f7a1aa058a4c |  | -24.06 | 0 | As Soon As Possible | Auto Scheduled | AMETEK SAP XXL Project Plan Replan MSP Task.csv | AMETEK SAP XXL Project Plan Replan MSP Task.csv__2f0764ccac__2026-05-05T02-44-15-662Z | COULD NOT BE DETERMINED |  |  |  | Not started | True  -24.06 0 0 0 0 0 12 | Wrong Dependency, Negative Float, Open Finish Critical 6 1 0  |  |  |  |
| 357ae9be-8a60-8181-afe5-ebf136a78e18 | 4301 | Post Load Validation | PTP;OTC | 1.2.5.2.22.6 | 1.2.5.2.22.6 | 2026-09-25 | 2026-09-25 | 2026-04-14 | 0 | 6 | 4295 | 1 | 0 | 357ae9be-8a60-8105-92f6-c1b9adcc0335 |  | -653.52 | 0 | As Soon As Possible | Auto Scheduled | AMETEK SAP XXL Project Plan Replan MSP Task.csv | AMETEK SAP XXL Project Plan Replan MSP Task.csv__2f0764ccac__2026-05-05T02-44-15-662Z | Nevin Varkey | 164 | True |  | Not started | True  -653.52 0 0 0 0 0 20 | Negative Float, Open Finish Critical 3 0 0  |  |  |  |
| 357ae9be-8a60-8181-afeb-f49e49dec902 | 2753 | Post Load Validation | OTC | 1.2.4.2.59.2 | 1.2.4.2.59.2 | 2026-10-01 | 2026-10-01 | 2026-04-16 | 0 | 6 | 2751 | 1 | 1 | 357ae9be-8a60-81b7-bdff-e977e8bf72f6 | 357ae9be-8a60-8133-b814-d3222e250782 | -712.25 | 0 | As Soon As Possible | Auto Scheduled | AMETEK SAP XXL Project Plan Replan MSP Task.csv | AMETEK SAP XXL Project Plan Replan MSP Task.csv__2f0764ccac__2026-05-05T02-44-15-662Z | James VanRiper | 168 | True |  | Not started | True  -712.25 0 1 0 0 0 26 | Negative Float Critical 2 0 0  |  |  |  |
| 357ae9be-8a60-8181-ba97-cd201f60b4db | 1771 | Post Load Validation | OTC | 1.2.2.2.14.6 | 1.2.2.2.14.6 | 2026-05-25 | 2026-05-25 | 2026-04-10 | 0 | 6 | 1765 | 1 | 0 | 357ae9be-8a60-8122-b5a7-f52bb4b3e2ef |  | -41.02 | 0 | As Soon As Possible | Auto Scheduled | AMETEK SAP XXL Project Plan Replan MSP Task.csv | AMETEK SAP XXL Project Plan Replan MSP Task.csv__2f0764ccac__2026-05-05T02-44-15-662Z | Ric Haraida | 45 | True |  | Not started | True  -41.02 0 0 0 0 0 20 | Wrong Dependency, Negative Float, Open Finish Critical 6 1 0  |  |  |  |
| 357ae9be-8a60-8182-813b-e09bf94d12da | 4222 | Pre Load Validation | Finance | 1.2.5.2.10.2 | 1.2.5.2.10.2 | 2026-09-25 | 2026-09-25 | 2026-04-10 | 0 | 6 | 4220 | 1 | 1 | 357ae9be-8a60-8160-b40a-d82d5a63ab3d | 357ae9be-8a60-81bd-9758-e36d07e44e6d | -658.52 | 0 | As Soon As Possible | Auto Scheduled | AMETEK SAP XXL Project Plan Replan MSP Task.csv | AMETEK SAP XXL Project Plan Replan MSP Task.csv__2f0764ccac__2026-05-05T02-44-15-662Z | Kasey Hughes | 168 | True |  | Not started | True  -658.52 0 1 0 0 0 26 | Negative Float Critical 2 0 0  |  |  |  |
| 357ae9be-8a60-8182-84ca-d464cacd38c3 | 1723 | Load File Staged and Posted "Ready" | Finance | 1.2.2.2.7.1 | 1.2.2.2.7.1 | 2026-05-21 | 2026-05-21 | 2026-04-08 | 0 | 6 | 1722 | 1 | 1 | 357ae9be-8a60-812a-8ff8-e70b785cc280 | 357ae9be-8a60-8166-ab4a-d670a33fd6b1 | -38.02 | 0 | As Soon As Possible | Auto Scheduled | AMETEK SAP XXL Project Plan Replan MSP Task.csv | AMETEK SAP XXL Project Plan Replan MSP Task.csv__2f0764ccac__2026-05-05T02-44-15-662Z | Kasey Hughes | 43 | True |  | Not started | True  -38.02 0 1 0 0 0 26 | Wrong Dependency, Negative Float Critical 5 1 0  |  |  |  |
| 357ae9be-8a60-8182-a434-de542c892dc7 | 4358 | PTM_CM40_Work Center Conversion | PTM | 1.2.5.2.31 | 1.2.5.2.31 | 2026-09-29 | 2026-10-02 | 2026-04-20 | 0 | 5 | 4162 | 0 | 0 |  |  | -87.55 | 0 | As Soon As Possible | Auto Scheduled | AMETEK SAP XXL Project Plan Replan MSP Task.csv | AMETEK SAP XXL Project Plan Replan MSP Task.csv__2f0764ccac__2026-05-05T02-44-15-662Z | Brad Meseck | 165 | True |  | Not started | True  -87.55 0 0 0 0 0 20 | Negative Float Critical 2 0 0  |  | 4364, 4360, 4363, 4362, 4359, 4361 | True |
| 357ae9be-8a60-8182-a835-f2e77f00196f | 1219 | Open Client | Basis | 1.2.1.7.1 | 1.2.1.7.1 | 2026-04-06 | 2026-04-06 | 2026-04-06 | 100 | 5 | 881 | 0 | 0 |  |  | 0 | 0 | As Soon As Possible | Auto Scheduled | AMETEK SAP XXL Project Plan Replan MSP Task.csv | AMETEK SAP XXL Project Plan Replan MSP Task.csv__2f0764ccac__2026-05-05T02-44-15-662Z | Lokchetan Meghavath |  |  |  | Done | True  0 0 0 0 0 0 12 | Low 0 0 0  |  |  |  |
| 357ae9be-8a60-8182-aa27-f75d7751196f | 4269 | Post Load Validation | PTP | 1.2.5.2.17.6 | 1.2.5.2.17.6 | 2026-10-06 | 2026-10-06 | 2026-04-13 | 0 | 6 | 4263 | 1 | 0 | 357ae9be-8a60-8185-86a3-f252d5cdaacc |  | -707.02 | 0 | As Soon As Possible | Auto Scheduled | AMETEK SAP XXL Project Plan Replan MSP Task.csv | AMETEK SAP XXL Project Plan Replan MSP Task.csv__2f0764ccac__2026-05-05T02-44-15-662Z | Nevin Varkey | 176 | True |  | Not started | True  -707.02 0 0 0 0 0 20 | Negative Float, Open Finish Critical 3 0 0  |  |  |  |
| 357ae9be-8a60-8182-af33-ced9856d41ef | 4451 | Pre Load Validation | OTC | 1.2.5.2.50.2 | 1.2.5.2.50.2 | 2026-10-08 | 2026-10-08 | 2026-04-20 | 0 | 6 | 4449 | 1 | 1 | 357ae9be-8a60-811e-bb30-c3056950a1c7 | 357ae9be-8a60-8154-ab4d-dcd68d96804a | -43561 | 0 | As Soon As Possible | Auto Scheduled | AMETEK SAP XXL Project Plan Replan MSP Task.csv | AMETEK SAP XXL Project Plan Replan MSP Task.csv__2f0764ccac__2026-05-05T02-44-15-662Z | Ric Haraida | 171 | True |  | Not started | True  -43561 0 1 0 0 0 26 | Negative Float Critical 2 0 0  |  |  |  |
| 357ae9be-8a60-8182-bace-dba100022b97 | 4246 | Error and Defect Mitigation | OTC | 1.2.5.2.14.4 | 1.2.5.2.14.4 | 2026-09-30 | 2026-09-30 | 2026-04-09 | 0 | 6 | 4242 | 1 | 1 | 357ae9be-8a60-815f-9331-ea71dfc6716a | 357ae9be-8a60-81d1-8841-f9e0052c8453 | -718.52 | 0 | As Soon As Possible | Auto Scheduled | AMETEK SAP XXL Project Plan Replan MSP Task.csv | AMETEK SAP XXL Project Plan Replan MSP Task.csv__2f0764ccac__2026-05-05T02-44-15-662Z | Ric Haraida | 174 | True |  | Not started | True  -718.52 0 1 0 0 0 26 | Negative Float Critical 2 0 0  |  |  |  |
| 357ae9be-8a60-8183-8531-e72a33be04e0 | 1059 | Error and Defect Mitigation | PTM | 1.2.1.31.4 | 1.2.1.31.4 | 2026-04-17 | 2026-04-17 | 2026-04-16 | 100 | 5 | 694 | 1 | 1 | 357ae9be-8a60-819b-b154-e350e2bb268a | 357ae9be-8a60-8110-91c5-d8b49c47576f | 0 | 0 | Finish No Earlier Than | Auto Scheduled | AMETEK SAP XXL Project Plan Replan MSP Task.csv | AMETEK SAP XXL Project Plan Replan MSP Task.csv__2f0764ccac__2026-05-05T02-44-15-662Z | Brad Meseck |  |  |  | Done | True  0 0 1 0 0 0 18 | Low 0 0 0 True | 2026-04-17 |  |  |

| id | uid | name | workstream | outlineNumber | wbs | start | finish | baselineFinish | pct | outlineLevel | parentUid | predCount | sucCount | predIds | sucIds | totalSlackDaysRaw | freeSlackDaysRaw | constraintType | taskMode | mspSourceFile | mspImportVersion | assignedTo | slipDays | isSlipped | isDue14 | status | cpm | scheduleQuality | constraintDate | childUids | isSummary | isOverdueStart |
| --- | --- | --- | --- | --- | --- | --- | --- | --- | --- | --- | --- | --- | --- | --- | --- | --- | --- | --- | --- | --- | --- | --- | --- | --- | --- | --- | --- | --- | --- | --- | --- | --- |
| 357ae9be-8a60-8183-98b7-da108cd43291 | 834 | Testing expectations | PMO | 1.3.3.5.1 | 1.3.3.5.1 | 2026-04-16 | 2026-04-16 | 2026-04-16 | 100 | 5 | 19 | 1 | 1 | 357ae9be-8a60-8145-abcf-ead9952da254 | 357ae9be-8a60-812c-af14-cc7bf0c9bdc6 | 0 | 0 | Start No Earlier Than | Auto Scheduled | AMETEK SAP XXL Project Plan Replan MSP Task.csv | AMETEK SAP XXL Project Plan Replan MSP Task.csv__2f0764ccac__2026-05-05T02-44-15-662Z | Chris Hanily |  |  |  | Done | True  0 0 0 0 0 1 14 | Low 0 0 0 True | 2026-04-08 |  |  |  |
| 357ae9be-8a60-8183-9dbd-effd2bfc07e5 | 2037 | Post Load Validation | OTC | 1.2.2.2.66.2 | 1.2.2.2.66.2 | 2026-05-26 | 2026-05-26 | 2026-04-16 | 0 | 6 | 2035 | 1 | 0 | 357ae9be-8a60-814d-9cd9-ecd7fbf439fc |  | -50.02 | 0 | As Soon As Possible | Auto Scheduled | AMETEK SAP XXL Project Plan Replan MSP Task.csv | AMETEK SAP XXL Project Plan Replan MSP Task.csv__2f0764ccac__2026-05-05T02-44-15-662Z | James VanRiper | 40 | True |  | Not started | True  -50.02 0 0 0 0 0 20 | Wrong Dependency, Negative Float, Open Finish Critical 6 1 0  |  |  |  |  |
| 357ae9be-8a60-8183-a0d2-d2ac8860e8c6 | 4329 | Post Load Validation | PTM | 1.2.5.2.26.6 | 1.2.5.2.26.6 | 2026-09-28 | 2026-09-29 | 2026-04-15 | 0 | 6 | 4323 | 1 | 5 | 357ae9be-8a60-8195-b8de-e5ba8ef7e724 | 357ae9be-8a60-8101-a3f5-fec79702f828, 357ae9be-8a60-817a-aba1-dd35162a9ee7, 357ae9be-8a60-81d5-8abf-da999b2142bb, 357ae9be-8a60-81d5-95df-de9e9e253eea, 357ae9be-8a60-81a4-9e35-c443d1c7a34b | -726.02 | 0 | As Soon As Possible | Auto Scheduled | AMETEK SAP XXL Project Plan Replan MSP Task.csv | AMETEK SAP XXL Project Plan Replan MSP Task.csv__2f0764ccac__2026-05-05T02-44-15-662Z | Eric Heisler | 167 | True |  | Not started | True  -726.02 0 5 0 0 0 50 | Negative Float Critical 2 0 0  |  |  |  |  |
| 357ae9be-8a60-8183-a13d-d57cdb6bbcf1 | 4210 | Error and Defect Mitigation | Finance | 1.2.5.2.8.4 | 1.2.5.2.8.4 | 2026-09-28 | 2026-09-28 | 2026-04-08 | 0 | 6 | 4206 | 1 | 1 | 357ae9be-8a60-8119-9640-f8b3f0472b2f | 357ae9be-8a60-8157-b194-ee08973377eb | -662.52 | 0 | As Soon As Possible | Auto Scheduled | AMETEK SAP XXL Project Plan Replan MSP Task.csv | AMETEK SAP XXL Project Plan Replan MSP Task.csv__2f0764ccac__2026-05-05T02-44-15-662Z | Kasey Hughes | 173 | True |  | Not started | True  -662.52 0 1 0 0 0 26 | Negative Float Critical 2 0 0  |  |  |  |  |
| 357ae9be-8a60-8183-a2ae-d0bc6306fe9d | 939 | VC_Characteristics | (Unassigned) | 1.2.1.39 | 1.2.1.39 | 2026-04-06 | 2026-04-07 | 2026-04-07 | 100 | 4 | 425 | 0 | 0 |  |  | 0 | 0 | As Soon As Possible | Auto Scheduled | AMETEK SAP XXL Project Plan Replan MSP Task.csv | AMETEK SAP XXL Project Plan Replan MSP Task.csv__2f0764ccac__2026-05-05T02-44-15-662Z | COULD NOT BE DETERMINED |  |  |  | Done | True  0 0 0 0 0 0 12 | Low 0 0 0  |  | 1154, 1155 | True |  |
| 357ae9be-8a60-8183-a95c-daf66687cb6f | 82 | Specs Assigned to Developer | (Unassigned) | 1.1.2.10.4.2 | 1.1.2.10.4.2 | 2025-03-13 | 2025-03-13 | 2025-03-13 | 100 | 6 | 68 | 0 | 0 |  |  | 0 | 0 | As Soon As Possible | Auto Scheduled | AMETEK SAP XXL Project Plan Replan MSP Task.csv | AMETEK SAP XXL Project Plan Replan MSP Task.csv__2f0764ccac__2026-05-05T02-44-15-662Z | COULD NOT BE DETERMINED |  |  |  | Done | True  0 0 0 0 0 0 12 | Low 0 0 0  |  |  |  |  |
| 357ae9be-8a60-8183-aa50-c4141e2eefd1 | 3163 | Extract File | Data | 1.2.3.2.32.1 | 1.2.3.2.32.1 | 2026-06-11 | 2026-06-11 | 2026-04-16 | 0 | 6 | 3162 | 1 | 1 | 357ae9be-8a60-81cc-a1de-f80fe61aab20 | 357ae9be-8a60-8197-9653-c90ab86a2f12 | -173.77 | 0 | As Soon As Possible | Auto Scheduled | AMETEK SAP XXL Project Plan Replan MSP Task.csv | AMETEK SAP XXL Project Plan Replan MSP Task.csv__2f0764ccac__2026-05-05T02-44-15-662Z | Jyoti Nain | 56 | True |  | Not started | True  -173.77 0 1 0 0 0 26 | Negative Float Critical 2 0 0  |  |  |  |  |
| 357ae9be-8a60-8183-aec1-ff1b65ede0a2 | 271 | Business Role Management | (Unassigned) | 1.1.2.5 | 1.1.2.5 | 2026-05-08 | 2026-05-21 | 2025-12-10 | 0 | 4 | 248 | 0 | 0 |  |  | 122 | 122 | As Soon As Possible | Auto Scheduled | AMETEK SAP XXL Project Plan Replan MSP Task.csv | AMETEK SAP XXL Project Plan Replan MSP Task.csv__2f0764ccac__2026-05-05T02-44-15-662Z | COULD NOT BE DETERMINED | 162 | True |  | Not started |   122 122 0 0 0 0 8 | Low 0 0 0  |  | 272, 273 | True |  |
| 357ae9be-8a60-8183-b2b7-c2e3fcf20f1a | 937 | PTP_CM28_Purchase_Info_Record Subcontracting and Consignment | PTP | 1.2.1.30 | 1.2.1.30 | 2026-04-15 | 2026-04-16 | 2026-04-16 | 100 | 4 | 425 | 0 | 0 |  |  | 0 | 0 | As Soon As Possible | Auto Scheduled | AMETEK SAP XXL Project Plan Replan MSP Task.csv | AMETEK SAP XXL Project Plan Replan MSP Task.csv__2f0764ccac__2026-05-05T02-44-15-662Z | Muniraju Surappachari |  |  |  | Done | True  0 0 0 0 0 0 12 | Low 0 0 0  |  | 1054, 1050, 1051, 1052, 1055, 1053 | True |  |
| 357ae9be-8a60-8183-b6ed-cbc661660177 | 1698 | Error and Defect Mitigation | Finance | 1.2.2.2.3.4 | 1.2.2.2.3.4 | 2026-05-20 | 2026-05-21 | 2026-04-08 | 0 | 6 | 1694 | 1 | 1 | 357ae9be-8a60-81df-98a1-f72510b9046d | 357ae9be-8a60-81ae-bb72-e6b8211186ac | -76.52 | 0 | As Soon As Possible | Auto Scheduled | AMETEK SAP XXL Project Plan Replan MSP Task.csv | AMETEK SAP XXL Project Plan Replan MSP Task.csv__2f0764ccac__2026-05-05T02-44-15-662Z | Kasey Hughes | 43 | True |  | Not started | True  -76.52 0 1 0 0 0 26 | Negative Float Critical 2 0 0  |  |  |  |  |
| 357ae9be-8a60-8184-8151-c9b8aff3c77c | 2662 | Run ALE Transaction to QS5 from DS4 130 | PTM | 1.2.4.2.37.1 | 1.2.4.2.37.1 | 2026-09-24 | 2026-09-24 | 2026-04-06 | 0 | 6 | 2661 | 1 | 1 | 357ae9be-8a60-8107-ad19-eb3f9a8b23bc | 357ae9be-8a60-8187-9534-fe5c559ba129 | -661.5 | 0 | As Soon As Possible | Auto Scheduled | AMETEK SAP XXL Project Plan Replan MSP Task.csv | AMETEK SAP XXL Project Plan Replan MSP Task.csv__2f0764ccac__2026-05-05T02-44-15-662Z | Eric Heisler | 171 | True |  | Not started | True  -661.5 0 1 0 0 0 26 | Wrong Dependency, Negative Float Critical 5 1 0  |  |  |  |  |
| 357ae9be-8a60-8184-817a-f551e3acc57a | 4202 | Simulate Load | Data | 1.2.5.2.7.3 | 1.2.5.2.7.3 | 2026-09-30 | 2026-09-30 | 2026-04-09 | 0 | 6 | 4199 | 1 | 1 | 357ae9be-8a60-8103-9bfa-c60d55e284c8 | 357ae9be-8a60-81b5-ae59-d42984fda7e3 | -680.02 | 0 | As Soon As Possible | Auto Scheduled | AMETEK SAP XXL Project Plan Replan MSP Task.csv | AMETEK SAP XXL Project Plan Replan MSP Task.csv__2f0764ccac__2026-05-05T02-44-15-662Z | Jyoti Nain | 174 | True |  | Not started | True  -680.02 0 1 0 0 0 26 | Negative Float Critical 2 0 0  |  |  |  |  |
| 357ae9be-8a60-8184-88c0-ee51e66d1165 | 1858 | Load | Data | 1.2.2.2.27.5 | 1.2.2.2.27.5 | 2026-05-18 | 2026-05-18 | 2026-04-15 | 0 | 6 | 1853 | 1 | 1 | 357ae9be-8a60-81a6-975b-ed9ff06b79f5 | 357ae9be-8a60-81a8-9ead-dd633cc84dc9 | -5.52 | 0 | As Soon As Possible | Auto Scheduled | AMETEK SAP XXL Project Plan Replan MSP Task.csv | AMETEK SAP XXL Project Plan Replan MSP Task.csv__2f0764ccac__2026-05-05T02-44-15-662Z | Jyoti Nain | 33 | True | True | Not started | True  -5.52 0 1 0 0 0 26 | Wrong Dependency, Negative Float High 5 1 0  |  |  |  |  |
| 357ae9be-8a60-8184-897d-d2d6dc8aa478 | 2579 | Pre Load Validation | PTP;OTC | 1.2.4.2.25.2 | 1.2.4.2.25.2 | 2026-09-28 | 2026-09-28 | 2026-04-14 | 0 | 6 | 2577 | 1 | 1 | 357ae9be-8a60-8118-954c-ebe5e7ddd41b | 357ae9be-8a60-819b-a9f8-f3059d876fbd | -40035 | 0 | As Soon As Possible | Auto Scheduled | AMETEK SAP XXL Project Plan Replan MSP Task.csv | AMETEK SAP XXL Project Plan Replan MSP Task.csv__2f0764ccac__2026-05-05T02-44-15-662Z | Nevin Varkey | 167 | True |  | Not started | True  -40035 0 1 0 0 0 26 | Wrong Dependency, Negative Float Critical 5 1 0  |  |  |  |  |
| 357ae9be-8a60-8184-8b7c-ea85cd49ac0b | 2530 | Post Load Validation | PTP | 1.2.4.2.17.6 | 1.2.4.2.17.6 | 2026-10-06 | 2026-10-06 | 2026-04-13 | 0 | 6 | 2524 | 1 | 0 | 357ae9be-8a60-81db-9abf-e69c30846126 |  | -707 | 0 | As Soon As Possible | Auto Scheduled | AMETEK SAP XXL Project Plan Replan MSP Task.csv | AMETEK SAP XXL Project Plan Replan MSP Task.csv__2f0764ccac__2026-05-05T02-44-15-662Z | Nevin Varkey | 176 | True |  | Not started | True  -707 0 0 0 0 0 20 | Negative Float, Open Finish Critical 3 0 0  |  |  |  |  |
| 357ae9be-8a60-8184-9a70-fae27664739a | 2676 | VC_Configuration Profiles | (Unassigned) | 1.2.4.2.42 | 1.2.4.2.42 | 2026-09-29 | 2026-09-29 | 2026-04-16 | 0 | 5 | 2898 | 0 | 0 |  |  | -86 | 0 | As Soon As Possible | Auto Scheduled | AMETEK SAP XXL Project Plan Replan MSP Task.csv | AMETEK SAP XXL Project Plan Replan MSP Task.csv__2f0764ccac__2026-05-05T02-44-15-662Z | COULD NOT BE DETERMINED | 166 | True |  | Not started | True  -86 0 0 0 0 0 20 | Negative Float Critical 2 0 0  |  | 2677, 2678 | True |  |
| 357ae9be-8a60-8184-9eed-c25bd3a469a7 | 2456 | Open Client | Basis | 1.2.4.2.6.1 | 1.2.4.2.6.1 | 2026-09-24 | 2026-09-24 | 2026-04-06 | 0 | 6 | 2455 | 0 | 0 |  |  | -38520 | 0 | As Soon As Possible | Auto Scheduled | AMETEK SAP XXL Project Plan Replan MSP Task.csv | AMETEK SAP XXL Project Plan Replan MSP Task.csv__2f0764ccac__2026-05-05T02-44-15-662Z | Lokchetan Meghavath | 171 | True |  | Not started | True  -38520 0 0 0 0 0 20 | Negative Float, Open Start, Open Finish Critical 4 0 0  |  |  |  |  |
| 357ae9be-8a60-8184-a2dd-e06846377ce6 | 3073 | Post Load Validation | Finance | 1.2.3.2.18.6 | 1.2.3.2.18.6 | 2026-06-16 | 2026-06-16 | 2026-04-13 | 0 | 6 | 3067 | 1 | 1 | 357ae9be-8a60-817c-895b-e3b547a648dc | 357ae9be-8a60-8120-a46c-e69bf21bab1f | -178.77 | 0 | As Soon As Possible | Auto Scheduled | AMETEK SAP XXL Project Plan Replan MSP Task.csv | AMETEK SAP XXL Project Plan Replan MSP Task.csv__2f0764ccac__2026-05-05T02-44-15-662Z | Kasey Hughes | 64 | True |  | Not started | True  -178.77 0 0 0 0 0 22 | Wrong Successor, Negative Float Critical 5 0 1  |  |  |  |  |
| 357ae9be-8a60-8184-a5d1-e96a65b1e3be | 2539 | Extract File | Data | 1.2.4.2.19.1 | 1.2.4.2.19.1 | 2026-10-01 | 2026-10-01 | 2026-04-10 | 0 | 6 | 2538 | 1 | 1 | 357ae9be-8a60-8196-8c37-db5dfe50e561 | 357ae9be-8a60-813f-8a8a-d80f729c2d5f | -691.75 | 0 | As Soon As Possible | Auto Scheduled | AMETEK SAP XXL Project Plan Replan MSP Task.csv | AMETEK SAP XXL Project Plan Replan MSP Task.csv__2f0764ccac__2026-05-05T02-44-15-662Z | Jyoti Nain | 174 | True |  | Not started | True  -691.75 0 1 0 0 0 26 | Wrong Dependency, Negative Float Critical 5 1 0  |  |  |  |  |
| 357ae9be-8a60-8184-ae63-ef024093e042 | 850 | Dev Refresh Basis(Workinig with NS2) | Basis | 1.1.1.5.1.1 | 1.1.1.5.1.1 | 2026-04-27 | 2026-04-28 | 2026-05-01 | 100 | 6 | 3340 | 0 | 0 |  |  | 0 | 0 | Start No Earlier Than | Auto Scheduled | AMETEK SAP XXL Project Plan Replan MSP Task.csv | AMETEK SAP XXL Project Plan Replan MSP Task.csv__2f0764ccac__2026-05-05T02-44-15-662Z | Lokchetan Meghavath |  |  |  | Done | True  0 0 0 0 0 0 12 | Low 0 0 0 True | 2026-04-27 |  |  |  |
| 357ae9be-8a60-8184-b212-ef9d09825651 | 1998 | Error and Defect Mitigation | PTM | 1.2.2.2.54.4 | 1.2.2.2.54.4 | 2026-05-22 | 2026-05-22 | 2026-04-16 | 0 | 6 | 1994 | 1 | 1 | 357ae9be-8a60-8185-97ec-d53d670c511c | 357ae9be-8a60-81f3-b594-e039011327da | -39.27 | 0 | As Soon As Possible | Auto Scheduled | AMETEK SAP XXL Project Plan Replan MSP Task.csv | AMETEK SAP XXL Project Plan Replan MSP Task.csv__2f0764ccac__2026-05-05T02-44-15-662Z | Brad Meseck | 36 | True |  | Not started | True  -39.27 0 1 0 0 0 26 | Negative Float Critical 2 0 0  |  |  |  |  |
| 357ae9be-8a60-8184-bdc3-c2f0c4a9438b | 4307 | Load | Data | 1.2.5.2.23.5 | 1.2.5.2.23.5 | 2026-09-24 | 2026-09-24 | 2026-04-14 | 0 | 6 | 4302 | 1 | 2 | 357ae9be-8a60-8199-922d-f14badcd8e7a | 357ae9be-8a60-8112-a5bd-dfa74b97aa50, 357ae9be-8a60-819c-b395-e0dd1355c63d | -650.02 | 0 | As Soon As Possible | Auto Scheduled | AMETEK SAP XXL Project Plan Replan MSP Task.csv | AMETEK SAP XXL Project Plan Replan MSP Task.csv__2f0764ccac__2026-05-05T02-44-15-662Z | Jyoti Nain | 163 | True |  | Not started | True  -650.02 0 2 0 0 0 32 | Negative Float Critical 2 0 0  |  |  |  |  |
| 357ae9be-8a60-8184-be4f-d273b0ee49fe | 1785 | Post Load Validation | OTC | 1.2.2.2.16.3 | 1.2.2.2.16.3 | 2026-05-25 | 2026-05-25 | 2026-04-10 | 0 | 6 | 1782 | 1 | 0 | 357ae9be-8a60-8190-b2f9-e48f1d47eab5 |  | -43.52 | 0 | As Soon As Possible | Auto Scheduled | AMETEK SAP XXL Project Plan Replan MSP Task.csv | AMETEK SAP XXL Project Plan Replan MSP Task.csv__2f0764ccac__2026-05-05T02-44-15-662Z | Ric Haraida | 45 | True |  | Not started | True  -43.52 0 0 0 0 0 20 | Negative Float, Open Finish Critical 3 0 0  |  |  |  |  |
| 357ae9be-8a60-8185-86a3-f252d5cdaacc | 4268 | Load | Data | 1.2.5.2.17.5 | 1.2.5.2.17.5 | 2026-10-01 | 2026-10-06 | 2026-04-13 | 0 | 6 | 4263 | 1 | 1 | 357ae9be-8a60-81b3-8552-ed710632d1d9 | 357ae9be-8a60-8182-aa27-f75d7751196f | -707.02 | 0 | As Soon As Possible | Auto Scheduled | AMETEK SAP XXL Project Plan Replan MSP Task.csv | AMETEK SAP XXL Project Plan Replan MSP Task.csv__2f0764ccac__2026-05-05T02-44-15-662Z | Jyoti Nain | 176 | True |  | Not started | True  -707.02 0 1 0 0 0 26 | Negative Float Critical 2 0 0  |  |  |  |  |
| 357ae9be-8a60-8185-8aca-c561ef72a9ff | 2506 | Simulate Load | Data | 1.2.4.2.14.3 | 1.2.4.2.14.3 | 2026-09-30 | 2026-09-30 | 2026-04-09 | 0 | 6 | 2503 | 1 | 1 | 357ae9be-8a60-8145-9194-de4910f8b1a0 | 357ae9be-8a60-8127-9b9e-df2003c82808 | -718.5 | 0 | As Soon As Possible | Auto Scheduled | AMETEK SAP XXL Project Plan Replan MSP Task.csv | AMETEK SAP XXL Project Plan Replan MSP Task.csv__2f0764ccac__2026-05-05T02-44-15-662Z | Jyoti Nain | 174 | True |  | Not started | True  -718.5 0 1 0 0 0 26 | Wrong Dependency, Negative Float Critical 5 1 0  |  |  |  |  |
| 357ae9be-8a60-8185-8ff0-e7244c64b7d0 | 2974 | Post Load Validation | Finance | 1.2.3.2.3.6 | 1.2.3.2.3.6 | 2026-06-11 | 2026-06-11 | 2026-04-08 | 0 | 6 | 2968 | 1 | 2 | 357ae9be-8a60-81a6-8531-d077972e0ef9 | 357ae9be-8a60-816c-ad9a-cf035f1ccd99, 357ae9be-8a60-8172-95d7-f08cb5837bec | -196.52 | 0 | As Soon As Possible | Auto Scheduled | AMETEK SAP XXL Project Plan Replan MSP Task.csv | AMETEK SAP XXL Project Plan Replan MSP Task.csv__2f0764ccac__2026-05-05T02-44-15-662Z | Kasey Hughes | 64 | True |  | Not started | True  -196.52 0 2 2 492 0 37 | Wrong Successor, Negative Float Critical 5 0 2  |  |  |  |  |
| 357ae9be-8a60-8185-96d2-c48d3fbd6472 | 1167 | Post Load Validation | PTM | 1.2.1.45.2 | 1.2.1.45.2 | 2026-04-17 | 2026-04-17 | 2026-04-17 | 100 | 5 | 945 | 1 | 0 | 357ae9be-8a60-81ad-850f-fb363e0cc28e |  | 0 | 0 | As Soon As Possible | Auto Scheduled | AMETEK SAP XXL Project Plan Replan MSP Task.csv | AMETEK SAP XXL Project Plan Replan MSP Task.csv__2f0764ccac__2026-05-05T02-44-15-662Z | Eric Heisler |  |  |  | Done | True  0 0 0 0 0 0 12 | Low 0 0 0  |  |  |  |  |
| 357ae9be-8a60-8185-97ec-d53d670c511c | 1997 | Simulate Load | Data | 1.2.2.2.54.3 | 1.2.2.2.54.3 | 2026-05-22 | 2026-05-22 | 2026-04-16 | 0 | 6 | 1994 | 1 | 1 | 357ae9be-8a60-8180-a2bf-f38742db3729 | 357ae9be-8a60-8184-b212-ef9d09825651 | -39.27 | 0 | As Soon As Possible | Auto Scheduled | AMETEK SAP XXL Project Plan Replan MSP Task.csv | AMETEK SAP XXL Project Plan Replan MSP Task.csv__2f0764ccac__2026-05-05T02-44-15-662Z | Jyoti Nain | 36 | True |  | Not started | True  -39.27 0 1 0 0 0 26 | Negative Float Critical 2 0 0  |  |  |  |  |
| 357ae9be-8a60-8185-9ee7-e6518e6d3c10 | 2605 | PTP_CM28_Purchase_Info_Record Subcontracting and Consignment | PTP | 1.2.4.2.29 | 1.2.4.2.29 | 2026-09-29 | 2026-09-30 | 2026-04-16 | 0 | 5 | 2898 | 0 | 0 |  |  | -89.03 | 0 | As Soon As Possible | Auto Scheduled | AMETEK SAP XXL Project Plan Replan MSP Task.csv | AMETEK SAP XXL Project Plan Replan MSP Task.csv__2f0764ccac__2026-05-05T02-44-15-662Z | Muniraju Surappachari | 167 | True |  | Not started | True  -89.03 0 0 0 0 0 20 | Negative Float Critical 2 0 0  |  | 2610, 2606, 2609, 2608, 2611, 2607 | True |  |
| 357ae9be-8a60-8185-a120-ed9c36cb69bc | 4484 | GTS - Vendors initial load from S4 (Run Interface) | (Unassigned) | 1.2.5.2.57 | 1.2.5.2.57 | 2026-09-24 | 2026-09-25 | 2026-04-15 | 0 | 5 | 4162 | 0 | 0 |  |  | -81.69 | 0 | As Soon As Possible | Auto Scheduled | AMETEK SAP XXL Project Plan Replan MSP Task.csv | AMETEK SAP XXL Project Plan Replan MSP Task.csv__2f0764ccac__2026-05-05T02-44-15-662Z | COULD NOT BE DETERMINED | 163 | True |  | Not started | True  -81.69 0 0 0 0 0 20 | Negative Float Critical 2 0 0  |  | 4485, 4486 | True |  |
| 357ae9be-8a60-8185-a230-f73bf978822c | 4367 | Pre Load Validation | PTM | 1.2.5.2.32.2 | 1.2.5.2.32.2 | 2026-10-02 | 2026-10-05 | 2026-04-20 | 0 | 6 | 4365 | 1 | 1 | 357ae9be-8a60-8134-8694-e71622c183dd | 357ae9be-8a60-815f-8954-fc0054c2207c | -700.39 | 0 | As Soon As Possible | Auto Scheduled | AMETEK SAP XXL Project Plan Replan MSP Task.csv | AMETEK SAP XXL Project Plan Replan MSP Task.csv__2f0764ccac__2026-05-05T02-44-15-662Z | Brad Meseck | 168 | True |  | Not started | True  -700.39 0 1 0 0 0 26 | Negative Float Critical 2 0 0  |  |  |  |  |
| 357ae9be-8a60-8185-a2d9-d16ed2b25102 | 3044 | Load | Data | 1.2.3.2.14.5 | 1.2.3.2.14.5 | 2026-06-12 | 2026-06-15 | 2026-04-10 | 0 | 6 | 3039 | 1 | 0 | 357ae9be-8a60-81cb-9dc3-d8e7ead5ebd2 |  | -196.52 | 0 | As Soon As Possible | Auto Scheduled | AMETEK SAP XXL Project Plan Replan MSP Task.csv | AMETEK SAP XXL Project Plan Replan MSP Task.csv__2f0764ccac__2026-05-05T02-44-15-662Z | Jyoti Nain | 66 | True |  | Not started | True  -196.52 0 0 0 0 0 20 | Negative Float, Open Finish Critical 3 0 0  |  |  |  |  |
| 357ae9be-8a60-8185-a59f-d11f46aa5b30 | 33 | In Draft | (Unassigned) | 1.1.2.9.1.3.1 | 1.1.2.9.1.3.1 | 2025-04-08 | 2025-07-21 | 2025-07-21 | 100 | 7 | 27 | 0 | 0 |  |  | 0 | 0 | Finish No Earlier Than | Auto Scheduled | AMETEK SAP XXL Project Plan Replan MSP Task.csv | AMETEK SAP XXL Project Plan Replan MSP Task.csv__2f0764ccac__2026-05-05T02-44-15-662Z | COULD NOT BE DETERMINED |  |  |  | Done | True  0 0 0 0 0 0 12 | Low 0 0 0 True | 2025-07-21 |  |  |  |
| 357ae9be-8a60-8185-af98-e5cb8df2cf96 | 1843 | Error and Defect Mitigation | PTP;OTC | 1.2.2.2.25.4 | 1.2.2.2.25.4 | 2026-05-20 | 2026-05-20 | 2026-04-15 | 0 | 6 | 1839 | 1 | 1 | 357ae9be-8a60-81ce-bd07-db73319ed2eb | 357ae9be-8a60-8107-8de5-cbde720ca998 | -25.27 | 0 | As Soon As Possible | Auto Scheduled | AMETEK SAP XXL Project Plan Replan MSP Task.csv | AMETEK SAP XXL Project Plan Replan MSP Task.csv__2f0764ccac__2026-05-05T02-44-15-662Z | Nevin Varkey | 35 | True | True | Not started | True  -25.27 0 1 0 0 0 26 | Negative Float Critical 2 0 0  |  |  |  |  |
| 357ae9be-8a60-8185-b3f2-ca2a1b2b07b6 | 2640 | PTM_CM35_Inspection Plan | PTM | 1.2.4.2.34 | 1.2.4.2.34 | 2026-09-30 | 2026-10-02 | 2026-04-20 | 0 | 5 | 2898 | 0 | 0 |  |  | -86.97 | 0 | As Soon As Possible | Auto Scheduled | AMETEK SAP XXL Project Plan Replan MSP Task.csv | AMETEK SAP XXL Project Plan Replan MSP Task.csv__2f0764ccac__2026-05-05T02-44-15-662Z | Brad Meseck | 165 | True |  | Not started | True  -86.97 0 0 0 0 0 20 | Negative Float Critical 2 0 0  |  | 2641, 2643, 2644, 2646, 2642, 2645 | True |  |
| 357ae9be-8a60-8186-82d7-dea6d97c0abb | 3360 | UAT Master Data Loads Complete | Data | 1.2.4.3 | 1.2.4.3 | 2026-10-08 | 2026-10-08 | 2026-10-08 | 0 | 4 | 2422 | 1 | 3 | 357ae9be-8a60-81bb-96bd-dc1afe742a6c | 357ae9be-8a60-81c9-8f77-ef73e3057ac4, 357ae9be-8a60-8102-b891-f8c2520cbdb9, 357ae9be-8a60-811a-9740-f5ff0e5d34b5 | -43560 | 0 | As Soon As Possible | Auto Scheduled | AMETEK SAP XXL Project Plan Replan MSP Task.csv | AMETEK SAP XXL Project Plan Replan MSP Task.csv__2f0764ccac__2026-05-05T02-44-15-662Z | Jyoti Nain |  |  |  | Not started | True  -43560 0 3 0 0 0 30 | Wrong Successor, Negative Float Critical 5 0 1  |  |  |  |  |
| 357ae9be-8a60-8186-93a8-f20ab9a1e69c | 786 | Load | Finance | 1.2.1.3.2 | 1.2.1.3.2 | 2026-04-06 | 2026-04-07 | 2026-04-07 | 100 | 5 | 756 | 1 | 1 | 357ae9be-8a60-813d-a1c6-f96b9af3ecb2 | 357ae9be-8a60-8150-91fa-f9e50f826277 | 0 | 0 | As Soon As Possible | Auto Scheduled | AMETEK SAP XXL Project Plan Replan MSP Task.csv | AMETEK SAP XXL Project Plan Replan MSP Task.csv__2f0764ccac__2026-05-05T02-44-15-662Z | Kasey Hughes |  |  |  | Done | True  0 0 1 0 0 0 18 | Low 0 0 0  |  |  |  |  |
| 357ae9be-8a60-8186-9794-fcffdf03a400 | 940 | VC_Classes | (Unassigned) | 1.2.1.40 | 1.2.1.40 | 2026-04-07 | 2026-04-07 | 2026-04-07 | 100 | 4 | 425 | 0 | 0 |  |  | 0 | 0 | As Soon As Possible | Auto Scheduled | AMETEK SAP XXL Project Plan Replan MSP Task.csv | AMETEK SAP XXL Project Plan Replan MSP Task.csv__2f0764ccac__2026-05-05T02-44-15-662Z | COULD NOT BE DETERMINED |  |  |  | Done | True  0 0 0 0 0 0 12 | Low 0 0 0  |  | 1156, 1157 | True |  |
| 357ae9be-8a60-8186-a360-fa33fe377d31 | 1247 | Pre Load Validation | PTP;OTC | 1.2.1.24.2 | 1.2.1.24.2 | 2026-04-13 | 2026-04-13 | 2026-04-13 | 100 | 5 | 1245 | 0 | 1 |  | 357ae9be-8a60-81ad-a0c5-ca29d8c150ef | 0 | 0 | As Soon As Possible | Auto Scheduled | AMETEK SAP XXL Project Plan Replan MSP Task.csv | AMETEK SAP XXL Project Plan Replan MSP Task.csv__2f0764ccac__2026-05-05T02-44-15-662Z | Nevin Varkey |  |  |  | Done | True  0 0 1 0 0 0 18 | Low 0 0 0  |  |  |  |  |
| 357ae9be-8a60-8186-aa37-f5d80ed6ee19 | 4369 | Error and Defect Mitigation | PTM | 1.2.5.2.32.4 | 1.2.5.2.32.4 | 2026-10-05 | 2026-10-05 | 2026-04-20 | 0 | 6 | 4365 | 1 | 1 | 357ae9be-8a60-815f-8954-fc0054c2207c | 357ae9be-8a60-816d-83dc-eb1a223baf6c | -704.39 | 0 | Start No Earlier Than | Auto Scheduled | AMETEK SAP XXL Project Plan Replan MSP Task.csv | AMETEK SAP XXL Project Plan Replan MSP Task.csv__2f0764ccac__2026-05-05T02-44-15-662Z | Brad Meseck | 168 | True |  | Not started | True  -704.39 0 1 0 0 0 26 | Negative Float Critical 2 0 0 True | 2026-04-17 |  |  |  |
| 357ae9be-8a60-8186-afb1-ef3bb21635f1 | 2785 | Pre Load Validation | Finance | 1.2.4.2.68.2 | 1.2.4.2.68.2 | 2026-09-24 | 2026-09-24 | 2026-04-10 | 0 | 6 | 2783 | 1 | 1 | 357ae9be-8a60-810f-ac76-f30d0adb8095 | 357ae9be-8a60-81e5-814b-f16d9b43c2fe | -39090 | 0 | As Soon As Possible | Auto Scheduled | AMETEK SAP XXL Project Plan Replan MSP Task.csv | AMETEK SAP XXL Project Plan Replan MSP Task.csv__2f0764ccac__2026-05-05T02-44-15-662Z | Kasey Hughes | 167 | True |  | Not started | True  -39090 0 1 0 0 0 26 | Negative Float Critical 2 0 0  |  |  |  |  |
| 357ae9be-8a60-8187-86dd-e197730bd3a9 | 4220 | RTR_CM08_Exchange_Rates | (Unassigned) | 1.2.5.2.10 | 1.2.5.2.10 | 2026-09-25 | 2026-09-28 | 2026-04-10 | 0 | 5 | 4162 | 0 | 0 |  |  | -82.31 | 0 | As Soon As Possible | Auto Scheduled | AMETEK SAP XXL Project Plan Replan MSP Task.csv | AMETEK SAP XXL Project Plan Replan MSP Task.csv__2f0764ccac__2026-05-05T02-44-15-662Z | COULD NOT BE DETERMINED | 171 | True |  | Not started | True  -82.31 0 0 0 0 0 20 | Negative Float Critical 2 0 0  |  | 4224, 4226, 4221, 4222, 4223, 4225 | True |  |
| 357ae9be-8a60-8187-8b0f-f0d2513bcd2b | 647 | Release Transports to Client | (Unassigned) | 1.1.1.4.18 | 1.1.1.4.18 | 2026-02-09 | 2026-03-25 | 2026-03-25 | 100 | 5 | 88 | 0 | 0 |  |  | 0 | 0 | As Soon As Possible | Auto Scheduled | AMETEK SAP XXL Project Plan Replan MSP Task.csv | AMETEK SAP XXL Project Plan Replan MSP Task.csv__2f0764ccac__2026-05-05T02-44-15-662Z | COULD NOT BE DETERMINED |  |  |  | Done | True  0 0 0 0 0 0 12 | Low 0 0 0  |  | 660, 661, 657, 831, 659, 658 | True |  |
| 357ae9be-8a60-8187-907d-f23ec6498d0e | 1094 | Load File Staged and Posted "Ready" | PTM | 1.2.1.47.1 | 1.2.1.47.1 | 2026-04-15 | 2026-04-15 | 2026-04-15 | 100 | 5 | 713 | 1 | 1 | 357ae9be-8a60-8102-9c7a-df91720f2329 | 357ae9be-8a60-8151-84ee-c4d69568dbe7 | 0 | 0 | As Soon As Possible | Auto Scheduled | AMETEK SAP XXL Project Plan Replan MSP Task.csv | AMETEK SAP XXL Project Plan Replan MSP Task.csv__2f0764ccac__2026-05-05T02-44-15-662Z | Eric Heisler |  |  |  | Done | True  0 0 1 0 0 0 18 | Wrong Dependency High 3 1 0  |  |  |  |  |
| 357ae9be-8a60-8187-94fd-f9d41d3c248e | 2514 | Extract File | Data | 1.2.4.2.15.1 | 1.2.4.2.15.1 | 2026-09-30 | 2026-09-30 | 2026-04-10 | 0 | 6 | 2513 | 1 | 1 | 357ae9be-8a60-81b0-90a1-ea8f91d653f6 | 357ae9be-8a60-8105-8cfe-fe1ae1dee1d6 | -718.5 | 0 | As Soon As Possible | Auto Scheduled | AMETEK SAP XXL Project Plan Replan MSP Task.csv | AMETEK SAP XXL Project Plan Replan MSP Task.csv__2f0764ccac__2026-05-05T02-44-15-662Z | Jyoti Nain | 173 | True |  | Not started | True  -718.5 0 1 0 0 0 26 | Wrong Dependency, Negative Float Critical 5 1 0  |  |  |  |  |
| 357ae9be-8a60-8187-9534-fe5c559ba129 | 2663 | Post Load Validation | PTM | 1.2.4.2.37.2 | 1.2.4.2.37.2 | 2026-09-24 | 2026-09-24 | 2026-04-06 | 0 | 6 | 2661 | 1 | 1 | 357ae9be-8a60-8184-8151-c9b8aff3c77c | 357ae9be-8a60-8139-9e40-e75ee0d408df | -661.5 | 0 | As Soon As Possible | Auto Scheduled | AMETEK SAP XXL Project Plan Replan MSP Task.csv | AMETEK SAP XXL Project Plan Replan MSP Task.csv__2f0764ccac__2026-05-05T02-44-15-662Z | Eric Heisler | 171 | True |  | Not started | True  -661.5 0 1 0 0 0 26 | Negative Float Critical 2 0 0  |  |  |  |  |
| 357ae9be-8a60-8187-97fe-d8850eba4d94 | 3167 | Load | Data | 1.2.3.2.32.5 | 1.2.3.2.32.5 | 2026-06-17 | 2026-06-17 | 2026-04-20 | 0 | 6 | 3162 | 1 | 1 | 357ae9be-8a60-81a3-a95c-c74dd7ccbc69 | 357ae9be-8a60-8148-9dc8-fe358f72ab95 | -182.39 | 0 | As Soon As Possible | Auto Scheduled | AMETEK SAP XXL Project Plan Replan MSP Task.csv | AMETEK SAP XXL Project Plan Replan MSP Task.csv__2f0764ccac__2026-05-05T02-44-15-662Z | Jyoti Nain | 58 | True |  | Not started | True  -182.39 0 1 0 0 0 26 | Negative Float Critical 2 0 0  |  |  |  |  |
| 357ae9be-8a60-8187-9d2b-ce8f2dad5d54 | 861 | Validate Fiori | Basis | 1.1.1.5.1.10 | 1.1.1.5.1.10 | 2026-05-05 | 2026-05-05 | 2026-05-19 | 0 | 6 | 3340 | 1 | 3 | 357ae9be-8a60-8126-8bae-f08810204ae0 | 357ae9be-8a60-81a5-b808-e31a10e0ad7d, 357ae9be-8a60-81cb-8e4e-c36d0058f2e8, 357ae9be-8a60-8104-851b-fc233a971a51 | -204.02 | 0 | As Soon As Possible | Auto Scheduled | AMETEK SAP XXL Project Plan Replan MSP Task.csv | AMETEK SAP XXL Project Plan Replan MSP Task.csv__2f0764ccac__2026-05-05T02-44-15-662Z | Lokchetan Meghavath |  |  |  | Not started | True  -204.02 0 3 0 0 0 30 | Negative Float Critical 2 0 0  |  |  |  | True |
| 357ae9be-8a60-8187-a71f-cc08520b9433 | 2653 | Post Load Validation | PTM | 1.2.4.2.35.6 | 1.2.4.2.35.6 | 2026-10-01 | 2026-10-02 | 2026-04-20 | 0 | 6 | 2647 | 1 | 1 | 357ae9be-8a60-81e3-82d0-dd54bea173c6 | 357ae9be-8a60-810a-a25f-f62b02b25c9c | -695.75 | 0 | As Soon As Possible | Auto Scheduled | AMETEK SAP XXL Project Plan Replan MSP Task.csv | AMETEK SAP XXL Project Plan Replan MSP Task.csv__2f0764ccac__2026-05-05T02-44-15-662Z | Brad Meseck | 165 | True |  | Not started | True  -695.75 0 1 0 0 0 26 | Negative Float Critical 2 0 0  |  |  |  |  |
| 357ae9be-8a60-8187-ab82-d47b59e71cef | 3076 | Pre Load Validation | PTP | 1.2.3.2.19.2 | 1.2.3.2.19.2 | 2026-06-15 | 2026-06-15 | 2026-04-10 | 0 | 6 | 3074 | 1 | 1 | 357ae9be-8a60-8140-8712-fc46dfc88a59 | 357ae9be-8a60-81ea-b0ec-d860c66a4eba | -169.77 | 0 | As Soon As Possible | Auto Scheduled | AMETEK SAP XXL Project Plan Replan MSP Task.csv | AMETEK SAP XXL Project Plan Replan MSP Task.csv__2f0764ccac__2026-05-05T02-44-15-662Z | Nevin Varkey | 66 | True |  | Not started | True  -169.77 0 1 0 0 0 26 | Negative Float Critical 2 0 0  |  |  |  |  |
| 357ae9be-8a60-8188-8010-c7439fc80ab3 | 2730 | Load | PTM | 1.2.4.2.53.2 | 1.2.4.2.53.2 | 2026-09-29 | 2026-09-29 | 2026-04-16 | 0 | 6 | 2728 | 1 | 1 | 357ae9be-8a60-81da-ac47-f247828056e9 | 357ae9be-8a60-8177-b228-f674811f4308 | -41325 | 0 | As Soon As Possible | Auto Scheduled | AMETEK SAP XXL Project Plan Replan MSP Task.csv | AMETEK SAP XXL Project Plan Replan MSP Task.csv__2f0764ccac__2026-05-05T02-44-15-662Z | Brad Meseck | 166 | True |  | Not started | True  -41325 0 1 0 0 0 26 | Wrong Dependency, Negative Float Critical 5 1 0  |  |  |  |  |
| 357ae9be-8a60-8188-869f-dde87da15945 | 3190 | PTM_CM48_Equipment_Master_Service | PTM | 1.2.3.2.36 | 1.2.3.2.36 | 2026-06-08 | 2026-06-17 | 2026-04-21 | 0 | 5 | 2959 | 0 | 0 |  |  | -21.72 | 0 | As Soon As Possible | Auto Scheduled | AMETEK SAP XXL Project Plan Replan MSP Task.csv | AMETEK SAP XXL Project Plan Replan MSP Task.csv__2f0764ccac__2026-05-05T02-44-15-662Z | Brad Meseck | 57 | True |  | Not started | True  -21.72 0 0 0 0 0 20 | Negative Float Critical 2 0 0  |  | 3196, 3192, 3191, 3195, 3194, 3193 | True |  |
| 357ae9be-8a60-8188-8d98-c1d00d56c1ba | 3376 | Security Manual Tasks | Security | 1.1.1.8.1.8 | 1.1.1.8.1.8 | 2026-09-15 | 2026-09-15 | 2026-07-06 | 0 | 6 | 3368 | 1 | 0 | 357ae9be-8a60-81a4-ae6a-d96bdf165462 |  | -84.69 | 0 | As Soon As Possible | Auto Scheduled | AMETEK SAP XXL Project Plan Replan MSP Task.csv | AMETEK SAP XXL Project Plan Replan MSP Task.csv__2f0764ccac__2026-05-05T02-44-15-662Z | Manjunatha Umesha | 71 | True |  | Not started | True  -84.69 0 0 0 0 0 20 | Negative Float, Open Finish Critical 3 0 0  |  |  |  |  |
| 357ae9be-8a60-8188-ae0f-e72ddb36b708 | 1742 | Post Load Validation | Finance | 1.2.2.2.9.6 | 1.2.2.2.9.6 | 2026-05-19 | 2026-05-19 | 2026-04-09 | 0 | 6 | 1736 | 1 | 2 | 357ae9be-8a60-819d-910b-da3deb9b68af | 357ae9be-8a60-81f9-8103-c2590b210309, 357ae9be-8a60-8113-88bc-ec2b10b68227 | -48.52 | 0 | Finish No Earlier Than | Auto Scheduled | AMETEK SAP XXL Project Plan Replan MSP Task.csv | AMETEK SAP XXL Project Plan Replan MSP Task.csv__2f0764ccac__2026-05-05T02-44-15-662Z | Kasey Hughes | 40 | True | True | Not started | True  -48.52 0 2 2 78 0 37 | Wrong Dependency, Wrong Successor, Negative Float Critical 8 1 2 True | 2026-04-14 |  |  |  |
| 357ae9be-8a60-8188-b7bc-c33b3ce957d1 | 4339 | Pre Load Validation | PTP | 1.2.5.2.28.2 | 1.2.5.2.28.2 | 2026-09-29 | 2026-09-29 | 2026-04-15 | 0 | 6 | 4337 | 1 | 1 | 357ae9be-8a60-817a-aba1-dd35162a9ee7 | 357ae9be-8a60-81fb-b292-fa6330c3db5c | -40576 | 0 | As Soon As Possible | Auto Scheduled | AMETEK SAP XXL Project Plan Replan MSP Task.csv | AMETEK SAP XXL Project Plan Replan MSP Task.csv__2f0764ccac__2026-05-05T02-44-15-662Z | Nevin Varkey | 167 | True |  | Not started | True  -40576 0 1 0 0 0 26 | Negative Float Critical 2 0 0  |  |  |  |  |
| 357ae9be-8a60-8189-8d98-ca357cc13cae | 3211 | Post Load Validation | PTM | 1.2.3.2.41.2 | 1.2.3.2.41.2 | 2026-06-11 | 2026-06-12 | 2026-04-16 | 0 | 6 | 3209 | 1 | 0 | 357ae9be-8a60-81ee-803a-ded81e38ad12 |  | -150.27 | 0 | As Soon As Possible | Auto Scheduled | AMETEK SAP XXL Project Plan Replan MSP Task.csv | AMETEK SAP XXL Project Plan Replan MSP Task.csv__2f0764ccac__2026-05-05T02-44-15-662Z | Eric Heisler | 57 | True |  | Not started | True  -150.27 0 0 0 0 0 20 | Negative Float, Open Finish Critical 3 0 0  |  |  |  |  |
| 357ae9be-8a60-8189-8e58-d1a18ca9d74d | 3314 | Pre Load Validation | Finance | 1.2.3.2.67.2 | 1.2.3.2.67.2 | 2026-06-08 | 2026-06-08 | 2026-04-10 | 0 | 6 | 3312 | 1 | 1 | 357ae9be-8a60-81a7-b33d-c5c762d49420 | 357ae9be-8a60-81b8-98c5-fe1166163e1b | -7741 | 0 | As Soon As Possible | Auto Scheduled | AMETEK SAP XXL Project Plan Replan MSP Task.csv | AMETEK SAP XXL Project Plan Replan MSP Task.csv__2f0764ccac__2026-05-05T02-44-15-662Z | Kasey Hughes | 59 | True |  | Not started | True  -7741 0 1 0 0 0 26 | Wrong Dependency, Negative Float Critical 5 1 0  |  |  |  |  |
| 357ae9be-8a60-8189-961d-d7845595fbe8 | 84 | Assigned to Testing Cycle | TESTING | 1.1.2.10.4.4 | 1.1.2.10.4.4 | 2025-03-13 | 2025-03-13 | 2025-03-13 | 100 | 6 | 68 | 0 | 0 |  |  | 0 | 0 | As Soon As Possible | Auto Scheduled | AMETEK SAP XXL Project Plan Replan MSP Task.csv | AMETEK SAP XXL Project Plan Replan MSP Task.csv__2f0764ccac__2026-05-05T02-44-15-662Z | Kishore Kakarla |  |  |  | Done | True  0 0 0 0 0 0 12 | Low 0 0 0  |  |  |  |  |
| 357ae9be-8a60-8189-a761-f14ec6641244 | 1088 | Load File Staged and Posted "Ready" | PTM | 1.2.1.35.1 | 1.2.1.35.1 | 2026-04-21 | 2026-04-21 | 2026-04-17 | 100 | 5 | 710 | 1 | 1 | 357ae9be-8a60-8118-a579-fd78b8d668b8 | 357ae9be-8a60-8167-b0ab-f07e70c41731 | 0 | 0 | As Soon As Possible | Auto Scheduled | AMETEK SAP XXL Project Plan Replan MSP Task.csv | AMETEK SAP XXL Project Plan Replan MSP Task.csv__2f0764ccac__2026-05-05T02-44-15-662Z | Brad Meseck |  |  |  | Done | True  0 0 0 0 0 0 14 | Wrong Successor High 3 0 1  |  |  |  |  |
| 357ae9be-8a60-8189-aca6-c0214ba15331 | 3251 | Load | Data | 1.2.3.2.50.5 | 1.2.3.2.50.5 | 2026-06-18 | 2026-06-18 | 2026-04-21 | 0 | 6 | 3246 | 1 | 1 | 357ae9be-8a60-81ba-ae20-fcc76a803442 | 357ae9be-8a60-8101-a823-ff7b777a40ad | -187.27 | 0 | As Soon As Possible | Auto Scheduled | AMETEK SAP XXL Project Plan Replan MSP Task.csv | AMETEK SAP XXL Project Plan Replan MSP Task.csv__2f0764ccac__2026-05-05T02-44-15-662Z | Jyoti Nain | 58 | True |  | Not started | True  -187.27 0 1 0 0 0 26 | Negative Float Critical 2 0 0  |  |  |  |  |
| 357ae9be-8a60-8189-ad2a-c4e471665abe | 2521 | Manual File Staged and Posted "Ready" | OTC | 1.2.4.2.16.1 | 1.2.4.2.16.1 | 2026-09-30 | 2026-09-30 | 2026-04-10 | 0 | 6 | 2520 | 1 | 1 | 357ae9be-8a60-81b0-90a1-ea8f91d653f6 | 357ae9be-8a60-81d6-b169-caa7eea2e49c | -41130 | 0 | Start No Earlier Than | Auto Scheduled | AMETEK SAP XXL Project Plan Replan MSP Task.csv | AMETEK SAP XXL Project Plan Replan MSP Task.csv__2f0764ccac__2026-05-05T02-44-15-662Z | Ric Haraida | 173 | True |  | Not started | True  -41130 0 1 0 0 0 26 | Wrong Dependency, Negative Float Critical 5 1 0 True | 2026-04-06 |  |  |  |
| 357ae9be-8a60-818a-8a5e-dc27598470df | 1720 | Close Client | Basis | 1.2.2.2.6.3 | 1.2.2.2.6.3 | 2026-05-21 | 2026-05-21 | 2026-04-06 | 0 | 6 | 1717 | 0 | 0 |  |  | -1441 | 0 | As Soon As Possible | Auto Scheduled | AMETEK SAP XXL Project Plan Replan MSP Task.csv | AMETEK SAP XXL Project Plan Replan MSP Task.csv__2f0764ccac__2026-05-05T02-44-15-662Z | Lokchetan Meghavath | 45 | True |  | Not started | True  -1441 0 0 0 0 0 20 | Negative Float, Open Start, Open Finish Critical 4 0 0  |  |  |  |  |
| 357ae9be-8a60-818a-8e36-d0becaf94836 | 4178 | Extend GL to all Company Codes | Finance | 1.2.5.2.3.7 | 1.2.5.2.3.7 | 2026-09-29 | 2026-09-29 | 2026-04-09 | 0 | 6 | 4171 | 1 | 1 | 357ae9be-8a60-817f-ac30-d49da3420dd8 | 357ae9be-8a60-81fc-8ed1-c15af66a0e09 | -718.52 | 0 | As Soon As Possible | Auto Scheduled | AMETEK SAP XXL Project Plan Replan MSP Task.csv | AMETEK SAP XXL Project Plan Replan MSP Task.csv__2f0764ccac__2026-05-05T02-44-15-662Z | Kasey Hughes | 173 | True |  | Not started | True  -718.52 0 1 0 0 0 26 | Negative Float Critical 2 0 0  |  |  |  |  |
| 357ae9be-8a60-818a-9e40-ceef92b50997 | 72 | Assigned to Testing Cycle | TESTING | 1.1.2.10.1.4 | 1.1.2.10.1.4 | 2025-03-13 | 2025-03-13 | 2025-03-13 | 100 | 6 | 59 | 0 | 0 |  |  | 0 | 0 | As Soon As Possible | Auto Scheduled | AMETEK SAP XXL Project Plan Replan MSP Task.csv | AMETEK SAP XXL Project Plan Replan MSP Task.csv__2f0764ccac__2026-05-05T02-44-15-662Z | Kishore Kakarla |  |  |  | Done | True  0 0 0 0 0 0 12 | Low 0 0 0  |  |  |  |  |
| 357ae9be-8a60-818a-9f6c-fbf3cd888a64 | 2671 | Run ALE Transaction to QS5 from DS4 130 | PTM | 1.2.4.2.40.1 | 1.2.4.2.40.1 | 2026-09-29 | 2026-09-29 | 2026-04-16 | 0 | 6 | 2670 | 1 | 1 | 357ae9be-8a60-81d8-b3a1-c0e88fdfae1f | 357ae9be-8a60-81cd-9be8-e71c99cf6a97 | -672.25 | 0 | As Soon As Possible | Auto Scheduled | AMETEK SAP XXL Project Plan Replan MSP Task.csv | AMETEK SAP XXL Project Plan Replan MSP Task.csv__2f0764ccac__2026-05-05T02-44-15-662Z | Eric Heisler | 166 | True |  | Not started | True  -672.25 0 1 0 0 0 26 | Wrong Dependency, Negative Float Critical 5 1 0  |  |  |  |  |
| 357ae9be-8a60-818a-ac08-c60d28b5a42d | 1927 | Run ALE Transaction to QS5 from DS4 130 | PTM | 1.2.2.2.38.1 | 1.2.2.2.38.1 | 2026-05-18 | 2026-05-19 | 2026-04-06 | 0 | 6 | 1926 | 1 | 1 | 357ae9be-8a60-81c6-9d1b-f7f33881528a | 357ae9be-8a60-819b-ac12-dc5034db999a | -19.52 | 0 | As Soon As Possible | Auto Scheduled | AMETEK SAP XXL Project Plan Replan MSP Task.csv | AMETEK SAP XXL Project Plan Replan MSP Task.csv__2f0764ccac__2026-05-05T02-44-15-662Z | Eric Heisler | 43 | True | True | Not started | True  -19.52 0 1 0 0 0 26 | Negative Float Critical 2 0 0  |  |  |  |  |
| 357ae9be-8a60-818a-afb2-e5962f5c53fc | 1242 | Close Client | Basis | 1.2.1.15.9 | 1.2.1.15.9 | 2026-04-09 | 2026-04-09 | 2026-04-09 | 100 | 5 | 762 | 1 | 0 | 357ae9be-8a60-81bd-b11f-ddf90c656d6c |  | 0 | 0 | As Soon As Possible | Auto Scheduled | AMETEK SAP XXL Project Plan Replan MSP Task.csv | AMETEK SAP XXL Project Plan Replan MSP Task.csv__2f0764ccac__2026-05-05T02-44-15-662Z | Lokchetan Meghavath |  |  |  | Done | True  0 0 0 0 0 0 12 | Low 0 0 0  |  |  |  |  |
| 357ae9be-8a60-818b-8bc4-f0c4b16b0a1d | 714 | PTM_CM53_Super_Routing | PTM | 1.2.1.48 | 1.2.1.48 | 2026-04-16 | 2026-04-17 | 2026-04-20 | 100 | 4 | 425 | 0 | 0 |  |  | 0 | 0 | As Soon As Possible | Auto Scheduled | AMETEK SAP XXL Project Plan Replan MSP Task.csv | AMETEK SAP XXL Project Plan Replan MSP Task.csv__2f0764ccac__2026-05-05T02-44-15-662Z | Brad Meseck |  |  |  | Done | True  0 0 0 0 0 0 12 | Low 0 0 0  |  | 1101, 1104, 1103, 1102, 1105, 1100 | True |  |
| 357ae9be-8a60-818b-8cf2-f2f0d32e0575 | 2747 | Post Load Validation | OTC | 1.2.4.2.57.2 | 1.2.4.2.57.2 | 2026-09-25 | 2026-09-25 | 2026-04-15 | 0 | 6 | 2745 | 1 | 0 | 357ae9be-8a60-81ee-80ef-f16d7d611c40 |  | -650.5 | 0 | As Soon As Possible | Auto Scheduled | AMETEK SAP XXL Project Plan Replan MSP Task.csv | AMETEK SAP XXL Project Plan Replan MSP Task.csv__2f0764ccac__2026-05-05T02-44-15-662Z | James VanRiper | 163 | True |  | Not started | True  -650.5 0 0 0 0 0 20 | Wrong Dependency, Negative Float, Open Finish Critical 6 1 0  |  |  |  |  |
| 357ae9be-8a60-818b-9175-eb22ea59c972 | 2480 | Post Load Validation | Finance | 1.2.4.2.9.6 | 1.2.4.2.9.6 | 2026-09-25 | 2026-09-25 | 2026-04-09 | 0 | 6 | 2474 | 1 | 1 | 357ae9be-8a60-81f5-83b7-cf3dc192f6d2 | 357ae9be-8a60-8194-8b31-ebdfccfeb50e | -690.5 | 0 | Finish No Earlier Than | Auto Scheduled | AMETEK SAP XXL Project Plan Replan MSP Task.csv | AMETEK SAP XXL Project Plan Replan MSP Task.csv__2f0764ccac__2026-05-05T02-44-15-662Z | Kasey Hughes | 169 | True |  | Not started | True  -690.5 0 1 1 536 0 31 | Wrong Dependency, Wrong Successor, Negative Float Critical 8 1 1 True | 2026-04-14 |  |  |  |

| id | uid | name | workstream | outlineNumber | wbs | start | finish | baselineFinish | pct | outlineLevel | parentUid | predCount | sucCount | predIds | sucIds | totalSlackDaysRaw | freeSlackDaysRaw | constraintType | taskMode | mspSourceFile | mspImportVersion | assignedTo | slipDays | isSlipped | isDue14 | status | cpm | scheduleQuality | constraintDate | childUids | isSummary |
| --- | --- | --- | --- | --- | --- | --- | --- | --- | --- | --- | --- | --- | --- | --- | --- | --- | --- | --- | --- | --- | --- | --- | --- | --- | --- | --- | --- | --- | --- | --- | --- |
| 357ae9be-8a60-818b-9728-c96906c645be | 1003 | Load | Data | 1.2.1.20.5 | 1.2.1.20.5 | 2026-04-15 | 2026-04-15 | 2026-04-14 | 100 | 5 | 752 | 0 | 1 |  | 357ae9be-8a60-8108-8584-eeec48be6efb | 0 | 0 | As Soon As Possible | Auto Scheduled | AMETEK SAP XXL Project Plan Replan MSP Task.csv | AMETEK SAP XXL Project Plan Replan MSP Task.csv__2f0764ccac__2026-05-05T02-44-15-662Z | Jyoti Nain |  |  |  | Done | True  0 0 1 0 0 0 18 | Low 0 0 0  |  |  |  |
| 357ae9be-8a60-818b-98b5-f25c3b0cfedb | 2568 | Load | Data | 1.2.4.2.23.5 | 1.2.4.2.23.5 | 2026-09-24 | 2026-09-24 | 2026-04-14 | 0 | 6 | 2563 | 1 | 2 | 357ae9be-8a60-819e-a720-effa7bff49c2 | 357ae9be-8a60-8194-8b31-ebdfccfeb50e, 357ae9be-8a60-8199-8452-dbd4be1c21ee | -650 | 0 | As Soon As Possible | Auto Scheduled | AMETEK SAP XXL Project Plan Replan MSP Task.csv | AMETEK SAP XXL Project Plan Replan MSP Task.csv__2f0764ccac__2026-05-05T02-44-15-662Z | Jyoti Nain | 163 | True |  | Not started | True  -650 0 2 2 696 0 37 | Wrong Successor, Negative Float Critical 5 0 2  |  |  |  |
| 357ae9be-8a60-818b-a012-e74c7d3abc24 | 2543 | Load | Data | 1.2.4.2.19.5 | 1.2.4.2.19.5 | 2026-09-24 | 2026-09-24 | 2026-04-14 | 0 | 6 | 2538 | 0 | 1 |  | 357ae9be-8a60-814e-a320-ec1ac9bb1c59 | -726 | 0 | As Soon As Possible | Auto Scheduled | AMETEK SAP XXL Project Plan Replan MSP Task.csv | AMETEK SAP XXL Project Plan Replan MSP Task.csv__2f0764ccac__2026-05-05T02-44-15-662Z | Jyoti Nain | 163 | True |  | Not started | True  -726 0 1 0 0 0 26 | Negative Float, Open Start Critical 3 0 0  |  |  |  |
| 357ae9be-8a60-818b-a895-ec53da76694a | 3299 | Commodity Code/Tarif | (Unassigned) | 1.2.3.2.63 | 1.2.3.2.63 | 2026-06-16 | 2026-06-19 | 2026-04-16 | 0 | 5 | 2959 | 0 | 0 |  |  | -23.78 | 0 | As Soon As Possible | Auto Scheduled | AMETEK SAP XXL Project Plan Replan MSP Task.csv | AMETEK SAP XXL Project Plan Replan MSP Task.csv__2f0764ccac__2026-05-05T02-44-15-662Z | COULD NOT BE DETERMINED | 64 | True |  | Not started | True  -23.78 0 0 0 0 0 20 | Negative Float Critical 2 0 0  |  | 3300, 3301 | True |
| 357ae9be-8a60-818b-bb11-f61b1ffa1511 | 2720 | Post Load Validation | PTP | 1.2.4.2.51.3 | 1.2.4.2.51.3 | 2026-10-02 | 2026-10-05 | 2026-04-13 | 0 | 6 | 2717 | 1 | 0 | 357ae9be-8a60-81e1-9d56-f9d53d29ff98 |  | -699.75 | 0 | As Soon As Possible | Auto Scheduled | AMETEK SAP XXL Project Plan Replan MSP Task.csv | AMETEK SAP XXL Project Plan Replan MSP Task.csv__2f0764ccac__2026-05-05T02-44-15-662Z | Nevin Varkey | 175 | True |  | Not started | True  -699.75 0 0 0 0 0 20 | Wrong Dependency, Negative Float, Open Finish Critical 6 1 0  |  |  |  |
| 357ae9be-8a60-818b-bed9-e9f0bce5df46 | 2472 | Load | Data | 1.2.4.2.8.5 | 1.2.4.2.8.5 | 2026-09-28 | 2026-09-28 | 2026-04-08 | 0 | 6 | 2467 | 1 | 1 | 357ae9be-8a60-8141-8898-d05c92d4cdf5 | 357ae9be-8a60-8116-8f70-cb9213ced7a7 | -662.5 | 0 | As Soon As Possible | Auto Scheduled | AMETEK SAP XXL Project Plan Replan MSP Task.csv | AMETEK SAP XXL Project Plan Replan MSP Task.csv__2f0764ccac__2026-05-05T02-44-15-662Z | Jyoti Nain | 173 | True |  | Not started | True  -662.5 0 1 0 0 0 26 | Negative Float Critical 2 0 0  |  |  |  |
| 357ae9be-8a60-818c-a647-fbf7124dde5d | 3390 | Manual Activities Group 3 | Development;PTM;Finance;PMO;Europe IT lead;OTC;TESTING | 1.1.1.8.2.6 | 1.1.1.8.2.6 | 2026-09-22 | 2026-09-23 | 2026-07-14 | 0 | 6 | 3384 | 1 | 1 | 357ae9be-8a60-816f-b754-ca5bed645e5f | 357ae9be-8a60-81aa-9825-d99fa03138a1 | -90.75 | 0 | As Soon As Possible | Auto Scheduled | AMETEK SAP XXL Project Plan Replan MSP Task.csv | AMETEK SAP XXL Project Plan Replan MSP Task.csv__2f0764ccac__2026-05-05T02-44-15-662Z | Bijoykrishna Das | 71 | True |  | Not started | True  -90.75 0 1 0 0 0 26 | Negative Float Critical 2 0 0  |  |  |  |
| 357ae9be-8a60-818c-a935-e82610089ed2 | 1081 | Load File Staged and Posted "Ready" | PTM | 1.2.1.34.1 | 1.2.1.34.1 | 2026-04-20 | 2026-04-20 | 2026-04-16 | 100 | 5 | 709 | 1 | 1 | 357ae9be-8a60-81ec-8a8b-c4d81b51fbfb | 357ae9be-8a60-81a9-a799-fb2443f06fc1 | 0 | 0 | Start No Earlier Than | Auto Scheduled | AMETEK SAP XXL Project Plan Replan MSP Task.csv | AMETEK SAP XXL Project Plan Replan MSP Task.csv__2f0764ccac__2026-05-05T02-44-15-662Z | Brad Meseck |  |  |  | Done | True  0 0 1 1 11 0 23 | Wrong Successor High 3 0 1 True | 2026-04-20 |  |  |
| 357ae9be-8a60-818c-aa73-e510cfb483fd | 815 | Load | Finance | 1.2.1.12.2 | 1.2.1.12.2 | 2026-04-16 | 2026-04-21 | 2026-04-15 | 100 | 5 | 761 | 1 | 1 | 357ae9be-8a60-81eb-bdee-f538164fc074 | 357ae9be-8a60-8138-800d-d0133e65175e | 0 | 0 | Finish No Earlier Than | Auto Scheduled | AMETEK SAP XXL Project Plan Replan MSP Task.csv | AMETEK SAP XXL Project Plan Replan MSP Task.csv__2f0764ccac__2026-05-05T02-44-15-662Z | Kasey Hughes |  |  |  | Done | True  0 0 1 0 0 0 18 | Low 0 0 0 True | 2026-04-21 |  |  |
| 357ae9be-8a60-818c-ab70-f3fc6ffffe05 | 3266 | Load | PTM | 1.2.3.2.53.2 | 1.2.3.2.53.2 | 2026-06-12 | 2026-06-12 | 2026-04-16 | 0 | 6 | 3264 | 1 | 1 | 357ae9be-8a60-8105-8ebe-e88a086ba9ef | 357ae9be-8a60-81cf-b3b3-c58386b06300 | -10006 | 0 | As Soon As Possible | Auto Scheduled | AMETEK SAP XXL Project Plan Replan MSP Task.csv | AMETEK SAP XXL Project Plan Replan MSP Task.csv__2f0764ccac__2026-05-05T02-44-15-662Z | Brad Meseck | 57 | True |  | Not started | True  -10006 0 1 0 0 0 26 | Wrong Dependency, Negative Float Critical 5 1 0  |  |  |  |
| 357ae9be-8a60-818d-90a1-ed7101496413 | 2534 | Simulate Load | Data | 1.2.4.2.18.3 | 1.2.4.2.18.3 | 2026-10-01 | 2026-10-01 | 2026-04-10 | 0 | 6 | 2531 | 1 | 1 | 357ae9be-8a60-815f-8b19-f44739a583fb | 357ae9be-8a60-8173-85d2-ffceab2bc257 | -700.75 | 0 | As Soon As Possible | Auto Scheduled | AMETEK SAP XXL Project Plan Replan MSP Task.csv | AMETEK SAP XXL Project Plan Replan MSP Task.csv__2f0764ccac__2026-05-05T02-44-15-662Z | Jyoti Nain | 174 | True |  | Not started | True  -700.75 0 1 0 0 0 26 | Negative Float Critical 2 0 0  |  |  |  |
| 357ae9be-8a60-818d-9600-fd89f999abbb | 2028 | SPL Master File | (Unassigned) | 1.2.2.2.64 | 1.2.2.2.64 | 2026-05-26 | 2026-05-26 | 2025-03-13 | 0 | 5 | 2800 | 0 | 0 |  |  | -6.13 | 0 | As Soon As Possible | Auto Scheduled | AMETEK SAP XXL Project Plan Replan MSP Task.csv | AMETEK SAP XXL Project Plan Replan MSP Task.csv__2f0764ccac__2026-05-05T02-44-15-662Z | COULD NOT BE DETERMINED | 439 | True |  | Not started | True  -6.13 0 0 0 0 0 20 | Negative Float High 2 0 0  |  | 2029, 2030 | True |
| 357ae9be-8a60-818d-96f5-c993331329a2 | 4386 | PTM_CM48_Equipment_Master_Serial Numbers | PTM | 1.2.5.2.35 | 1.2.5.2.35 | 2026-09-30 | 2026-10-02 | 2026-04-20 | 0 | 5 | 4162 | 0 | 0 |  |  | -86.97 | 0 | As Soon As Possible | Auto Scheduled | AMETEK SAP XXL Project Plan Replan MSP Task.csv | AMETEK SAP XXL Project Plan Replan MSP Task.csv__2f0764ccac__2026-05-05T02-44-15-662Z | Brad Meseck | 165 | True |  | Not started | True  -86.97 0 0 0 0 0 20 | Negative Float Critical 2 0 0  |  | 4390, 4388, 4389, 4392, 4391, 4387 | True |
| 357ae9be-8a60-818d-9760-d2c9f57a5a58 | 3290 | GTS - HTS - Create | (Unassigned) | 1.2.3.2.60 | 1.2.3.2.60 | 2026-06-08 | 2026-06-08 | 2026-04-06 | 0 | 5 | 2959 | 0 | 0 |  |  | -15.19 | 0 | As Soon As Possible | Auto Scheduled | AMETEK SAP XXL Project Plan Replan MSP Task.csv | AMETEK SAP XXL Project Plan Replan MSP Task.csv__2f0764ccac__2026-05-05T02-44-15-662Z | COULD NOT BE DETERMINED | 63 | True |  | Not started | True  -15.19 0 0 0 0 0 20 | Negative Float Critical 2 0 0  |  | 3291, 3292 | True |
| 357ae9be-8a60-818d-9b1a-ea6b145bd69d | 1690 | RTR_CM03_Cost Center Hierarchy | (Unassigned) | 1.2.2.2.2 | 1.2.2.2.2 | 2026-05-19 | 2026-05-19 | 2026-04-07 | 0 | 5 | 2800 | 0 | 0 |  |  | -9.56 | 0 | As Soon As Possible | Auto Scheduled | AMETEK SAP XXL Project Plan Replan MSP Task.csv | AMETEK SAP XXL Project Plan Replan MSP Task.csv__2f0764ccac__2026-05-05T02-44-15-662Z | COULD NOT BE DETERMINED | 42 | True | True | Not started | True  -9.56 0 0 0 0 0 20 | Negative Float High 2 0 0  |  | 1691, 1692, 1693 | True |
| 357ae9be-8a60-818d-a0ad-fd2514efcf2f | 1116 | Load | Data | 1.2.1.51.5 | 1.2.1.51.5 | 2026-04-16 | 2026-04-16 | 2026-04-21 | 100 | 5 | 691 | 1 | 1 | 357ae9be-8a60-81ff-a9cd-f43027fb7257 | 357ae9be-8a60-81d1-83ad-eccb38381cae | 0 | 0 | As Soon As Possible | Auto Scheduled | AMETEK SAP XXL Project Plan Replan MSP Task.csv | AMETEK SAP XXL Project Plan Replan MSP Task.csv__2f0764ccac__2026-05-05T02-44-15-662Z | Jyoti Nain |  |  |  | Done | True  0 0 1 0 0 0 18 | Low 0 0 0  |  |  |  |
| 357ae9be-8a60-818d-a593-ffdd9bc07d19 | 2542 | Error and Defect Mitigation | PTP | 1.2.4.2.19.4 | 1.2.4.2.19.4 | 2026-10-01 | 2026-10-02 | 2026-04-14 | 0 | 6 | 2538 | 1 | 0 | 357ae9be-8a60-81ed-8d02-e48f989626d4 |  | -691.75 | 0 | As Soon As Possible | Auto Scheduled | AMETEK SAP XXL Project Plan Replan MSP Task.csv | AMETEK SAP XXL Project Plan Replan MSP Task.csv__2f0764ccac__2026-05-05T02-44-15-662Z | Nevin Varkey | 171 | True |  | Not started | True  -691.75 0 0 0 0 0 20 | Negative Float, Open Finish Critical 3 0 0  |  |  |  |
| 357ae9be-8a60-818d-b3b7-e81cfab2aacb | 3236 | Load | Data | 1.2.3.2.47.5 | 1.2.3.2.47.5 | 2026-06-16 | 2026-06-17 | 2026-04-17 | 0 | 6 | 3231 | 1 | 1 | 357ae9be-8a60-8129-8416-f2cfae7deb32 | 357ae9be-8a60-8108-90f1-c7a2d99193b6 | -187.27 | 0 | As Soon As Possible | Auto Scheduled | AMETEK SAP XXL Project Plan Replan MSP Task.csv | AMETEK SAP XXL Project Plan Replan MSP Task.csv__2f0764ccac__2026-05-05T02-44-15-662Z | Jyoti Nain | 61 | True |  | Not started | True  -187.27 0 1 1 422 0 31 | Wrong Successor, Negative Float Critical 5 0 1  |  |  |  |
| 357ae9be-8a60-818d-b654-e4cfcc5ceee2 | 1986 | Simulate Load | Data | 1.2.2.2.52.3 | 1.2.2.2.52.3 | 2026-05-18 | 2026-05-19 | 2026-04-10 | 0 | 6 | 1983 | 1 | 1 | 357ae9be-8a60-819e-9b9e-ecf70609016f | 357ae9be-8a60-8141-acad-c3a930ba728c | -29.52 | 0 | As Soon As Possible | Auto Scheduled | AMETEK SAP XXL Project Plan Replan MSP Task.csv | AMETEK SAP XXL Project Plan Replan MSP Task.csv__2f0764ccac__2026-05-05T02-44-15-662Z | Jyoti Nain | 39 | True | True | Not started | True  -29.52 0 1 0 0 0 26 | Negative Float Critical 2 0 0  |  |  |  |
| 357ae9be-8a60-818d-ba41-f072a1b19f95 | 4496 | GTS - HTS - Assign | (Unassigned) | 1.2.5.2.61 | 1.2.5.2.61 | 2026-10-01 | 2026-10-02 | 2026-04-16 | 0 | 5 | 4162 | 0 | 0 |  |  | -89.03 | 0 | As Soon As Possible | Auto Scheduled | AMETEK SAP XXL Project Plan Replan MSP Task.csv | AMETEK SAP XXL Project Plan Replan MSP Task.csv__2f0764ccac__2026-05-05T02-44-15-662Z | COULD NOT BE DETERMINED | 169 | True |  | Not started | True  -89.03 0 0 0 0 0 20 | Negative Float Critical 2 0 0  |  | 4497, 4498 | True |
| 357ae9be-8a60-818d-bfbf-c0d752f4ba3b | 3229 | Load | Data | 1.2.3.2.46.5 | 1.2.3.2.46.5 | 2026-06-12 | 2026-06-15 | 2026-04-16 | 0 | 6 | 3224 | 1 | 1 | 357ae9be-8a60-8152-819e-e8b040f85155 | 357ae9be-8a60-8123-8eaa-c9e863cb2bb1 | -187.27 | 0 | As Soon As Possible | Auto Scheduled | AMETEK SAP XXL Project Plan Replan MSP Task.csv | AMETEK SAP XXL Project Plan Replan MSP Task.csv__2f0764ccac__2026-05-05T02-44-15-662Z | Jyoti Nain | 60 | True |  | Not started | True  -187.27 0 1 0 0 0 26 | Negative Float Critical 2 0 0  |  |  |  |
| 357ae9be-8a60-818e-81c6-e1e7370d590d | 1735 | Post Load Validation | Finance | 1.2.2.2.8.6 | 1.2.2.2.8.6 | 2026-05-20 | 2026-05-20 | 2026-04-08 | 0 | 6 | 1729 | 1 | 0 | 357ae9be-8a60-815d-a9dc-cef0b30e4984 |  | -20.52 | 0 | As Soon As Possible | Auto Scheduled | AMETEK SAP XXL Project Plan Replan MSP Task.csv | AMETEK SAP XXL Project Plan Replan MSP Task.csv__2f0764ccac__2026-05-05T02-44-15-662Z | Kasey Hughes | 42 | True | True | Not started | True  -20.52 0 0 0 0 0 20 | Negative Float, Open Finish Critical 3 0 0  |  |  |  |
| 357ae9be-8a60-818e-8a4c-c51abc58637b | 1182 | Load Descartes XML File | OTC | 1.2.1.61.1 | 1.2.1.61.1 | 2026-04-06 | 2026-04-06 | 2026-04-06 | 100 | 5 | 700 | 1 | 1 | 357ae9be-8a60-8197-ad05-e5135192af2c | 357ae9be-8a60-8192-b464-cdc8ed4ef9eb | 0 | 0 | As Soon As Possible | Auto Scheduled | AMETEK SAP XXL Project Plan Replan MSP Task.csv | AMETEK SAP XXL Project Plan Replan MSP Task.csv__2f0764ccac__2026-05-05T02-44-15-662Z | James VanRiper |  |  |  | Done | True  0 0 1 0 0 0 18 | Wrong Dependency High 3 1 0  |  |  |  |
| 357ae9be-8a60-818e-8e2a-d04e013addbf | 233 | Develop Work Instructions | Training | 1.4.1.1.4 | 1.4.1.1.4 | 2026-05-01 | 2026-08-28 | 2026-08-03 | 21 | 5 | 216 | 1 | 0 | 357ae9be-8a60-811f-8c92-cfb2c88118f5 |  | 51 | 51 | Finish No Earlier Than | Auto Scheduled | AMETEK SAP XXL Project Plan Replan MSP Task.csv | AMETEK SAP XXL Project Plan Replan MSP Task.csv__2f0764ccac__2026-05-05T02-44-15-662Z | Karen Zalnis | 25 | True |  | Not started |   51 51 0 0 0 1 8 | Open Finish Medium 1 0 0 True | 2026-08-28 |  |  |
| 357ae9be-8a60-818e-8f34-de8741a5d2b6 | 2793 | Test Kickoff | PMO | 1.3.3.6.6 | 1.3.3.6.6 | 2026-06-08 | 2026-06-08 | 2026-06-18 | 0 | 5 | 2791 | 1 | 1 | 357ae9be-8a60-810a-9fa2-cf71f3578f1b | 357ae9be-8a60-8114-aae7-c236068f95d4 | -726 | 0 | Must Start On | Auto Scheduled | AMETEK SAP XXL Project Plan Replan MSP Task.csv | AMETEK SAP XXL Project Plan Replan MSP Task.csv__2f0764ccac__2026-05-05T02-44-15-662Z | Renee DiTullio |  |  |  | Not started | True  -726 0 1 0 0 1 18 | Negative Float Critical 2 0 0 True | 2026-06-08 |  |  |
| 357ae9be-8a60-818e-9640-e49481105f98 | 3259 | Pre Load Validation | Finance | 1.2.3.2.52.2 | 1.2.3.2.52.2 | 2026-06-08 | 2026-06-08 | 2026-04-10 | 0 | 6 | 3257 | 1 | 1 | 357ae9be-8a60-8148-a5ac-fb815177e912 | 357ae9be-8a60-8164-bed5-e3e983e68023 | -8971 | 0 | As Soon As Possible | Auto Scheduled | AMETEK SAP XXL Project Plan Replan MSP Task.csv | AMETEK SAP XXL Project Plan Replan MSP Task.csv__2f0764ccac__2026-05-05T02-44-15-662Z | Kasey Hughes | 59 | True |  | Not started | True  -8971 0 1 0 0 0 26 | Wrong Dependency, Negative Float Critical 5 1 0  |  |  |  |
| 357ae9be-8a60-818e-9931-df8e6f1719d0 | 871 | Manual activities group 2 | Development;PTM;Finance;PMO;Europe IT lead;OTC;TESTING | 1.1.1.5.2.4 | 1.1.1.5.2.4 | 2026-05-11 | 2026-05-11 | 2026-05-25 | 0 | 6 | 867 | 1 | 1 | 357ae9be-8a60-81c0-98b0-e5b24aa79782 | 357ae9be-8a60-815f-9501-f55e31b783c3 | -25.5 | 0 | As Soon As Possible | Auto Scheduled | AMETEK SAP XXL Project Plan Replan MSP Task.csv | AMETEK SAP XXL Project Plan Replan MSP Task.csv__2f0764ccac__2026-05-05T02-44-15-662Z | Bijoykrishna Das |  |  | True | Not started | True  -25.5 0 1 0 0 0 18 | Negative Float Critical 2 0 0  |  |  |  |
| 357ae9be-8a60-818e-9a66-eb2accc3d0bd | 4260 | Manual File Staged and Posted "Ready" | OTC | 1.2.5.2.16.1 | 1.2.5.2.16.1 | 2026-09-30 | 2026-09-30 | 2026-04-10 | 0 | 6 | 4259 | 1 | 1 | 357ae9be-8a60-81d1-8841-f9e0052c8453 | 357ae9be-8a60-8140-9e72-c35892cb42f3 | -41131 | 0 | Start No Earlier Than | Auto Scheduled | AMETEK SAP XXL Project Plan Replan MSP Task.csv | AMETEK SAP XXL Project Plan Replan MSP Task.csv__2f0764ccac__2026-05-05T02-44-15-662Z | Ric Haraida | 173 | True |  | Not started | True  -41131 0 1 0 0 0 26 | Negative Float Critical 2 0 0 True | 2026-04-06 |  |  |
| 357ae9be-8a60-818e-aa66-d70d28c87735 | 55 | RICEFW Development Tasks (RICEFW Tracker) | Development | 1.1.2.10 | 1.1.2.10 | 2025-03-13 | 2025-03-13 | 2025-03-13 | 100 | 4 | 248 | 0 | 0 |  |  | 0 | 0 | As Soon As Possible | Auto Scheduled | AMETEK SAP XXL Project Plan Replan MSP Task.csv | AMETEK SAP XXL Project Plan Replan MSP Task.csv__2f0764ccac__2026-05-05T02-44-15-662Z | Bijoykrishna Das |  |  |  | Done | True  0 0 0 0 0 0 12 | Low 0 0 0  |  | 59, 68, 62, 65 | True |
| 357ae9be-8a60-818e-b1f8-cdaa7ee321c8 | 2532 | Load File Staged and Posted "Ready" | Finance | 1.2.4.2.18.1 | 1.2.4.2.18.1 | 2026-09-30 | 2026-09-30 | 2026-04-10 | 0 | 6 | 2531 | 1 | 1 | 357ae9be-8a60-81b0-90a1-ea8f91d653f6 | 357ae9be-8a60-815f-8b19-f44739a583fb | -42045 | 0 | As Soon As Possible | Auto Scheduled | AMETEK SAP XXL Project Plan Replan MSP Task.csv | AMETEK SAP XXL Project Plan Replan MSP Task.csv__2f0764ccac__2026-05-05T02-44-15-662Z | Kasey Hughes | 173 | True |  | Not started | True  -42045 0 1 0 0 0 26 | Wrong Dependency, Negative Float Critical 5 1 0  |  |  |  |
| 357ae9be-8a60-818e-b790-dc2cca6aee2c | 1107 | Load | PTM | 1.2.1.49.2 | 1.2.1.49.2 | 2026-04-16 | 2026-04-16 | 2026-04-17 | 100 | 5 | 949 | 1 | 1 | 357ae9be-8a60-8128-b5da-ca004ca7f481 | 357ae9be-8a60-8138-8678-e8214f22730d | 0 | 0 | As Soon As Possible | Auto Scheduled | AMETEK SAP XXL Project Plan Replan MSP Task.csv | AMETEK SAP XXL Project Plan Replan MSP Task.csv__2f0764ccac__2026-05-05T02-44-15-662Z | Eric Heisler |  |  |  | Done | True  0 0 1 0 0 0 18 | Low 0 0 0  |  |  |  |
| 357ae9be-8a60-818e-bda0-dec9020daaea | 2424 | RTR_CM02_Profit Center Hierarchy | (Unassigned) | 1.2.4.2.1 | 1.2.4.2.1 | 2026-09-24 | 2026-09-24 | 2026-04-06 | 0 | 5 | 2898 | 0 | 1 |  | 357ae9be-8a60-8145-9194-de4910f8b1a0 | -89.81 | 0 | As Soon As Possible | Auto Scheduled | AMETEK SAP XXL Project Plan Replan MSP Task.csv | AMETEK SAP XXL Project Plan Replan MSP Task.csv__2f0764ccac__2026-05-05T02-44-15-662Z | COULD NOT BE DETERMINED | 171 | True |  | Not started | True  -89.81 0 1 1 535 0 31 | Wrong Successor, Negative Float Critical 5 0 1  |  | 2426, 2427, 2425 | True |
| 357ae9be-8a60-818f-805b-db614ba956fe | 1009 | Load | PTP | 1.2.1.21.5 | 1.2.1.21.5 | 2026-04-16 | 2026-04-16 | 2026-04-15 | 100 | 5 | 692 | 1 | 1 | 357ae9be-8a60-81ba-af14-edd006ddda83 | 357ae9be-8a60-8115-b454-e9246c8f485e | 0 | 0 | As Soon As Possible | Auto Scheduled | AMETEK SAP XXL Project Plan Replan MSP Task.csv | AMETEK SAP XXL Project Plan Replan MSP Task.csv__2f0764ccac__2026-05-05T02-44-15-662Z | Nevin Varkey |  |  |  | Done | True  0 0 1 0 0 0 18 | Wrong Dependency High 3 1 0  |  |  |  |
| 357ae9be-8a60-818f-80a6-d8c478ba9f00 | 1288 | Client Config / Validation | Basis | 1.1.1.6.1.2 | 1.1.1.6.1.2 | 2026-05-21 | 2026-05-21 | 2026-05-11 | 0 | 6 | 3339 | 1 | 2 | 357ae9be-8a60-81bb-9659-e03253dd803c | 357ae9be-8a60-81fe-8223-d8b03bbc9a83, 357ae9be-8a60-8180-8d80-db23f8759c9f | -30.19 | 0 | As Soon As Possible | Auto Scheduled | AMETEK SAP XXL Project Plan Replan MSP Task.csv | AMETEK SAP XXL Project Plan Replan MSP Task.csv__2f0764ccac__2026-05-05T02-44-15-662Z | Lokchetan Meghavath | 10 | True |  | Not started | True  -30.19 0 2 0 0 0 32 | Negative Float Critical 2 0 0  |  |  |  |
| 357ae9be-8a60-818f-831c-f6235bfbdd72 | 3243 | Manual File Staged and Posted "Ready" | OTC | 1.2.3.2.49.1 | 1.2.3.2.49.1 | 2026-06-17 | 2026-06-17 | 2026-04-20 | 0 | 6 | 3242 | 1 | 1 | 357ae9be-8a60-8117-ab4c-e98bba46e9c5 | 357ae9be-8a60-81be-9309-cc7ef19947f8 | -11236 | 0 | As Soon As Possible | Auto Scheduled | AMETEK SAP XXL Project Plan Replan MSP Task.csv | AMETEK SAP XXL Project Plan Replan MSP Task.csv__2f0764ccac__2026-05-05T02-44-15-662Z | Ric Haraida | 58 | True |  | Not started | True  -11236 0 1 0 0 0 26 | Negative Float Critical 2 0 0  |  |  |  |
| 357ae9be-8a60-818f-8762-c3e3c73c007b | 3039 | OTC_CM19_Customer_Master - Sold-To | OTC | 1.2.3.2.14 | 1.2.3.2.14 | 2026-06-11 | 2026-06-15 | 2026-04-10 | 0 | 5 | 2959 | 0 | 0 |  |  | -24.19 | 0 | As Soon As Possible | Auto Scheduled | AMETEK SAP XXL Project Plan Replan MSP Task.csv | AMETEK SAP XXL Project Plan Replan MSP Task.csv__2f0764ccac__2026-05-05T02-44-15-662Z | Anitha Jothi | 66 | True |  | Not started | True  -24.19 0 0 0 0 0 20 | Negative Float Critical 2 0 0  |  | 3042, 3046, 3048, 3041, 3044, 3040, 3043, 3045, 3047 | True |
| 357ae9be-8a60-818f-8a11-f9d2f587053e | 4408 | Post Load Validation | PTM | 1.2.5.2.39.2 | 1.2.5.2.39.2 | 2026-09-25 | 2026-09-25 | 2026-04-07 | 0 | 6 | 4406 | 1 | 1 | 357ae9be-8a60-8172-bbeb-ea59cce9fa87 | 357ae9be-8a60-8145-ae7e-d6e4066a7551 | -661.52 | 0 | As Soon As Possible | Auto Scheduled | AMETEK SAP XXL Project Plan Replan MSP Task.csv | AMETEK SAP XXL Project Plan Replan MSP Task.csv__2f0764ccac__2026-05-05T02-44-15-662Z | Eric Heisler | 171 | True |  | Not started | True  -661.52 0 0 0 0 0 22 | Negative Float Critical 2 0 0  |  |  |  |
| 357ae9be-8a60-818f-9cfa-fddbf4c6cdda | 1160 | Run ALE Transaction to QS5 from DS4 130 | PTM | 1.2.1.42.1 | 1.2.1.42.1 | 2026-04-15 | 2026-04-16 | 2026-04-16 | 100 | 5 | 942 | 2 | 1 | 357ae9be-8a60-81f7-b66d-da9bf53a4502, 357ae9be-8a60-8129-9c37-e7c6a71bbf70 | 357ae9be-8a60-810b-b4a9-d061cfd26cf9 | 0 | 0 | As Soon As Possible | Auto Scheduled | AMETEK SAP XXL Project Plan Replan MSP Task.csv | AMETEK SAP XXL Project Plan Replan MSP Task.csv__2f0764ccac__2026-05-05T02-44-15-662Z | Eric Heisler |  |  |  | Done | True  0 0 1 0 0 1 18 | Wrong Dependency High 3 2 0  |  |  |  |
| 357ae9be-8a60-818f-a2a3-c1bd9d09ed72 | 1992 | Load | PTM | 1.2.2.2.53.2 | 1.2.2.2.53.2 | 2026-05-22 | 2026-05-22 | 2026-04-16 | 0 | 6 | 1990 | 1 | 1 | 357ae9be-8a60-8132-a418-ee6edf1492cb | 357ae9be-8a60-8131-9dcc-cf749a2413f9 | -2806 | 0 | As Soon As Possible | Auto Scheduled | AMETEK SAP XXL Project Plan Replan MSP Task.csv | AMETEK SAP XXL Project Plan Replan MSP Task.csv__2f0764ccac__2026-05-05T02-44-15-662Z | Brad Meseck | 36 | True |  | Not started | True  -2806 0 1 0 0 0 26 | Wrong Dependency, Negative Float Critical 5 1 0  |  |  |  |
| 357ae9be-8a60-818f-a887-f248eeb84d65 | 134 | Complete - Ready for Audit and Controls Review | (Unassigned) | 1.1.2.9.1.2.3 | 1.1.2.9.1.2.3 | 2025-08-11 | 2025-08-28 | 2025-08-28 | 100 | 7 | 26 | 1 | 0 | 357ae9be-8a60-8108-90f1-c7a2d99193b6 |  | 0 | 0 | As Soon As Possible | Auto Scheduled | AMETEK SAP XXL Project Plan Replan MSP Task.csv | AMETEK SAP XXL Project Plan Replan MSP Task.csv__2f0764ccac__2026-05-05T02-44-15-662Z | COULD NOT BE DETERMINED |  |  |  | Done | True  0 0 0 0 0 0 12 | Low 0 0 0  |  |  |  |
| 357ae9be-8a60-818f-a88e-eec76ded7930 | 3214 | Post Load Validation | PTM | 1.2.3.2.42.2 | 1.2.3.2.42.2 | 2026-06-11 | 2026-06-12 | 2026-04-16 | 0 | 6 | 3212 | 1 | 2 | 357ae9be-8a60-81af-a53d-e2aa60f48337 | 357ae9be-8a60-8108-90f1-c7a2d99193b6, 357ae9be-8a60-811d-ab49-d3747ac99661 | -166.02 | 0 | As Soon As Possible | Auto Scheduled | AMETEK SAP XXL Project Plan Replan MSP Task.csv | AMETEK SAP XXL Project Plan Replan MSP Task.csv__2f0764ccac__2026-05-05T02-44-15-662Z | Eric Heisler | 57 | True |  | Not started | True  -166.02 0 2 2 533 0 37 | Wrong Successor, Negative Float Critical 5 0 2  |  |  |  |
| 357ae9be-8a60-818f-ae13-f76df30b9be9 | 701 | GTS - HTS - Assign | (Unassigned) | 1.2.1.62 | 1.2.1.62 | 2026-04-16 | 2026-04-16 | 2026-04-16 | 100 | 4 | 425 | 0 | 0 |  |  | 0 | 0 | As Soon As Possible | Auto Scheduled | AMETEK SAP XXL Project Plan Replan MSP Task.csv | AMETEK SAP XXL Project Plan Replan MSP Task.csv__2f0764ccac__2026-05-05T02-44-15-662Z | COULD NOT BE DETERMINED |  |  |  | Done | True  0 0 0 0 0 0 12 | Low 0 0 0  |  | 1185, 1184 | True |
| 357ae9be-8a60-818f-be8e-fa86486fe95d | 875 | Import Group 5 - Config to support dev workbench | Development | 1.1.1.5.2.8 | 1.1.1.5.2.8 | 2026-05-13 | 2026-05-14 | 2026-05-28 | 0 | 6 | 867 | 1 | 1 | 357ae9be-8a60-81ac-b7c8-c7a23609996d | 357ae9be-8a60-8142-893f-c75618e34291 | -204.02 | 0 | As Soon As Possible | Auto Scheduled | AMETEK SAP XXL Project Plan Replan MSP Task.csv | AMETEK SAP XXL Project Plan Replan MSP Task.csv__2f0764ccac__2026-05-05T02-44-15-662Z | Bijoykrishna Das |  |  | True | Not started | True  -204.02 0 1 0 0 0 18 | Negative Float Critical 2 0 0  |  |  |  |
| 357ae9be-8a60-8190-8232-ed5b83b19f6d | 1950 | PTM_CM52_Super_BOM | PTM | 1.2.2.2.46 | 1.2.2.2.46 | 2026-05-21 | 2026-05-25 | 2026-04-16 | 0 | 5 | 2800 | 0 | 0 |  |  | -8.41 | 0 | As Soon As Possible | Auto Scheduled | AMETEK SAP XXL Project Plan Replan MSP Task.csv | AMETEK SAP XXL Project Plan Replan MSP Task.csv__2f0764ccac__2026-05-05T02-44-15-662Z | Brad Meseck | 39 | True |  | Not started | True  -8.41 0 0 0 0 0 20 | Negative Float High 2 0 0  |  | 1955, 1953, 1951, 1956, 1954, 1952 | True |
| 357ae9be-8a60-8190-8710-cc1a3f261e4f | 2765 | Post Load Validation | OTC | 1.2.4.2.63.2 | 1.2.4.2.63.2 | 2026-10-06 | 2026-10-06 | 2026-04-16 | 0 | 6 | 2763 | 1 | 0 | 357ae9be-8a60-81c1-bc75-c5b3536bdb84 |  | -712.25 | 0 | Start No Earlier Than | Auto Scheduled | AMETEK SAP XXL Project Plan Replan MSP Task.csv | AMETEK SAP XXL Project Plan Replan MSP Task.csv__2f0764ccac__2026-05-05T02-44-15-662Z | James VanRiper | 173 | True |  | Not started | True  -712.25 0 0 0 0 0 20 | Negative Float, Open Finish Critical 3 0 0 True | 2026-04-17 |  |  |
| 357ae9be-8a60-8190-9840-e23b456390b3 | 3011 | Load File Staged and Posted "Ready" | Data | 1.2.3.2.9.1 | 1.2.3.2.9.1 | 2026-06-11 | 2026-06-11 | 2026-04-08 | 0 | 6 | 3010 | 1 | 1 | 357ae9be-8a60-8185-8ff0-e7244c64b7d0 | 357ae9be-8a60-812a-992f-ce90e75b58e5 | -150.02 | 0 | As Soon As Possible | Auto Scheduled | AMETEK SAP XXL Project Plan Replan MSP Task.csv | AMETEK SAP XXL Project Plan Replan MSP Task.csv__2f0764ccac__2026-05-05T02-44-15-662Z | Jyoti Nain | 64 | True |  | Not started | True  -150.02 0 1 0 0 0 26 | Wrong Dependency, Negative Float Critical 5 1 0  |  |  |  |
| 357ae9be-8a60-8190-9bfc-f6d06ac2b5b1 | 917 | Functional Smoke Testing | Development;PTM;Finance;PMO;Europe IT lead;OTC;TESTING | 1.3.3.7.5 | 1.3.3.7.5 | 2026-06-23 | 2026-06-30 | 2026-06-25 | 0 | 5 | 915 | 1 | 1 | 357ae9be-8a60-8199-a64b-f0f66f357a7c | 357ae9be-8a60-8116-9f13-ebe42c8bf5e2 | 8.5 | 0 | As Soon As Possible | Auto Scheduled | AMETEK SAP XXL Project Plan Replan MSP Task.csv | AMETEK SAP XXL Project Plan Replan MSP Task.csv__2f0764ccac__2026-05-05T02-44-15-662Z | Bijoykrishna Das | 5 | True |  | Not started | True  8.5 0 1 0 0 0 26 | Low 0 0 0  |  |  |  |
| 357ae9be-8a60-8190-a12b-da3a9cac7964 | 1870 | Simulate Load | Data | 1.2.2.2.29.3 | 1.2.2.2.29.3 | 2026-05-21 | 2026-05-21 | 2026-04-16 | 0 | 6 | 1867 | 1 | 3 | 357ae9be-8a60-8175-93b5-f63dc74484b8 | 357ae9be-8a60-811c-a632-c761fdfa4cc5, 357ae9be-8a60-812c-9224-e51f776ad9de, 357ae9be-8a60-81d8-8d16-c96bb642e48c | -70.27 | 0 | As Soon As Possible | Auto Scheduled | AMETEK SAP XXL Project Plan Replan MSP Task.csv | AMETEK SAP XXL Project Plan Replan MSP Task.csv__2f0764ccac__2026-05-05T02-44-15-662Z | Jyoti Nain | 35 | True |  | Not started | True  -70.27 0 3 3 528 0 43 | Wrong Successor, Negative Float Critical 5 0 3  |  |  |  |
| 357ae9be-8a60-8190-a681-c395c03893ca | 1027 | Pre Load Validation | PTP;OTC | 1.2.1.26.2 | 1.2.1.26.2 | 2026-04-14 | 2026-04-14 | 2026-04-14 | 100 | 5 | 748 | 1 | 1 | 357ae9be-8a60-81c6-9147-c12703a93283 | 357ae9be-8a60-81d5-bd7d-ce0145c1c069 | 0 | 0 | As Soon As Possible | Auto Scheduled | AMETEK SAP XXL Project Plan Replan MSP Task.csv | AMETEK SAP XXL Project Plan Replan MSP Task.csv__2f0764ccac__2026-05-05T02-44-15-662Z | Nevin Varkey |  |  |  | Done | True  0 0 1 0 0 0 18 | Wrong Dependency High 3 1 0  |  |  |  |
| 357ae9be-8a60-8190-b2f9-e48f1d47eab5 | 1784 | Load | OTC | 1.2.2.2.16.2 | 1.2.2.2.16.2 | 2026-05-25 | 2026-05-25 | 2026-04-10 | 0 | 6 | 1782 | 1 | 1 | 357ae9be-8a60-81db-a2a2-dcebf558a7ff | 357ae9be-8a60-8184-be4f-d273b0ee49fe | -43.52 | 0 | As Soon As Possible | Auto Scheduled | AMETEK SAP XXL Project Plan Replan MSP Task.csv | AMETEK SAP XXL Project Plan Replan MSP Task.csv__2f0764ccac__2026-05-05T02-44-15-662Z | Ric Haraida | 45 | True |  | Not started | True  -43.52 0 1 0 0 0 26 | Negative Float Critical 2 0 0  |  |  |  |
| 357ae9be-8a60-8190-b7c8-fe04c4cd48ef | 3178 | Pre Load Validation | PTM | 1.2.3.2.34.2 | 1.2.3.2.34.2 | 2026-06-15 | 2026-06-15 | 2026-04-17 | 0 | 6 | 3176 | 1 | 1 | 357ae9be-8a60-81dc-a9cf-ecc320b995a1 | 357ae9be-8a60-8130-8082-ca9bdc44dd9e | -10036 | 0 | As Soon As Possible | Auto Scheduled | AMETEK SAP XXL Project Plan Replan MSP Task.csv | AMETEK SAP XXL Project Plan Replan MSP Task.csv__2f0764ccac__2026-05-05T02-44-15-662Z | Brad Meseck | 59 | True |  | Not started | True  -10036 0 1 0 0 0 26 | Wrong Dependency, Negative Float Critical 5 1 0  |  |  |  |
| 357ae9be-8a60-8191-83cf-f4174ce4f207 | 2463 | Simulate Load | Data | 1.2.4.2.7.3 | 1.2.4.2.7.3 | 2026-09-30 | 2026-09-30 | 2026-04-09 | 0 | 6 | 2460 | 1 | 1 | 357ae9be-8a60-813c-84cf-ec8f08ad52b1 | 357ae9be-8a60-81a5-be8e-fc31e808e65f | -680 | 0 | As Soon As Possible | Auto Scheduled | AMETEK SAP XXL Project Plan Replan MSP Task.csv | AMETEK SAP XXL Project Plan Replan MSP Task.csv__2f0764ccac__2026-05-05T02-44-15-662Z | Jyoti Nain | 174 | True |  | Not started | True  -680 0 1 0 0 0 26 | Negative Float Critical 2 0 0  |  |  |  |
| 357ae9be-8a60-8191-9731-e98e31822550 | 1063 | Pre Load Validation | PTM | 1.2.1.32.2 | 1.2.1.32.2 | 2026-04-16 | 2026-04-16 | 2026-04-17 | 100 | 5 | 695 | 1 | 1 | 357ae9be-8a60-810e-af55-f5cf31093190 | 357ae9be-8a60-81ee-92b9-c3212b736160 | 0 | 0 | As Soon As Possible | Auto Scheduled | AMETEK SAP XXL Project Plan Replan MSP Task.csv | AMETEK SAP XXL Project Plan Replan MSP Task.csv__2f0764ccac__2026-05-05T02-44-15-662Z | Brad Meseck |  |  |  | Done | True  0 0 1 0 0 0 18 | Low 0 0 0  |  |  |  |
| 357ae9be-8a60-8191-a02c-cf5e4049d153 | 3062 | Pre Load Validation | PTP | 1.2.3.2.17.2 | 1.2.3.2.17.2 | 2026-06-15 | 2026-06-15 | 2026-04-10 | 0 | 6 | 3060 | 1 | 1 | 357ae9be-8a60-8156-a9a7-e68186b68119 | 357ae9be-8a60-8140-a693-c73c855c587d | -185.02 | 0 | As Soon As Possible | Auto Scheduled | AMETEK SAP XXL Project Plan Replan MSP Task.csv | AMETEK SAP XXL Project Plan Replan MSP Task.csv__2f0764ccac__2026-05-05T02-44-15-662Z | Nevin Varkey | 66 | True |  | Not started | True  -185.02 0 1 0 0 0 26 | Wrong Dependency, Wrong Successor, Negative Float Critical 8 1 1  |  |  |  |
| 357ae9be-8a60-8191-a2a1-dce4ef781ddb | 2617 | Load | Data | 1.2.4.2.30.5 | 1-Apr | 2026-10-01 | 2026-10-01 | 2026-04-16 | 0 | 6 | 2612 | 1 | 1 | 357ae9be-8a60-814f-9c77-f9482bedfaaf | 357ae9be-8a60-815d-b926-c5ab34997416 | -700.38 | 0 | As Soon As Possible | Auto Scheduled | AMETEK SAP XXL Project Plan Replan MSP Task.csv | AMETEK SAP XXL Project Plan Replan MSP Task.csv__2f0764ccac__2026-05-05T02-44-15-662Z | Jyoti Nain | 168 | True |  | Not started | True  -700.38 0 1 0 0 0 26 | Negative Float Critical 2 0 0  |  |  |  |
| 357ae9be-8a60-8191-a47a-df196e181f29 | 1298 | Download Transport List | Basis | 1.1.1.6.1.12 | 1.1.1.6.1.12 | 2026-05-22 | 2026-05-22 | 2026-05-19 | 0 | 6 | 3339 | 1 | 2 | 357ae9be-8a60-8175-9bc5-d3ee8da00162 | 357ae9be-8a60-819d-b48e-e3bd979bbd0f, 357ae9be-8a60-8132-b005-eb9f9f5b3f50 | -241.52 | 0 | As Soon As Possible | Auto Scheduled | AMETEK SAP XXL Project Plan Replan MSP Task.csv | AMETEK SAP XXL Project Plan Replan MSP Task.csv__2f0764ccac__2026-05-05T02-44-15-662Z | Lokchetan Meghavath | 3 | True |  | Not started | True  -241.52 0 2 0 0 0 32 | Negative Float Critical 2 0 0  |  |  |  |
| 357ae9be-8a60-8191-b54d-fcc8a2a3e0cd | 1774 | Close Client | Basis | 1.2.2.2.14.9 | 1.2.2.2.14.9 | 2026-05-22 | 2026-05-22 | 2026-04-09 | 0 | 6 | 1765 | 1 | 0 | 357ae9be-8a60-8173-bd4d-d87d8f989ace |  | -1786 | 0 | As Soon As Possible | Auto Scheduled | AMETEK SAP XXL Project Plan Replan MSP Task.csv | AMETEK SAP XXL Project Plan Replan MSP Task.csv__2f0764ccac__2026-05-05T02-44-15-662Z | Lokchetan Meghavath | 43 | True |  | Not started | True  -1786 0 0 0 0 0 20 | Negative Float, Open Finish Critical 3 0 0  |  |  |  |
| 357ae9be-8a60-8191-be93-f1ccbdb227f2 | 808 | Load File Staged and Posted "Ready" | Finance | 1.2.1.8.1 | 1.2.1.8.1 | 2026-04-08 | 2026-04-08 | 2026-04-08 | 100 | 5 | 760 | 1 | 1 | 357ae9be-8a60-8122-937d-cf575dce70be | 357ae9be-8a60-81c2-9e8a-f8a0705e3bb4 | 0 | 0 | As Soon As Possible | Auto Scheduled | AMETEK SAP XXL Project Plan Replan MSP Task.csv | AMETEK SAP XXL Project Plan Replan MSP Task.csv__2f0764ccac__2026-05-05T02-44-15-662Z | Kasey Hughes |  |  |  | Done | True  0 0 1 0 0 0 18 | Wrong Dependency High 3 1 0  |  |  |  |
| 357ae9be-8a60-8192-8bdf-dfd213d023eb | 1052 | Simulate Load | Data | 1.2.1.30.3 | 1.2.1.30.3 | 2026-04-15 | 2026-04-16 | 2026-04-16 | 100 | 5 | 937 | 1 | 0 | 357ae9be-8a60-816f-b748-e2dd56b3ed95 |  | 0 | 0 | As Soon As Possible | Auto Scheduled | AMETEK SAP XXL Project Plan Replan MSP Task.csv | AMETEK SAP XXL Project Plan Replan MSP Task.csv__2f0764ccac__2026-05-05T02-44-15-662Z | Jyoti Nain |  |  |  | Done | True  0 0 0 0 0 0 12 | Low 0 0 0  |  |  |  |
| 357ae9be-8a60-8192-9078-da41fe7ff7e3 | 2778 | Pre Load Validation | Finance | 1.2.4.2.67.2 | 1.2.4.2.67.2 | 2026-09-24 | 2026-09-24 | 2026-04-10 | 0 | 6 | 2776 | 1 | 1 | 357ae9be-8a60-8140-b93c-fac0729b01a5 | 357ae9be-8a60-8119-b318-d0712b22a3e6 | -39060 | 0 | As Soon As Possible | Auto Scheduled | AMETEK SAP XXL Project Plan Replan MSP Task.csv | AMETEK SAP XXL Project Plan Replan MSP Task.csv__2f0764ccac__2026-05-05T02-44-15-662Z | Kasey Hughes | 167 | True |  | Not started | True  -39060 0 1 0 0 0 26 | Wrong Dependency, Negative Float Critical 5 1 0  |  |  |  |
| 357ae9be-8a60-8192-9469-c48bb15ac471 | 847 | Plan to Make | (Unassigned) | 1.3.1.4 | 1.3.1.4 | 2026-05-04 | 2026-05-29 | 2026-05-22 | 5 | 4 | 843 | 0 | 0 |  |  | 116 | 116 | As Soon As Possible | Auto Scheduled | AMETEK SAP XXL Project Plan Replan MSP Task.csv | AMETEK SAP XXL Project Plan Replan MSP Task.csv__2f0764ccac__2026-05-05T02-44-15-662Z | COULD NOT BE DETERMINED | 7 | True |  | Not started |   116 116 0 0 0 0 8 | Open Start, Open Finish Medium 2 0 0  |  |  |  |
| 357ae9be-8a60-8192-9d70-c239ab5ef6b1 | 2838 | Open Sales Orders(Manual) | (Unassigned) | 1.2.2.4.6 | 1.2.2.4.6 | 2026-10-09 | 2026-10-12 | 2026-10-12 | 0 | 5 | 2801 | 1 | 0 | 357ae9be-8a60-81e3-b4fa-f1222ef8b771 |  | -90.25 | 0 | As Soon As Possible | Auto Scheduled | AMETEK SAP XXL Project Plan Replan MSP Task.csv | AMETEK SAP XXL Project Plan Replan MSP Task.csv__2f0764ccac__2026-05-05T02-44-15-662Z | COULD NOT BE DETERMINED |  |  |  | Not started | True  -90.25 0 0 0 0 0 12 | Wrong Dependency, Negative Float, Open Finish Critical 6 1 0  |  |  |  |
| 357ae9be-8a60-8192-a3d9-f18ef98b5b0a | 2493 | OTC_CM19_Customer_Master - Ship-To | OTC | 1.2.4.2.13 | 1.2.4.2.13 | 2026-09-29 | 2026-09-30 | 2026-04-13 | 0 | 5 | 2898 | 0 | 0 |  |  | -89.56 | 0 | As Soon As Possible | Auto Scheduled | AMETEK SAP XXL Project Plan Replan MSP Task.csv | AMETEK SAP XXL Project Plan Replan MSP Task.csv__2f0764ccac__2026-05-05T02-44-15-662Z | Anitha Jothi | 170 | True |  | Not started | True  -89.56 0 0 0 0 0 20 | Negative Float Critical 2 0 0  |  | 2498, 2500, 2495, 2496, 2497, 2494, 2499, 2501, 2502 | True |
| 357ae9be-8a60-8192-a781-cd2922407469 | 3351 | Inventory | (Unassigned) | 1.2.4.4.1 | 1.2.4.4.1 | 2026-10-08 | 2026-10-09 | 2026-10-09 | 0 | 5 | 3350 | 2 | 5 | 357ae9be-8a60-8132-b9d5-c57d0f14703b, 357ae9be-8a60-8186-82d7-dea6d97c0abb | 357ae9be-8a60-8192-bcb5-fca78f4cf9f3, 357ae9be-8a60-81d3-82cc-c54c9261e09b, 357ae9be-8a60-8170-861b-eb0ee55681a7, 357ae9be-8a60-812a-b93b-f3e6d41671c0, 357ae9be-8a60-8110-a623-e594b701ad8c | -325.25 | 0 | As Soon As Possible | Auto Scheduled | AMETEK SAP XXL Project Plan Replan MSP Task.csv | AMETEK SAP XXL Project Plan Replan MSP Task.csv__2f0764ccac__2026-05-05T02-44-15-662Z | COULD NOT BE DETERMINED |  |  |  | Not started | True  -325.25 0 5 0 0 0 42 | Wrong Dependency, Negative Float Critical 5 1 0  |  |  |  |
| 357ae9be-8a60-8192-a803-d469c1919201 | 1099 | Post Load Validation | PTM | 1.2.1.47.6 | 1.2.1.47.6 | 2026-04-21 | 2026-04-21 | 2026-04-16 | 100 | 5 | 713 | 1 | 1 | 357ae9be-8a60-8117-8862-f63fde489bf2 | 357ae9be-8a60-81b4-8352-f31d44b79177 | 0 | 0 | As Soon As Possible | Auto Scheduled | AMETEK SAP XXL Project Plan Replan MSP Task.csv | AMETEK SAP XXL Project Plan Replan MSP Task.csv__2f0764ccac__2026-05-05T02-44-15-662Z | Eric Heisler |  |  |  | Done | True  0 0 1 1 5 0 23 | Low 0 0 0  |  |  |  |
| 357ae9be-8a60-8192-b131-f2118b353511 | 4417 | Post Load Validation | PTM | 1.2.5.2.42.2 | 1.2.5.2.42.2 | 2026-09-29 | 2026-09-29 | 2026-04-16 | 0 | 6 | 4415 | 1 | 2 | 357ae9be-8a60-815f-a360-fe130b15678f | 357ae9be-8a60-81e2-8a1c-fd0b66a30779, 357ae9be-8a60-81d5-8281-ced5d3b6803b | -688.02 | 0 | As Soon As Possible | Auto Scheduled | AMETEK SAP XXL Project Plan Replan MSP Task.csv | AMETEK SAP XXL Project Plan Replan MSP Task.csv__2f0764ccac__2026-05-05T02-44-15-662Z | Eric Heisler | 166 | True |  | Not started | True  -688.02 0 2 0 0 0 32 | Negative Float Critical 2 0 0  |  |  |  |
| 357ae9be-8a60-8192-b464-cdc8ed4ef9eb | 1183 | Post Load Validation | OTC | 1.2.1.61.2 | 1.2.1.61.2 | 2026-04-06 | 2026-04-06 | 2026-04-06 | 100 | 5 | 700 | 1 | 0 | 357ae9be-8a60-818e-8a4c-c51abc58637b |  | 0 | 0 | As Soon As Possible | Auto Scheduled | AMETEK SAP XXL Project Plan Replan MSP Task.csv | AMETEK SAP XXL Project Plan Replan MSP Task.csv__2f0764ccac__2026-05-05T02-44-15-662Z | James VanRiper |  |  |  | Done | True  0 0 0 0 0 0 12 | Low 0 0 0  |  |  |  |
| 357ae9be-8a60-8192-bcb5-fca78f4cf9f3 | 3352 | Open AR | (Unassigned) | 1.2.4.4.2 | 1.2.4.4.2 | 2026-10-09 | 2026-10-09 | 2026-10-09 | 0 | 5 | 3350 | 1 | 1 | 357ae9be-8a60-8192-a781-cd2922407469 | 357ae9be-8a60-8120-9118-f98a324f3ee2 | -325.25 | 0 | As Soon As Possible | Auto Scheduled | AMETEK SAP XXL Project Plan Replan MSP Task.csv | AMETEK SAP XXL Project Plan Replan MSP Task.csv__2f0764ccac__2026-05-05T02-44-15-662Z | COULD NOT BE DETERMINED |  |  |  | Not started | True  -325.25 0 1 0 0 0 18 | Negative Float Critical 2 0 0  |  |  |  |
| 357ae9be-8a60-8193-9126-cd04e72919b9 | 136 | Complete - Ready for Audit and Controls Review | (Unassigned) | 1.1.2.9.1.4.3 | 1.1.2.9.1.4.3 | 2025-09-01 | 2025-09-18 | 2025-09-18 | 100 | 7 | 28 | 1 | 0 | 357ae9be-8a60-8194-ac9d-f6d7fc37c7e1 |  | 0 | 0 | As Soon As Possible | Auto Scheduled | AMETEK SAP XXL Project Plan Replan MSP Task.csv | AMETEK SAP XXL Project Plan Replan MSP Task.csv__2f0764ccac__2026-05-05T02-44-15-662Z | COULD NOT BE DETERMINED |  |  |  | Done | True  0 0 0 0 0 0 12 | Low 0 0 0  |  |  |  |
| 357ae9be-8a60-8193-a749-dbd3916f3eb7 | 4359 | Extract File | Data | 1.2.5.2.31.1 | 1.2.5.2.31.1 | 2026-09-29 | 2026-09-29 | 2026-04-16 | 0 | 6 | 4358 | 1 | 1 | 357ae9be-8a60-81d2-8e99-d2e4ba649c85 | 357ae9be-8a60-8112-b3aa-e421a350f01a | -695.77 | 0 | As Soon As Possible | Auto Scheduled | AMETEK SAP XXL Project Plan Replan MSP Task.csv | AMETEK SAP XXL Project Plan Replan MSP Task.csv__2f0764ccac__2026-05-05T02-44-15-662Z | Jyoti Nain | 166 | True |  | Not started | True  -695.77 0 1 0 0 0 26 | Negative Float Critical 2 0 0  |  |  |  |

| id | uid | name | workstream | outlineNumber | wbs | start | finish | baselineFinish | pct | outlineLevel | parentUid | predCount | sucCount | predIds | sucIds | totalSlackDaysRaw | freeSlackDaysRaw | constraintType | taskMode | mspSourceFile | mspImportVersion | assignedTo | slipDays | isSlipped | isDue14 | status | cpm | scheduleQuality | constraintDate | childUids | isSummary | isOverdueStart |
| --- | --- | --- | --- | --- | --- | --- | --- | --- | --- | --- | --- | --- | --- | --- | --- | --- | --- | --- | --- | --- | --- | --- | --- | --- | --- | --- | --- | --- | --- | --- | --- | --- |
| 357ae9be-8a60-8193-ac77-ea9881a9303c | 4291 | RTR_****_Credit Hierarchy | (Unassigned) | 1.2.5.2.21 | 1.2.5.2.21 | 2026-10-01 | 2026-10-05 | 2026-04-13 | 0 | 5 | 4162 | 0 | 0 |  |  | -87.47 | 0 | As Soon As Possible | Auto Scheduled | AMETEK SAP XXL Project Plan Replan MSP Task.csv | AMETEK SAP XXL Project Plan Replan MSP Task.csv__2f0764ccac__2026-05-05T02-44-15-662Z | COULD NOT BE DETERMINED | 175 | True |  | Not started | True  -87.47 0 0 0 0 0 20 | Negative Float Critical 2 0 0  |  | 4293, 4294, 4292 | True |  |
| 357ae9be-8a60-8193-aff8-d55f72612b83 | 1739 | Simulate Load | Data | 1.2.2.2.9.3 | 1.2.2.2.9.3 | 2026-05-18 | 2026-05-18 | 2026-04-09 | 0 | 6 | 1736 | 0 | 1 |  | 357ae9be-8a60-8112-811f-deaef6f27fd8 | -48.52 | 0 | Start No Earlier Than | Auto Scheduled | AMETEK SAP XXL Project Plan Replan MSP Task.csv | AMETEK SAP XXL Project Plan Replan MSP Task.csv__2f0764ccac__2026-05-05T02-44-15-662Z | Jyoti Nain | 39 | True | True | Not started | True  -48.52 0 1 0 0 0 26 | Negative Float, Open Start Critical 3 0 0 True | 2026-04-15 |  |  |  |
| 357ae9be-8a60-8193-b45d-e6a658135a7e | 3318 | Post Load Validation | Finance | 1.2.3.2.67.6 | 1.2.3.2.67.6 | 2026-06-09 | 2026-06-09 | 2026-04-17 | 0 | 6 | 3312 | 1 | 0 | 357ae9be-8a60-81ff-bca6-fef99fc99288 |  | -129.02 | 0 | As Soon As Possible | Auto Scheduled | AMETEK SAP XXL Project Plan Replan MSP Task.csv | AMETEK SAP XXL Project Plan Replan MSP Task.csv__2f0764ccac__2026-05-05T02-44-15-662Z | Kasey Hughes | 53 | True |  | Not started | True  -129.02 0 0 0 0 0 20 | Negative Float, Open Finish Critical 3 0 0  |  |  |  |  |
| 357ae9be-8a60-8193-bd81-d0176c275262 | 1947 | VC_Characteristic Groups | (Unassigned) | 1.2.2.2.45 | 1.2.2.2.45 | 2026-05-22 | 2026-05-26 | 2026-04-17 | 0 | 5 | 2800 | 0 | 0 |  |  | -5.75 | 0 | As Soon As Possible | Auto Scheduled | AMETEK SAP XXL Project Plan Replan MSP Task.csv | AMETEK SAP XXL Project Plan Replan MSP Task.csv__2f0764ccac__2026-05-05T02-44-15-662Z | COULD NOT BE DETERMINED | 39 | True |  | Not started | True  -5.75 0 0 0 0 0 20 | Negative Float High 2 0 0  |  | 1948, 1949 | True |  |
| 357ae9be-8a60-8194-8908-c844a9e11012 | 1228 | Open Client | Basis | 1.1.1.7.3.1 | 1.1.1.7.3.1 | 2026-06-25 | 2026-06-25 | 2026-07-15 | 0 | 6 | 1227 | 1 | 1 | 357ae9be-8a60-81ac-b21c-ed8932fb2550 | 357ae9be-8a60-81aa-be9a-c8613f1b642b | -12841 | 0 | As Soon As Possible | Auto Scheduled | AMETEK SAP XXL Project Plan Replan MSP Task.csv | AMETEK SAP XXL Project Plan Replan MSP Task.csv__2f0764ccac__2026-05-05T02-44-15-662Z | Lokchetan Meghavath |  |  |  | Not started | True  -12841 0 1 0 0 0 18 | Negative Float Critical 2 0 0  |  |  |  |  |
| 357ae9be-8a60-8194-8a1b-cb2eb0e8367b | 4355 | Error and Defect Mitigation | PTM | 1.2.5.2.30.4 | 1.2.5.2.30.4 | 2026-10-01 | 2026-10-01 | 2026-04-16 | 0 | 6 | 4351 | 1 | 5 | 357ae9be-8a60-81ad-bd49-c579af3a8984 | 357ae9be-8a60-810b-85ac-eb1beed67247, 357ae9be-8a60-8110-91c5-d8b49c47576f, 357ae9be-8a60-8123-8cf8-c37a811276c4, 357ae9be-8a60-8166-8550-d154be0a3717, 357ae9be-8a60-8191-a2a1-dce4ef781ddb | -700.39 | 0 | Finish No Earlier Than | Auto Scheduled | AMETEK SAP XXL Project Plan Replan MSP Task.csv | AMETEK SAP XXL Project Plan Replan MSP Task.csv__2f0764ccac__2026-05-05T02-44-15-662Z | Brad Meseck | 168 | True |  | Not started | True  -700.39 0 5 3 404 0 55 | Wrong Successor, Negative Float Critical 5 0 4 True | 2026-04-17 |  |  |  |
| 357ae9be-8a60-8194-8b31-ebdfccfeb50e | 25 | BPD Development / Configuration Specs | Development | 1.1.2.9.1 | 1.1.2.9.1 | 2025-04-07 | 2025-09-18 | 2025-09-18 | 100 | 5 | 24 | 0 | 0 |  |  | 0 | 0 | As Soon As Possible | Auto Scheduled | AMETEK SAP XXL Project Plan Replan MSP Task.csv | AMETEK SAP XXL Project Plan Replan MSP Task.csv__2f0764ccac__2026-05-05T02-44-15-662Z | Bijoykrishna Das |  |  |  | Done | True  0 0 0 0 0 0 12 | Low 0 0 0  |  | 56, 27, 29, 26, 28 | True |  |
| 357ae9be-8a60-8194-9831-faf86ea08922 | 4250 | Update number range BP02 from Internal to External | OTC | 1.2.5.2.14.8 | 1.2.5.2.14.8 | 2026-09-29 | 2026-09-29 | 2026-04-09 | 0 | 6 | 4242 | 1 | 1 | 357ae9be-8a60-81d2-9618-efcd201d3cb7 | 357ae9be-8a60-8129-a25c-d0b93d1df5a1 | -40306 | 0 | As Soon As Possible | Auto Scheduled | AMETEK SAP XXL Project Plan Replan MSP Task.csv | AMETEK SAP XXL Project Plan Replan MSP Task.csv__2f0764ccac__2026-05-05T02-44-15-662Z | Ric Haraida | 173 | True |  | Not started | True  -40306 0 1 0 0 0 26 | Negative Float Critical 2 0 0  |  |  |  |  |
| 357ae9be-8a60-8194-9ce2-ec55b328e578 | 3040 | Load File Staged and Posted "Ready" | OTC | 1.2.3.2.14.1 | 1.2.3.2.14.1 | 2026-06-11 | 2026-06-11 | 2026-04-09 | 0 | 6 | 3039 | 1 | 1 | 357ae9be-8a60-8101-ab0f-e94ffe0140fd | 357ae9be-8a60-8171-8829-eed06c41d87a | -8941 | 0 | As Soon As Possible | Auto Scheduled | AMETEK SAP XXL Project Plan Replan MSP Task.csv | AMETEK SAP XXL Project Plan Replan MSP Task.csv__2f0764ccac__2026-05-05T02-44-15-662Z | Ric Haraida | 63 | True |  | Not started | True  -8941 0 1 0 0 0 26 | Wrong Dependency, Negative Float Critical 5 1 0  |  |  |  |  |
| 357ae9be-8a60-8194-9d07-ddefe67e6053 | 2613 | Extract File | Data | 1.2.4.2.30.1 | 1.2.4.2.30.1 | 2026-09-29 | 2026-09-29 | 2026-04-16 | 0 | 6 | 2612 | 1 | 1 | 357ae9be-8a60-81f3-8c70-e7a393d62f08 | 357ae9be-8a60-81bf-bd43-c94da4989471 | -700.38 | 0 | As Soon As Possible | Auto Scheduled | AMETEK SAP XXL Project Plan Replan MSP Task.csv | AMETEK SAP XXL Project Plan Replan MSP Task.csv__2f0764ccac__2026-05-05T02-44-15-662Z | Jyoti Nain | 166 | True |  | Not started | True  -700.38 0 1 1 540 0 31 | Wrong Dependency, Wrong Successor, Negative Float Critical 8 1 1  |  |  |  |  |
| 357ae9be-8a60-8194-a81d-d5498b21f1e0 | 988 | Pre Load Validation | PTP | 1.2.1.18.2 | 1.2.1.18.2 | 2026-04-10 | 2026-04-10 | 2026-04-10 | 100 | 5 | 766 | 1 | 1 | 357ae9be-8a60-8177-a098-e443c737773f | 357ae9be-8a60-8174-b2fe-c8bd76346ecd | 0 | 0 | As Soon As Possible | Auto Scheduled | AMETEK SAP XXL Project Plan Replan MSP Task.csv | AMETEK SAP XXL Project Plan Replan MSP Task.csv__2f0764ccac__2026-05-05T02-44-15-662Z | Nevin Varkey |  |  |  | Done | True  0 0 1 0 0 0 18 | Low 0 0 0  |  |  |  |  |
| 357ae9be-8a60-8194-ac9d-f6d7fc37c7e1 | 36 | Complete - Ready for Security Review | Security | 1.1.2.9.1.4.2 | 1.1.2.9.1.4.2 | 2025-04-21 | 2025-08-29 | 2025-08-29 | 100 | 7 | 28 | 0 | 1 |  | 357ae9be-8a60-8193-9126-cd04e72919b9 | 0 | 0 | Start No Earlier Than | Auto Scheduled | AMETEK SAP XXL Project Plan Replan MSP Task.csv | AMETEK SAP XXL Project Plan Replan MSP Task.csv__2f0764ccac__2026-05-05T02-44-15-662Z | Manjunatha Umesha |  |  |  | Done | True  0 0 0 0 0 0 14 | Low 0 0 0 True | 2025-04-21 |  |  |  |
| 357ae9be-8a60-8194-b0fa-e682c7fca9ef | 4538 | Service Orders(Manual) | (Unassigned) | 1.2.5.4.7 | 1.2.5.4.7 | 2026-10-01 | 2026-10-02 | 2026-10-02 | 0 | 5 | 4531 | 1 | 0 | 357ae9be-8a60-816c-a955-f517ebe8c18c |  | -34.1 | 0 | As Soon As Possible | Auto Scheduled | AMETEK SAP XXL Project Plan Replan MSP Task.csv | AMETEK SAP XXL Project Plan Replan MSP Task.csv__2f0764ccac__2026-05-05T02-44-15-662Z | COULD NOT BE DETERMINED |  |  |  | Not started | True  -34.1 0 0 0 0 0 12 | Negative Float, Open Finish Critical 3 0 0  |  |  |  |  |
| 357ae9be-8a60-8194-b3bd-cf5513088f2f | 1692 | Load | Finance | 1.2.2.2.2.2 | 1.2.2.2.2.2 | 2026-05-19 | 2026-05-19 | 2026-04-07 | 0 | 6 | 1690 | 1 | 1 | 357ae9be-8a60-8109-bf36-ccc7a3f01302 | 357ae9be-8a60-81bf-95c0-f8387cea4efe | -76.52 | 0 | As Soon As Possible | Auto Scheduled | AMETEK SAP XXL Project Plan Replan MSP Task.csv | AMETEK SAP XXL Project Plan Replan MSP Task.csv__2f0764ccac__2026-05-05T02-44-15-662Z | Kasey Hughes | 42 | True | True | Not started | True  -76.52 0 1 0 0 0 26 | Negative Float Critical 2 0 0  |  |  |  |  |
| 357ae9be-8a60-8194-b402-c1ff5290da23 | 2708 | Load | OTC | 1.2.4.2.49.2 | 1.2.4.2.49.2 | 2026-10-07 | 2026-10-08 | 2026-04-20 | 0 | 6 | 2706 | 1 | 1 | 357ae9be-8a60-8173-8156-e15d77bd8d31 | 357ae9be-8a60-8125-8286-d7af3f5eeee5 | -726 | 0 | As Soon As Possible | Auto Scheduled | AMETEK SAP XXL Project Plan Replan MSP Task.csv | AMETEK SAP XXL Project Plan Replan MSP Task.csv__2f0764ccac__2026-05-05T02-44-15-662Z | Ric Haraida | 171 | True |  | Not started | True  -726 0 1 1 548 0 31 | Wrong Successor, Negative Float Critical 5 0 1  |  |  |  |  |
| 357ae9be-8a60-8194-bc72-d9af97a0d3fa | 2573 | Simulate Load | Data | 1.2.4.2.24.3 | 1.2.4.2.24.3 | 2026-09-25 | 2026-09-25 | 2026-04-14 | 0 | 6 | 2570 | 1 | 1 | 357ae9be-8a60-8168-a14b-d4a2fa4ff5e0 | 357ae9be-8a60-816c-82c5-eccfacc01a0f | -726 | 0 | As Soon As Possible | Auto Scheduled | AMETEK SAP XXL Project Plan Replan MSP Task.csv | AMETEK SAP XXL Project Plan Replan MSP Task.csv__2f0764ccac__2026-05-05T02-44-15-662Z | Jyoti Nain | 164 | True |  | Not started | True  -726 0 1 0 0 0 26 | Negative Float Critical 2 0 0  |  |  |  |  |
| 357ae9be-8a60-8194-bd90-d130d0406ce4 | 2710 | OTC_CM21_CMIR | OTC | 1.2.4.2.50 | 1.2.4.2.50 | 2026-10-08 | 2026-10-08 | 2026-04-21 | 0 | 5 | 2898 | 0 | 0 |  |  | -90.75 | 0 | As Soon As Possible | Auto Scheduled | AMETEK SAP XXL Project Plan Replan MSP Task.csv | AMETEK SAP XXL Project Plan Replan MSP Task.csv__2f0764ccac__2026-05-05T02-44-15-662Z | Anitha Jothi | 170 | True |  | Not started | True  -90.75 0 0 0 0 0 20 | Negative Float Critical 2 0 0  |  | 2712, 2715, 2716, 2711, 2714, 2713 | True |  |
| 357ae9be-8a60-8195-8916-fae3d3285352 | 3008 | Load | Data | 1.2.3.2.8.5 | 1.2.3.2.8.5 | 2026-06-10 | 2026-06-10 | 2026-04-08 | 0 | 6 | 3003 | 1 | 1 | 357ae9be-8a60-81f6-8f97-f94fe9c2fec3 | 357ae9be-8a60-81b6-8a5e-e62605c175a8 | -140.52 | 0 | As Soon As Possible | Auto Scheduled | AMETEK SAP XXL Project Plan Replan MSP Task.csv | AMETEK SAP XXL Project Plan Replan MSP Task.csv__2f0764ccac__2026-05-05T02-44-15-662Z | Jyoti Nain | 63 | True |  | Not started | True  -140.52 0 1 0 0 0 26 | Negative Float Critical 2 0 0  |  |  |  |  |
| 357ae9be-8a60-8195-8a9f-c9ada017a5d0 | 4447 | Load | OTC | 1.2.5.2.49.2 | 1.2.5.2.49.2 | 2026-10-07 | 2026-10-08 | 2026-04-20 | 0 | 6 | 4445 | 1 | 2 | 357ae9be-8a60-8148-899e-f1356ea8eeb9 | 357ae9be-8a60-8118-a784-d7fc8ebddab5, 357ae9be-8a60-811e-bb30-c3056950a1c7 | -726.02 | 0 | As Soon As Possible | Auto Scheduled | AMETEK SAP XXL Project Plan Replan MSP Task.csv | AMETEK SAP XXL Project Plan Replan MSP Task.csv__2f0764ccac__2026-05-05T02-44-15-662Z | Ric Haraida | 171 | True |  | Not started | True  -726.02 0 2 0 0 0 32 | Negative Float Critical 2 0 0  |  |  |  |  |
| 357ae9be-8a60-8195-9610-fceff9f33c65 | 1085 | Load | Data | 1.2.1.34.5 | 1.2.1.34.5 | 2026-04-20 | 2026-04-20 | 2026-04-17 | 100 | 5 | 709 | 1 | 1 | 357ae9be-8a60-81e8-b90c-f889217e0897 | 357ae9be-8a60-8118-a579-fd78b8d668b8 | 0 | 0 | As Soon As Possible | Auto Scheduled | AMETEK SAP XXL Project Plan Replan MSP Task.csv | AMETEK SAP XXL Project Plan Replan MSP Task.csv__2f0764ccac__2026-05-05T02-44-15-662Z | Jyoti Nain |  |  |  | Done | True  0 0 1 0 0 0 18 | Low 0 0 0  |  |  |  |  |
| 357ae9be-8a60-8195-9cde-f868d95de04b | 74 | Specs Assigned to Developer | (Unassigned) | 1.1.2.10.2.2 | 1.1.2.10.2.2 | 2025-03-13 | 2025-03-13 | 2025-03-13 | 100 | 6 | 62 | 0 | 0 |  |  | 0 | 0 | As Soon As Possible | Auto Scheduled | AMETEK SAP XXL Project Plan Replan MSP Task.csv | AMETEK SAP XXL Project Plan Replan MSP Task.csv__2f0764ccac__2026-05-05T02-44-15-662Z | COULD NOT BE DETERMINED |  |  |  | Done | True  0 0 0 0 0 0 12 | Low 0 0 0  |  |  |  |  |
| 357ae9be-8a60-8195-a4c1-d4e2c7c4abc8 | 2035 | GTS - SPL (Sanctioned party list) | (Unassigned) | 1.2.2.2.66 | 1.2.2.2.66 | 2026-05-26 | 2026-05-26 | 2026-04-16 | 0 | 5 | 2800 | 0 | 0 |  |  | -6.38 | 0 | As Soon As Possible | Auto Scheduled | AMETEK SAP XXL Project Plan Replan MSP Task.csv | AMETEK SAP XXL Project Plan Replan MSP Task.csv__2f0764ccac__2026-05-05T02-44-15-662Z | COULD NOT BE DETERMINED | 40 | True |  | Not started | True  -6.38 0 0 0 0 0 20 | Negative Float High 2 0 0  |  | 2036, 2037 | True |  |
| 357ae9be-8a60-8195-ac33-eec1d863d03e | 4467 | PTM_CM50_Material Class | PTM | 1.2.5.2.53 | 1.2.5.2.53 | 2026-09-29 | 2026-10-01 | 2026-04-16 | 0 | 5 | 4162 | 0 | 0 |  |  | -86.1 | 0 | As Soon As Possible | Auto Scheduled | AMETEK SAP XXL Project Plan Replan MSP Task.csv | AMETEK SAP XXL Project Plan Replan MSP Task.csv__2f0764ccac__2026-05-05T02-44-15-662Z | Brad Meseck | 168 | True |  | Not started | True  -86.1 0 0 0 0 0 20 | Negative Float Critical 2 0 0  |  | 4468, 4469, 4470 | True |  |
| 357ae9be-8a60-8195-b243-f4ff68715922 | 1304 | Manual activities group 1 | Development;PTM;Finance;PMO;Europe IT lead;OTC;TESTING | 1.1.1.6.2.2 | 1.1.1.6.2.2 | 2026-05-22 | 2026-05-26 | 2026-05-22 | 0 | 6 | 1302 | 1 | 1 | 357ae9be-8a60-81aa-bf0a-d7f6fbded763 | 357ae9be-8a60-819b-aa7b-c07082e93899 | -241.52 | 0 | Finish No Earlier Than | Auto Scheduled | AMETEK SAP XXL Project Plan Replan MSP Task.csv | AMETEK SAP XXL Project Plan Replan MSP Task.csv__2f0764ccac__2026-05-05T02-44-15-662Z | Bijoykrishna Das | 4 | True |  | Not started | True  -241.52 0 1 0 0 0 26 | Negative Float Critical 2 0 0 True | 2026-02-11 |  |  |  |
| 357ae9be-8a60-8195-b8de-e5ba8ef7e724 | 4328 | Load | Data | 1.2.5.2.26.5 | 1.2.5.2.26.5 | 2026-09-28 | 2026-09-28 | 2026-04-15 | 0 | 6 | 4323 | 1 | 1 | 357ae9be-8a60-81f0-a92c-c5b448a63560 | 357ae9be-8a60-8183-a0d2-d2ac8860e8c6 | -726.02 | 0 | As Soon As Possible | Auto Scheduled | AMETEK SAP XXL Project Plan Replan MSP Task.csv | AMETEK SAP XXL Project Plan Replan MSP Task.csv__2f0764ccac__2026-05-05T02-44-15-662Z | Jyoti Nain | 166 | True |  | Not started | True  -726.02 0 1 0 0 0 26 | Negative Float Critical 2 0 0  |  |  |  |  |
| 357ae9be-8a60-8195-b98b-d28b1aab44c2 | 1926 | VC_Characteristics | (Unassigned) | 1.2.2.2.38 | 1.2.2.2.38 | 2026-05-18 | 2026-05-19 | 2026-04-07 | 0 | 5 | 2800 | 0 | 0 |  |  | -2.44 | 0 | As Soon As Possible | Auto Scheduled | AMETEK SAP XXL Project Plan Replan MSP Task.csv | AMETEK SAP XXL Project Plan Replan MSP Task.csv__2f0764ccac__2026-05-05T02-44-15-662Z | COULD NOT BE DETERMINED | 42 | True | True | Not started | True  -2.44 0 0 0 0 0 20 | Negative Float High 2 0 0  |  | 1927, 1928 | True |  |
| 357ae9be-8a60-8195-bbcf-f741998e7807 | 1878 | Error and Defect Mitigation | PTM | 1.2.2.2.30.4 | 1.2.2.2.30.4 | 2026-05-25 | 2026-05-25 | 2026-04-16 | 0 | 6 | 1874 | 1 | 1 | 357ae9be-8a60-81ca-817f-ded15e75ea27 | 357ae9be-8a60-810b-85ac-eb1beed67247 | -62.39 | 0 | As Soon As Possible | Auto Scheduled | AMETEK SAP XXL Project Plan Replan MSP Task.csv | AMETEK SAP XXL Project Plan Replan MSP Task.csv__2f0764ccac__2026-05-05T02-44-15-662Z | Brad Meseck | 39 | True |  | Not started | True  -62.39 0 1 0 0 0 26 | Negative Float Critical 2 0 0  |  |  |  |  |
| 357ae9be-8a60-8196-8001-ef24f65cd8ee | 2474 | RTR_CM06_Bank_master | (Unassigned) | 1.2.4.2.9 | 1.2.4.2.9 | 2026-09-24 | 2026-09-29 | 2026-04-09 | 0 | 5 | 2898 | 0 | 0 |  |  | -86.31 | 0 | As Soon As Possible | Auto Scheduled | AMETEK SAP XXL Project Plan Replan MSP Task.csv | AMETEK SAP XXL Project Plan Replan MSP Task.csv__2f0764ccac__2026-05-05T02-44-15-662Z | COULD NOT BE DETERMINED | 173 | True |  | Not started | True  -86.31 0 0 0 0 0 20 | Negative Float Critical 2 0 0  |  | 2475, 2477, 2480, 2476, 2478, 2479 | True |  |
| 357ae9be-8a60-8196-8c37-db5dfe50e561 | 2525 | Extract File | Data | 1.2.4.2.17.1 | 1.2.4.2.17.1 | 2026-09-30 | 2026-09-30 | 2026-04-10 | 0 | 6 | 2524 | 1 | 2 | 357ae9be-8a60-81b0-90a1-ea8f91d653f6 | 357ae9be-8a60-8194-8b31-ebdfccfeb50e, 357ae9be-8a60-8114-a6a7-d2483ab41737 | -707 | 0 | As Soon As Possible | Auto Scheduled | AMETEK SAP XXL Project Plan Replan MSP Task.csv | AMETEK SAP XXL Project Plan Replan MSP Task.csv__2f0764ccac__2026-05-05T02-44-15-662Z | Jyoti Nain | 173 | True |  | Not started | True  -707 0 2 2 742 0 37 | Wrong Dependency, Wrong Successor, Negative Float Critical 8 1 2  |  |  |  |  |
| 357ae9be-8a60-8196-8e43-d475f9ff6ce5 | 3112 | Post Load Validation | PTP | 1.2.3.2.24.6 | 1.2.3.2.24.6 | 2026-06-10 | 2026-06-10 | 2026-04-15 | 0 | 6 | 3106 | 1 | 1 | 357ae9be-8a60-81f6-ac26-f1d4a2895e33 | 357ae9be-8a60-81e5-ae82-c5cd60df3771 | -183.77 | 0 | As Soon As Possible | Auto Scheduled | AMETEK SAP XXL Project Plan Replan MSP Task.csv | AMETEK SAP XXL Project Plan Replan MSP Task.csv__2f0764ccac__2026-05-05T02-44-15-662Z | Nevin Varkey | 56 | True |  | Not started | True  -183.77 0 1 1 77 0 31 | Wrong Dependency, Wrong Successor, Negative Float Critical 8 1 1  |  |  |  |  |
| 357ae9be-8a60-8196-8f5b-e45aae4e7e4c | 825 | Simulate Load | Data | 1.2.1.14.6 | 1.2.1.14.6 | 2026-04-08 | 2026-04-09 | 2026-04-09 | 100 | 5 | 763 | 1 | 1 | 357ae9be-8a60-8134-9bab-efbb98b7b159 | 357ae9be-8a60-81e0-a039-e14902b9cd1e | 0 | 0 | As Soon As Possible | Auto Scheduled | AMETEK SAP XXL Project Plan Replan MSP Task.csv | AMETEK SAP XXL Project Plan Replan MSP Task.csv__2f0764ccac__2026-05-05T02-44-15-662Z | Jyoti Nain |  |  |  | Done | True  0 0 1 1 219 0 23 | Wrong Dependency, Wrong Successor Critical 6 1 1  |  |  |  |  |
| 357ae9be-8a60-8196-9ce7-d918ccb0b9dd | 289 | Integration testing - Smoke Test | TESTING | 1.1.2.7.5 | 1.1.2.7.5 | 2026-05-29 | 2026-06-10 | 2025-12-18 | 0 | 5 | 278 | 1 | 1 | 357ae9be-8a60-81cb-8fbf-fbaa96ac686d | 357ae9be-8a60-815e-99c5-fbdcba258fb0 | 68 | 0 | Start No Earlier Than | Auto Scheduled | AMETEK SAP XXL Project Plan Replan MSP Task.csv | AMETEK SAP XXL Project Plan Replan MSP Task.csv__2f0764ccac__2026-05-05T02-44-15-662Z | Kishore Kakarla | 174 | True |  | Not started | True  68 0 1 0 0 0 26 | Low 0 0 0 True | 2026-04-30 |  |  |  |
| 357ae9be-8a60-8196-9fe6-f54478eceb7d | 2950 | Identify Data and Processes for ITC | Data | 1.3.3.7.3 | 1.3.3.7.3 | 2026-06-19 | 2026-06-22 | 2026-06-22 | 0 | 5 | 915 | 1 | 1 | 357ae9be-8a60-8148-903b-c443e941ad2f | 357ae9be-8a60-8199-a64b-f0f66f357a7c | 8.5 | 0 | As Soon As Possible | Auto Scheduled | AMETEK SAP XXL Project Plan Replan MSP Task.csv | AMETEK SAP XXL Project Plan Replan MSP Task.csv__2f0764ccac__2026-05-05T02-44-15-662Z | Jyoti Nain |  |  |  | Not started | True  8.5 0 1 0 0 1 18 | Low 0 0 0  |  |  |  |  |
| 357ae9be-8a60-8196-a355-ef808760a8e4 | 1874 | PTM_CM31_BOM Conversion | PTM | 1.2.2.2.30 | 1.2.2.2.30 | 2026-05-21 | 2026-05-26 | 2026-04-17 | 0 | 5 | 2800 | 0 | 0 |  |  | -7.8 | 0 | As Soon As Possible | Auto Scheduled | AMETEK SAP XXL Project Plan Replan MSP Task.csv | AMETEK SAP XXL Project Plan Replan MSP Task.csv__2f0764ccac__2026-05-05T02-44-15-662Z | Brad Meseck | 39 | True |  | Not started | True  -7.8 0 0 0 0 0 20 | Negative Float High 2 0 0  |  | 1879, 1876, 1880, 1875, 1878, 1877 | True |  |
| 357ae9be-8a60-8196-a7b9-da4e1b6ebbcc | 4175 | Error and Defect Mitigation | Finance | 1.2.5.2.3.4 | 1.2.5.2.3.4 | 2026-09-28 | 2026-09-29 | 2026-04-08 | 0 | 6 | 4171 | 1 | 1 | 357ae9be-8a60-81b6-9d8c-dae0b423fd1d | 357ae9be-8a60-813b-b1b0-dd2c217bee9b | -718.52 | 0 | As Soon As Possible | Auto Scheduled | AMETEK SAP XXL Project Plan Replan MSP Task.csv | AMETEK SAP XXL Project Plan Replan MSP Task.csv__2f0764ccac__2026-05-05T02-44-15-662Z | Kasey Hughes | 174 | True |  | Not started | True  -718.52 0 1 0 0 0 26 | Negative Float Critical 2 0 0  |  |  |  |  |
| 357ae9be-8a60-8196-b21a-fe2c48e39c98 | 4434 | PTM_CM53_Super_Routing | PTM | 1.2.5.2.47 | 1.2.5.2.47 | 2026-10-05 | 2026-10-07 | 2026-04-20 | 0 | 5 | 4162 | 0 | 0 |  |  | -90.75 | 0 | As Soon As Possible | Auto Scheduled | AMETEK SAP XXL Project Plan Replan MSP Task.csv | AMETEK SAP XXL Project Plan Replan MSP Task.csv__2f0764ccac__2026-05-05T02-44-15-662Z | Brad Meseck | 170 | True |  | Not started | True  -90.75 0 0 0 0 0 20 | Negative Float Critical 2 0 0  |  | 4435, 4437, 4439, 4438, 4440, 4436 | True |  |
| 357ae9be-8a60-8196-b3f9-e890f2f1d95d | 1899 | Error and Defect Mitigation | PTM | 1.2.2.2.33.4 | 1.2.2.2.33.4 | 2026-05-22 | 2026-05-22 | 2026-04-16 | 0 | 6 | 1895 | 1 | 1 | 357ae9be-8a60-81ef-97aa-e46beb713c6d | 357ae9be-8a60-81a2-986f-d435a4b2224b | -53.77 | 0 | As Soon As Possible | Auto Scheduled | AMETEK SAP XXL Project Plan Replan MSP Task.csv | AMETEK SAP XXL Project Plan Replan MSP Task.csv__2f0764ccac__2026-05-05T02-44-15-662Z | Brad Meseck | 36 | True |  | Not started | True  -53.77 0 1 0 0 0 26 | Negative Float Critical 2 0 0  |  |  |  |  |
| 357ae9be-8a60-8196-bafc-cb413820af25 | 4227 | RTR_CM14_Cost Element_Group | Finance | 1.2.5.2.11 | 1.2.5.2.11 | 2026-09-29 | 2026-10-05 | 2026-04-15 | 0 | 5 | 4162 | 0 | 0 |  |  | -88.06 | 0 | As Soon As Possible | Auto Scheduled | AMETEK SAP XXL Project Plan Replan MSP Task.csv | AMETEK SAP XXL Project Plan Replan MSP Task.csv__2f0764ccac__2026-05-05T02-44-15-662Z | Kasey Hughes | 173 | True |  | Not started | True  -88.06 0 0 0 0 0 20 | Negative Float Critical 2 0 0  |  | 4230, 4228, 4229 | True |  |
| 357ae9be-8a60-8196-bb5c-d5df25346ba5 | 792 | Error and Defect Mitigation | Finance | 1.2.1.10.4 | 1.2.1.10.4 | 2026-04-15 | 2026-04-15 | 2026-04-09 | 100 | 5 | 757 | 1 | 1 | 357ae9be-8a60-8165-8103-f2b012647189 | 357ae9be-8a60-81cb-876e-d1051fc0a159 | 0 | 0 | As Soon As Possible | Auto Scheduled | AMETEK SAP XXL Project Plan Replan MSP Task.csv | AMETEK SAP XXL Project Plan Replan MSP Task.csv__2f0764ccac__2026-05-05T02-44-15-662Z | Kasey Hughes |  |  |  | Done | True  0 0 1 0 0 0 18 | Low 0 0 0  |  |  |  |  |
| 357ae9be-8a60-8197-8c32-eac94f806de5 | 4512 | GTS - SPL (Sanctioned party list) | (Unassigned) | 1.2.5.2.66 | 1.2.5.2.66 | 2026-10-02 | 2026-10-02 | 2026-04-16 | 0 | 5 | 4162 | 0 | 0 |  |  | -86.63 | 0 | As Soon As Possible | Auto Scheduled | AMETEK SAP XXL Project Plan Replan MSP Task.csv | AMETEK SAP XXL Project Plan Replan MSP Task.csv__2f0764ccac__2026-05-05T02-44-15-662Z | COULD NOT BE DETERMINED | 169 | True |  | Not started | True  -86.63 0 0 0 0 0 20 | Negative Float Critical 2 0 0  |  | 4513, 4514 | True |  |
| 357ae9be-8a60-8197-9653-c90ab86a2f12 | 3170 | Load File Staged and Posted "Ready" | PTM | 1.2.3.2.33.1 | 1.2.3.2.33.1 | 2026-06-11 | 2026-06-12 | 2026-04-16 | 0 | 6 | 3169 | 1 | 3 | 357ae9be-8a60-8183-aa50-c4141e2eefd1 | 357ae9be-8a60-81e4-ad85-f3407bb2ec98, 357ae9be-8a60-8161-852c-e5a6205210b3, 357ae9be-8a60-8136-ab32-dcd8e1b4889f | -10426 | 0 | Start No Earlier Than | Auto Scheduled | AMETEK SAP XXL Project Plan Replan MSP Task.csv | AMETEK SAP XXL Project Plan Replan MSP Task.csv__2f0764ccac__2026-05-05T02-44-15-662Z | Brad Meseck | 57 | True |  | Not started | True  -10426 0 3 3 569 0 43 | Wrong Successor, Negative Float Critical 5 0 3 True | 2026-04-20 |  |  |  |
| 357ae9be-8a60-8197-98a0-c93374ed5808 | 4170 | Post Load Validation | Finance | 1.2.5.2.2.3 | 1.2.5.2.2.3 | 2026-09-25 | 2026-09-25 | 2026-04-07 | 0 | 6 | 4167 | 1 | 2 | 357ae9be-8a60-8144-a1fe-ebe4c0c5ef15 | 357ae9be-8a60-8124-bcb4-ec9d96461fc1, 357ae9be-8a60-8111-b710-ff87a842b6ed | -718.52 | 0 | As Soon As Possible | Auto Scheduled | AMETEK SAP XXL Project Plan Replan MSP Task.csv | AMETEK SAP XXL Project Plan Replan MSP Task.csv__2f0764ccac__2026-05-05T02-44-15-662Z | Kasey Hughes | 171 | True |  | Not started | True  -718.52 0 2 0 0 0 32 | Negative Float Critical 2 0 0  |  |  |  |  |
| 357ae9be-8a60-8197-ad05-e5135192af2c | 956 | PMO Authorization to Start Data Loads | PMO | 1.2.1.1 | 1.2.1.1 | 2026-04-06 | 2026-04-06 | 2026-04-06 | 100 | 4 | 425 | 0 | 2 |  | 357ae9be-8a60-811e-9d3e-e58033d8759e, 357ae9be-8a60-81f9-8103-c2590b210309 | 0 | 0 | Start No Earlier Than | Auto Scheduled | AMETEK SAP XXL Project Plan Replan MSP Task.csv | AMETEK SAP XXL Project Plan Replan MSP Task.csv__2f0764ccac__2026-05-05T02-44-15-662Z | Mark George |  |  |  | Done | True  0 0 2 0 0 0 24 | Wrong Successor High 3 0 1 True | 2026-04-06 |  |  |  |
| 357ae9be-8a60-8197-ae77-fb4784875d35 | 855 | Best Practice / Country Validation | Basis | 1.1.1.5.1.4 | 1.1.1.5.1.4 | 2026-04-29 | 2026-04-29 | 2026-05-13 | 100 | 6 | 3340 | 1 | 1 | 357ae9be-8a60-81e2-8342-c839241aac90 | 357ae9be-8a60-815f-8946-d0ddc3093181 | 0 | 0 | As Soon As Possible | Auto Scheduled | AMETEK SAP XXL Project Plan Replan MSP Task.csv | AMETEK SAP XXL Project Plan Replan MSP Task.csv__2f0764ccac__2026-05-05T02-44-15-662Z | Lokchetan Meghavath |  |  |  | Done | True  0 0 1 0 0 0 18 | Low 0 0 0  |  |  |  |  |
| 357ae9be-8a60-8197-b715-cce665ac666e | 2984 | RTR_CM04_Cost_Center | (Unassigned) | 1.2.3.2.5 | 1.2.3.2.5 | 2026-06-10 | 2026-06-11 | 2026-04-09 | 0 | 5 | 2959 | 0 | 1 |  | 357ae9be-8a60-8158-a689-f6badb746d2d | -22.94 | 0 | As Soon As Possible | Auto Scheduled | AMETEK SAP XXL Project Plan Replan MSP Task.csv | AMETEK SAP XXL Project Plan Replan MSP Task.csv__2f0764ccac__2026-05-05T02-44-15-662Z | COULD NOT BE DETERMINED | 63 | True |  | Not started | True  -22.94 0 1 0 0 0 26 | Negative Float Critical 2 0 0  |  | 2990, 2985, 2988, 2986, 2989, 2987 | True |  |
| 357ae9be-8a60-8198-96c4-c9bbbe9cdfe5 | 3098 | Post Load Validation | PTP;OTC | 1.2.3.2.22.6 | 1.2.3.2.22.6 | 2026-06-09 | 2026-06-09 | 2026-04-14 | 0 | 6 | 3092 | 1 | 0 | 357ae9be-8a60-812a-b365-f66486aec910 |  | -131.52 | 0 | As Soon As Possible | Auto Scheduled | AMETEK SAP XXL Project Plan Replan MSP Task.csv | AMETEK SAP XXL Project Plan Replan MSP Task.csv__2f0764ccac__2026-05-05T02-44-15-662Z | Nevin Varkey | 56 | True |  | Not started | True  -131.52 0 0 0 0 0 20 | Wrong Dependency, Negative Float, Open Finish Critical 6 1 0  |  |  |  |  |
| 357ae9be-8a60-8198-987d-fbbb3a10c0bc | 1761 | Simulate Load | Data | 1.2.2.2.13.6 | 1.2.2.2.13.6 | 2026-05-21 | 2026-05-21 | 2026-04-09 | 0 | 6 | 1755 | 1 | 2 | 357ae9be-8a60-8165-879e-ff7efed7f937 | 357ae9be-8a60-8105-bf78-d7b328b4d427, 357ae9be-8a60-81de-9c27-db4a5c7927c0 | -74.52 | 0 | As Soon As Possible | Auto Scheduled | AMETEK SAP XXL Project Plan Replan MSP Task.csv | AMETEK SAP XXL Project Plan Replan MSP Task.csv__2f0764ccac__2026-05-05T02-44-15-662Z | Jyoti Nain | 42 | True |  | Not started | True  -74.52 0 1 1 35 0 33 | Wrong Dependency, Wrong Successor, Negative Float Critical 8 1 2  |  |  |  |  |
| 357ae9be-8a60-8198-9adc-d0022ff6b6a7 | 4314 | Load | Data | 1.2.5.2.24.5 | 1.2.5.2.24.5 | 2026-09-25 | 2026-09-28 | 2026-04-15 | 0 | 6 | 4309 | 1 | 3 | 357ae9be-8a60-81d9-966e-ebb1a9d0ce67 | 357ae9be-8a60-815a-88f7-ce4ab477ce7a, 357ae9be-8a60-8171-adbc-d8d313eb21f0, 357ae9be-8a60-81ac-82f4-e1753ce99685 | -726.02 | 0 | As Soon As Possible | Auto Scheduled | AMETEK SAP XXL Project Plan Replan MSP Task.csv | AMETEK SAP XXL Project Plan Replan MSP Task.csv__2f0764ccac__2026-05-05T02-44-15-662Z | Jyoti Nain | 166 | True |  | Not started | True  -726.02 0 3 0 0 0 38 | Negative Float Critical 2 0 0  |  |  |  |  |
| 357ae9be-8a60-8198-aa92-f625c92ab0ec | 990 | Error and Defect Mitigation | PTP | 1.2.1.18.4 | 1.2.1.18.4 | 2026-04-15 | 2026-04-15 | 2026-04-10 | 100 | 5 | 766 | 1 | 1 | 357ae9be-8a60-8174-b2fe-c8bd76346ecd | 357ae9be-8a60-8166-97d3-c4b7d93ac49c | 0 | 0 | As Soon As Possible | Auto Scheduled | AMETEK SAP XXL Project Plan Replan MSP Task.csv | AMETEK SAP XXL Project Plan Replan MSP Task.csv__2f0764ccac__2026-05-05T02-44-15-662Z | Nevin Varkey |  |  |  | Done | True  0 0 1 1 5 0 23 | Low 0 0 0  |  |  |  |  |
| 357ae9be-8a60-8198-b2b4-cf10046a65dc | 1226 | Data Project Create | Data | 1.1.1.5.3 | 1.1.1.5.3 | 2026-05-14 | 2026-05-14 | 2026-05-28 | 0 | 5 | 849 | 0 | 0 |  |  | -8.19 | 0 | As Soon As Possible | Auto Scheduled | AMETEK SAP XXL Project Plan Replan MSP Task.csv | AMETEK SAP XXL Project Plan Replan MSP Task.csv__2f0764ccac__2026-05-05T02-44-15-662Z | Jyoti Nain |  |  | True | Not started | True  -8.19 0 0 0 0 0 12 | Negative Float High 2 0 0  |  | 1221, 876, 1222 | True |  |
| 357ae9be-8a60-8198-bd7b-ee908a13f9bf | 2001 | GTS - Material initial load from S4 (Run Interface) | (Unassigned) | 1.2.2.2.55 | 1.2.2.2.55 | 2026-05-21 | 2026-05-25 | 2026-04-16 | 0 | 5 | 2800 | 0 | 0 |  |  | -8.78 | 0 | As Soon As Possible | Auto Scheduled | AMETEK SAP XXL Project Plan Replan MSP Task.csv | AMETEK SAP XXL Project Plan Replan MSP Task.csv__2f0764ccac__2026-05-05T02-44-15-662Z | COULD NOT BE DETERMINED | 39 | True |  | Not started | True  -8.78 0 0 0 0 0 20 | Negative Float High 2 0 0  |  | 2002, 2003 | True |  |
| 357ae9be-8a60-8199-8452-dbd4be1c21ee | 692 | PTP_CM27_Vendor Master - Mass Maintenance - LFA1-WERKR | PTP | 1.2.1.21 | 1.2.1.21 | 2026-04-16 | 2026-04-16 | 2026-04-15 | 100 | 4 | 425 | 1 | 1 | 357ae9be-8a60-8106-a4d1-cf1c1647971d | 357ae9be-8a60-8131-bbd1-f93732506cf1 | 0 | 0 | As Soon As Possible | Auto Scheduled | AMETEK SAP XXL Project Plan Replan MSP Task.csv | AMETEK SAP XXL Project Plan Replan MSP Task.csv__2f0764ccac__2026-05-05T02-44-15-662Z | Muniraju Surappachari |  |  |  | Done | True  0 0 1 1 1 0 23 | Low 0 0 0  |  | 1006, 1010, 1009, 1007, 1005, 1008 | True |  |
| 357ae9be-8a60-8199-8fc7-fc43235d4c2e | 1122 | Pre Load Validation | Finance | 1.2.1.53.2 | 1.2.1.53.2 | 2026-04-15 | 2026-04-15 | 2026-04-10 | 100 | 5 | 702 | 1 | 1 | 357ae9be-8a60-81be-8698-c1c31a955ed7 | 357ae9be-8a60-812a-9549-e49160ba8123 | 0 | 0 | As Soon As Possible | Auto Scheduled | AMETEK SAP XXL Project Plan Replan MSP Task.csv | AMETEK SAP XXL Project Plan Replan MSP Task.csv__2f0764ccac__2026-05-05T02-44-15-662Z | Kasey Hughes |  |  |  | Done | True  0 0 1 0 0 0 18 | Wrong Dependency High 3 1 0  |  |  |  |  |
| 357ae9be-8a60-8199-922d-f14badcd8e7a | 4306 | Error and Defect Mitigation | PTP;OTC | 1.2.5.2.23.4 | 1.2.5.2.23.4 | 2026-09-24 | 2026-09-24 | 2026-04-13 | 0 | 6 | 4302 | 1 | 1 | 357ae9be-8a60-8109-a034-e299dbbc467e | 357ae9be-8a60-8184-bdc3-c2f0c4a9438b | -650.02 | 0 | As Soon As Possible | Auto Scheduled | AMETEK SAP XXL Project Plan Replan MSP Task.csv | AMETEK SAP XXL Project Plan Replan MSP Task.csv__2f0764ccac__2026-05-05T02-44-15-662Z | Nevin Varkey | 164 | True |  | Not started | True  -650.02 0 1 0 0 0 26 | Negative Float Critical 2 0 0  |  |  |  |  |
| 357ae9be-8a60-8199-92ae-eda8830268bf | 2958 | ITC3 Master Data Loads Complete | Data | 1.2.3.3 | 1.2.3.3 | 2026-06-19 | 2026-06-19 | 2026-06-19 | 0 | 4 | 2053 | 1 | 0 | 357ae9be-8a60-8139-b032-ec9ebefdeac6 |  | -11791 | 0 | As Soon As Possible | Auto Scheduled | AMETEK SAP XXL Project Plan Replan MSP Task.csv | AMETEK SAP XXL Project Plan Replan MSP Task.csv__2f0764ccac__2026-05-05T02-44-15-662Z | Jyoti Nain |  |  |  | Not started | True  -11791 0 0 0 0 0 12 | Negative Float, Open Finish Critical 3 0 0  |  |  |  |  |
| 357ae9be-8a60-8199-9424-f915b90ff71e | 4537 | Open Sales Orders(Manual) | (Unassigned) | 1.2.5.4.6 | 1.2.5.4.6 | 2026-10-01 | 2026-10-02 | 2026-10-02 | 0 | 5 | 4531 | 1 | 0 | 357ae9be-8a60-816c-a955-f517ebe8c18c |  | -34.6 | 0 | As Soon As Possible | Auto Scheduled | AMETEK SAP XXL Project Plan Replan MSP Task.csv | AMETEK SAP XXL Project Plan Replan MSP Task.csv__2f0764ccac__2026-05-05T02-44-15-662Z | COULD NOT BE DETERMINED |  |  |  | Not started | True  -34.6 0 0 0 0 0 12 | Negative Float, Open Finish Critical 3 0 0  |  |  |  |  |
| 357ae9be-8a60-8199-9d45-f8c46d2bf52e | 303 | RCM Development | (Unassigned) | 1.1.2.4.7 | 1.1.2.4.7 | 2025-03-13 | 2025-03-13 | 2025-03-13 | 100 | 5 | 267 | 0 | 0 |  |  | 0 | 0 | As Soon As Possible | Auto Scheduled | AMETEK SAP XXL Project Plan Replan MSP Task.csv | AMETEK SAP XXL Project Plan Replan MSP Task.csv__2f0764ccac__2026-05-05T02-44-15-662Z | Controlling Team |  |  |  | Done | True  0 0 0 0 0 0 12 | Low 0 0 0  |  |  |  |  |
| 357ae9be-8a60-8199-a64b-f0f66f357a7c | 2951 | Run Costing for Data Identified | Data | 1.3.3.7.4 | 1.3.3.7.4 | 2026-06-22 | 2026-06-23 | 2026-06-23 | 0 | 5 | 915 | 1 | 1 | 357ae9be-8a60-8196-9fe6-f54478eceb7d | 357ae9be-8a60-8190-9bfc-f6d06ac2b5b1 | 68 | 0 | As Soon As Possible | Auto Scheduled | AMETEK SAP XXL Project Plan Replan MSP Task.csv | AMETEK SAP XXL Project Plan Replan MSP Task.csv__2f0764ccac__2026-05-05T02-44-15-662Z | Jyoti Nain |  |  |  | Not started | True  68 0 1 0 0 0 18 | Low 0 0 0  |  |  |  |  |
| 357ae9be-8a60-8199-a7af-e68fbfb59764 | 284 | Import rulesets into system | (Unassigned) | 1.1.2.4.6 | 1.1.2.4.6 | 2025-11-06 | 2025-11-11 | 2025-11-11 | 100 | 5 | 267 | 1 | 1 | 357ae9be-8a60-8165-aae3-ebf2a676ec29 | 357ae9be-8a60-8127-bea0-fdf89dd970dd | 0 | 0 | As Soon As Possible | Auto Scheduled | AMETEK SAP XXL Project Plan Replan MSP Task.csv | AMETEK SAP XXL Project Plan Replan MSP Task.csv__2f0764ccac__2026-05-05T02-44-15-662Z | COULD NOT BE DETERMINED |  |  |  | Done | True  0 0 1 0 0 1 18 | Low 0 0 0  |  |  |  |  |
| 357ae9be-8a60-8199-a80d-cc97cf320c83 | 645 | Download Transport List | Basis | 1.1.1.4.14 | 1.1.1.4.14 | 2026-02-09 | 2026-02-09 | 2026-02-09 | 100 | 5 | 88 | 1 | 1 | 357ae9be-8a60-816b-a234-f41a5d72c961 | 357ae9be-8a60-81d6-83f6-fe69a2b3d4d2 | 0 | 0 | As Soon As Possible | Auto Scheduled | AMETEK SAP XXL Project Plan Replan MSP Task.csv | AMETEK SAP XXL Project Plan Replan MSP Task.csv__2f0764ccac__2026-05-05T02-44-15-662Z | Lokchetan Meghavath |  |  |  | Done | True  0 0 1 0 0 0 18 | Low 0 0 0  |  |  |  |  |
| 357ae9be-8a60-8199-b049-c7c966f03949 | 2970 | Pre Load Validation | Finance | 1.2.3.2.3.2 | 1.2.3.2.3.2 | 2026-06-09 | 2026-06-10 | 2026-04-07 | 0 | 6 | 2968 | 1 | 1 | 357ae9be-8a60-81de-9b3f-d5345c1bf5d0 | 357ae9be-8a60-8112-83e8-f7c442de8fb5 | -196.52 | 0 | As Soon As Possible | Auto Scheduled | AMETEK SAP XXL Project Plan Replan MSP Task.csv | AMETEK SAP XXL Project Plan Replan MSP Task.csv__2f0764ccac__2026-05-05T02-44-15-662Z | Kasey Hughes | 64 | True |  | Not started | True  -196.52 0 1 0 0 0 26 | Negative Float Critical 2 0 0  |  |  |  |  |
| 357ae9be-8a60-8199-b0f0-fb5ba3dc4dfe | 2733 | Load File Staged and Posted "Ready" | PTM | 1.2.4.2.54.1 | 1.2.4.2.54.1 | 2026-09-29 | 2026-09-29 | 2026-04-16 | 0 | 6 | 2732 | 1 | 1 | 357ae9be-8a60-81da-ac47-f247828056e9 | 357ae9be-8a60-8158-8891-e0892731b771 | -40875 | 0 | As Soon As Possible | Auto Scheduled | AMETEK SAP XXL Project Plan Replan MSP Task.csv | AMETEK SAP XXL Project Plan Replan MSP Task.csv__2f0764ccac__2026-05-05T02-44-15-662Z | Sam Penrod | 166 | True |  | Not started | True  -40875 0 1 0 0 0 26 | Wrong Dependency, Negative Float Critical 5 1 0  |  |  |  |  |
| 357ae9be-8a60-8199-b596-f4e3100aa72b | 654 | Client Config / Validation | Basis | 1.1.1.4.4 | 1.1.1.4.4 | 2026-02-02 | 2026-02-02 | 2026-02-02 | 100 | 5 | 88 | 1 | 1 | 357ae9be-8a60-8180-a627-ebef5a0c2655 | 357ae9be-8a60-81e3-9902-f87d6626678d | 0 | 0 | As Soon As Possible | Auto Scheduled | AMETEK SAP XXL Project Plan Replan MSP Task.csv | AMETEK SAP XXL Project Plan Replan MSP Task.csv__2f0764ccac__2026-05-05T02-44-15-662Z | Lokchetan Meghavath |  |  |  | Done | True  0 0 1 0 0 0 18 | Low 0 0 0  |  |  |  |  |
| 357ae9be-8a60-8199-b699-f81813ab1583 | 1729 | RTR_CM12_Activity Rates | (Unassigned) | 1.2.2.2.8 | 1.2.2.2.8 | 2026-05-19 | 2026-05-20 | 2026-04-08 | 0 | 5 | 2800 | 0 | 0 |  |  | -2.56 | 0 | As Soon As Possible | Auto Scheduled | AMETEK SAP XXL Project Plan Replan MSP Task.csv | AMETEK SAP XXL Project Plan Replan MSP Task.csv__2f0764ccac__2026-05-05T02-44-15-662Z | COULD NOT BE DETERMINED | 42 | True | True | Not started | True  -2.56 0 0 0 0 0 20 | Negative Float High 2 0 0  |  | 1730, 1734, 1735, 1733, 1732, 1731 | True |  |
| 357ae9be-8a60-8199-bf59-ecead07b150c | 2968 | RTR_CM01_GL_Account_Master to CC 1000 | (Unassigned) | 1.2.3.2.3 | 1.2.3.2.3 | 2026-06-09 | 2026-06-12 | 2026-04-09 | 0 | 5 | 2959 | 0 | 1 |  | 357ae9be-8a60-81a3-821e-d8bad7e815e2 | -24.56 | 0 | As Soon As Possible | Auto Scheduled | AMETEK SAP XXL Project Plan Replan MSP Task.csv | AMETEK SAP XXL Project Plan Replan MSP Task.csv__2f0764ccac__2026-05-05T02-44-15-662Z | COULD NOT BE DETERMINED | 64 | True |  | Not started | True  -24.56 0 1 0 0 0 26 | Wrong Successor, Negative Float Critical 5 0 1  |  | 2975, 2971, 2976, 2974, 2970, 2973, 2969, 2972 | True |  |
| 357ae9be-8a60-819a-857a-f70089bbe3dd | 425 | ITC1 Data Load Tasks QS5 | Data | 1.2.1 | 1.2.1 | 2026-04-06 | 2026-04-23 | 2026-04-21 | 100 | 3 | 682 | 0 | 1 |  | 357ae9be-8a60-8121-8da3-da12b1c4d208 | 0 | 0 | As Soon As Possible | Auto Scheduled | AMETEK SAP XXL Project Plan Replan MSP Task.csv | AMETEK SAP XXL Project Plan Replan MSP Task.csv__2f0764ccac__2026-05-05T02-44-15-662Z | Jyoti Nain |  |  |  | Done | True  0 0 0 0 0 0 14 | Low 0 0 0  |  |  | True |  |
| 357ae9be-8a60-819a-8c65-feccaf258a0f | 2980 | Simulate Load | Data | 1.2.3.2.4.3 | 1.2.3.2.4.3 | 2026-06-09 | 2026-06-09 | 2026-04-07 | 0 | 6 | 2977 | 1 | 1 | 357ae9be-8a60-81a2-bd97-cb93512b8b39 | 357ae9be-8a60-81be-b299-f877cde78027 | -183.52 | 0 | As Soon As Possible | Auto Scheduled | AMETEK SAP XXL Project Plan Replan MSP Task.csv | AMETEK SAP XXL Project Plan Replan MSP Task.csv__2f0764ccac__2026-05-05T02-44-15-662Z | Jyoti Nain | 63 | True |  | Not started | True  -183.52 0 1 0 0 0 26 | Negative Float Critical 2 0 0  |  |  |  |  |
| 357ae9be-8a60-819a-93ea-f080e6e6a5ef | 865 | Functional Leads Validation of Transport List | Development;PTM;Finance;PMO;Europe IT lead;OTC;TESTING | 1.1.1.5.1.14 | 1.1.1.5.1.14 | 2026-05-05 | 2026-05-05 | 2026-05-19 | 0 | 6 | 3340 | 1 | 2 | 357ae9be-8a60-81a5-b808-e31a10e0ad7d | 357ae9be-8a60-8147-adb8-d246f38105c1, 357ae9be-8a60-816c-b1e5-c2b23837ce56 | -203.02 | 0 | As Soon As Possible | Auto Scheduled | AMETEK SAP XXL Project Plan Replan MSP Task.csv | AMETEK SAP XXL Project Plan Replan MSP Task.csv__2f0764ccac__2026-05-05T02-44-15-662Z | Bijoykrishna Das |  |  |  | Not started | True  -203.02 0 2 0 0 0 24 | Negative Float Critical 2 0 0  |  |  |  | True |
| 357ae9be-8a60-819a-94f5-ff7adfa9d502 | 2587 | Simulate Load | Data | 1.2.4.2.26.3 | 1.2.4.2.26.3 | 2026-09-28 | 2026-09-28 | 2026-04-14 | 0 | 6 | 2584 | 1 | 1 | 357ae9be-8a60-81f3-a4a9-f8a2cf9b64a6 | 357ae9be-8a60-81d4-8f95-eb0bf0dc09fb | -726 | 0 | As Soon As Possible | Auto Scheduled | AMETEK SAP XXL Project Plan Replan MSP Task.csv | AMETEK SAP XXL Project Plan Replan MSP Task.csv__2f0764ccac__2026-05-05T02-44-15-662Z | Jyoti Nain | 167 | True |  | Not started | True  -726 0 1 0 0 0 26 | Negative Float Critical 2 0 0  |  |  |  |  |
| 357ae9be-8a60-819a-9806-c9f4f4cb26c7 | 2761 | Load Descartes XML File | OTC | 1.2.4.2.62.1 | 1.2.4.2.62.1 | 2026-10-02 | 2026-10-02 | 2026-04-16 | 0 | 6 | 2760 | 2 | 1 | 357ae9be-8a60-8125-8286-d7af3f5eeee5, 357ae9be-8a60-81cd-8c09-e457da07ac98 | 357ae9be-8a60-8105-9b49-c564cfe33656 | -693 | 0 | As Soon As Possible | Auto Scheduled | AMETEK SAP XXL Project Plan Replan MSP Task.csv | AMETEK SAP XXL Project Plan Replan MSP Task.csv__2f0764ccac__2026-05-05T02-44-15-662Z | James VanRiper | 169 | True |  | Not started | True  -693 0 1 0 0 0 26 | Wrong Dependency, Negative Float Critical 5 2 0  |  |  |  |  |

| id | uid | name | workstream | outlineNumber | wbs | start | finish | baselineFinish | pct | outlineLevel | parentUid | predCount | sucCount | predIds | sucIds | totalSlackDaysRaw | freeSlackDaysRaw | constraintType | taskMode | mspSourceFile | mspImportVersion | assignedTo | slipDays | isSlipped | isDue14 | status | cpm | scheduleQuality | constraintDate | childUids | isSummary |
| --- | --- | --- | --- | --- | --- | --- | --- | --- | --- | --- | --- | --- | --- | --- | --- | --- | --- | --- | --- | --- | --- | --- | --- | --- | --- | --- | --- | --- | --- | --- | --- |
| 357ae9be-8a60-819a-aaa6-da5d5e4abd2b | 4295 | PTP_CM27_BP_Intercompany Supplier | PTP | 1.2.5.2.22 | 1.2.5.2.22 | 2026-09-24 | 2026-09-25 | 2026-04-14 | 0 | 5 | 4162 | 0 | 0 |  |  | -81.69 | 0 | As Soon As Possible | Auto Scheduled | AMETEK SAP XXL Project Plan Replan MSP Task.csv | AMETEK SAP XXL Project Plan Replan MSP Task.csv__2f0764ccac__2026-05-05T02-44-15-662Z | Muniraju Surappachari | 164 | True |  | Not started | True  -81.69 0 0 0 0 0 20 | Negative Float Critical 2 0 0  |  | 4300, 4299, 4297, 4301, 4298, 4296 | True |
| 357ae9be-8a60-819a-acd4-cc6466f42a57 | 3114 | Load File Staged and Posted "Ready" | PTP;OTC | 1.2.3.2.25.1 | 1.2.3.2.25.1 | 2026-06-10 | 2026-06-10 | 2026-04-07 | 0 | 6 | 3113 | 1 | 0 | 357ae9be-8a60-81ec-b52c-d19359ee27ae |  | -8101 | 0 | As Soon As Possible | Auto Scheduled | AMETEK SAP XXL Project Plan Replan MSP Task.csv | AMETEK SAP XXL Project Plan Replan MSP Task.csv__2f0764ccac__2026-05-05T02-44-15-662Z | Nevin Varkey | 64 | True |  | Not started | True  -8101 0 0 0 0 0 20 | Wrong Dependency, Negative Float, Open Finish Critical 6 1 0  |  |  |  |
| 357ae9be-8a60-819a-ace4-ffa75758544e | 2999 | Simulate Load | Data | 1.2.3.2.7.3 | 1.2.3.2.7.3 | 2026-06-12 | 2026-06-12 | 2026-04-09 | 0 | 6 | 2996 | 1 | 1 | 357ae9be-8a60-8123-8a38-e85edcee7dce | 357ae9be-8a60-81ba-a6d8-f4fea5b8e4c0 | -158.02 | 0 | As Soon As Possible | Auto Scheduled | AMETEK SAP XXL Project Plan Replan MSP Task.csv | AMETEK SAP XXL Project Plan Replan MSP Task.csv__2f0764ccac__2026-05-05T02-44-15-662Z | Jyoti Nain | 64 | True |  | Not started | True  -158.02 0 1 0 0 0 26 | Negative Float Critical 2 0 0  |  |  |  |
| 357ae9be-8a60-819a-b347-c4ddecd86ece | 3027 | Post Load Validation | Finance | 1.2.3.2.11.3 | 1.2.3.2.11.3 | 2026-06-12 | 2026-06-15 | 2026-04-15 | 0 | 6 | 3024 | 1 | 0 | 357ae9be-8a60-817c-8829-e85066f1b742 |  | -158.52 | 0 | As Soon As Possible | Auto Scheduled | AMETEK SAP XXL Project Plan Replan MSP Task.csv | AMETEK SAP XXL Project Plan Replan MSP Task.csv__2f0764ccac__2026-05-05T02-44-15-662Z | Kasey Hughes | 61 | True |  | Not started | True  -158.52 0 0 0 0 0 20 | Negative Float, Open Finish Critical 3 0 0  |  |  |  |
| 357ae9be-8a60-819a-b381-c8abad592460 | 4254 | Pre Load Validation | PTP | 1.2.5.2.15.2 | 1.2.5.2.15.2 | 2026-10-01 | 2026-10-01 | 2026-04-10 | 0 | 6 | 4252 | 1 | 1 | 357ae9be-8a60-81ee-a24c-e5041559f5a6 | 357ae9be-8a60-8110-8af2-d89abfe150d9 | -718.52 | 0 | As Soon As Possible | Auto Scheduled | AMETEK SAP XXL Project Plan Replan MSP Task.csv | AMETEK SAP XXL Project Plan Replan MSP Task.csv__2f0764ccac__2026-05-05T02-44-15-662Z | Nevin Varkey | 174 | True |  | Not started | True  -718.52 0 1 0 0 0 26 | Negative Float Critical 2 0 0  |  |  |  |
| 357ae9be-8a60-819a-b6ec-e06c59daead0 | 4371 | Post Load Validation | PTM | 1.2.5.2.32.6 | 1.2.5.2.32.6 | 2026-10-05 | 2026-10-05 | 2026-04-21 | 0 | 6 | 4365 | 1 | 0 | 357ae9be-8a60-816d-83dc-eb1a223baf6c |  | -704.39 | 0 | Start No Earlier Than | Auto Scheduled | AMETEK SAP XXL Project Plan Replan MSP Task.csv | AMETEK SAP XXL Project Plan Replan MSP Task.csv__2f0764ccac__2026-05-05T02-44-15-662Z | Brad Meseck | 167 | True |  | Not started | True  -704.39 0 0 0 0 0 20 | Negative Float, Open Finish Critical 3 0 0 True | 2026-04-20 |  |  |
| 357ae9be-8a60-819a-b8b0-d68206eb1a47 | 4488 | Load Descartes XML File | OTC | 1.2.5.2.58.1 | 1.2.5.2.58.1 | 2026-09-24 | 2026-09-24 | 2026-04-06 | 0 | 6 | 4487 | 1 | 0 | 357ae9be-8a60-81e0-9d16-ea967b28bc5d |  | -642.52 | 0 | As Soon As Possible | Auto Scheduled | AMETEK SAP XXL Project Plan Replan MSP Task.csv | AMETEK SAP XXL Project Plan Replan MSP Task.csv__2f0764ccac__2026-05-05T02-44-15-662Z | James VanRiper | 171 | True |  | Not started | True  -642.52 0 0 0 0 0 20 | Negative Float, Open Finish Critical 3 0 0  |  |  |  |
| 357ae9be-8a60-819a-bc76-e5cf500b2a01 | 1781 | Post Load Validation | PTP | 1.2.2.2.15.6 | 1.2.2.2.15.6 | 2026-05-29 | 2026-05-29 | 2026-04-14 | 0 | 6 | 1775 | 1 | 0 | 357ae9be-8a60-8111-aea0-f5dba62e7cdb |  | -76.52 | 0 | As Soon As Possible | Auto Scheduled | AMETEK SAP XXL Project Plan Replan MSP Task.csv | AMETEK SAP XXL Project Plan Replan MSP Task.csv__2f0764ccac__2026-05-05T02-44-15-662Z | Nevin Varkey | 45 | True |  | Not started | True  -76.52 0 0 0 0 0 20 | Negative Float, Open Finish Critical 3 0 0  |  |  |  |
| 357ae9be-8a60-819b-8faa-dccad424e34d | 3136 | Pre Load Validation | PTP | 1.2.3.2.28.2 | 1.2.3.2.28.2 | 2026-06-11 | 2026-06-11 | 2026-04-15 | 0 | 6 | 3134 | 1 | 1 | 357ae9be-8a60-81e2-bed3-e63bbf984ba6 | 357ae9be-8a60-815c-b26d-d2e7ed669029 | -9256 | 0 | As Soon As Possible | Auto Scheduled | AMETEK SAP XXL Project Plan Replan MSP Task.csv | AMETEK SAP XXL Project Plan Replan MSP Task.csv__2f0764ccac__2026-05-05T02-44-15-662Z | Nevin Varkey | 57 | True |  | Not started | True  -9256 0 1 0 0 0 26 | Negative Float Critical 2 0 0  |  |  |  |
| 357ae9be-8a60-819b-9ce4-e439e44d3dd7 | 3293 | GTS - HTS - Assign | (Unassigned) | 1.2.3.2.61 | 1.2.3.2.61 | 2026-06-16 | 2026-06-16 | 2026-04-16 | 0 | 5 | 2959 | 0 | 0 |  |  | -23.78 | 0 | As Soon As Possible | Auto Scheduled | AMETEK SAP XXL Project Plan Replan MSP Task.csv | AMETEK SAP XXL Project Plan Replan MSP Task.csv__2f0764ccac__2026-05-05T02-44-15-662Z | COULD NOT BE DETERMINED | 61 | True |  | Not started | True  -23.78 0 0 0 0 0 20 | Negative Float Critical 2 0 0  |  | 3294, 3295 | True |
| 357ae9be-8a60-819b-9d83-c65fbbb17cf2 | 3226 | Pre Load Validation | PTM | 1.2.3.2.46.2 | 1.2.3.2.46.2 | 2026-06-11 | 2026-06-11 | 2026-04-15 | 0 | 6 | 3224 | 1 | 1 | 357ae9be-8a60-81d3-a6cc-e06a92e80334 | 357ae9be-8a60-813f-9f1e-dfadcd8f8129 | -11236 | 0 | As Soon As Possible | Auto Scheduled | AMETEK SAP XXL Project Plan Replan MSP Task.csv | AMETEK SAP XXL Project Plan Replan MSP Task.csv__2f0764ccac__2026-05-05T02-44-15-662Z | Eric Heisler | 57 | True |  | Not started | True  -11236 0 1 0 0 0 26 | Negative Float Critical 2 0 0  |  |  |  |
| 357ae9be-8a60-819b-a215-cd3ad5a03e0f | 2966 | Load | Finance | 1.2.3.2.2.2 | 1.2.3.2.2.2 | 2026-06-09 | 2026-06-09 | 2026-04-07 | 0 | 6 | 2964 | 1 | 1 | 357ae9be-8a60-81a2-9fbc-e40e9b95083e | 357ae9be-8a60-8177-a79b-f1bbe8d82d00 | -196.52 | 0 | As Soon As Possible | Auto Scheduled | AMETEK SAP XXL Project Plan Replan MSP Task.csv | AMETEK SAP XXL Project Plan Replan MSP Task.csv__2f0764ccac__2026-05-05T02-44-15-662Z | Kasey Hughes | 63 | True |  | Not started | True  -196.52 0 1 0 0 0 26 | Negative Float Critical 2 0 0  |  |  |  |
| 357ae9be-8a60-819b-a9aa-e2ed68282169 | 941 | VC_Classification (Class Type 200) | (Unassigned) | 1.2.1.41 | 1.2.1.41 | 2026-04-15 | 2026-04-16 | 2026-04-16 | 100 | 4 | 425 | 0 | 0 |  |  | 0 | 0 | As Soon As Possible | Auto Scheduled | AMETEK SAP XXL Project Plan Replan MSP Task.csv | AMETEK SAP XXL Project Plan Replan MSP Task.csv__2f0764ccac__2026-05-05T02-44-15-662Z | COULD NOT BE DETERMINED |  |  |  | Done | True  0 0 0 0 0 0 12 | Low 0 0 0  |  | 1159, 1158 | True |
| 357ae9be-8a60-819b-a9f8-f3059d876fbd | 2580 | Simulate Load | Data | 1.2.4.2.25.3 | 1.2.4.2.25.3 | 2026-09-28 | 2026-09-28 | 2026-04-14 | 0 | 6 | 2577 | 1 | 1 | 357ae9be-8a60-8184-897d-d2d6dc8aa478 | 357ae9be-8a60-815f-874b-f3b9637dfd8a | -667.25 | 0 | As Soon As Possible | Auto Scheduled | AMETEK SAP XXL Project Plan Replan MSP Task.csv | AMETEK SAP XXL Project Plan Replan MSP Task.csv__2f0764ccac__2026-05-05T02-44-15-662Z | Jyoti Nain | 167 | True |  | Not started | True  -667.25 0 1 0 0 0 26 | Negative Float Critical 2 0 0  |  |  |  |
| 357ae9be-8a60-819b-aa7b-c07082e93899 | 1305 | Import Group 2 - Core Transports | Development;PTM;Finance;PMO;Europe IT lead;OTC;TESTING | 1.1.1.6.2.3 | 1.1.1.6.2.3 | 2026-05-26 | 2026-05-27 | 2026-05-22 | 0 | 6 | 1302 | 1 | 1 | 357ae9be-8a60-8195-b243-f4ff68715922 | 357ae9be-8a60-81ac-b9ff-c4fc81e94b10 | -241.52 | 0 | As Soon As Possible | Auto Scheduled | AMETEK SAP XXL Project Plan Replan MSP Task.csv | AMETEK SAP XXL Project Plan Replan MSP Task.csv__2f0764ccac__2026-05-05T02-44-15-662Z | Bijoykrishna Das | 5 | True |  | Not started | True  -241.52 0 1 0 0 0 26 | Negative Float Critical 2 0 0  |  |  |  |
| 357ae9be-8a60-819b-ac12-dc5034db999a | 1928 | Post Load Validation | PTM | 1.2.2.2.38.2 | 1.2.2.2.38.2 | 2026-05-19 | 2026-05-19 | 2026-04-07 | 0 | 6 | 1926 | 1 | 1 | 357ae9be-8a60-818a-ac08-c60d28b5a42d | 357ae9be-8a60-81bf-bfca-c1e4fbbd06dd | -19.52 | 0 | As Soon As Possible | Auto Scheduled | AMETEK SAP XXL Project Plan Replan MSP Task.csv | AMETEK SAP XXL Project Plan Replan MSP Task.csv__2f0764ccac__2026-05-05T02-44-15-662Z | Eric Heisler | 42 | True | True | Not started | True  -19.52 0 1 0 0 0 26 | Negative Float Critical 2 0 0  |  |  |  |
| 357ae9be-8a60-819b-b154-e350e2bb268a | 1058 | Simulate Load | Data | 1.2.1.31.3 | 1.2.1.31.3 | 2026-04-16 | 2026-04-17 | 2026-04-16 | 100 | 5 | 694 | 1 | 1 | 357ae9be-8a60-81c9-9763-d2f67f05664a | 357ae9be-8a60-8183-8531-e72a33be04e0 | 0 | 0 | Finish No Earlier Than | Auto Scheduled | AMETEK SAP XXL Project Plan Replan MSP Task.csv | AMETEK SAP XXL Project Plan Replan MSP Task.csv__2f0764ccac__2026-05-05T02-44-15-662Z | Jyoti Nain |  |  |  | Done | True  0 0 1 0 0 0 18 | Low 0 0 0 True | 2026-04-17 |  |  |
| 357ae9be-8a60-819c-813f-c9952e3df0fd | 2677 | Run ALE Transaction to QS5 from DS4 130 | PTM | 1.2.4.2.42.1 | 1.2.4.2.42.1 | 2026-09-29 | 2026-09-29 | 2026-04-16 | 0 | 6 | 2676 | 1 | 1 | 357ae9be-8a60-81fe-bfbe-ec01d510a63e | 357ae9be-8a60-81a8-b353-cfe1d84027a4 | -688 | 0 | As Soon As Possible | Auto Scheduled | AMETEK SAP XXL Project Plan Replan MSP Task.csv | AMETEK SAP XXL Project Plan Replan MSP Task.csv__2f0764ccac__2026-05-05T02-44-15-662Z | Eric Heisler | 166 | True |  | Not started | True  -688 0 1 0 0 0 26 | Wrong Dependency, Negative Float Critical 5 1 0  |  |  |  |
| 357ae9be-8a60-819c-9c43-d9d355b60ec5 | 4198 | Intercompany Business Partner Setup | Development;PTM;Finance;PMO;Europe IT lead;OTC;TESTING | 1.2.5.2.6.4 | 1.2.5.2.6.4 | 2026-09-30 | 2026-09-30 | 2026-04-09 | 0 | 6 | 4194 | 3 | 0 | 357ae9be-8a60-81c4-ae97-e675a141bed2, 357ae9be-8a60-811d-8a9c-d1863710bf2c, 357ae9be-8a60-81fc-8ed1-c15af66a0e09 |  | -675.02 | 0 | As Soon As Possible | Auto Scheduled | AMETEK SAP XXL Project Plan Replan MSP Task.csv | AMETEK SAP XXL Project Plan Replan MSP Task.csv__2f0764ccac__2026-05-05T02-44-15-662Z | Bijoykrishna Das | 174 | True |  | Not started | True  -675.02 0 0 0 0 0 20 | Negative Float, Open Finish Critical 3 0 0  |  |  |  |
| 357ae9be-8a60-819c-a1b7-f223e0d785fc | 4278 | Extract File | Data | 1.2.5.2.19.1 | 1.2.5.2.19.1 | 2026-10-01 | 2026-10-01 | 2026-04-10 | 0 | 6 | 4277 | 1 | 1 | 357ae9be-8a60-8105-92af-c01eef9c0556 | 357ae9be-8a60-8115-8ba1-d2a890dcdcda | -691.77 | 0 | As Soon As Possible | Auto Scheduled | AMETEK SAP XXL Project Plan Replan MSP Task.csv | AMETEK SAP XXL Project Plan Replan MSP Task.csv__2f0764ccac__2026-05-05T02-44-15-662Z | Jyoti Nain | 174 | True |  | Not started | True  -691.77 0 1 0 0 0 26 | Negative Float Critical 2 0 0  |  |  |  |
| 357ae9be-8a60-819c-a6cb-e909ff6623a8 | 2562 | Post Load Validation | PTP;OTC | 1.2.4.2.22.6 | 1.2.4.2.22.6 | 2026-09-25 | 2026-09-25 | 2026-04-14 | 0 | 6 | 2556 | 1 | 0 | 357ae9be-8a60-8126-b3f0-d7d74334a174 |  | -653.5 | 0 | As Soon As Possible | Auto Scheduled | AMETEK SAP XXL Project Plan Replan MSP Task.csv | AMETEK SAP XXL Project Plan Replan MSP Task.csv__2f0764ccac__2026-05-05T02-44-15-662Z | Nevin Varkey | 164 | True |  | Not started | True  -653.5 0 0 0 0 0 20 | Wrong Dependency, Negative Float, Open Finish Critical 6 1 0  |  |  |  |
| 357ae9be-8a60-819c-aa05-e04b69c5451a | 3013 | Simulate Load | Data | 1.2.3.2.9.3 | 1.2.3.2.9.3 | 2026-06-08 | 2026-06-08 | 2026-04-09 | 0 | 6 | 3010 | 0 | 1 |  | 357ae9be-8a60-81cd-9088-d70cee098476 | -168.52 | 0 | As Soon As Possible | Auto Scheduled | AMETEK SAP XXL Project Plan Replan MSP Task.csv | AMETEK SAP XXL Project Plan Replan MSP Task.csv__2f0764ccac__2026-05-05T02-44-15-662Z | Jyoti Nain | 60 | True |  | Not started | True  -168.52 0 1 0 0 0 26 | Negative Float, Open Start Critical 3 0 0  |  |  |  |
| 357ae9be-8a60-819c-aa40-e834724723c1 | 1852 | Post Load Validation | PTM | 1.2.2.2.26.6 | 1.2.2.2.26.6 | 2026-05-21 | 2026-05-21 | 2026-04-15 | 0 | 6 | 1846 | 1 | 3 | 357ae9be-8a60-816b-b66c-cc96cc70bb41 | 357ae9be-8a60-811c-a632-c761fdfa4cc5, 357ae9be-8a60-8187-9d2b-ce8f2dad5d54, 357ae9be-8a60-813e-9126-fedfdfb6b8c1 | -70.27 | 0 | As Soon As Possible | Auto Scheduled | AMETEK SAP XXL Project Plan Replan MSP Task.csv | AMETEK SAP XXL Project Plan Replan MSP Task.csv__2f0764ccac__2026-05-05T02-44-15-662Z | Eric Heisler | 36 | True |  | Not started | True  -70.27 0 3 3 93 0 43 | Wrong Successor, Negative Float Critical 5 0 3  |  |  |  |
| 357ae9be-8a60-819c-ab8e-d7fa7c3e1a88 | 4529 | UAT Mock Data Loads Complete | PMO | 1.2.5.2.68.7 | 1.2.5.2.68.7 | 2026-09-24 | 2026-09-24 | 2026-04-21 | 0 | 6 | 4522 | 0 | 0 |  |  | -38506 | 0 | As Soon As Possible | Auto Scheduled | AMETEK SAP XXL Project Plan Replan MSP Task.csv | AMETEK SAP XXL Project Plan Replan MSP Task.csv__2f0764ccac__2026-05-05T02-44-15-662Z | Mark George | 156 | True |  | Not started | True  -38506 0 0 0 0 0 20 | Negative Float, Open Start, Open Finish Critical 4 0 0  |  |  |  |
| 357ae9be-8a60-819c-b395-e0dd1355c63d | 4457 | Manual File Staged and Posted "Ready" | PTP | 1.2.5.2.51.1 | 1.2.5.2.51.1 | 2026-09-25 | 2026-09-25 | 2026-04-14 | 0 | 6 | 4456 | 2 | 0 | 357ae9be-8a60-8105-92f6-c1b9adcc0335, 357ae9be-8a60-8184-bdc3-c2f0c4a9438b |  | -39061 | 0 | Start No Earlier Than | Auto Scheduled | AMETEK SAP XXL Project Plan Replan MSP Task.csv | AMETEK SAP XXL Project Plan Replan MSP Task.csv__2f0764ccac__2026-05-05T02-44-15-662Z | Nevin Varkey | 164 | True |  | Not started | True  -39061 0 0 0 0 0 20 | Negative Float, Open Finish Critical 3 0 0 True | 2026-04-17 |  |  |
| 357ae9be-8a60-819c-bd01-cc197f664c16 | 1933 | Run ALE Transaction to QS5 from DS4 130 | PTM | 1.2.2.2.40.1 | 1.2.2.2.40.1 | 2026-05-21 | 2026-05-21 | 2026-04-16 | 0 | 6 | 1932 | 1 | 1 | 357ae9be-8a60-819c-aa40-e834724723c1 | 357ae9be-8a60-81c0-81b4-c9a80094ad80 | -30.27 | 0 | As Soon As Possible | Auto Scheduled | AMETEK SAP XXL Project Plan Replan MSP Task.csv | AMETEK SAP XXL Project Plan Replan MSP Task.csv__2f0764ccac__2026-05-05T02-44-15-662Z | Eric Heisler | 35 | True |  | Not started | True  -30.27 0 1 0 0 0 26 | Wrong Dependency, Negative Float Critical 5 1 0  |  |  |  |
| 357ae9be-8a60-819d-8b93-d28aa1960d6a | 3337 | Open Production Orders(Manual) | (Unassigned) | 1.2.3.4.8 | 1.2.3.4.8 | 2026-06-22 | 2026-06-23 | 2026-06-23 | 0 | 5 | 3326 | 1 | 0 | 357ae9be-8a60-812b-99d2-f7a1aa058a4c |  | -24.06 | 0 | As Soon As Possible | Auto Scheduled | AMETEK SAP XXL Project Plan Replan MSP Task.csv | AMETEK SAP XXL Project Plan Replan MSP Task.csv__2f0764ccac__2026-05-05T02-44-15-662Z | COULD NOT BE DETERMINED |  |  |  | Not started | True  -24.06 0 0 0 0 0 12 | Wrong Dependency, Negative Float, Open Finish Critical 6 1 0  |  |  |  |
| 357ae9be-8a60-819d-8ca4-c62c5fca339e | 58 | Complete - Ready for Security Review | Security | 1.1.2.9.1.1.2 | 1.1.2.9.1.1.2 | 2025-07-07 | 2025-08-15 | 2025-08-15 | 100 | 7 | 56 | 0 | 1 |  | 357ae9be-8a60-81aa-8fb9-d9d0f029be12 | 0 | 0 | Finish No Earlier Than | Auto Scheduled | AMETEK SAP XXL Project Plan Replan MSP Task.csv | AMETEK SAP XXL Project Plan Replan MSP Task.csv__2f0764ccac__2026-05-05T02-44-15-662Z | Manjunatha Umesha |  |  |  | Done | True  0 0 0 0 0 0 14 | Low 0 0 0 True | 2025-08-15 |  |  |
| 357ae9be-8a60-819d-9098-e0c91ad4181b | 1151 | Run ALE Transaction to QS5 from DS4 130 | PTM | 1.2.1.38.1 | 1.2.1.38.1 | 2026-04-06 | 2026-04-06 | 2026-04-06 | 100 | 5 | 938 | 1 | 1 | 357ae9be-8a60-8197-ad05-e5135192af2c | 357ae9be-8a60-81fe-a12f-fc1f08198af5 | 0 | 0 | As Soon As Possible | Auto Scheduled | AMETEK SAP XXL Project Plan Replan MSP Task.csv | AMETEK SAP XXL Project Plan Replan MSP Task.csv__2f0764ccac__2026-05-05T02-44-15-662Z | Eric Heisler |  |  |  | Done | True  0 0 1 0 0 0 18 | Wrong Dependency High 3 1 0  |  |  |  |
| 357ae9be-8a60-819d-910b-da3deb9b68af | 1741 | Load | Data | 1.2.2.2.9.5 | 1.2.2.2.9.5 | 2026-05-18 | 2026-05-19 | 2026-04-09 | 0 | 6 | 1736 | 1 | 0 | 357ae9be-8a60-8112-811f-deaef6f27fd8 |  | -48.52 | 0 | Finish No Earlier Than | Auto Scheduled | AMETEK SAP XXL Project Plan Replan MSP Task.csv | AMETEK SAP XXL Project Plan Replan MSP Task.csv__2f0764ccac__2026-05-05T02-44-15-662Z | Jyoti Nain | 40 | True | True | Not started | True  -48.52 0 0 0 0 0 20 | Negative Float, Open Finish Critical 3 0 0 True | 2026-04-15 |  |  |
| 357ae9be-8a60-819d-a28d-eefb005070d1 | 2020 | Load Descartes XML File | OTC | 1.2.2.2.61.1 | 1.2.2.2.61.1 | 2026-05-26 | 2026-05-26 | 2026-04-16 | 0 | 6 | 2019 | 1 | 2 | 357ae9be-8a60-81ae-8755-ea97769bbad7 | 357ae9be-8a60-81e2-809c-df100912a844, 357ae9be-8a60-816c-ad9a-cf035f1ccd99 | -70.27 | 0 | As Soon As Possible | Auto Scheduled | AMETEK SAP XXL Project Plan Replan MSP Task.csv | AMETEK SAP XXL Project Plan Replan MSP Task.csv__2f0764ccac__2026-05-05T02-44-15-662Z | James VanRiper | 40 | True |  | Not started | True  -70.27 0 2 2 439 0 37 | Wrong Successor, Negative Float Critical 5 0 2  |  |  |  |
| 357ae9be-8a60-819d-a9e7-daf56e137743 | 4398 | Load | Data | 1.2.5.2.36.5 | 1.2.5.2.36.5 | 2026-10-02 | 2026-10-02 | 2026-04-21 | 0 | 6 | 4393 | 1 | 0 | 357ae9be-8a60-81fe-b3b2-df12a2529ec8 |  | -695.77 | 0 | Finish No Earlier Than | Auto Scheduled | AMETEK SAP XXL Project Plan Replan MSP Task.csv | AMETEK SAP XXL Project Plan Replan MSP Task.csv__2f0764ccac__2026-05-05T02-44-15-662Z | Jyoti Nain | 164 | True |  | Not started | True  -695.77 0 0 0 0 0 20 | Negative Float, Open Finish Critical 3 0 0 True | 2026-04-21 |  |  |
| 357ae9be-8a60-819d-b48e-e3bd979bbd0f | 1299 | Business Functions Validation | Basis | 1.1.1.6.1.13 | 1.1.1.6.1.13 | 2026-05-22 | 2026-05-22 | 2026-05-20 | 0 | 6 | 3339 | 1 | 1 | 357ae9be-8a60-8191-a47a-df196e181f29 | 357ae9be-8a60-810f-998b-fd234fcfc4a3 | 79 | 0 | Start No Earlier Than | Auto Scheduled | AMETEK SAP XXL Project Plan Replan MSP Task.csv | AMETEK SAP XXL Project Plan Replan MSP Task.csv__2f0764ccac__2026-05-05T02-44-15-662Z | Lokchetan Meghavath | 2 | True |  | Not started | True  79 0 0 0 0 0 22 | Low 0 0 0 True | 2026-01-05 |  |  |
| 357ae9be-8a60-819e-8a04-f22eb86edd10 | 915 | ITC-3 | (Unassigned) | 1.3.3.7 | 1.3.3.7 | 2026-06-19 | 2026-07-24 | 2026-07-24 | 0 | 4 | 18 | 0 | 0 |  |  | 8.5 | 8.5 | As Soon As Possible | Auto Scheduled | AMETEK SAP XXL Project Plan Replan MSP Task.csv | AMETEK SAP XXL Project Plan Replan MSP Task.csv__2f0764ccac__2026-05-05T02-44-15-662Z | COULD NOT BE DETERMINED |  |  |  | Not started |   8.5 8.5 0 0 0 0 0 | Low 0 0 0  |  | 921, 922, 918, 917, 2950, 2951, 919, 923, 916 | True |
| 357ae9be-8a60-819e-9b9e-ecf70609016f | 1985 | Pre Load Validation | Finance | 1.2.2.2.52.2 | 1.2.2.2.52.2 | 2026-05-18 | 2026-05-18 | 2026-04-10 | 0 | 6 | 1983 | 1 | 1 | 357ae9be-8a60-81f2-8bb8-ed649deb57d8 | 357ae9be-8a60-818d-b654-e4cfcc5ceee2 | -1771 | 0 | As Soon As Possible | Auto Scheduled | AMETEK SAP XXL Project Plan Replan MSP Task.csv | AMETEK SAP XXL Project Plan Replan MSP Task.csv__2f0764ccac__2026-05-05T02-44-15-662Z | Kasey Hughes | 38 | True | True | Not started | True  -1771 0 1 0 0 0 26 | Wrong Dependency, Negative Float Critical 5 1 0  |  |  |  |
| 357ae9be-8a60-819e-a720-effa7bff49c2 | 2567 | Error and Defect Mitigation | PTP;OTC | 1.2.4.2.23.4 | 1.2.4.2.23.4 | 2026-09-24 | 2026-09-24 | 2026-04-13 | 0 | 6 | 2563 | 1 | 1 | 357ae9be-8a60-81e6-9517-dc50430e6dc2 | 357ae9be-8a60-818b-98b5-f25c3b0cfedb | -650 | 0 | As Soon As Possible | Auto Scheduled | AMETEK SAP XXL Project Plan Replan MSP Task.csv | AMETEK SAP XXL Project Plan Replan MSP Task.csv__2f0764ccac__2026-05-05T02-44-15-662Z | Nevin Varkey | 164 | True |  | Not started | True  -650 0 1 0 0 0 26 | Negative Float Critical 2 0 0  |  |  |  |
| 357ae9be-8a60-819e-ab5c-dc8efd5cc435 | 3303 | Load | OTC | 1.2.3.2.64.1 | 1.2.3.2.64.1 | 2026-06-16 | 2026-06-16 | 2025-03-13 | 0 | 6 | 3302 | 1 | 1 | 357ae9be-8a60-81a1-be62-f2042da3ef7f | 357ae9be-8a60-810a-b585-d08a4025ce52 | -169.02 | 0 | As Soon As Possible | Auto Scheduled | AMETEK SAP XXL Project Plan Replan MSP Task.csv | AMETEK SAP XXL Project Plan Replan MSP Task.csv__2f0764ccac__2026-05-05T02-44-15-662Z | James VanRiper | 460 | True |  | Not started | True  -169.02 0 1 0 0 0 26 | Wrong Dependency, Negative Float Critical 5 1 0  |  |  |  |
| 357ae9be-8a60-819f-823c-d89a761bc010 | 768 | RTR_CM10_Credit_Management_Role | (Unassigned) | 1.2.1.19 | 1.2.1.19 | 2026-04-10 | 2026-04-17 | 2026-04-13 | 100 | 4 | 425 | 1 | 1 | 357ae9be-8a60-81ff-b288-f5be1e35aae6 | 357ae9be-8a60-8106-a4d1-cf1c1647971d | 0 | 0 | As Soon As Possible | Auto Scheduled | AMETEK SAP XXL Project Plan Replan MSP Task.csv | AMETEK SAP XXL Project Plan Replan MSP Task.csv__2f0764ccac__2026-05-05T02-44-15-662Z | COULD NOT BE DETERMINED |  |  |  | Done | True  0 0 1 1 7 1 23 | Low 0 0 0  |  | 995, 998, 994, 996, 993, 997 | True |
| 357ae9be-8a60-819f-8912-cf402a06af87 | 1907 | Load | Data | 1.2.2.2.34.5 | 1.2.2.2.34.5 | 2026-05-25 | 2026-05-25 | 2026-04-20 | 0 | 6 | 1902 | 1 | 1 | 357ae9be-8a60-81c1-a7e6-de6352b5e171 | 357ae9be-8a60-8106-8f7f-c64bc1b3bcc3 | -47.27 | 0 | As Soon As Possible | Auto Scheduled | AMETEK SAP XXL Project Plan Replan MSP Task.csv | AMETEK SAP XXL Project Plan Replan MSP Task.csv__2f0764ccac__2026-05-05T02-44-15-662Z | Jyoti Nain | 35 | True |  | Not started | True  -47.27 0 1 0 0 0 26 | Negative Float Critical 2 0 0  |  |  |  |
| 357ae9be-8a60-819f-9913-ff22bc821c2c | 1733 | Error and Defect Mitigation | Finance | 1.2.2.2.8.4 | 1.2.2.2.8.4 | 2026-05-20 | 2026-05-20 | 2026-04-08 | 0 | 6 | 1729 | 1 | 1 | 357ae9be-8a60-81bb-9f23-e337f1055c39 | 357ae9be-8a60-815d-a9dc-cef0b30e4984 | -20.52 | 0 | As Soon As Possible | Auto Scheduled | AMETEK SAP XXL Project Plan Replan MSP Task.csv | AMETEK SAP XXL Project Plan Replan MSP Task.csv__2f0764ccac__2026-05-05T02-44-15-662Z | Kasey Hughes | 42 | True | True | Not started | True  -20.52 0 1 0 0 0 26 | Negative Float Critical 2 0 0  |  |  |  |
| 357ae9be-8a60-819f-9b2f-ff945e2a22d6 | 926 | Functional Smoke Testing | Development;PTM;Finance;PMO;Europe IT lead;OTC;TESTING | 1.3.3.8.4 | 1.3.3.8.4 | 2026-10-09 | 2026-10-16 | 2026-08-07 | 0 | 5 | 22 | 1 | 1 | 357ae9be-8a60-8167-980b-dd42fc63a5c8 | 357ae9be-8a60-8116-ab4e-dd9324687cda | -44.38 | 0 | As Soon As Possible | Auto Scheduled | AMETEK SAP XXL Project Plan Replan MSP Task.csv | AMETEK SAP XXL Project Plan Replan MSP Task.csv__2f0764ccac__2026-05-05T02-44-15-662Z | Bijoykrishna Das | 70 | True |  | Not started | True  -44.38 0 1 0 0 0 26 | Negative Float Critical 2 0 0  |  |  |  |
| 357ae9be-8a60-819f-a012-cd60a64e727a | 2620 | Extract File | Data | 1.2.4.2.31.1 | 1.2.4.2.31.1 | 2026-09-29 | 2026-09-29 | 2026-04-16 | 0 | 6 | 2619 | 1 | 1 | 357ae9be-8a60-8194-9d07-ddefe67e6053 | 357ae9be-8a60-81d6-b0c9-c03cefd7efae | -695.75 | 0 | As Soon As Possible | Auto Scheduled | AMETEK SAP XXL Project Plan Replan MSP Task.csv | AMETEK SAP XXL Project Plan Replan MSP Task.csv__2f0764ccac__2026-05-05T02-44-15-662Z | Jyoti Nain | 166 | True |  | Not started | True  -695.75 0 1 0 0 0 26 | Wrong Dependency, Negative Float Critical 5 1 0  |  |  |  |
| 357ae9be-8a60-819f-a5d8-de81f7a71e54 | 4444 | Post Load Validation | PTM | 1.2.5.2.48.3 | 1.2.5.2.48.3 | 2026-10-07 | 2026-10-07 | 2026-04-20 | 0 | 6 | 4441 | 1 | 1 | 357ae9be-8a60-81b4-bf0b-cd1bca2665d9 | 357ae9be-8a60-8148-899e-f1356ea8eeb9 | -726.02 | 0 | As Soon As Possible | Auto Scheduled | AMETEK SAP XXL Project Plan Replan MSP Task.csv | AMETEK SAP XXL Project Plan Replan MSP Task.csv__2f0764ccac__2026-05-05T02-44-15-662Z | Eric Heisler | 170 | True |  | Not started | True  -726.02 0 1 0 0 0 26 | Negative Float Critical 2 0 0  |  |  |  |
| 357ae9be-8a60-819f-ac39-ccdb2dbb3fc0 | 2022 | GTS - License - Create | (Unassigned) | 1.2.2.2.62 | 1.2.2.2.62 | 2026-05-26 | 2026-05-26 | 2026-04-16 | 0 | 5 | 2800 | 0 | 0 |  |  | -6.38 | 0 | As Soon As Possible | Auto Scheduled | AMETEK SAP XXL Project Plan Replan MSP Task.csv | AMETEK SAP XXL Project Plan Replan MSP Task.csv__2f0764ccac__2026-05-05T02-44-15-662Z | COULD NOT BE DETERMINED | 40 | True |  | Not started | True  -6.38 0 0 0 0 0 20 | Negative Float High 2 0 0  |  | 2023, 2024 | True |
| 357ae9be-8a60-819f-b02e-e3accb75e565 | 4185 | Load | Data | 1.2.5.2.4.5 | 1.2.5.2.4.5 | 2026-09-25 | 2026-09-25 | 2026-04-07 | 0 | 6 | 4180 | 1 | 1 | 357ae9be-8a60-8147-a31a-fb6c6058faaf | 357ae9be-8a60-81c7-b336-fd06c18191cb | -677.77 | 0 | As Soon As Possible | Auto Scheduled | AMETEK SAP XXL Project Plan Replan MSP Task.csv | AMETEK SAP XXL Project Plan Replan MSP Task.csv__2f0764ccac__2026-05-05T02-44-15-662Z | Jyoti Nain | 171 | True |  | Not started | True  -677.77 0 1 0 0 0 26 | Negative Float Critical 2 0 0  |  |  |  |
| 357ae9be-8a60-819f-b464-f94a2b15061f | 1284 | QS5 ITC-3 Refresh | (Unassigned) | 1.1.1.6 | 1.1.1.6 | 2026-05-18 | 2026-06-01 | 2026-07-16 | 0 | 4 | 5 | 0 | 1 |  | 357ae9be-8a60-812e-aef8-ebc1c25bbcfe | -27.19 | 0 | As Soon As Possible | Auto Scheduled | AMETEK SAP XXL Project Plan Replan MSP Task.csv | AMETEK SAP XXL Project Plan Replan MSP Task.csv__2f0764ccac__2026-05-05T02-44-15-662Z | COULD NOT BE DETERMINED |  |  |  | Not started | True  -27.19 0 0 0 0 0 14 | Negative Float Critical 2 0 0  |  | 3339, 1315, 1311, 1302 | True |
| 357ae9be-8a60-819f-ba0e-d426bb264dae | 3183 | PTM_CM48_Equipment_Master_Serial Numbers | PTM | 1.2.3.2.35 | 1.2.3.2.35 | 2026-06-15 | 2026-06-16 | 2026-04-20 | 0 | 5 | 2959 | 0 | 0 |  |  | -21.72 | 0 | As Soon As Possible | Auto Scheduled | AMETEK SAP XXL Project Plan Replan MSP Task.csv | AMETEK SAP XXL Project Plan Replan MSP Task.csv__2f0764ccac__2026-05-05T02-44-15-662Z | Brad Meseck | 57 | True |  | Not started | True  -21.72 0 0 0 0 0 20 | Negative Float Critical 2 0 0  |  | 3185, 3186, 3189, 3188, 3187, 3184 | True |
| 357ae9be-8a60-819f-bed0-e0aa659e199c | 2759 | Post Load Validation | OTC | 1.2.4.2.61.2 | 1.2.4.2.61.2 | 2026-10-02 | 2026-10-02 | 2026-04-16 | 0 | 6 | 2757 | 1 | 2 | 357ae9be-8a60-8133-b814-d3222e250782 | 357ae9be-8a60-8125-8286-d7af3f5eeee5, 357ae9be-8a60-8149-9a16-d25122eefa27 | -712.25 | 0 | As Soon As Possible | Auto Scheduled | AMETEK SAP XXL Project Plan Replan MSP Task.csv | AMETEK SAP XXL Project Plan Replan MSP Task.csv__2f0764ccac__2026-05-05T02-44-15-662Z | James VanRiper | 169 | True |  | Not started | True  -712.25 0 2 2 711 0 37 | Wrong Dependency, Wrong Successor, Negative Float Critical 8 1 2  |  |  |  |
| 357ae9be-8a60-81a0-812d-d78b996155e6 | 1929 | VC_Classes | (Unassigned) | 1.2.2.2.39 | 1.2.2.2.39 | 2026-05-19 | 2026-05-20 | 2026-04-07 | 0 | 5 | 2800 | 0 | 0 |  |  | -2.44 | 0 | As Soon As Possible | Auto Scheduled | AMETEK SAP XXL Project Plan Replan MSP Task.csv | AMETEK SAP XXL Project Plan Replan MSP Task.csv__2f0764ccac__2026-05-05T02-44-15-662Z | COULD NOT BE DETERMINED | 43 | True | True | Not started | True  -2.44 0 0 0 0 0 20 | Negative Float High 2 0 0  |  | 1931, 1930 | True |
| 357ae9be-8a60-81a0-895d-ebd43e3ab281 | 2526 | Pre Load Validation | PTP | 1.2.4.2.17.2 | 1.2.4.2.17.2 | 2026-10-01 | 2026-10-01 | 2026-04-10 | 0 | 6 | 2524 | 1 | 1 | 357ae9be-8a60-8196-8c37-db5dfe50e561 | 357ae9be-8a60-8133-a47d-fb21486401c5 | -707 | 0 | As Soon As Possible | Auto Scheduled | AMETEK SAP XXL Project Plan Replan MSP Task.csv | AMETEK SAP XXL Project Plan Replan MSP Task.csv__2f0764ccac__2026-05-05T02-44-15-662Z | Nevin Varkey | 174 | True |  | Not started | True  -707 0 1 0 0 0 26 | Wrong Dependency, Wrong Successor, Negative Float Critical 8 1 1  |  |  |  |
| 357ae9be-8a60-81a0-aa70-dc39b4bb9fb6 | 85 | DS4-100 Config / Development Client | Development | 1.1.1.1 | 1.1.1.1 | 2025-05-07 | 2025-05-07 | 2025-05-07 | 100 | 4 | 5 | 0 | 0 |  |  | 0 | 0 | As Soon As Possible | Auto Scheduled | AMETEK SAP XXL Project Plan Replan MSP Task.csv | AMETEK SAP XXL Project Plan Replan MSP Task.csv__2f0764ccac__2026-05-05T02-44-15-662Z | Bijoykrishna Das |  |  |  | Done | True  0 0 0 0 0 0 12 | Low 0 0 0  |  | 100 | True |
| 357ae9be-8a60-81a1-80ad-db1b04513b88 | 3022 | Load | Data | 1.2.3.2.10.5 | 1.2.3.2.10.5 | 2026-06-10 | 2026-06-10 | 2026-04-10 | 0 | 6 | 3017 | 1 | 1 | 357ae9be-8a60-8120-be2d-c8bd4d10c30b | 357ae9be-8a60-81e0-aabc-e5662840c716 | -136.52 | 0 | As Soon As Possible | Auto Scheduled | AMETEK SAP XXL Project Plan Replan MSP Task.csv | AMETEK SAP XXL Project Plan Replan MSP Task.csv__2f0764ccac__2026-05-05T02-44-15-662Z | Jyoti Nain | 61 | True |  | Not started | True  -136.52 0 1 0 0 0 26 | Negative Float Critical 2 0 0  |  |  |  |
| 357ae9be-8a60-81a1-8251-c199d31f13c7 | 3103 | Error and Defect Mitigation | PTP;OTC | 1.2.3.2.23.4 | 1.2.3.2.23.4 | 2026-06-08 | 2026-06-08 | 2026-04-13 | 0 | 6 | 3099 | 1 | 1 | 357ae9be-8a60-811e-82fa-d0d0c792b238 | 357ae9be-8a60-8179-a775-d5d9355ea241 | -128.02 | 0 | As Soon As Possible | Auto Scheduled | AMETEK SAP XXL Project Plan Replan MSP Task.csv | AMETEK SAP XXL Project Plan Replan MSP Task.csv__2f0764ccac__2026-05-05T02-44-15-662Z | Nevin Varkey | 56 | True |  | Not started | True  -128.02 0 1 0 0 0 26 | Negative Float Critical 2 0 0  |  |  |  |
| 357ae9be-8a60-81a1-89f4-cde882b23561 | 4491 | Load Descartes XML File | OTC | 1.2.5.2.59.1 | 1.2.5.2.59.1 | 2026-10-01 | 2026-10-01 | 2026-04-16 | 0 | 6 | 4490 | 1 | 1 | 357ae9be-8a60-8120-a200-de882e5855c9 | 357ae9be-8a60-814a-b403-f1a3a964d5e9 | -712.27 | 0 | Finish No Earlier Than | Auto Scheduled | AMETEK SAP XXL Project Plan Replan MSP Task.csv | AMETEK SAP XXL Project Plan Replan MSP Task.csv__2f0764ccac__2026-05-05T02-44-15-662Z | James VanRiper | 168 | True |  | Not started | True  -712.27 0 1 0 0 0 26 | Negative Float Critical 2 0 0 True | 2026-04-17 |  |  |
| 357ae9be-8a60-81a1-8a3c-db65589908bd | 221 | Talent LMS Application Setup | (Unassigned) | 1.4.1.2 | 1.4.1.2 | 2026-08-31 | 2026-08-31 | 2026-08-10 | 0 | 4 | 215 | 1 | 0 | 357ae9be-8a60-811f-8c92-cfb2c88118f5 |  | 50 | 50 | Finish No Earlier Than | Auto Scheduled | AMETEK SAP XXL Project Plan Replan MSP Task.csv | AMETEK SAP XXL Project Plan Replan MSP Task.csv__2f0764ccac__2026-05-05T02-44-15-662Z | COULD NOT BE DETERMINED | 21 | True |  | Not started |   50 50 0 0 0 0 8 | Open Finish Medium 1 0 0 True | 2026-08-28 |  |  |
| 357ae9be-8a60-81a1-963d-c08e48035440 | 4399 | Post Load Validation | PTM | 1.2.5.2.36.6 | 1.2.5.2.36.6 | 2026-09-24 | 2026-09-24 | 2026-04-21 | 0 | 6 | 4393 | 0 | 0 |  |  | -644.52 | 0 | Start No Earlier Than | Auto Scheduled | AMETEK SAP XXL Project Plan Replan MSP Task.csv | AMETEK SAP XXL Project Plan Replan MSP Task.csv__2f0764ccac__2026-05-05T02-44-15-662Z | Brad Meseck | 156 | True |  | Not started | True  -644.52 0 0 0 0 0 20 | Negative Float, Open Start, Open Finish Critical 4 0 0 True | 2026-04-21 |  |  |
| 357ae9be-8a60-81a1-9648-e71d5898cbbb | 1687 | Manual File Staged and Posted "Ready" | Finance | 1.2.2.2.1.1 | 1.2.2.2.1.1 | 2026-05-18 | 2026-05-18 | 2026-04-06 | 0 | 6 | 1686 | 0 | 1 |  | 357ae9be-8a60-8153-97cf-cf0929cab7d5 | -76.52 | 0 | As Soon As Possible | Auto Scheduled | AMETEK SAP XXL Project Plan Replan MSP Task.csv | AMETEK SAP XXL Project Plan Replan MSP Task.csv__2f0764ccac__2026-05-05T02-44-15-662Z | Kasey Hughes | 42 | True | True | Not started | True  -76.52 0 1 0 0 0 26 | Negative Float, Open Start Critical 3 0 0  |  |  |  |
| 357ae9be-8a60-81a1-9812-fee776d84020 | 4497 | Load Descartes XML File | OTC | 1.2.5.2.61.1 | 1.2.5.2.61.1 | 2026-10-01 | 2026-10-02 | 2026-04-16 | 0 | 6 | 4496 | 1 | 1 | 357ae9be-8a60-814a-b403-f1a3a964d5e9 | 357ae9be-8a60-81d5-8b1e-d0e19f07578b | -712.27 | 0 | As Soon As Possible | Auto Scheduled | AMETEK SAP XXL Project Plan Replan MSP Task.csv | AMETEK SAP XXL Project Plan Replan MSP Task.csv__2f0764ccac__2026-05-05T02-44-15-662Z | James VanRiper | 169 | True |  | Not started | True  -712.27 0 1 1 151 0 31 | Wrong Successor, Negative Float Critical 5 0 1  |  |  |  |
| 357ae9be-8a60-81a1-aaa5-e71fb76e3921 | 2631 | Load | Data | 1.2.4.2.32.5 | 1.2.4.2.32.5 | 2026-10-05 | 2026-10-05 | 2026-04-20 | 0 | 6 | 2626 | 1 | 1 | 357ae9be-8a60-81b5-97b1-fc457641930d | 357ae9be-8a60-814e-b48a-c463d2a442bf | -704.38 | 0 | Start No Earlier Than | Auto Scheduled | AMETEK SAP XXL Project Plan Replan MSP Task.csv | AMETEK SAP XXL Project Plan Replan MSP Task.csv__2f0764ccac__2026-05-05T02-44-15-662Z | Jyoti Nain | 168 | True |  | Not started | True  -704.38 0 1 0 0 0 26 | Negative Float Critical 2 0 0 True | 2026-04-20 |  |  |
| 357ae9be-8a60-81a1-ad22-e33609868011 | 2978 | Load File Staged and Posted "Ready" | Finance | 1.2.3.2.4.1 | 1.2.3.2.4.1 | 2026-06-09 | 2026-06-09 | 2026-04-06 | 0 | 6 | 2977 | 1 | 1 | 357ae9be-8a60-81c0-8623-f78795353752 | 357ae9be-8a60-81a2-bd97-cb93512b8b39 | -183.52 | 0 | As Soon As Possible | Auto Scheduled | AMETEK SAP XXL Project Plan Replan MSP Task.csv | AMETEK SAP XXL Project Plan Replan MSP Task.csv__2f0764ccac__2026-05-05T02-44-15-662Z | Kasey Hughes | 64 | True |  | Not started | True  -183.52 0 1 0 0 0 26 | Wrong Dependency, Negative Float Critical 5 1 0  |  |  |  |
| 357ae9be-8a60-81a1-b784-e78d81cb2ed2 | 2727 | Post Load Validation | Finance | 1.2.4.2.52.6 | 1.2.4.2.52.6 | 2026-10-02 | 2026-10-02 | 2026-04-13 | 0 | 6 | 2721 | 1 | 0 | 357ae9be-8a60-816f-bb63-ece5e94786fe |  | -694.5 | 0 | As Soon As Possible | Auto Scheduled | AMETEK SAP XXL Project Plan Replan MSP Task.csv | AMETEK SAP XXL Project Plan Replan MSP Task.csv__2f0764ccac__2026-05-05T02-44-15-662Z | Kasey Hughes | 172 | True |  | Not started | True  -694.5 0 0 0 0 0 20 | Negative Float, Open Finish Critical 3 0 0  |  |  |  |
| 357ae9be-8a60-81a1-be62-f2042da3ef7f | 3294 | Load Descartes XML File | OTC | 1.2.3.2.61.1 | 1.2.3.2.61.1 | 2026-06-16 | 2026-06-16 | 2026-04-16 | 0 | 6 | 3293 | 1 | 2 | 357ae9be-8a60-812e-9301-eb5e05ef0513 | 357ae9be-8a60-8172-95d7-f08cb5837bec, 357ae9be-8a60-8199-9d45-f8c46d2bf52e | -190.27 | 0 | As Soon As Possible | Auto Scheduled | AMETEK SAP XXL Project Plan Replan MSP Task.csv | AMETEK SAP XXL Project Plan Replan MSP Task.csv__2f0764ccac__2026-05-05T02-44-15-662Z | James VanRiper | 61 | True |  | Not started | True  -190.27 0 2 2 527 0 37 | Wrong Successor, Negative Float Critical 5 0 2  |  |  |  |
| 357ae9be-8a60-81a2-861f-c22aa97163f8 | 4214 | Load File Staged and Posted "Ready" | Data | 1.2.5.2.9.1 | 1.2.5.2.9.1 | 2026-09-29 | 2026-09-29 | 2026-04-08 | 0 | 6 | 4213 | 1 | 1 | 357ae9be-8a60-817f-ac30-d49da3420dd8 | 357ae9be-8a60-810d-a330-e49fbe094eeb | -672.02 | 0 | As Soon As Possible | Auto Scheduled | AMETEK SAP XXL Project Plan Replan MSP Task.csv | AMETEK SAP XXL Project Plan Replan MSP Task.csv__2f0764ccac__2026-05-05T02-44-15-662Z | Jyoti Nain | 174 | True |  | Not started | True  -672.02 0 1 0 0 0 26 | Negative Float Critical 2 0 0  |  |  |  |
| 357ae9be-8a60-81a2-8ca5-d23c802c0264 | 2537 | Post Load Validation | Finance | 1.2.4.2.18.6 | 1.2.4.2.18.6 | 2026-10-01 | 2026-10-02 | 2026-04-13 | 0 | 6 | 2531 | 1 | 1 | 357ae9be-8a60-81c7-9c2f-c10649eb12fe | 357ae9be-8a60-8194-8b31-ebdfccfeb50e | -700.75 | 0 | As Soon As Possible | Auto Scheduled | AMETEK SAP XXL Project Plan Replan MSP Task.csv | AMETEK SAP XXL Project Plan Replan MSP Task.csv__2f0764ccac__2026-05-05T02-44-15-662Z | Kasey Hughes | 172 | True |  | Not started | True  -700.75 0 1 1 543 0 31 | Wrong Successor, Negative Float Critical 5 0 1  |  |  |  |
| 357ae9be-8a60-81a2-95fe-d4b333b30bee | 2751 | GTS - ECCN - Assign | (Unassigned) | 1.2.4.2.59 | 1.2.4.2.59 | 2026-10-01 | 2026-10-01 | 2026-04-16 | 0 | 5 | 2898 | 0 | 0 |  |  | -89.03 | 0 | As Soon As Possible | Auto Scheduled | AMETEK SAP XXL Project Plan Replan MSP Task.csv | AMETEK SAP XXL Project Plan Replan MSP Task.csv__2f0764ccac__2026-05-05T02-44-15-662Z | COULD NOT BE DETERMINED | 168 | True |  | Not started | True  -89.03 0 0 0 0 0 20 | Negative Float Critical 2 0 0  |  | 2753, 2752 | True |
| 357ae9be-8a60-81a2-986f-d435a4b2224b | 1900 | Load | Data | 1.2.2.2.33.5 | 1.2.2.2.33.5 | 2026-05-22 | 2026-05-22 | 2026-04-17 | 0 | 6 | 1895 | 1 | 1 | 357ae9be-8a60-8196-b3f9-e890f2f1d95d | 357ae9be-8a60-81f6-8575-df565710e8fa | -53.77 | 0 | As Soon As Possible | Auto Scheduled | AMETEK SAP XXL Project Plan Replan MSP Task.csv | AMETEK SAP XXL Project Plan Replan MSP Task.csv__2f0764ccac__2026-05-05T02-44-15-662Z | Jyoti Nain | 35 | True |  | Not started | True  -53.77 0 1 0 0 0 26 | Negative Float Critical 2 0 0  |  |  |  |
| 357ae9be-8a60-81a2-9a01-edcd5ddc1c67 | 709 | PTM_CM36_Production Version Conversion | PTM | 1.2.1.34 | 1.2.1.34 | 2026-04-20 | 2026-04-21 | 2026-04-17 | 100 | 4 | 425 | 0 | 0 |  |  | 0 | 0 | Start No Earlier Than | Auto Scheduled | AMETEK SAP XXL Project Plan Replan MSP Task.csv | AMETEK SAP XXL Project Plan Replan MSP Task.csv__2f0764ccac__2026-05-05T02-44-15-662Z | Brad Meseck |  |  |  | Done | True  0 0 0 0 0 0 12 | Low 0 0 0 True | 2026-04-17 | 1086, 1082, 1081, 1085, 1083, 1084 | True |
| 357ae9be-8a60-81a2-9bdb-c9ba9c3236df | 4460 | RTR_CM11_Asset_Master | (Unassigned) | 1.2.5.2.52 | 1.2.5.2.52 | 2026-09-24 | 2026-10-02 | 2026-04-13 | 0 | 5 | 4162 | 0 | 0 |  |  | -86.81 | 0 | As Soon As Possible | Auto Scheduled | AMETEK SAP XXL Project Plan Replan MSP Task.csv | AMETEK SAP XXL Project Plan Replan MSP Task.csv__2f0764ccac__2026-05-05T02-44-15-662Z | COULD NOT BE DETERMINED | 172 | True |  | Not started | True  -86.81 0 0 0 0 0 20 | Negative Float Critical 2 0 0  |  | 4465, 4462, 4461, 4466, 4463, 4464 | True |
| 357ae9be-8a60-81a2-9fbc-e40e9b95083e | 2965 | Manual File Staged and Posted "Ready" | Finance | 1.2.3.2.2.1 | 1.2.3.2.2.1 | 2026-06-09 | 2026-06-09 | 2026-04-06 | 0 | 6 | 2964 | 1 | 1 | 357ae9be-8a60-81c0-8623-f78795353752 | 357ae9be-8a60-819b-a215-cd3ad5a03e0f | -196.52 | 0 | As Soon As Possible | Auto Scheduled | AMETEK SAP XXL Project Plan Replan MSP Task.csv | AMETEK SAP XXL Project Plan Replan MSP Task.csv__2f0764ccac__2026-05-05T02-44-15-662Z | Kasey Hughes | 64 | True |  | Not started | True  -196.52 0 1 0 0 0 26 | Wrong Dependency, Negative Float Critical 5 1 0  |  |  |  |
| 357ae9be-8a60-81a2-a442-ee28f6c46151 | 3223 | Post Load Validation | PTM | 1.2.3.2.45.2 | 1.2.3.2.45.2 | 2026-06-15 | 2026-06-16 | 2026-04-17 | 0 | 6 | 3221 | 1 | 0 | 357ae9be-8a60-81f1-a227-f53130a7a359 |  | -166.02 | 0 | As Soon As Possible | Auto Scheduled | AMETEK SAP XXL Project Plan Replan MSP Task.csv | AMETEK SAP XXL Project Plan Replan MSP Task.csv__2f0764ccac__2026-05-05T02-44-15-662Z | Eric Heisler | 60 | True |  | Not started | True  -166.02 0 0 0 0 0 20 | Negative Float, Open Finish Critical 3 0 0  |  |  |  |

| id | uid | name | workstream | outlineNumber | wbs | start | finish | baselineFinish | pct | outlineLevel | parentUid | predCount | sucCount | predIds | sucIds | totalSlackDaysRaw | freeSlackDaysRaw | constraintType | taskMode | mspSourceFile | mspImportVersion | assignedTo | slipDays | isSlipped | isDue14 | status | cpm | scheduleQuality | constraintDate | childUids | isSummary | isOverdueStart |
| --- | --- | --- | --- | --- | --- | --- | --- | --- | --- | --- | --- | --- | --- | --- | --- | --- | --- | --- | --- | --- | --- | --- | --- | --- | --- | --- | --- | --- | --- | --- | --- | --- |
| 357ae9be-8a60-81a2-ac9e-f0cab0ee5c95 | 1815 | Manual File Staged and Posted "Ready" | Finance | 1.2.2.2.21.1 | 1.2.2.2.21.1 | 2026-05-25 | 2026-05-25 | 2026-04-10 | 0 | 6 | 1814 | 1 | 0 | 357ae9be-8a60-811b-bb50-cde174c37e84 |  | -2581 | 0 | As Soon As Possible | Auto Scheduled | AMETEK SAP XXL Project Plan Replan MSP Task.csv | AMETEK SAP XXL Project Plan Replan MSP Task.csv__2f0764ccac__2026-05-05T02-44-15-662Z | Kasey Hughes | 45 | True |  | Not started | True  -2581 0 0 0 0 0 20 | Wrong Dependency, Negative Float, Open Finish Critical 6 1 0  |  |  |  |  |
| 357ae9be-8a60-81a2-b6db-ca52893e6d43 | 2466 | Post Load Validation | Finance | 1.2.4.2.7.6 | 1.2.4.2.7.6 | 2026-09-30 | 2026-09-30 | 2026-04-09 | 0 | 6 | 2460 | 1 | 0 | 357ae9be-8a60-81c4-9887-ec15432a8d61 |  | -680 | 0 | As Soon As Possible | Auto Scheduled | AMETEK SAP XXL Project Plan Replan MSP Task.csv | AMETEK SAP XXL Project Plan Replan MSP Task.csv__2f0764ccac__2026-05-05T02-44-15-662Z | Kasey Hughes | 174 | True |  | Not started | True  -680 0 0 0 0 0 20 | Negative Float, Open Finish Critical 3 0 0  |  |  |  |  |
| 357ae9be-8a60-81a2-b90e-f1e469ba495b | 60 | Specs Completed | (Unassigned) | 1.1.2.10.1.1 | 1.1.2.10.1.1 | 2025-03-13 | 2025-03-13 | 2025-03-13 | 100 | 6 | 59 | 0 | 0 |  |  | 0 | 0 | As Soon As Possible | Auto Scheduled | AMETEK SAP XXL Project Plan Replan MSP Task.csv | AMETEK SAP XXL Project Plan Replan MSP Task.csv__2f0764ccac__2026-05-05T02-44-15-662Z | COULD NOT BE DETERMINED |  |  |  | Done | True  0 0 0 0 0 0 12 | Low 0 0 0  |  |  |  |  |
| 357ae9be-8a60-81a2-bd97-cb93512b8b39 | 2979 | Pre Load Validation | Finance | 1.2.3.2.4.2 | 1.2.3.2.4.2 | 2026-06-09 | 2026-06-09 | 2026-04-07 | 0 | 6 | 2977 | 1 | 1 | 357ae9be-8a60-81a1-ad22-e33609868011 | 357ae9be-8a60-819a-8c65-feccaf258a0f | -183.52 | 0 | As Soon As Possible | Auto Scheduled | AMETEK SAP XXL Project Plan Replan MSP Task.csv | AMETEK SAP XXL Project Plan Replan MSP Task.csv__2f0764ccac__2026-05-05T02-44-15-662Z | Kasey Hughes | 63 | True |  | Not started | True  -183.52 0 1 0 0 0 26 | Negative Float Critical 2 0 0  |  |  |  |  |
| 357ae9be-8a60-81a3-821e-d8bad7e815e2 | 2993 | Service Enterprise Setup | OTC | 1.2.3.2.6.2 | 1.2.3.2.6.2 | 2026-06-12 | 2026-06-19 | 2026-04-15 | 0 | 6 | 2991 | 4 | 0 | 357ae9be-8a60-8167-8cd5-e4a082211fa8, 357ae9be-8a60-816c-ad9a-cf035f1ccd99, 357ae9be-8a60-814d-847f-e185ce7e42a7, 357ae9be-8a60-81ab-a0d4-c25a557ebff9 |  | -23.88 | 0 | As Soon As Possible | Auto Scheduled | AMETEK SAP XXL Project Plan Replan MSP Task.csv | AMETEK SAP XXL Project Plan Replan MSP Task.csv__2f0764ccac__2026-05-05T02-44-15-662Z | Keith Riley | 65 | True |  | Not started | True  -23.88 0 0 0 0 1 20 | Wrong Dependency, Negative Float, Open Finish Critical 6 4 0  |  |  |  |  |
| 357ae9be-8a60-81a3-9891-d9caeb46e3c9 | 3385 | Import Group 1 - Ent Structure | Development;PTM;Finance;PMO;Europe IT lead;OTC;TESTING | 1.1.1.8.2.1 | 1.1.1.8.2.1 | 2026-09-16 | 2026-09-16 | 2026-07-07 | 0 | 6 | 3384 | 1 | 1 | 357ae9be-8a60-813d-ba6d-cbecad728247 | 357ae9be-8a60-8109-878a-f172140a78ad | -726.02 | 0 | As Soon As Possible | Auto Scheduled | AMETEK SAP XXL Project Plan Replan MSP Task.csv | AMETEK SAP XXL Project Plan Replan MSP Task.csv__2f0764ccac__2026-05-05T02-44-15-662Z | Bijoykrishna Das | 71 | True |  | Not started | True  -726.02 0 1 0 0 0 26 | Wrong Dependency, Negative Float Critical 5 1 0  |  |  |  |  |
| 357ae9be-8a60-81a3-a95c-c74dd7ccbc69 | 3166 | Error and Defect Mitigation | PTM | 1.2.3.2.32.4 | 1.2.3.2.32.4 | 2026-06-17 | 2026-06-17 | 2026-04-20 | 0 | 6 | 3162 | 1 | 1 | 357ae9be-8a60-81f2-92f1-f3f6eac20fdb | 357ae9be-8a60-8187-97fe-d8850eba4d94 | -182.39 | 0 | As Soon As Possible | Auto Scheduled | AMETEK SAP XXL Project Plan Replan MSP Task.csv | AMETEK SAP XXL Project Plan Replan MSP Task.csv__2f0764ccac__2026-05-05T02-44-15-662Z | Brad Meseck | 58 | True |  | Not started | True  -182.39 0 1 0 0 0 26 | Negative Float Critical 2 0 0  |  |  |  |  |
| 357ae9be-8a60-81a3-b3f8-c475d34048ad | 2772 | Post Load Validation | OTC | 1.2.4.2.65.3 | 1.2.4.2.65.3 | 2026-09-25 | 2026-09-25 | 2026-04-14 | 0 | 6 | 2769 | 1 | 0 | 357ae9be-8a60-8143-be8a-efd9c44d7895 |  | -653.5 | 0 | As Soon As Possible | Auto Scheduled | AMETEK SAP XXL Project Plan Replan MSP Task.csv | AMETEK SAP XXL Project Plan Replan MSP Task.csv__2f0764ccac__2026-05-05T02-44-15-662Z | James VanRiper | 164 | True |  | Not started | True  -653.5 0 0 0 0 0 20 | Negative Float, Open Finish Critical 3 0 0  |  |  |  |  |
| 357ae9be-8a60-81a4-8088-c93ce562ab5e | 3126 | Post Load Validation | PTM | 1.2.3.2.26.6 | 1.2.3.2.26.6 | 2026-06-11 | 2026-06-11 | 2026-04-15 | 0 | 6 | 3120 | 1 | 4 | 357ae9be-8a60-81ec-845b-ebce47d0a21f | 357ae9be-8a60-81e4-ad85-f3407bb2ec98, 357ae9be-8a60-8165-aae3-ebf2a676ec29, 357ae9be-8a60-81a4-a54b-c3e652190fc0, 357ae9be-8a60-81e2-809c-df100912a844 | -190.27 | 0 | As Soon As Possible | Auto Scheduled | AMETEK SAP XXL Project Plan Replan MSP Task.csv | AMETEK SAP XXL Project Plan Replan MSP Task.csv__2f0764ccac__2026-05-05T02-44-15-662Z | Eric Heisler | 57 | True |  | Not started | True  -190.27 0 4 4 991 0 49 | Wrong Successor, Negative Float Critical 5 0 4  |  |  |  |  |
| 357ae9be-8a60-81a4-855c-dad87d42e826 | 3286 | Post Load Validation | OTC | 1.2.3.2.58.2 | 1.2.3.2.58.2 | 2026-06-09 | 2026-06-09 | 2026-04-13 | 0 | 6 | 3284 | 1 | 1 | 357ae9be-8a60-815a-a872-cfa7e721eb4e | 357ae9be-8a60-814c-8b80-e148eada318e | -131.52 | 0 | As Soon As Possible | Auto Scheduled | AMETEK SAP XXL Project Plan Replan MSP Task.csv | AMETEK SAP XXL Project Plan Replan MSP Task.csv__2f0764ccac__2026-05-05T02-44-15-662Z | James VanRiper | 57 | True |  | Not started | True  -131.52 0 1 0 0 0 26 | Wrong Dependency, Negative Float Critical 5 1 0  |  |  |  |  |
| 357ae9be-8a60-81a4-858e-d0c6b36dc00a | 1012 | Load | Finance | 1.2.1.22.2 | 1.2.1.22.2 | 2026-04-15 | 2026-04-15 | 2026-04-13 | 100 | 5 | 935 | 1 | 1 | 357ae9be-8a60-813c-92e4-e6e886f188f2 | 357ae9be-8a60-81f6-a99c-f647a867cb3c | 0 | 0 | As Soon As Possible | Auto Scheduled | AMETEK SAP XXL Project Plan Replan MSP Task.csv | AMETEK SAP XXL Project Plan Replan MSP Task.csv__2f0764ccac__2026-05-05T02-44-15-662Z | Kasey Hughes |  |  |  | Done | True  0 0 1 0 0 1 18 | Wrong Dependency High 3 1 0  |  |  |  |  |
| 357ae9be-8a60-81a4-89cb-ed55bc4e312b | 1974 | Pre Load Validation | OTC | 1.2.2.2.50.2 | 1.2.2.2.50.2 | 2026-05-28 | 2026-05-28 | 2026-04-20 | 0 | 6 | 1972 | 1 | 1 | 357ae9be-8a60-81ee-af4f-e9b0b7287636 | 357ae9be-8a60-81f9-8d94-c13a763aa984 | -4036 | 0 | As Soon As Possible | Auto Scheduled | AMETEK SAP XXL Project Plan Replan MSP Task.csv | AMETEK SAP XXL Project Plan Replan MSP Task.csv__2f0764ccac__2026-05-05T02-44-15-662Z | Ric Haraida | 38 | True |  | Not started | True  -4036 0 1 0 0 0 26 | Negative Float Critical 2 0 0  |  |  |  |  |
| 357ae9be-8a60-81a4-8da8-f0ce83bfef06 | 662 | Import Group 4 - workbench / dev work | Development | 1.1.1.4.19 | 1.1.1.4.19 | 2026-04-03 | 2026-04-03 | 2026-04-03 | 100 | 5 | 88 | 0 | 1 |  | 357ae9be-8a60-81af-8a8a-c45cecf52a2e | 0 | 0 | Start No Earlier Than | Auto Scheduled | AMETEK SAP XXL Project Plan Replan MSP Task.csv | AMETEK SAP XXL Project Plan Replan MSP Task.csv__2f0764ccac__2026-05-05T02-44-15-662Z | Bijoykrishna Das |  |  |  | Done | True  0 0 1 0 0 0 18 | Low 0 0 0 True | 2026-04-03 |  |  |  |
| 357ae9be-8a60-81a4-9c9d-dc7e6334c756 | 967 | Simulate Load | Data | 1.2.1.9.3 | 1.2.1.9.3 | 2026-04-07 | 2026-04-08 | 2026-04-08 | 100 | 5 | 753 | 1 | 1 | 357ae9be-8a60-81ba-8f50-ce4b6cf5cc1d | 357ae9be-8a60-81ab-a0d4-c25a557ebff9 | 0 | 0 | As Soon As Possible | Auto Scheduled | AMETEK SAP XXL Project Plan Replan MSP Task.csv | AMETEK SAP XXL Project Plan Replan MSP Task.csv__2f0764ccac__2026-05-05T02-44-15-662Z | Jyoti Nain |  |  |  | Done | True  0 0 1 0 0 0 18 | Low 0 0 0  |  |  |  |  |
| 357ae9be-8a60-81a4-9d7c-fbeaf451bede | 2552 | RTR_****_Credit Hierarchy | (Unassigned) | 1.2.4.2.21 | 1.2.4.2.21 | 2026-10-01 | 2026-10-05 | 2026-04-13 | 0 | 5 | 2898 | 0 | 0 |  |  | -87.47 | 0 | As Soon As Possible | Auto Scheduled | AMETEK SAP XXL Project Plan Replan MSP Task.csv | AMETEK SAP XXL Project Plan Replan MSP Task.csv__2f0764ccac__2026-05-05T02-44-15-662Z | COULD NOT BE DETERMINED | 175 | True |  | Not started | True  -87.47 0 0 0 0 0 20 | Negative Float Critical 2 0 0  |  | 2555, 2553, 2554 | True |  |
| 357ae9be-8a60-81a4-9e35-c443d1c7a34b | 4428 | Load File Staged and Posted "Ready" | PTM | 1.2.5.2.46.1 | 1.2.5.2.46.1 | 2026-09-29 | 2026-09-29 | 2026-04-15 | 0 | 6 | 4427 | 1 | 1 | 357ae9be-8a60-8183-a0d2-d2ac8860e8c6 | 357ae9be-8a60-8128-b2da-fad5244972a7 | -43561 | 0 | As Soon As Possible | Auto Scheduled | AMETEK SAP XXL Project Plan Replan MSP Task.csv | AMETEK SAP XXL Project Plan Replan MSP Task.csv__2f0764ccac__2026-05-05T02-44-15-662Z | Eric Heisler | 167 | True |  | Not started | True  -43561 0 1 0 0 0 26 | Negative Float Critical 2 0 0  |  |  |  |  |
| 357ae9be-8a60-81a4-a54b-c3e652190fc0 | 135 | Complete - Ready for Audit and Controls Review | (Unassigned) | 1.1.2.9.1.3.3 | 1.1.2.9.1.3.3 | 2025-08-18 | 2025-09-04 | 2025-09-04 | 100 | 7 | 27 | 1 | 0 | 357ae9be-8a60-815d-bc36-c377f910c35c |  | 0 | 0 | As Soon As Possible | Auto Scheduled | AMETEK SAP XXL Project Plan Replan MSP Task.csv | AMETEK SAP XXL Project Plan Replan MSP Task.csv__2f0764ccac__2026-05-05T02-44-15-662Z | COULD NOT BE DETERMINED |  |  |  | Done | True  0 0 0 0 0 0 12 | Low 0 0 0  |  |  |  |  |
| 357ae9be-8a60-81a4-ae6a-d96bdf165462 | 3375 | Security Transports | Security | 1.1.1.8.1.7 | 1.1.1.8.1.7 | 2026-09-14 | 2026-09-14 | 2026-07-03 | 0 | 6 | 3368 | 2 | 2 | 357ae9be-8a60-8185-a59f-d11f46aa5b30, 357ae9be-8a60-8161-852c-e5a6205210b3 | 357ae9be-8a60-814e-aea0-f8877dab9901, 357ae9be-8a60-8188-8d98-c1d00d56c1ba | -90.75 | 0 | As Soon As Possible | Auto Scheduled | AMETEK SAP XXL Project Plan Replan MSP Task.csv | AMETEK SAP XXL Project Plan Replan MSP Task.csv__2f0764ccac__2026-05-05T02-44-15-662Z | Manjunatha Umesha | 73 | True |  | Not started | True  -90.75 0 2 0 0 0 32 | Wrong Dependency, Negative Float Critical 5 2 0  |  |  |  |  |
| 357ae9be-8a60-81a4-af78-ce2da00cbf7e | 3019 | Pre Load Validation | Finance | 1.2.3.2.10.2 | 1.2.3.2.10.2 | 2026-06-09 | 2026-06-09 | 2026-04-10 | 0 | 6 | 3017 | 1 | 1 | 357ae9be-8a60-81ab-9a1d-cc98f21fe4ef | 357ae9be-8a60-81fe-ae55-da6b244c99c4 | -136.52 | 0 | As Soon As Possible | Auto Scheduled | AMETEK SAP XXL Project Plan Replan MSP Task.csv | AMETEK SAP XXL Project Plan Replan MSP Task.csv__2f0764ccac__2026-05-05T02-44-15-662Z | Kasey Hughes | 60 | True |  | Not started | True  -136.52 0 1 0 0 0 26 | Negative Float Critical 2 0 0  |  |  |  |  |
| 357ae9be-8a60-81a5-840b-d1415885a67f | 4441 | VC_VK30 Pricing Variant | (Unassigned) | 1.2.5.2.48 | 1.2.5.2.48 | 2026-10-07 | 2026-10-07 | 2026-04-20 | 0 | 5 | 4162 | 0 | 0 |  |  | -90.75 | 0 | As Soon As Possible | Auto Scheduled | AMETEK SAP XXL Project Plan Replan MSP Task.csv | AMETEK SAP XXL Project Plan Replan MSP Task.csv__2f0764ccac__2026-05-05T02-44-15-662Z | COULD NOT BE DETERMINED | 170 | True |  | Not started | True  -90.75 0 0 0 0 0 20 | Negative Float Critical 2 0 0  |  | 4442, 4444, 4443 | True |  |
| 357ae9be-8a60-81a5-88c5-f6672086912c | 3278 | GTS - Customers initial load from S4 (Run Interface) | (Unassigned) | 1.2.3.2.56 | 1.2.3.2.56 | 2026-06-08 | 2026-06-08 | 2026-04-10 | 0 | 5 | 2959 | 0 | 0 |  |  | -15.19 | 0 | As Soon As Possible | Auto Scheduled | AMETEK SAP XXL Project Plan Replan MSP Task.csv | AMETEK SAP XXL Project Plan Replan MSP Task.csv__2f0764ccac__2026-05-05T02-44-15-662Z | COULD NOT BE DETERMINED | 59 | True |  | Not started | True  -15.19 0 0 0 0 0 20 | Negative Float Critical 2 0 0  |  | 3279, 3280 | True |  |
| 357ae9be-8a60-81a5-8ac3-d07ad90f4d64 | 927 | Assign Tester ID's | Security | 1.3.3.8.2 | 1.3.3.8.2 | 2026-10-08 | 2026-10-09 | 2026-08-06 | 0 | 5 | 22 | 1 | 1 | 357ae9be-8a60-811a-9740-f5ff0e5d34b5 | 357ae9be-8a60-8167-980b-dd42fc63a5c8 | -355 | 0 | As Soon As Possible | Auto Scheduled | AMETEK SAP XXL Project Plan Replan MSP Task.csv | AMETEK SAP XXL Project Plan Replan MSP Task.csv__2f0764ccac__2026-05-05T02-44-15-662Z | Manjunatha Umesha | 64 | True |  | Not started | True  -355 0 1 1 1 0 31 | Negative Float Critical 2 0 0  |  |  |  |  |
| 357ae9be-8a60-81a5-8e25-ce4e922f987d | 2043 | Load | Data | 1.2.2.2.67.5 | 1.2.2.2.67.5 | 2026-05-18 | 2026-05-19 | 2026-04-17 | 0 | 6 | 2038 | 1 | 1 | 357ae9be-8a60-810f-bcdf-c931c82c660d | 357ae9be-8a60-817a-9c2a-c6c4850767bd | -9.02 | 0 | As Soon As Possible | Auto Scheduled | AMETEK SAP XXL Project Plan Replan MSP Task.csv | AMETEK SAP XXL Project Plan Replan MSP Task.csv__2f0764ccac__2026-05-05T02-44-15-662Z | Jyoti Nain | 32 | True | True | Not started | True  -9.02 0 1 0 0 0 26 | Negative Float High 2 0 0  |  |  |  |  |
| 357ae9be-8a60-81a5-9fa6-c9ac7f1e0160 | 2688 | PTM_CM52_Super_BOM | PTM | 1.2.4.2.46 | 1.2.4.2.46 | 2026-09-29 | 2026-10-05 | 2026-04-16 | 0 | 5 | 2898 | 0 | 0 |  |  | -90.75 | 0 | As Soon As Possible | Auto Scheduled | AMETEK SAP XXL Project Plan Replan MSP Task.csv | AMETEK SAP XXL Project Plan Replan MSP Task.csv__2f0764ccac__2026-05-05T02-44-15-662Z | Brad Meseck | 172 | True |  | Not started | True  -90.75 0 0 0 0 0 20 | Negative Float Critical 2 0 0  |  | 2694, 2691, 2690, 2693, 2689, 2692 | True |  |
| 357ae9be-8a60-81a5-b808-e31a10e0ad7d | 863 | Download Transport List | Basis | 1.1.1.5.1.12 | 1.1.1.5.1.12 | 2026-05-05 | 2026-05-05 | 2026-05-19 | 0 | 6 | 3340 | 1 | 1 | 357ae9be-8a60-8187-9d2b-ce8f2dad5d54 | 357ae9be-8a60-819a-93ea-f080e6e6a5ef | -203.02 | 0 | As Soon As Possible | Auto Scheduled | AMETEK SAP XXL Project Plan Replan MSP Task.csv | AMETEK SAP XXL Project Plan Replan MSP Task.csv__2f0764ccac__2026-05-05T02-44-15-662Z | Lokchetan Meghavath |  |  |  | Not started | True  -203.02 0 1 0 0 0 18 | Negative Float Critical 2 0 0  |  |  |  | True |
| 357ae9be-8a60-81a5-be8e-fc31e808e65f | 2464 | Error and Defect Mitigation | Finance | 1.2.4.2.7.4 | 1.2.4.2.7.4 | 2026-09-30 | 2026-09-30 | 2026-04-09 | 0 | 6 | 2460 | 1 | 1 | 357ae9be-8a60-8191-83cf-f4174ce4f207 | 357ae9be-8a60-81c4-9887-ec15432a8d61 | -680 | 0 | As Soon As Possible | Auto Scheduled | AMETEK SAP XXL Project Plan Replan MSP Task.csv | AMETEK SAP XXL Project Plan Replan MSP Task.csv__2f0764ccac__2026-05-05T02-44-15-662Z | Kasey Hughes | 174 | True |  | Not started | True  -680 0 1 0 0 0 26 | Negative Float Critical 2 0 0  |  |  |  |  |
| 357ae9be-8a60-81a6-81a0-f60ac8945ebd | 1194 | PTM_CM48_Equipment_Master_Serial Numbers | PTM | 1.2.1.36 | 1.2.1.36 | 2026-04-21 | 2026-04-22 | 2026-04-20 | 100 | 4 | 425 | 0 | 0 |  |  | 0 | 0 | As Soon As Possible | Auto Scheduled | AMETEK SAP XXL Project Plan Replan MSP Task.csv | AMETEK SAP XXL Project Plan Replan MSP Task.csv__2f0764ccac__2026-05-05T02-44-15-662Z | Brad Meseck |  |  |  | Done | True  0 0 0 0 0 0 12 | Low 0 0 0  |  | 1196, 1198, 1201, 1200, 1197, 1199 | True |  |
| 357ae9be-8a60-81a6-8302-fbf64c690d1f | 274 | Firefighter Configuration | (Unassigned) | 1.1.2.6 | 1.1.2.6 | 2026-05-01 | 2026-05-21 | 2025-11-07 | 0 | 4 | 248 | 0 | 0 |  |  | 122 | 122 | As Soon As Possible | Auto Scheduled | AMETEK SAP XXL Project Plan Replan MSP Task.csv | AMETEK SAP XXL Project Plan Replan MSP Task.csv__2f0764ccac__2026-05-05T02-44-15-662Z | COULD NOT BE DETERMINED | 195 | True |  | Not started |   122 122 0 0 0 0 8 | Low 0 0 0  |  | 276, 277, 275 | True | True |
| 357ae9be-8a60-81a6-8531-d077972e0ef9 | 2973 | Load | Data | 1.2.3.2.3.5 | 1.2.3.2.3.5 | 2026-06-11 | 2026-06-11 | 2026-04-08 | 0 | 6 | 2968 | 1 | 1 | 357ae9be-8a60-81f3-b750-fa4538bed458 | 357ae9be-8a60-8185-8ff0-e7244c64b7d0 | -196.52 | 0 | As Soon As Possible | Auto Scheduled | AMETEK SAP XXL Project Plan Replan MSP Task.csv | AMETEK SAP XXL Project Plan Replan MSP Task.csv__2f0764ccac__2026-05-05T02-44-15-662Z | Jyoti Nain | 64 | True |  | Not started | True  -196.52 0 1 0 0 0 26 | Negative Float Critical 2 0 0  |  |  |  |  |
| 357ae9be-8a60-81a6-8777-d4e31dcf9b8f | 2482 | Load File Staged and Posted "Ready" | Finance | 1.2.4.2.10.1 | 1.2.4.2.10.1 | 2026-09-25 | 2026-09-25 | 2026-04-09 | 0 | 6 | 2481 | 1 | 1 | 357ae9be-8a60-81f5-83b7-cf3dc192f6d2 | 357ae9be-8a60-8122-aa76-c00f46155d21 | -658.5 | 0 | As Soon As Possible | Auto Scheduled | AMETEK SAP XXL Project Plan Replan MSP Task.csv | AMETEK SAP XXL Project Plan Replan MSP Task.csv__2f0764ccac__2026-05-05T02-44-15-662Z | Kasey Hughes | 169 | True |  | Not started | True  -658.5 0 1 0 0 0 26 | Wrong Dependency, Negative Float Critical 5 1 0  |  |  |  |  |
| 357ae9be-8a60-81a6-9234-f84a3387f86e | 2045 | RTR_CM18_WBS Element | (Unassigned) | 1.2.2.2.68 | 1.2.2.2.68 | 2026-05-18 | 2026-05-19 | 2026-04-17 | 0 | 5 | 2800 | 0 | 0 |  |  | -1.19 | 0 | As Soon As Possible | Auto Scheduled | AMETEK SAP XXL Project Plan Replan MSP Task.csv | AMETEK SAP XXL Project Plan Replan MSP Task.csv__2f0764ccac__2026-05-05T02-44-15-662Z | COULD NOT BE DETERMINED | 32 | True | True | Not started | True  -1.19 0 0 0 0 0 20 | Negative Float High 2 0 0  |  | 2046, 2051, 2049, 2048, 2047, 2050 | True |  |
| 357ae9be-8a60-81a6-92f6-d908f07a9b29 | 1083 | Simulate Load | Data | 1.2.1.34.3 | 1.2.1.34.3 | 2026-04-20 | 2026-04-20 | 2026-04-16 | 100 | 5 | 709 | 1 | 1 | 357ae9be-8a60-8149-a675-e2d193a745c4 | 357ae9be-8a60-81e8-b90c-f889217e0897 | 0 | 0 | As Soon As Possible | Auto Scheduled | AMETEK SAP XXL Project Plan Replan MSP Task.csv | AMETEK SAP XXL Project Plan Replan MSP Task.csv__2f0764ccac__2026-05-05T02-44-15-662Z | Jyoti Nain |  |  |  | Done | True  0 0 1 0 0 0 18 | Low 0 0 0  |  |  |  |  |
| 357ae9be-8a60-81a6-975b-ed9ff06b79f5 | 1806 | Post Load Validation | PTP | 1.2.2.2.19.6 | 1.2.2.2.19.6 | 2026-05-18 | 2026-05-18 | 2026-04-15 | 0 | 6 | 1800 | 1 | 2 | 357ae9be-8a60-81f3-a59b-e572863ca563 | 357ae9be-8a60-8148-903b-c443e941ad2f, 357ae9be-8a60-81c4-8995-e807244adc01 | -70.27 | 0 | As Soon As Possible | Auto Scheduled | AMETEK SAP XXL Project Plan Replan MSP Task.csv | AMETEK SAP XXL Project Plan Replan MSP Task.csv__2f0764ccac__2026-05-05T02-44-15-662Z | Nevin Varkey | 33 | True | True | Not started | True  -70.27 0 1 1 14 0 33 | Wrong Successor, Negative Float Critical 5 0 2  |  |  |  |  |
| 357ae9be-8a60-81a6-a52c-d9078d612cb2 | 707 | PTM_CM38_Routing Conversion | PTM | 1.2.1.33 | 1.2.1.33 | 2026-04-16 | 2026-04-20 | 2026-04-21 | 100 | 4 | 425 | 0 | 0 |  |  | 0 | 0 | As Soon As Possible | Auto Scheduled | AMETEK SAP XXL Project Plan Replan MSP Task.csv | AMETEK SAP XXL Project Plan Replan MSP Task.csv__2f0764ccac__2026-05-05T02-44-15-662Z | Brad Meseck |  |  |  | Done | True  0 0 0 0 0 0 12 | Low 0 0 0  |  | 1080, 1076, 1078, 1079, 1075, 1077 | True |  |
| 357ae9be-8a60-81a6-afc8-eff693af38b3 | 2715 | Load | Data | 1.2.4.2.50.5 | 1.2.4.2.50.5 | 2026-10-08 | 2026-10-08 | 2026-04-21 | 0 | 6 | 2710 | 1 | 1 | 357ae9be-8a60-81de-8f77-c9190b5eb9c1 | 357ae9be-8a60-81bb-b8c6-ec1c09c974e8 | -726 | 0 | As Soon As Possible | Auto Scheduled | AMETEK SAP XXL Project Plan Replan MSP Task.csv | AMETEK SAP XXL Project Plan Replan MSP Task.csv__2f0764ccac__2026-05-05T02-44-15-662Z | Jyoti Nain | 170 | True |  | Not started | True  -726 0 1 0 0 0 26 | Negative Float Critical 2 0 0  |  |  |  |  |
| 357ae9be-8a60-81a6-b077-d9f1e72a4909 | 277 | Functional validation | (Unassigned) | 1.1.2.6.3 | 1.1.2.6.3 | 2026-05-15 | 2026-05-21 | 2025-11-07 | 0 | 5 | 274 | 1 | 0 | 357ae9be-8a60-815d-b5ea-d2e4cbd098fe |  | 122 | 122 | Start No Earlier Than | Auto Scheduled | AMETEK SAP XXL Project Plan Replan MSP Task.csv | AMETEK SAP XXL Project Plan Replan MSP Task.csv__2f0764ccac__2026-05-05T02-44-15-662Z | COULD NOT BE DETERMINED | 195 | True |  | Not started |   122 122 0 0 0 0 8 | Open Finish Medium 1 0 0 True | 2026-04-30 |  |  |  |
| 357ae9be-8a60-81a6-bb6b-eabbe7f475dd | 1855 | Pre Load Validation | PTP | 1.2.2.2.27.2 | 1.2.2.2.27.2 | 2026-05-21 | 2026-05-21 | 2026-04-16 | 0 | 6 | 1853 | 1 | 1 | 357ae9be-8a60-81b6-ab8b-c4b14f1485e0 | 357ae9be-8a60-811c-b07e-d2d554a818af | -31.27 | 0 | As Soon As Possible | Auto Scheduled | AMETEK SAP XXL Project Plan Replan MSP Task.csv | AMETEK SAP XXL Project Plan Replan MSP Task.csv__2f0764ccac__2026-05-05T02-44-15-662Z | Nevin Varkey | 35 | True |  | Not started | True  -31.27 0 1 0 0 0 26 | Wrong Dependency, Negative Float Critical 5 1 0  |  |  |  |  |
| 357ae9be-8a60-81a6-beae-cdbd3b630217 | 2509 | Post Load Validation | OTC | 1.2.4.2.14.6 | 1.2.4.2.14.6 | 2026-09-30 | 2026-10-01 | 2026-04-10 | 0 | 6 | 2503 | 1 | 0 | 357ae9be-8a60-81b0-90a1-ea8f91d653f6 |  | -683 | 0 | As Soon As Possible | Auto Scheduled | AMETEK SAP XXL Project Plan Replan MSP Task.csv | AMETEK SAP XXL Project Plan Replan MSP Task.csv__2f0764ccac__2026-05-05T02-44-15-662Z | Ric Haraida | 174 | True |  | Not started | True  -683 0 0 0 0 0 20 | Wrong Dependency, Negative Float, Open Finish Critical 6 1 0  |  |  |  |  |
| 357ae9be-8a60-81a7-83a1-e4fcdc41059a | 2560 | Error and Defect Mitigation | PTP;OTC | 1.2.4.2.22.4 | 1.2.4.2.22.4 | 2026-09-24 | 2026-09-24 | 2026-04-13 | 0 | 6 | 2556 | 1 | 1 | 357ae9be-8a60-815d-899d-e290e2af5de3 | 357ae9be-8a60-8126-b3f0-d7d74334a174 | -653.5 | 0 | As Soon As Possible | Auto Scheduled | AMETEK SAP XXL Project Plan Replan MSP Task.csv | AMETEK SAP XXL Project Plan Replan MSP Task.csv__2f0764ccac__2026-05-05T02-44-15-662Z | Nevin Varkey | 164 | True |  | Not started | True  -653.5 0 1 0 0 0 26 | Negative Float Critical 2 0 0  |  |  |  |  |
| 357ae9be-8a60-81a7-8aae-f9ce6c1eb9b8 | 3017 | RTR_CM08_Exchange_Rates | (Unassigned) | 1.2.3.2.10 | 1.2.3.2.10 | 2026-06-09 | 2026-06-10 | 2026-04-10 | 0 | 5 | 2959 | 0 | 0 |  |  | -17.06 | 0 | As Soon As Possible | Auto Scheduled | AMETEK SAP XXL Project Plan Replan MSP Task.csv | AMETEK SAP XXL Project Plan Replan MSP Task.csv__2f0764ccac__2026-05-05T02-44-15-662Z | COULD NOT BE DETERMINED | 61 | True |  | Not started | True  -17.06 0 0 0 0 0 20 | Negative Float Critical 2 0 0  |  | 3021, 3022, 3019, 3018, 3023, 3020 | True |  |
| 357ae9be-8a60-81a7-9700-c986f6127f18 | 843 | Business Process Design Documentation | (Unassigned) | 1.3.1 | 1.3.1 | 2026-05-04 | 2026-05-29 | 2026-05-22 | 4 | 3 | 681 | 0 | 0 |  |  | 116 | 116 | As Soon As Possible | Auto Scheduled | AMETEK SAP XXL Project Plan Replan MSP Task.csv | AMETEK SAP XXL Project Plan Replan MSP Task.csv__2f0764ccac__2026-05-05T02-44-15-662Z | COULD NOT BE DETERMINED | 7 | True |  | Not started |   116 116 0 0 0 0 8 | Low 0 0 0  |  | 846, 844, 847, 845 | True |  |
| 357ae9be-8a60-81a7-9cdc-c03fa59eac86 | 4527 | Load | Data | 1.2.5.2.68.5 | 1.2.5.2.68.5 | 2026-09-24 | 2026-09-24 | 2026-04-17 | 0 | 6 | 4522 | 1 | 1 | 357ae9be-8a60-81f5-9ed1-d7da670598d0 | 357ae9be-8a60-8179-8966-e9366ede534c | -651.52 | 0 | As Soon As Possible | Auto Scheduled | AMETEK SAP XXL Project Plan Replan MSP Task.csv | AMETEK SAP XXL Project Plan Replan MSP Task.csv__2f0764ccac__2026-05-05T02-44-15-662Z | Jyoti Nain | 160 | True |  | Not started | True  -651.52 0 1 0 0 0 26 | Negative Float Critical 2 0 0  |  |  |  |  |
| 357ae9be-8a60-81a7-a128-d7a2189d19a3 | 1754 | OTC_CM19_Customer_Master - Bill-To | OTC | 1.2.2.2.12 | 1.2.2.2.12 | 2026-05-18 | 2026-05-18 | 2025-04-16 | 0 | 5 | 2800 | 0 | 0 |  |  | -1.52 | 0 | As Soon As Possible | Auto Scheduled | AMETEK SAP XXL Project Plan Replan MSP Task.csv | AMETEK SAP XXL Project Plan Replan MSP Task.csv__2f0764ccac__2026-05-05T02-44-15-662Z | Anitha Jothi | 397 | True | True | Not started | True  -1.52 0 0 0 0 0 20 | Negative Float, Open Start, Open Finish High 4 0 0  |  |  |  |  |
| 357ae9be-8a60-81a7-a562-fb72ab05c1f3 | 1231 | Open client for BP number range update | Basis | 1.2.1.14.3 | 1.2.1.14.3 | 2026-04-08 | 2026-04-09 | 2026-04-09 | 100 | 5 | 763 | 1 | 1 | 357ae9be-8a60-8134-9bab-efbb98b7b159 | 357ae9be-8a60-8151-9dec-d88d3b5733dd | 0 | 0 | As Soon As Possible | Auto Scheduled | AMETEK SAP XXL Project Plan Replan MSP Task.csv | AMETEK SAP XXL Project Plan Replan MSP Task.csv__2f0764ccac__2026-05-05T02-44-15-662Z | Lokchetan Meghavath |  |  |  | Done | True  0 0 1 0 0 0 18 | Wrong Dependency High 3 1 0  |  |  |  |  |
| 357ae9be-8a60-81a7-ae3a-d67a228f07bb | 2646 | Post Load Validation | PTM | 1.2.4.2.34.6 | 1.2.4.2.34.6 | 2026-10-01 | 2026-10-02 | 2026-04-20 | 0 | 6 | 2640 | 1 | 0 | 357ae9be-8a60-81ea-8184-c43de0d7343d |  | -689.25 | 0 | As Soon As Possible | Auto Scheduled | AMETEK SAP XXL Project Plan Replan MSP Task.csv | AMETEK SAP XXL Project Plan Replan MSP Task.csv__2f0764ccac__2026-05-05T02-44-15-662Z | Brad Meseck | 165 | True |  | Not started | True  -689.25 0 0 0 0 0 20 | Negative Float, Open Finish Critical 3 0 0  |  |  |  |  |
| 357ae9be-8a60-81a7-b07a-c96c1a064e34 | 4392 | Post Load Validation | PTM | 1.2.5.2.35.6 | 1.2.5.2.35.6 | 2026-10-01 | 2026-10-02 | 2026-04-20 | 0 | 6 | 4386 | 1 | 1 | 357ae9be-8a60-81a8-8b49-d5d8b46a4a8e | 357ae9be-8a60-8132-9ee1-d2f2d5d78622 | -695.77 | 0 | As Soon As Possible | Auto Scheduled | AMETEK SAP XXL Project Plan Replan MSP Task.csv | AMETEK SAP XXL Project Plan Replan MSP Task.csv__2f0764ccac__2026-05-05T02-44-15-662Z | Brad Meseck | 165 | True |  | Not started | True  -695.77 0 1 0 0 0 26 | Negative Float Critical 2 0 0  |  |  |  |  |
| 357ae9be-8a60-81a7-b33d-c5c762d49420 | 3313 | Load File Staged and Posted "Ready" | Finance | 1.2.3.2.67.1 | 1.2.3.2.67.1 | 2026-06-08 | 2026-06-08 | 2026-04-10 | 0 | 6 | 3312 | 1 | 1 | 357ae9be-8a60-8148-a5ac-fb815177e912 | 357ae9be-8a60-8185-a59f-d11f46aa5b30 | -7771 | 0 | As Soon As Possible | Auto Scheduled | AMETEK SAP XXL Project Plan Replan MSP Task.csv | AMETEK SAP XXL Project Plan Replan MSP Task.csv__2f0764ccac__2026-05-05T02-44-15-662Z | Kasey Hughes | 59 | True |  | Not started | True  -7771 0 1 1 426 0 31 | Wrong Dependency, Wrong Successor, Negative Float Critical 8 1 1  |  |  |  |  |
| 357ae9be-8a60-81a7-b5d5-ffe10c163d5f | 2995 | Intercompany Business Partner Setup | Development;PTM;Finance;PMO;Europe IT lead;OTC;TESTING | 1.2.3.2.6.4 | 1.2.3.2.6.4 | 2026-06-12 | 2026-06-12 | 2026-04-09 | 0 | 6 | 2991 | 4 | 0 | 357ae9be-8a60-8167-8cd5-e4a082211fa8, 357ae9be-8a60-816c-ad9a-cf035f1ccd99, 357ae9be-8a60-814d-847f-e185ce7e42a7, 357ae9be-8a60-816b-bd03-efee92b2ae6f |  | -153.02 | 0 | As Soon As Possible | Auto Scheduled | AMETEK SAP XXL Project Plan Replan MSP Task.csv | AMETEK SAP XXL Project Plan Replan MSP Task.csv__2f0764ccac__2026-05-05T02-44-15-662Z | Bijoykrishna Das | 64 | True |  | Not started | True  -153.02 0 0 0 0 1 20 | Wrong Dependency, Negative Float, Open Finish Critical 6 4 0  |  |  |  |  |
| 357ae9be-8a60-81a8-8b49-d5d8b46a4a8e | 4391 | Load | Data | 1.2.5.2.35.5 | 1.2.5.2.35.5 | 2026-10-01 | 2026-10-01 | 2026-04-20 | 0 | 6 | 4386 | 1 | 1 | 357ae9be-8a60-8106-b0ff-ceb12add4d9b | 357ae9be-8a60-81a7-b07a-c96c1a064e34 | -695.77 | 0 | As Soon As Possible | Auto Scheduled | AMETEK SAP XXL Project Plan Replan MSP Task.csv | AMETEK SAP XXL Project Plan Replan MSP Task.csv__2f0764ccac__2026-05-05T02-44-15-662Z | Jyoti Nain | 164 | True |  | Not started | True  -695.77 0 1 0 0 0 26 | Negative Float Critical 2 0 0  |  |  |  |  |
| 357ae9be-8a60-81a8-8edc-e3de2e14bb24 | 2010 | GTS - ECCN - Create | (Unassigned) | 1.2.2.2.58 | 1.2.2.2.58 | 2026-05-18 | 2026-05-19 | 2026-04-13 | 0 | 5 | 2800 | 0 | 0 |  |  | -1.06 | 0 | As Soon As Possible | Auto Scheduled | AMETEK SAP XXL Project Plan Replan MSP Task.csv | AMETEK SAP XXL Project Plan Replan MSP Task.csv__2f0764ccac__2026-05-05T02-44-15-662Z | COULD NOT BE DETERMINED | 36 | True | True | Not started | True  -1.06 0 0 0 0 0 20 | Negative Float High 2 0 0  |  | 2011, 2012 | True |  |
| 357ae9be-8a60-81a8-9319-f276d3dadefe | 3005 | Pre Load Validation | Finance | 1.2.3.2.8.2 | 1.2.3.2.8.2 | 2026-06-09 | 2026-06-10 | 2026-04-07 | 0 | 6 | 3003 | 1 | 1 | 357ae9be-8a60-8173-89df-e5f5848be953 | 357ae9be-8a60-81e0-871e-f8ac12899265 | -140.52 | 0 | As Soon As Possible | Auto Scheduled | AMETEK SAP XXL Project Plan Replan MSP Task.csv | AMETEK SAP XXL Project Plan Replan MSP Task.csv__2f0764ccac__2026-05-05T02-44-15-662Z | Kasey Hughes | 64 | True |  | Not started | True  -140.52 0 1 0 0 0 26 | Negative Float Critical 2 0 0  |  |  |  |  |
| 357ae9be-8a60-81a8-9746-c11808e7a959 | 2011 | Load Descartes XML File | OTC | 1.2.2.2.58.1 | 1.2.2.2.58.1 | 2026-05-18 | 2026-05-18 | 2026-04-06 | 0 | 6 | 2010 | 0 | 0 |  |  | -0.52 | 0 | As Soon As Possible | Auto Scheduled | AMETEK SAP XXL Project Plan Replan MSP Task.csv | AMETEK SAP XXL Project Plan Replan MSP Task.csv__2f0764ccac__2026-05-05T02-44-15-662Z | James VanRiper | 42 | True | True | Not started | True  -0.52 0 0 0 0 0 20 | Negative Float, Open Start, Open Finish High 4 0 0  |  |  |  |  |
| 357ae9be-8a60-81a8-97af-fbba80a4b163 | 4466 | Post Load Validation | Finance | 1.2.5.2.52.6 | 1.2.5.2.52.6 | 2026-10-02 | 2026-10-02 | 2026-04-13 | 0 | 6 | 4460 | 1 | 0 | 357ae9be-8a60-8100-85d1-eab373d86bef |  | -694.52 | 0 | As Soon As Possible | Auto Scheduled | AMETEK SAP XXL Project Plan Replan MSP Task.csv | AMETEK SAP XXL Project Plan Replan MSP Task.csv__2f0764ccac__2026-05-05T02-44-15-662Z | Kasey Hughes | 172 | True |  | Not started | True  -694.52 0 0 0 0 0 20 | Negative Float, Open Finish Critical 3 0 0  |  |  |  |  |
| 357ae9be-8a60-81a8-9ead-dd633cc84dc9 | 1859 | Post Load Validation | PTP | 1.2.2.2.27.6 | 1.2.2.2.27.6 | 2026-05-18 | 2026-05-18 | 2026-04-15 | 0 | 6 | 1853 | 1 | 0 | 357ae9be-8a60-8184-88c0-ee51e66d1165 |  | -5.52 | 0 | As Soon As Possible | Auto Scheduled | AMETEK SAP XXL Project Plan Replan MSP Task.csv | AMETEK SAP XXL Project Plan Replan MSP Task.csv__2f0764ccac__2026-05-05T02-44-15-662Z | Nevin Varkey | 33 | True | True | Not started | True  -5.52 0 0 0 0 0 20 | Negative Float, Open Finish High 3 0 0  |  |  |  |  |
| 357ae9be-8a60-81a8-a5c4-d16128280bac | 4424 | VC_Characteristic Groups | (Unassigned) | 1.2.5.2.45 | 1.2.5.2.45 | 2026-09-29 | 2026-10-01 | 2026-04-17 | 0 | 5 | 4162 | 0 | 0 |  |  | -86 | 0 | As Soon As Possible | Auto Scheduled | AMETEK SAP XXL Project Plan Replan MSP Task.csv | AMETEK SAP XXL Project Plan Replan MSP Task.csv__2f0764ccac__2026-05-05T02-44-15-662Z | COULD NOT BE DETERMINED | 167 | True |  | Not started | True  -86 0 0 0 0 0 20 | Negative Float Critical 2 0 0  |  | 4426, 4425 | True |  |
| 357ae9be-8a60-81a8-aecc-f7996977e225 | 4376 | Error and Defect Mitigation | PTM | 1.2.5.2.33.4 | 1.2.5.2.33.4 | 2026-09-30 | 2026-09-30 | 2026-04-16 | 0 | 6 | 4372 | 1 | 1 | 357ae9be-8a60-8111-ab94-ff7a4474c3a9 | 357ae9be-8a60-81bd-bb6b-f2832b045154 | -695.77 | 0 | As Soon As Possible | Auto Scheduled | AMETEK SAP XXL Project Plan Replan MSP Task.csv | AMETEK SAP XXL Project Plan Replan MSP Task.csv__2f0764ccac__2026-05-05T02-44-15-662Z | Brad Meseck | 167 | True |  | Not started | True  -695.77 0 1 0 0 0 26 | Negative Float Critical 2 0 0  |  |  |  |  |
| 357ae9be-8a60-81a8-aef2-eb23629a11c0 | 1938 | VC_Configuration Profiles | (Unassigned) | 1.2.2.2.42 | 1.2.2.2.42 | 2026-05-21 | 2026-05-22 | 2026-04-16 | 0 | 5 | 2800 | 0 | 0 |  |  | -5.75 | 0 | As Soon As Possible | Auto Scheduled | AMETEK SAP XXL Project Plan Replan MSP Task.csv | AMETEK SAP XXL Project Plan Replan MSP Task.csv__2f0764ccac__2026-05-05T02-44-15-662Z | COULD NOT BE DETERMINED | 36 | True |  | Not started | True  -5.75 0 0 0 0 0 20 | Negative Float High 2 0 0  |  | 1939, 1940 | True |  |
| 357ae9be-8a60-81a8-b353-cfe1d84027a4 | 2678 | Post Load Validation | PTM | 1.2.4.2.42.2 | 1.2.4.2.42.2 | 2026-09-29 | 2026-09-29 | 2026-04-16 | 0 | 6 | 2676 | 1 | 2 | 357ae9be-8a60-819c-813f-c9952e3df0fd | 357ae9be-8a60-81bf-bd43-c94da4989471, 357ae9be-8a60-8104-851b-fc233a971a51 | -688 | 0 | As Soon As Possible | Auto Scheduled | AMETEK SAP XXL Project Plan Replan MSP Task.csv | AMETEK SAP XXL Project Plan Replan MSP Task.csv__2f0764ccac__2026-05-05T02-44-15-662Z | Eric Heisler | 166 | True |  | Not started | True  -688 0 2 2 687 0 37 | Wrong Successor, Negative Float Critical 5 0 2  |  |  |  |  |
| 357ae9be-8a60-81a9-9f32-eaf54d15d4dc | 4481 | GTS - Customers initial load from S4 (Run Interface) | (Unassigned) | 1.2.5.2.56 | 1.2.5.2.56 | 2026-09-24 | 2026-09-24 | 2026-04-10 | 0 | 5 | 4162 | 0 | 0 |  |  | -80.44 | 0 | As Soon As Possible | Auto Scheduled | AMETEK SAP XXL Project Plan Replan MSP Task.csv | AMETEK SAP XXL Project Plan Replan MSP Task.csv__2f0764ccac__2026-05-05T02-44-15-662Z | COULD NOT BE DETERMINED | 167 | True |  | Not started | True  -80.44 0 0 0 0 0 20 | Negative Float Critical 2 0 0  |  | 4482, 4483 | True |  |
| 357ae9be-8a60-81a9-a347-d53363db3361 | 1794 | Load File Staged and Posted "Ready" | Finance | 1.2.2.2.18.1 | 1.2.2.2.18.1 | 2026-05-25 | 2026-05-25 | 2026-04-10 | 0 | 6 | 1793 | 1 | 1 | 357ae9be-8a60-8122-b5a7-f52bb4b3e2ef | 357ae9be-8a60-81c3-9889-ecfa8eb03333 | -3526 | 0 | As Soon As Possible | Auto Scheduled | AMETEK SAP XXL Project Plan Replan MSP Task.csv | AMETEK SAP XXL Project Plan Replan MSP Task.csv__2f0764ccac__2026-05-05T02-44-15-662Z | Kasey Hughes | 45 | True |  | Not started | True  -3526 0 1 0 0 0 26 | Wrong Dependency, Negative Float Critical 5 1 0  |  |  |  |  |
| 357ae9be-8a60-81a9-a799-fb2443f06fc1 | 821 | Load | Data | 1.2.1.15.5 | 1.2.1.15.5 | 2026-04-09 | 2026-04-10 | 2026-04-10 | 100 | 5 | 762 | 1 | 5 | 357ae9be-8a60-8120-a9b4-fe70ddbe33fb | 357ae9be-8a60-8114-b245-da8532436612, 357ae9be-8a60-81cd-8a6c-cbc50bc14c08, 357ae9be-8a60-816f-86bb-ffc92c6c01e6, 357ae9be-8a60-8177-a098-e443c737773f, 357ae9be-8a60-81c6-8eae-e06f4b4f42e2 | 0 | 0 | As Soon As Possible | Auto Scheduled | AMETEK SAP XXL Project Plan Replan MSP Task.csv | AMETEK SAP XXL Project Plan Replan MSP Task.csv__2f0764ccac__2026-05-05T02-44-15-662Z | Jyoti Nain |  |  |  | Done | True  0 0 5 0 0 0 42 | Low 0 0 0  |  |  |  |  |
| 357ae9be-8a60-81a9-a851-ddfbc35e7437 | 1173 | Post Load Validation | OTC | 1.2.1.56.2 | 1.2.1.56.2 | 2026-04-20 | 2026-04-20 | 2026-04-16 | 100 | 5 | 952 | 1 | 1 | 357ae9be-8a60-8143-9e28-e7516a38e101 | 357ae9be-8a60-81b1-8596-f22e5747c832 | 0 | 0 | As Soon As Possible | Auto Scheduled | AMETEK SAP XXL Project Plan Replan MSP Task.csv | AMETEK SAP XXL Project Plan Replan MSP Task.csv__2f0764ccac__2026-05-05T02-44-15-662Z | James VanRiper |  |  |  | Done | True  0 0 1 1 4 0 23 | Low 0 0 0  |  |  |  |  |
| 357ae9be-8a60-81a9-be4d-eb7d27ad5d94 | 3188 | Load | Data | 1.2.3.2.35.5 | 1.2.3.2.35.5 | 2026-06-15 | 2026-06-15 | 2026-04-20 | 0 | 6 | 3183 | 1 | 1 | 357ae9be-8a60-81b4-a50f-e0d917d4f024 | 357ae9be-8a60-8112-97aa-e6d3508c898f | -173.77 | 0 | As Soon As Possible | Auto Scheduled | AMETEK SAP XXL Project Plan Replan MSP Task.csv | AMETEK SAP XXL Project Plan Replan MSP Task.csv__2f0764ccac__2026-05-05T02-44-15-662Z | Jyoti Nain | 56 | True |  | Not started | True  -173.77 0 1 0 0 0 26 | Negative Float Critical 2 0 0  |  |  |  |  |
| 357ae9be-8a60-81aa-880d-e1a162854cd1 | 62 | Plan to Make | (Unassigned) | 1.1.2.10.2 | 1.1.2.10.2 | 2025-03-13 | 2025-03-13 | 2025-03-13 | 100 | 5 | 55 | 0 | 0 |  |  | 0 | 0 | As Soon As Possible | Auto Scheduled | AMETEK SAP XXL Project Plan Replan MSP Task.csv | AMETEK SAP XXL Project Plan Replan MSP Task.csv__2f0764ccac__2026-05-05T02-44-15-662Z | COULD NOT BE DETERMINED |  |  |  | Done | True  0 0 0 0 0 0 12 | Low 0 0 0  |  | 73, 76, 75, 74 | True |  |
| 357ae9be-8a60-81aa-89a6-f1fb2ba8a7f6 | 2797 | Defect Correction / Retesting / Mitigation / Close | TESTING | 1.3.3.6.8 | 1.3.3.6.8 | 2026-06-11 | 2026-06-17 | 2026-07-24 | 0 | 5 | 2791 | 1 | 1 | 357ae9be-8a60-8114-aae7-c236068f95d4 | 357ae9be-8a60-814e-b58f-f709204c728f | 103 | 0 | As Soon As Possible | Auto Scheduled | AMETEK SAP XXL Project Plan Replan MSP Task.csv | AMETEK SAP XXL Project Plan Replan MSP Task.csv__2f0764ccac__2026-05-05T02-44-15-662Z | Kishore Kakarla |  |  |  | Not started | True  103 0 1 0 0 1 18 | Low 0 0 0  |  |  |  |  |
| 357ae9be-8a60-81aa-8fb9-d9d0f029be12 | 133 | Complete - Audit and Controls Review | (Unassigned) | 1.1.2.9.1.1.3 | 1.1.2.9.1.1.3 | 2025-08-18 | 2025-09-04 | 2025-09-04 | 100 | 7 | 56 | 1 | 0 | 357ae9be-8a60-819d-8ca4-c62c5fca339e |  | 0 | 0 | As Soon As Possible | Auto Scheduled | AMETEK SAP XXL Project Plan Replan MSP Task.csv | AMETEK SAP XXL Project Plan Replan MSP Task.csv__2f0764ccac__2026-05-05T02-44-15-662Z | COULD NOT BE DETERMINED |  |  |  | Done | True  0 0 0 0 0 0 12 | Low 0 0 0  |  |  |  |  |
| 357ae9be-8a60-81aa-9825-d99fa03138a1 | 3391 | Import Group 4 - workbench / dev work | Development | 1.1.1.8.2.7 | 1.1.1.8.2.7 | 2026-09-23 | 2026-09-23 | 2026-07-14 | 0 | 6 | 3384 | 1 | 1 | 357ae9be-8a60-818c-a647-fbf7124dde5d | 357ae9be-8a60-8173-a309-f25314369f9f | -726.02 | 0 | Start No Earlier Than | Auto Scheduled | AMETEK SAP XXL Project Plan Replan MSP Task.csv | AMETEK SAP XXL Project Plan Replan MSP Task.csv__2f0764ccac__2026-05-05T02-44-15-662Z | Bijoykrishna Das | 71 | True |  | Not started | True  -726.02 0 1 0 0 0 26 | Negative Float Critical 2 0 0 True | 2025-04-03 |  |  |  |
| 357ae9be-8a60-81aa-9b04-c22d49e49de5 | 1800 | PTP_CM27_Vendor Master | PTP | 1.2.2.2.19 | 1.2.2.2.19 | 2026-05-18 | 2026-05-26 | 2026-04-15 | 0 | 5 | 2800 | 0 | 0 |  |  | -8.78 | 0 | As Soon As Possible | Auto Scheduled | AMETEK SAP XXL Project Plan Replan MSP Task.csv | AMETEK SAP XXL Project Plan Replan MSP Task.csv__2f0764ccac__2026-05-05T02-44-15-662Z | Muniraju Surappachari | 41 | True |  | Not started | True  -8.78 0 0 0 0 0 20 | Negative Float High 2 0 0  |  | 1801, 1803, 1804, 1802, 1806, 1805 | True |  |
| 357ae9be-8a60-81aa-9c90-daa6e877ffa4 | 1817 | Post Load Validation | Finance | 1.2.2.2.21.3 | 1.2.2.2.21.3 | 2026-05-27 | 2026-05-27 | 2026-04-13 | 0 | 6 | 1814 | 1 | 0 | 357ae9be-8a60-81aa-b17c-dd834efa926b |  | -57.77 | 0 | As Soon As Possible | Auto Scheduled | AMETEK SAP XXL Project Plan Replan MSP Task.csv | AMETEK SAP XXL Project Plan Replan MSP Task.csv__2f0764ccac__2026-05-05T02-44-15-662Z | Kasey Hughes | 44 | True |  | Not started | True  -57.77 0 0 0 0 0 20 | Negative Float, Open Finish Critical 3 0 0  |  |  |  |  |
| 357ae9be-8a60-81aa-a2d2-d1d178af9866 | 2546 | Extract File(Will Extract from LFA1) | PTP | 1.2.4.2.20.1 | 1.2.4.2.20.1 | 2026-09-24 | 2026-09-24 | 2026-04-10 | 0 | 6 | 2545 | 0 | 1 |  | 357ae9be-8a60-8194-8b31-ebdfccfeb50e | -653.5 | 0 | Start No Earlier Than | Auto Scheduled | AMETEK SAP XXL Project Plan Replan MSP Task.csv | AMETEK SAP XXL Project Plan Replan MSP Task.csv__2f0764ccac__2026-05-05T02-44-15-662Z | Nevin Varkey | 167 | True |  | Not started | True  -653.5 0 1 1 535 0 31 | Wrong Successor, Negative Float, Open Start Critical 6 0 1 True | 2026-04-16 |  |  |  |

| id | uid | name | workstream | outlineNumber | wbs | start | finish | baselineFinish | pct | outlineLevel | parentUid | predCount | sucCount | predIds | sucIds | totalSlackDaysRaw | freeSlackDaysRaw | constraintType | taskMode | mspSourceFile | mspImportVersion | assignedTo | slipDays | isSlipped | isDue14 | status | cpm | scheduleQuality | constraintDate | childUids | isSummary |
| --- | --- | --- | --- | --- | --- | --- | --- | --- | --- | --- | --- | --- | --- | --- | --- | --- | --- | --- | --- | --- | --- | --- | --- | --- | --- | --- | --- | --- | --- | --- | --- |
| 357ae9be-8a60-81aa-a8c5-c061053b4155 | 3128 | Extract File | Data | 1.2.3.2.27.1 | 1.2.3.2.27.1 | 2026-06-11 | 2026-06-11 | 2026-04-15 | 0 | 6 | 3127 | 1 | 2 | 357ae9be-8a60-81e4-ad85-f3407bb2ec98 | 357ae9be-8a60-81e4-ad85-f3407bb2ec98, 357ae9be-8a60-81cd-81d1-c0de95ecfbcb | -182.39 | 0 | As Soon As Possible | Auto Scheduled | AMETEK SAP XXL Project Plan Replan MSP Task.csv | AMETEK SAP XXL Project Plan Replan MSP Task.csv__2f0764ccac__2026-05-05T02-44-15-662Z | Jyoti Nain | 57 | True |  | Not started | True  -182.39 0 1 1 430 0 33 | Wrong Dependency, Wrong Successor, Negative Float Critical 8 1 2  |  |  |  |
| 357ae9be-8a60-81aa-a9b6-c0806fe010f5 | 4353 | Pre Load Validation | PTM | 1.2.5.2.30.2 | 1.2.5.2.30.2 | 2026-09-29 | 2026-09-29 | 2026-04-16 | 0 | 6 | 4351 | 1 | 1 | 357ae9be-8a60-81d2-8e99-d2e4ba649c85 | 357ae9be-8a60-81ad-bd49-c579af3a8984 | -700.39 | 0 | As Soon As Possible | Auto Scheduled | AMETEK SAP XXL Project Plan Replan MSP Task.csv | AMETEK SAP XXL Project Plan Replan MSP Task.csv__2f0764ccac__2026-05-05T02-44-15-662Z | Brad Meseck | 166 | True |  | Not started | True  -700.39 0 1 0 0 0 26 | Negative Float Critical 2 0 0  |  |  |  |
| 357ae9be-8a60-81aa-b17c-dd834efa926b | 1816 | Load | Finance | 1.2.2.2.21.2 | 1.2.2.2.21.2 | 2026-05-26 | 2026-05-27 | 2026-04-13 | 0 | 6 | 1814 | 1 | 1 | 357ae9be-8a60-8138-a89a-cda70d45c3e3 | 357ae9be-8a60-81aa-9c90-daa6e877ffa4 | -57.77 | 0 | As Soon As Possible | Auto Scheduled | AMETEK SAP XXL Project Plan Replan MSP Task.csv | AMETEK SAP XXL Project Plan Replan MSP Task.csv__2f0764ccac__2026-05-05T02-44-15-662Z | Kasey Hughes | 44 | True |  | Not started | True  -57.77 0 1 0 0 0 26 | Wrong Dependency, Negative Float Critical 5 1 0  |  |  |  |
| 357ae9be-8a60-81aa-b632-d38164765264 | 1711 | Load File Staged and Posted "Ready" | Finance | 1.2.2.2.5.1 | 1.2.2.2.5.1 | 2026-05-20 | 2026-05-20 | 2026-04-08 | 0 | 6 | 1710 | 1 | 1 | 357ae9be-8a60-8101-8ec8-f2861b9b8301 | 357ae9be-8a60-813b-b0a5-d96f44c48a8f | -63.52 | 0 | As Soon As Possible | Auto Scheduled | AMETEK SAP XXL Project Plan Replan MSP Task.csv | AMETEK SAP XXL Project Plan Replan MSP Task.csv__2f0764ccac__2026-05-05T02-44-15-662Z | Kasey Hughes | 42 | True | True | Not started | True  -63.52 0 1 0 0 0 26 | Wrong Dependency, Negative Float Critical 5 1 0  |  |  |  |
| 357ae9be-8a60-81aa-bc90-fad26c5b2dde | 1043 | Post Load Validation | PTP | 1.2.1.28.6 | 1.2.1.28.6 | 2026-04-17 | 2026-04-17 | 2026-04-15 | 100 | 5 | 703 | 1 | 0 | 357ae9be-8a60-8129-9154-cef114881dbf |  | 0 | 0 | Start No Earlier Than | Auto Scheduled | AMETEK SAP XXL Project Plan Replan MSP Task.csv | AMETEK SAP XXL Project Plan Replan MSP Task.csv__2f0764ccac__2026-05-05T02-44-15-662Z | Nevin Varkey |  |  |  | Done | True  0 0 0 0 0 0 12 | Low 0 0 0 True | 2026-04-17 |  |  |
| 357ae9be-8a60-81aa-be9a-c8613f1b642b | 1229 | Create Migration Data Project in DMC | Data | 1.1.1.7.3.2 | 1.1.1.7.3.2 | 2026-06-25 | 2026-06-26 | 2026-07-16 | 0 | 6 | 1227 | 1 | 1 | 357ae9be-8a60-8194-8908-c844a9e11012 | 357ae9be-8a60-8149-90d8-f15375af7e2e | -214.02 | 0 | As Soon As Possible | Auto Scheduled | AMETEK SAP XXL Project Plan Replan MSP Task.csv | AMETEK SAP XXL Project Plan Replan MSP Task.csv__2f0764ccac__2026-05-05T02-44-15-662Z | Jyoti Nain |  |  |  | Not started | True  -214.02 0 1 0 0 0 18 | Negative Float Critical 2 0 0  |  |  |  |
| 357ae9be-8a60-81aa-bf0a-d7f6fbded763 | 1303 | Import Group 1 - Ent Structure | Development;PTM;Finance;PMO;Europe IT lead;OTC;TESTING | 1.1.1.6.2.1 | 1.1.1.6.2.1 | 2026-05-22 | 2026-05-22 | 2026-05-19 | 0 | 6 | 1302 | 1 | 1 | 357ae9be-8a60-8132-b005-eb9f9f5b3f50 | 357ae9be-8a60-8195-b243-f4ff68715922 | -241.52 | 0 | As Soon As Possible | Auto Scheduled | AMETEK SAP XXL Project Plan Replan MSP Task.csv | AMETEK SAP XXL Project Plan Replan MSP Task.csv__2f0764ccac__2026-05-05T02-44-15-662Z | Bijoykrishna Das | 3 | True |  | Not started | True  -241.52 0 1 0 0 0 26 | Wrong Dependency, Negative Float Critical 5 1 0  |  |  |  |
| 357ae9be-8a60-81aa-bfe2-fb088c08d820 | 2513 | PTP_CM27_Vendor Master as Customer - FLCU01 | PTP | 1.2.4.2.15 | 1.2.4.2.15 | 2026-09-30 | 2026-10-07 | 2026-04-14 | 0 | 5 | 2898 | 0 | 0 |  |  | -89.81 | 0 | As Soon As Possible | Auto Scheduled | AMETEK SAP XXL Project Plan Replan MSP Task.csv | AMETEK SAP XXL Project Plan Replan MSP Task.csv__2f0764ccac__2026-05-05T02-44-15-662Z | Muniraju Surappachari | 176 | True |  | Not started | True  -89.81 0 0 0 0 0 20 | Negative Float Critical 2 0 0  |  | 2515, 2519, 2518, 2517, 2514, 2516 | True |
| 357ae9be-8a60-81ab-9a1d-cc98f21fe4ef | 3018 | Load File Staged and Posted "Ready" | Finance | 1.2.3.2.10.1 | 1.2.3.2.10.1 | 2026-06-09 | 2026-06-09 | 2026-04-09 | 0 | 6 | 3017 | 1 | 1 | 357ae9be-8a60-8131-b8ae-e7b2519f4dca | 357ae9be-8a60-81a4-af78-ce2da00cbf7e | -136.52 | 0 | As Soon As Possible | Auto Scheduled | AMETEK SAP XXL Project Plan Replan MSP Task.csv | AMETEK SAP XXL Project Plan Replan MSP Task.csv__2f0764ccac__2026-05-05T02-44-15-662Z | Kasey Hughes | 61 | True |  | Not started | True  -136.52 0 1 0 0 0 26 | Wrong Dependency, Negative Float Critical 5 1 0  |  |  |  |
| 357ae9be-8a60-81ab-9b37-fbadfe9dd7b1 | 1078 | Error and Defect Mitigation | PTM | 1.2.1.33.4 | 1.2.1.33.4 | 2026-04-20 | 2026-04-20 | 2026-04-20 | 100 | 5 | 707 | 1 | 1 | 357ae9be-8a60-81ee-8501-fc4052ddffe4 | 357ae9be-8a60-81b7-b8cc-c219c0f042fc | 0 | 0 | Start No Earlier Than | Auto Scheduled | AMETEK SAP XXL Project Plan Replan MSP Task.csv | AMETEK SAP XXL Project Plan Replan MSP Task.csv__2f0764ccac__2026-05-05T02-44-15-662Z | Brad Meseck |  |  |  | Done | True  0 0 1 0 0 0 18 | Low 0 0 0 True | 2026-04-17 |  |  |
| 357ae9be-8a60-81ab-a0d4-c25a557ebff9 | 968 | Error and Defect Mitigation | Finance | 1.2.1.9.4 | 1.2.1.9.4 | 2026-04-08 | 2026-04-08 | 2026-04-08 | 100 | 5 | 753 | 1 | 1 | 357ae9be-8a60-81a4-9c9d-dc7e6334c756 | 357ae9be-8a60-81f9-8a2b-d925c8573245 | 0 | 0 | As Soon As Possible | Auto Scheduled | AMETEK SAP XXL Project Plan Replan MSP Task.csv | AMETEK SAP XXL Project Plan Replan MSP Task.csv__2f0764ccac__2026-05-05T02-44-15-662Z | Kasey Hughes |  |  |  | Done | True  0 0 1 0 0 0 18 | Low 0 0 0  |  |  |  |
| 357ae9be-8a60-81ab-a511-f16fda882ccd | 4213 | RTR_CM06_Bank_master | (Unassigned) | 1.2.5.2.9 | 1.2.5.2.9 | 2026-09-24 | 2026-09-29 | 2026-04-09 | 0 | 5 | 4162 | 0 | 0 |  |  | -86.31 | 0 | As Soon As Possible | Auto Scheduled | AMETEK SAP XXL Project Plan Replan MSP Task.csv | AMETEK SAP XXL Project Plan Replan MSP Task.csv__2f0764ccac__2026-05-05T02-44-15-662Z | COULD NOT BE DETERMINED | 173 | True |  | Not started | True  -86.31 0 0 0 0 0 20 | Negative Float Critical 2 0 0  |  | 4215, 4217, 4218, 4214, 4219, 4216 | True |
| 357ae9be-8a60-81ab-a55b-d8cdc46604ce | 270 | Role remediation planning - Can impact role design & Possible of retesting. | TESTING | 1.1.2.4.10 | 1.1.2.4.10 | 2026-05-08 | 2026-05-21 | 2025-12-10 | 0 | 5 | 267 | 1 | 0 | 357ae9be-8a60-81fc-bd71-e60bc3788633 |  | 122 | 122 | Start No Earlier Than | Auto Scheduled | AMETEK SAP XXL Project Plan Replan MSP Task.csv | AMETEK SAP XXL Project Plan Replan MSP Task.csv__2f0764ccac__2026-05-05T02-44-15-662Z | Kishore Kakarla | 162 | True |  | Not started |   122 122 0 0 0 0 8 | Open Finish Medium 1 0 0 True | 2026-04-30 |  |  |
| 357ae9be-8a60-81ab-a95c-e56a5ac42ba7 | 3257 | RTR_CM11_Asset_Master | (Unassigned) | 1.2.3.2.52 | 1.2.3.2.52 | 2026-06-08 | 2026-06-11 | 2026-04-13 | 0 | 5 | 2959 | 0 | 0 |  |  | -18.69 | 0 | As Soon As Possible | Auto Scheduled | AMETEK SAP XXL Project Plan Replan MSP Task.csv | AMETEK SAP XXL Project Plan Replan MSP Task.csv__2f0764ccac__2026-05-05T02-44-15-662Z | COULD NOT BE DETERMINED | 59 | True |  | Not started | True  -18.69 0 0 0 0 0 20 | Negative Float Critical 2 0 0  |  | 3261, 3262, 3258, 3260, 3259, 3263 | True |
| 357ae9be-8a60-81ab-acca-df50ebd8ce68 | 1838 | Post Load Validation | PTP | 1.2.2.2.24.6 | 1.2.2.2.24.6 | 2026-05-20 | 2026-05-20 | 2026-04-15 | 0 | 6 | 1832 | 1 | 1 | 357ae9be-8a60-814d-a9ee-f6004b109629 | 357ae9be-8a60-8147-adb8-d246f38105c1 | -63.77 | 0 | As Soon As Possible | Auto Scheduled | AMETEK SAP XXL Project Plan Replan MSP Task.csv | AMETEK SAP XXL Project Plan Replan MSP Task.csv__2f0764ccac__2026-05-05T02-44-15-662Z | Nevin Varkey | 35 | True | True | Not started | True  -63.77 0 1 1 14 0 31 | Wrong Dependency, Wrong Successor, Negative Float Critical 8 1 1  |  |  |  |
| 357ae9be-8a60-81ab-be7c-e62d6fc7bc76 | 282 | Schedule workshops to collect complete details of ruleset module wise and close the gaps | (Unassigned) | 1.1.2.4.4 | 1.1.2.4.4 | 2025-09-25 | 2025-10-30 | 2025-10-30 | 100 | 5 | 267 | 1 | 1 | 357ae9be-8a60-8178-be83-e2f18afdb588 | 357ae9be-8a60-8165-aae3-ebf2a676ec29 | 0 | 0 | As Soon As Possible | Auto Scheduled | AMETEK SAP XXL Project Plan Replan MSP Task.csv | AMETEK SAP XXL Project Plan Replan MSP Task.csv__2f0764ccac__2026-05-05T02-44-15-662Z | COULD NOT BE DETERMINED |  |  |  | Done | True  0 0 1 0 0 0 18 | Low 0 0 0  |  |  |  |
| 357ae9be-8a60-81ac-82f4-e1753ce99685 | 4325 | Pre Load Validation | PTM | 1.2.5.2.26.2 | 1.2.5.2.26.2 | 2026-09-28 | 2026-09-28 | 2026-04-14 | 0 | 6 | 4323 | 1 | 1 | 357ae9be-8a60-8198-9adc-d0022ff6b6a7 | 357ae9be-8a60-811a-b6e9-c036a459f274 | -43561 | 0 | As Soon As Possible | Auto Scheduled | AMETEK SAP XXL Project Plan Replan MSP Task.csv | AMETEK SAP XXL Project Plan Replan MSP Task.csv__2f0764ccac__2026-05-05T02-44-15-662Z | Eric Heisler | 167 | True |  | Not started | True  -43561 0 1 0 0 0 26 | Negative Float Critical 2 0 0  |  |  |  |
| 357ae9be-8a60-81ac-8c42-edec7d97a293 | 4200 | Load File Staged and Posted "Ready" | Finance | 1.2.5.2.7.1 | 1.2.5.2.7.1 | 2026-09-29 | 2026-09-29 | 2026-04-08 | 0 | 6 | 4199 | 1 | 1 | 357ae9be-8a60-817f-ac30-d49da3420dd8 | 357ae9be-8a60-8103-9bfa-c60d55e284c8 | -680.02 | 0 | As Soon As Possible | Auto Scheduled | AMETEK SAP XXL Project Plan Replan MSP Task.csv | AMETEK SAP XXL Project Plan Replan MSP Task.csv__2f0764ccac__2026-05-05T02-44-15-662Z | Kasey Hughes | 174 | True |  | Not started | True  -680.02 0 1 0 0 0 26 | Negative Float Critical 2 0 0  |  |  |  |
| 357ae9be-8a60-81ac-9a67-f0619838cf44 | 4231 | OTC_CM19_Customer_Master - Bill-To | OTC | 1.2.5.2.12 | 1.2.5.2.12 | 2026-09-24 | 2026-09-24 | 2025-04-16 | 0 | 5 | 4162 | 0 | 0 |  |  | -643.52 | 0 | As Soon As Possible | Auto Scheduled | AMETEK SAP XXL Project Plan Replan MSP Task.csv | AMETEK SAP XXL Project Plan Replan MSP Task.csv__2f0764ccac__2026-05-05T02-44-15-662Z | Anitha Jothi | 526 | True |  | Not started | True  -643.52 0 0 0 0 0 20 | Negative Float, Open Start, Open Finish Critical 4 0 0  |  |  |  |
| 357ae9be-8a60-81ac-a587-fbf566c37062 | 919 | Team Testing | TESTING | 1.3.3.7.7 | 1.3.3.7.7 | 2026-07-13 | 2026-07-24 | 2026-07-17 | 0 | 5 | 915 | 1 | 1 | 357ae9be-8a60-81f6-8b16-c7e49f54caee | 357ae9be-8a60-81c4-afce-ef641568f8d3 | 76 | 0 | As Soon As Possible | Auto Scheduled | AMETEK SAP XXL Project Plan Replan MSP Task.csv | AMETEK SAP XXL Project Plan Replan MSP Task.csv__2f0764ccac__2026-05-05T02-44-15-662Z | Kishore Kakarla | 7 | True |  | Not started | True  76 0 1 1 8 0 31 | Low 0 0 0  |  |  |  |
| 357ae9be-8a60-81ac-a9c8-c388d1e51b6c | 3322 | Simulate Load | Data | 1.2.3.2.68.3 | 1.2.3.2.68.3 | 2026-06-08 | 2026-06-08 | 2026-04-16 | 0 | 6 | 3319 | 1 | 1 | 357ae9be-8a60-8121-8c65-d2805e95b73a | 357ae9be-8a60-8134-ab00-dd64a7314796 | -129.52 | 0 | As Soon As Possible | Auto Scheduled | AMETEK SAP XXL Project Plan Replan MSP Task.csv | AMETEK SAP XXL Project Plan Replan MSP Task.csv__2f0764ccac__2026-05-05T02-44-15-662Z | Jyoti Nain | 53 | True |  | Not started | True  -129.52 0 1 0 0 0 26 | Negative Float Critical 2 0 0  |  |  |  |
| 357ae9be-8a60-81ac-af61-f20e3ac4a88f | 761 | RTR_CM14_Cost Element_Group | Finance | 1.2.1.12 | 1.2.1.12 | 2026-04-15 | 2026-04-22 | 2026-04-15 | 100 | 4 | 425 | 1 | 1 | 357ae9be-8a60-8150-82ad-d0405838525a | 357ae9be-8a60-8149-9a16-d25122eefa27 | 0 | 0 | As Soon As Possible | Auto Scheduled | AMETEK SAP XXL Project Plan Replan MSP Task.csv | AMETEK SAP XXL Project Plan Replan MSP Task.csv__2f0764ccac__2026-05-05T02-44-15-662Z | Kasey Hughes |  |  |  | Done | True  0 0 1 1 6 0 23 | Low 0 0 0  |  | 816, 815, 814 | True |
| 357ae9be-8a60-81ac-b21c-ed8932fb2550 | 910 | Import Group 5 - Config to support dev workbench | Development | 1.1.1.7.2.8 | 1.1.1.7.2.8 | 2026-06-25 | 2026-06-25 | 2026-07-15 | 0 | 6 | 902 | 1 | 1 | 357ae9be-8a60-8137-bdf0-e91de2c32281 | 357ae9be-8a60-8194-8908-c844a9e11012 | -298.02 | 0 | As Soon As Possible | Auto Scheduled | AMETEK SAP XXL Project Plan Replan MSP Task.csv | AMETEK SAP XXL Project Plan Replan MSP Task.csv__2f0764ccac__2026-05-05T02-44-15-662Z | Bijoykrishna Das |  |  |  | Not started | True  -298.02 0 1 0 0 0 18 | Negative Float Critical 2 0 0  |  |  |  |
| 357ae9be-8a60-81ac-b7c8-c7a23609996d | 874 | Import Group 4 - workbench / dev work | Development | 1.1.1.5.2.7 | 1.1.1.5.2.7 | 2026-05-13 | 2026-05-13 | 2026-05-26 | 0 | 6 | 867 | 1 | 1 | 357ae9be-8a60-813e-a17b-d9bee8aec470 | 357ae9be-8a60-818f-be8e-fa86486fe95d | -204.02 | 0 | As Soon As Possible | Auto Scheduled | AMETEK SAP XXL Project Plan Replan MSP Task.csv | AMETEK SAP XXL Project Plan Replan MSP Task.csv__2f0764ccac__2026-05-05T02-44-15-662Z | Bijoykrishna Das |  |  | True | Not started | True  -204.02 0 1 0 0 0 18 | Negative Float Critical 2 0 0  |  |  |  |
| 357ae9be-8a60-81ac-b9ff-c4fc81e94b10 | 1306 | Manual activities group 2 | Development;PTM;Finance;PMO;Europe IT lead;OTC;TESTING | 1.1.1.6.2.4 | 1.1.1.6.2.4 | 2026-05-27 | 2026-05-28 | 2026-05-25 | 0 | 6 | 1302 | 1 | 1 | 357ae9be-8a60-819b-aa7b-c07082e93899 | 357ae9be-8a60-81f8-b36c-f19067de58f3 | -30.19 | 0 | As Soon As Possible | Auto Scheduled | AMETEK SAP XXL Project Plan Replan MSP Task.csv | AMETEK SAP XXL Project Plan Replan MSP Task.csv__2f0764ccac__2026-05-05T02-44-15-662Z | Bijoykrishna Das | 3 | True |  | Not started | True  -30.19 0 1 0 0 0 26 | Negative Float Critical 2 0 0  |  |  |  |
| 357ae9be-8a60-81ac-ba53-fddfa2890917 | 4310 | Extract File | Data | 1.2.5.2.24.1 | 1.2.5.2.24.1 | 2026-09-24 | 2026-09-25 | 2026-04-13 | 0 | 6 | 4309 | 1 | 0 | 357ae9be-8a60-8113-922c-cb8b2d2521a7 |  | -649.27 | 0 | As Soon As Possible | Auto Scheduled | AMETEK SAP XXL Project Plan Replan MSP Task.csv | AMETEK SAP XXL Project Plan Replan MSP Task.csv__2f0764ccac__2026-05-05T02-44-15-662Z | Jyoti Nain | 165 | True |  | Not started | True  -649.27 0 0 0 0 0 20 | Negative Float, Open Finish Critical 3 0 0  |  |  |  |
| 357ae9be-8a60-81ac-be91-c36c956026cb | 3274 | Post Load Validation | PTM | 1.2.3.2.54.6 | 1.2.3.2.54.6 | 2026-06-12 | 2026-06-15 | 2026-04-17 | 0 | 6 | 3268 | 1 | 0 | 357ae9be-8a60-812d-b600-e5a7b358807f |  | -159.27 | 0 | As Soon As Possible | Auto Scheduled | AMETEK SAP XXL Project Plan Replan MSP Task.csv | AMETEK SAP XXL Project Plan Replan MSP Task.csv__2f0764ccac__2026-05-05T02-44-15-662Z | Brad Meseck | 59 | True |  | Not started | True  -159.27 0 0 0 0 0 20 | Negative Float, Open Finish Critical 3 0 0  |  |  |  |
| 357ae9be-8a60-81ad-850f-fb363e0cc28e | 1166 | Run ALE Transaction to QS5 from DS4 130 | PTM | 1.2.1.45.1 | 1.2.1.45.1 | 2026-04-17 | 2026-04-17 | 2026-04-17 | 100 | 5 | 945 | 1 | 1 | 357ae9be-8a60-8143-a595-c791f457bf85 | 357ae9be-8a60-8185-96d2-c48d3fbd6472 | 0 | 0 | As Soon As Possible | Auto Scheduled | AMETEK SAP XXL Project Plan Replan MSP Task.csv | AMETEK SAP XXL Project Plan Replan MSP Task.csv__2f0764ccac__2026-05-05T02-44-15-662Z | Eric Heisler |  |  |  | Done | True  0 0 1 0 0 0 18 | Low 0 0 0  |  |  |  |
| 357ae9be-8a60-81ad-9412-ef57bd08d57e | 1728 | Post Load Validation | Finance | 1.2.2.2.7.6 | 1.2.2.2.7.6 | 2026-05-22 | 2026-05-25 | 2026-04-09 | 0 | 6 | 1722 | 1 | 0 | 357ae9be-8a60-81c5-9a11-c820c15a1e93 |  | -38.02 | 0 | As Soon As Possible | Auto Scheduled | AMETEK SAP XXL Project Plan Replan MSP Task.csv | AMETEK SAP XXL Project Plan Replan MSP Task.csv__2f0764ccac__2026-05-05T02-44-15-662Z | Kasey Hughes | 46 | True |  | Not started | True  -38.02 0 0 0 0 0 20 | Negative Float, Open Finish Critical 3 0 0  |  |  |  |
| 357ae9be-8a60-81ad-94af-fb9b900380a0 | 1935 | VC_Dependency Nets | (Unassigned) | 1.2.2.2.41 | 1.2.2.2.41 | 2026-05-21 | 2026-05-22 | 2026-04-16 | 0 | 5 | 2800 | 0 | 0 |  |  | -3.78 | 0 | As Soon As Possible | Auto Scheduled | AMETEK SAP XXL Project Plan Replan MSP Task.csv | AMETEK SAP XXL Project Plan Replan MSP Task.csv__2f0764ccac__2026-05-05T02-44-15-662Z | COULD NOT BE DETERMINED | 36 | True |  | Not started | True  -3.78 0 0 0 0 0 20 | Negative Float High 2 0 0  |  | 1937, 1936 | True |
| 357ae9be-8a60-81ad-9558-f0f3ba0cc558 | 2467 | RTR_CM12_Activity Rates | (Unassigned) | 1.2.4.2.8 | 1.2.4.2.8 | 2026-09-25 | 2026-09-28 | 2026-04-08 | 0 | 5 | 2898 | 0 | 0 |  |  | -82.81 | 0 | As Soon As Possible | Auto Scheduled | AMETEK SAP XXL Project Plan Replan MSP Task.csv | AMETEK SAP XXL Project Plan Replan MSP Task.csv__2f0764ccac__2026-05-05T02-44-15-662Z | COULD NOT BE DETERMINED | 173 | True |  | Not started | True  -82.81 0 0 0 0 0 20 | Negative Float Critical 2 0 0  |  | 2473, 2471, 2469, 2472, 2470, 2468 | True |
| 357ae9be-8a60-81ad-97b0-c0d0235bb849 | 4463 | Simulate Load | Data | 1.2.5.2.52.3 | 1.2.5.2.52.3 | 2026-09-24 | 2026-09-30 | 2026-04-10 | 0 | 6 | 4460 | 1 | 1 | 357ae9be-8a60-8116-9d9b-ed7d86ca6356 | 357ae9be-8a60-81e1-bb8c-eb223e9a2b07 | -694.52 | 0 | Finish No Earlier Than | Auto Scheduled | AMETEK SAP XXL Project Plan Replan MSP Task.csv | AMETEK SAP XXL Project Plan Replan MSP Task.csv__2f0764ccac__2026-05-05T02-44-15-662Z | Jyoti Nain | 173 | True |  | Not started | True  -694.52 0 1 0 0 0 26 | Negative Float Critical 2 0 0 True | 2026-04-20 |  |  |
| 357ae9be-8a60-81ad-9c36-cdd8833f2ebf | 2745 | GTS - Vendors initial load from S4 (Run Interface) | (Unassigned) | 1.2.4.2.57 | 1.2.4.2.57 | 2026-09-24 | 2026-09-25 | 2026-04-15 | 0 | 5 | 2898 | 0 | 0 |  |  | -81.69 | 0 | As Soon As Possible | Auto Scheduled | AMETEK SAP XXL Project Plan Replan MSP Task.csv | AMETEK SAP XXL Project Plan Replan MSP Task.csv__2f0764ccac__2026-05-05T02-44-15-662Z | COULD NOT BE DETERMINED | 163 | True |  | Not started | True  -81.69 0 0 0 0 0 20 | Negative Float Critical 2 0 0  |  | 2747, 2746 | True |
| 357ae9be-8a60-81ad-9f64-df16df8ab136 | 1812 | Load | PTP | 1.2.2.2.20.5 | 1.2.2.2.20.5 | 2026-05-18 | 2026-05-18 | 2026-04-15 | 0 | 6 | 1807 | 1 | 1 | 357ae9be-8a60-8127-9dd9-eb57ce65bb26 | 357ae9be-8a60-81fa-ad59-c999a2973d64 | -11.52 | 0 | As Soon As Possible | Auto Scheduled | AMETEK SAP XXL Project Plan Replan MSP Task.csv | AMETEK SAP XXL Project Plan Replan MSP Task.csv__2f0764ccac__2026-05-05T02-44-15-662Z | Nevin Varkey | 33 | True | True | Not started | True  -11.52 0 1 0 0 0 26 | Wrong Dependency, Negative Float Critical 5 1 0  |  |  |  |
| 357ae9be-8a60-81ad-a0c5-ca29d8c150ef | 1248 | Simulate Load | Data | 1.2.1.24.3 | 1.2.1.24.3 | 2026-04-13 | 2026-04-13 | 2026-04-13 | 100 | 5 | 1245 | 1 | 1 | 357ae9be-8a60-8186-a360-fa33fe377d31 | 357ae9be-8a60-810d-8813-eba71e9a6e9c | 0 | 0 | As Soon As Possible | Auto Scheduled | AMETEK SAP XXL Project Plan Replan MSP Task.csv | AMETEK SAP XXL Project Plan Replan MSP Task.csv__2f0764ccac__2026-05-05T02-44-15-662Z | Jyoti Nain |  |  |  | Done | True  0 0 1 0 0 0 18 | Low 0 0 0  |  |  |  |
| 357ae9be-8a60-81ad-ad2a-c071bd1eb086 | 1788 | Pre Load Validation | PTP | 1.2.2.2.17.2 | 1.2.2.2.17.2 | 2026-05-25 | 2026-05-25 | 2026-04-10 | 0 | 6 | 1786 | 1 | 1 | 357ae9be-8a60-810d-b302-cdf5fa9f1423 | 357ae9be-8a60-816c-823c-c1b9c1b61c3b | -65.02 | 0 | As Soon As Possible | Auto Scheduled | AMETEK SAP XXL Project Plan Replan MSP Task.csv | AMETEK SAP XXL Project Plan Replan MSP Task.csv__2f0764ccac__2026-05-05T02-44-15-662Z | Nevin Varkey | 45 | True |  | Not started | True  -65.02 0 1 0 0 0 26 | Wrong Dependency, Wrong Successor, Negative Float Critical 8 1 1  |  |  |  |
| 357ae9be-8a60-81ad-b373-e38522e3a0b8 | 3220 | Post Load Validation | PTM | 1.2.3.2.44.2 | 1.2.3.2.44.2 | 2026-06-12 | 2026-06-15 | 2026-04-17 | 0 | 6 | 3218 | 1 | 0 | 357ae9be-8a60-8143-a2d3-eb17388481d4 |  | -160.27 | 0 | As Soon As Possible | Auto Scheduled | AMETEK SAP XXL Project Plan Replan MSP Task.csv | AMETEK SAP XXL Project Plan Replan MSP Task.csv__2f0764ccac__2026-05-05T02-44-15-662Z | Eric Heisler | 59 | True |  | Not started | True  -160.27 0 0 0 0 0 20 | Negative Float, Open Finish Critical 3 0 0  |  |  |  |
| 357ae9be-8a60-81ad-bd49-c579af3a8984 | 4354 | Simulate Load | Data | 1.2.5.2.30.3 | 1.2.5.2.30.3 | 2026-09-29 | 2026-10-01 | 2026-04-16 | 0 | 6 | 4351 | 1 | 1 | 357ae9be-8a60-81aa-a9b6-c0806fe010f5 | 357ae9be-8a60-8194-8a1b-cb2eb0e8367b | -700.39 | 0 | Finish No Earlier Than | Auto Scheduled | AMETEK SAP XXL Project Plan Replan MSP Task.csv | AMETEK SAP XXL Project Plan Replan MSP Task.csv__2f0764ccac__2026-05-05T02-44-15-662Z | Jyoti Nain | 168 | True |  | Not started | True  -700.39 0 1 0 0 0 26 | Negative Float Critical 2 0 0 True | 2026-04-17 |  |  |
| 357ae9be-8a60-81ae-8755-ea97769bbad7 | 2015 | Post Load Validation | OTC | 1.2.2.2.59.2 | 1.2.2.2.59.2 | 2026-05-25 | 2026-05-26 | 2026-04-16 | 0 | 6 | 2013 | 1 | 1 | 357ae9be-8a60-8113-8f8e-ebedd8499781 | 357ae9be-8a60-819d-a28d-eefb005070d1 | -70.27 | 0 | As Soon As Possible | Auto Scheduled | AMETEK SAP XXL Project Plan Replan MSP Task.csv | AMETEK SAP XXL Project Plan Replan MSP Task.csv__2f0764ccac__2026-05-05T02-44-15-662Z | James VanRiper | 40 | True |  | Not started | True  -70.27 0 1 0 0 0 26 | Negative Float Critical 2 0 0  |  |  |  |
| 357ae9be-8a60-81ae-8bec-f4a4f60b27cf | 3237 | Post Load Validation | PTM | 1.2.3.2.47.6 | 1.2.3.2.47.6 | 2026-06-17 | 2026-06-17 | 2026-04-20 | 0 | 6 | 3231 | 1 | 0 | 357ae9be-8a60-818d-b3b7-e81cfab2aacb |  | -178.27 | 0 | As Soon As Possible | Auto Scheduled | AMETEK SAP XXL Project Plan Replan MSP Task.csv | AMETEK SAP XXL Project Plan Replan MSP Task.csv__2f0764ccac__2026-05-05T02-44-15-662Z | Eric Heisler | 58 | True |  | Not started | True  -178.27 0 0 0 0 0 20 | Wrong Dependency, Negative Float, Open Finish Critical 6 1 0  |  |  |  |
| 357ae9be-8a60-81ae-9ea8-da641547b868 | 1105 | Post Load Validation | PTM | 1.2.1.48.6 | 1.2.1.48.6 | 2026-04-17 | 2026-04-17 | 2026-04-20 | 100 | 5 | 714 | 1 | 0 | 357ae9be-8a60-814f-a6ec-da71a065b880 |  | 0 | 0 | As Soon As Possible | Auto Scheduled | AMETEK SAP XXL Project Plan Replan MSP Task.csv | AMETEK SAP XXL Project Plan Replan MSP Task.csv__2f0764ccac__2026-05-05T02-44-15-662Z | Eric Heisler |  |  |  | Done | True  0 0 0 0 0 0 12 | Wrong Dependency High 3 1 0  |  |  |  |
| 357ae9be-8a60-81ae-9eb3-c1a391ae1d6d | 4219 | Post Load Validation | Finance | 1.2.5.2.9.6 | 1.2.5.2.9.6 | 2026-09-25 | 2026-09-25 | 2026-04-09 | 0 | 6 | 4213 | 1 | 2 | 357ae9be-8a60-8143-b520-ecb1941edd8d | 357ae9be-8a60-8110-8af2-d89abfe150d9, 357ae9be-8a60-8126-92e0-ff77e9612194 | -690.52 | 0 | Finish No Earlier Than | Auto Scheduled | AMETEK SAP XXL Project Plan Replan MSP Task.csv | AMETEK SAP XXL Project Plan Replan MSP Task.csv__2f0764ccac__2026-05-05T02-44-15-662Z | Kasey Hughes | 169 | True |  | Not started | True  -690.52 0 0 0 0 0 24 | Negative Float Critical 2 0 0 True | 2026-04-14 |  |  |
| 357ae9be-8a60-81ae-a08a-c5c91b22a335 | 1313 | Create Migration Data Project in DMC | Data | 1.1.1.6.3.2 | 1.1.1.6.3.2 | 2026-05-29 | 2026-05-29 | 2026-05-28 | 0 | 6 | 1311 | 1 | 1 | 357ae9be-8a60-813f-9328-c0d8dc770d62 | 357ae9be-8a60-81b1-ba6c-d1f3754e777f | -241.52 | 0 | As Soon As Possible | Auto Scheduled | AMETEK SAP XXL Project Plan Replan MSP Task.csv | AMETEK SAP XXL Project Plan Replan MSP Task.csv__2f0764ccac__2026-05-05T02-44-15-662Z | Jyoti Nain | 1 | True |  | Not started | True  -241.52 0 1 0 0 0 26 | Negative Float Critical 2 0 0  |  |  |  |
| 357ae9be-8a60-81ae-a5c6-d63e40b41413 | 1980 | Manual File Staged and Posted "Ready" | PTP | 1.2.2.2.51.1 | 1.2.2.2.51.1 | 2026-05-19 | 2026-05-19 | 2026-04-14 | 0 | 6 | 1979 | 2 | 0 | 357ae9be-8a60-811c-a632-c761fdfa4cc5, 357ae9be-8a60-8174-90b9-f9f0b93f1546 |  | -541 | 0 | As Soon As Possible | Auto Scheduled | AMETEK SAP XXL Project Plan Replan MSP Task.csv | AMETEK SAP XXL Project Plan Replan MSP Task.csv__2f0764ccac__2026-05-05T02-44-15-662Z | Nevin Varkey | 35 | True | True | Not started | True  -541 0 0 0 0 1 20 | Wrong Dependency, Negative Float, Open Finish Critical 6 2 0  |  |  |  |
| 357ae9be-8a60-81ae-ae39-d6a19719f1a0 | 4183 | Simulate Load | Data | 1.2.5.2.4.3 | 1.2.5.2.4.3 | 2026-09-25 | 2026-09-25 | 2026-04-07 | 0 | 6 | 4180 | 1 | 1 | 357ae9be-8a60-81ea-9d48-d55c33a537fe | 357ae9be-8a60-8147-a31a-fb6c6058faaf | -677.77 | 0 | As Soon As Possible | Auto Scheduled | AMETEK SAP XXL Project Plan Replan MSP Task.csv | AMETEK SAP XXL Project Plan Replan MSP Task.csv__2f0764ccac__2026-05-05T02-44-15-662Z | Jyoti Nain | 171 | True |  | Not started | True  -677.77 0 1 0 0 0 26 | Negative Float Critical 2 0 0  |  |  |  |
| 357ae9be-8a60-81ae-b92b-e52f8d41eea2 | 3338 | System Setup | (Unassigned) | 1.1.1.7.1 | 1.1.1.7.1 | 2026-06-08 | 2026-06-17 | 2026-06-17 | 0 | 5 | 884 | 1 | 1 | 357ae9be-8a60-811a-963c-cb0eae80b7e7 | 357ae9be-8a60-8137-a5b2-e958ef031700 | -35.25 | 0 | As Soon As Possible | Auto Scheduled | AMETEK SAP XXL Project Plan Replan MSP Task.csv | AMETEK SAP XXL Project Plan Replan MSP Task.csv__2f0764ccac__2026-05-05T02-44-15-662Z | COULD NOT BE DETERMINED |  |  |  | Not started | True  -35.25 0 1 0 0 0 18 | Negative Float Critical 2 0 0  |  | 888, 890, 894, 893, 889, 892, 891, 895, 885, 897, 901, 900, 899, 896, 898 | True |
| 357ae9be-8a60-81ae-bb72-e6b8211186ac | 1699 | Load | Data | 1.2.2.2.3.5 | 1.2.2.2.3.5 | 2026-05-21 | 2026-05-21 | 2026-04-08 | 0 | 6 | 1694 | 1 | 1 | 357ae9be-8a60-8183-b6ed-cbc661660177 | 357ae9be-8a60-812a-8ff8-e70b785cc280 | -76.52 | 0 | As Soon As Possible | Auto Scheduled | AMETEK SAP XXL Project Plan Replan MSP Task.csv | AMETEK SAP XXL Project Plan Replan MSP Task.csv__2f0764ccac__2026-05-05T02-44-15-662Z | Jyoti Nain | 43 | True |  | Not started | True  -76.52 0 1 0 0 0 26 | Negative Float Critical 2 0 0  |  |  |  |
| 357ae9be-8a60-81ae-bc4d-e122a0d42372 | 3384 | Release Transports to Client | (Unassigned) | 1.1.1.8.2 | 1.1.1.8.2 | 2026-09-16 | 2026-09-23 | 2026-07-14 | 0 | 5 | 3367 | 1 | 0 | 357ae9be-8a60-813d-ba6d-cbecad728247 |  | -90.75 | 0 | As Soon As Possible | Auto Scheduled | AMETEK SAP XXL Project Plan Replan MSP Task.csv | AMETEK SAP XXL Project Plan Replan MSP Task.csv__2f0764ccac__2026-05-05T02-44-15-662Z | COULD NOT BE DETERMINED | 71 | True |  | Not started | True  -90.75 0 0 0 0 0 20 | Wrong Dependency, Negative Float Critical 5 1 0  |  | 3386, 3388, 3387, 3389, 3392, 3390, 3385, 3391 | True |
| 357ae9be-8a60-81af-8373-c4a212e21f7e | 1187 | Post Load Validation | OTC | 1.2.1.63.2 | 1.2.1.63.2 | 2026-04-16 | 2026-04-16 | 2026-04-16 | 100 | 5 | 706 | 1 | 0 | 357ae9be-8a60-812f-83a1-d04c21737d53 |  | 0 | 0 | As Soon As Possible | Auto Scheduled | AMETEK SAP XXL Project Plan Replan MSP Task.csv | AMETEK SAP XXL Project Plan Replan MSP Task.csv__2f0764ccac__2026-05-05T02-44-15-662Z | James VanRiper |  |  |  | Done | True  0 0 0 0 0 0 12 | Low 0 0 0  |  |  |  |
| 357ae9be-8a60-81af-89dd-d525f332804f | 1708 | Load | Data | 1.2.2.2.4.5 | 1.2.2.2.4.5 | 2026-05-19 | 2026-05-19 | 2026-04-07 | 0 | 6 | 1703 | 1 | 1 | 357ae9be-8a60-817a-9c9c-ebab91fc7869 | 357ae9be-8a60-8101-8ec8-f2861b9b8301 | -63.52 | 0 | As Soon As Possible | Auto Scheduled | AMETEK SAP XXL Project Plan Replan MSP Task.csv | AMETEK SAP XXL Project Plan Replan MSP Task.csv__2f0764ccac__2026-05-05T02-44-15-662Z | Jyoti Nain | 42 | True | True | Not started | True  -63.52 0 1 0 0 0 26 | Negative Float Critical 2 0 0  |  |  |  |
| 357ae9be-8a60-81af-8a8a-c45cecf52a2e | 663 | Import Group 5 - Config to support dev workbench | Development | 1.1.1.4.20 | 1.1.1.4.20 | 2026-04-03 | 2026-04-03 | 2026-04-03 | 100 | 5 | 88 | 1 | 1 | 357ae9be-8a60-81a4-8da8-f0ce83bfef06 | 357ae9be-8a60-8161-a7ee-c6935d18bcd8 | 0 | 0 | As Soon As Possible | Auto Scheduled | AMETEK SAP XXL Project Plan Replan MSP Task.csv | AMETEK SAP XXL Project Plan Replan MSP Task.csv__2f0764ccac__2026-05-05T02-44-15-662Z | Bijoykrishna Das |  |  |  | Done | True  0 0 1 0 0 0 18 | Low 0 0 0  |  |  |  |
| 357ae9be-8a60-81af-8eaf-f5df41c9049a | 2787 | Error and Defect Mitigation | Finance | 1.2.4.2.68.4 | 1.2.4.2.68.4 | 2026-09-24 | 2026-09-24 | 2026-04-17 | 0 | 6 | 2783 | 1 | 1 | 357ae9be-8a60-81e5-814b-f16d9b43c2fe | 357ae9be-8a60-8110-905b-c2eddbac3e85 | -651.5 | 0 | As Soon As Possible | Auto Scheduled | AMETEK SAP XXL Project Plan Replan MSP Task.csv | AMETEK SAP XXL Project Plan Replan MSP Task.csv__2f0764ccac__2026-05-05T02-44-15-662Z | Kasey Hughes | 160 | True |  | Not started | True  -651.5 0 1 0 0 0 26 | Negative Float Critical 2 0 0  |  |  |  |
| 357ae9be-8a60-81af-92d3-df75c137a1bf | 4483 | Post Load Validation | OTC | 1.2.5.2.56.2 | 1.2.5.2.56.2 | 2026-09-24 | 2026-09-24 | 2026-04-10 | 0 | 6 | 4481 | 1 | 0 | 357ae9be-8a60-811c-8082-f998f4c3c1e0 |  | -643.52 | 0 | Finish No Earlier Than | Auto Scheduled | AMETEK SAP XXL Project Plan Replan MSP Task.csv | AMETEK SAP XXL Project Plan Replan MSP Task.csv__2f0764ccac__2026-05-05T02-44-15-662Z | James VanRiper | 167 | True |  | Not started | True  -643.52 0 0 0 0 0 20 | Negative Float, Open Finish Critical 3 0 0 True | 2026-04-20 |  |  |
| 357ae9be-8a60-81af-9442-ff22eb92697e | 3124 | Error and Defect Mitigation | PTM | 1.2.3.2.26.4 | 1.2.3.2.26.4 | 2026-06-10 | 2026-06-10 | 2026-04-15 | 0 | 6 | 3120 | 1 | 1 | 357ae9be-8a60-81b4-a7cd-f977cbce7c8d | 357ae9be-8a60-81ec-845b-ebce47d0a21f | -190.27 | 0 | As Soon As Possible | Auto Scheduled | AMETEK SAP XXL Project Plan Replan MSP Task.csv | AMETEK SAP XXL Project Plan Replan MSP Task.csv__2f0764ccac__2026-05-05T02-44-15-662Z | Eric Heisler | 56 | True |  | Not started | True  -190.27 0 1 0 0 0 26 | Negative Float Critical 2 0 0  |  |  |  |
| 357ae9be-8a60-81af-9699-c8a375eaed29 | 250 | Requirement gathering | (Unassigned) | 1.1.2.1.2 | 1.1.2.1.2 | 2025-02-17 | 2025-08-15 | 2025-08-15 | 100 | 5 | 299 | 0 | 1 |  | 357ae9be-8a60-8166-9dbf-e1966cc91c01 | 0 | 0 | Start No Earlier Than | Auto Scheduled | AMETEK SAP XXL Project Plan Replan MSP Task.csv | AMETEK SAP XXL Project Plan Replan MSP Task.csv__2f0764ccac__2026-05-05T02-44-15-662Z | COULD NOT BE DETERMINED |  |  |  | Done | True  0 0 0 0 0 0 14 | Low 0 0 0 True | 2025-02-16 |  |  |
| 357ae9be-8a60-81af-977e-ee2c867478d4 | 2829 | Open AR | (Unassigned) | 1.2.2.4.2 | 1.2.2.4.2 | 2026-10-09 | 2026-10-09 | 2026-10-09 | 0 | 5 | 2801 | 1 | 1 | 357ae9be-8a60-81e3-b4fa-f1222ef8b771 | 357ae9be-8a60-812c-b36d-c2eccfdb2868 | -726 | 0 | As Soon As Possible | Auto Scheduled | AMETEK SAP XXL Project Plan Replan MSP Task.csv | AMETEK SAP XXL Project Plan Replan MSP Task.csv__2f0764ccac__2026-05-05T02-44-15-662Z | COULD NOT BE DETERMINED |  |  |  | Not started | True  -726 0 1 0 0 0 18 | Wrong Dependency, Negative Float Critical 5 1 0  |  |  |  |
| 357ae9be-8a60-81af-9c62-d637a5647846 | 3246 | OTC_CM21_CMIR | OTC | 1.2.3.2.50 | 1.2.3.2.50 | 2026-06-18 | 2026-06-18 | 2026-04-21 | 0 | 5 | 2959 | 0 | 0 |  |  | -23.41 | 0 | As Soon As Possible | Auto Scheduled | AMETEK SAP XXL Project Plan Replan MSP Task.csv | AMETEK SAP XXL Project Plan Replan MSP Task.csv__2f0764ccac__2026-05-05T02-44-15-662Z | Anitha Jothi | 58 | True |  | Not started | True  -23.41 0 0 0 0 0 20 | Negative Float Critical 2 0 0  |  | 3252, 3247, 3251, 3249, 3248, 3250 | True |
| 357ae9be-8a60-81af-a53d-e2aa60f48337 | 3213 | Run ALE Transaction to QS5 from DS4 130 | PTM | 1.2.3.2.42.1 | 1.2.3.2.42.1 | 2026-06-11 | 2026-06-11 | 2026-04-16 | 0 | 6 | 3212 | 1 | 1 | 357ae9be-8a60-8135-baca-d43c05d02758 | 357ae9be-8a60-818f-a88e-eec76ded7930 | -166.02 | 0 | As Soon As Possible | Auto Scheduled | AMETEK SAP XXL Project Plan Replan MSP Task.csv | AMETEK SAP XXL Project Plan Replan MSP Task.csv__2f0764ccac__2026-05-05T02-44-15-662Z | Eric Heisler | 56 | True |  | Not started | True  -166.02 0 1 0 0 0 26 | Wrong Dependency, Negative Float Critical 5 1 0  |  |  |  |
| 357ae9be-8a60-81af-a5ac-ddede7c45166 | 2577 | PTP_CM26_Material_Master - SERV - Service Materials | PTP | 1.2.4.2.25 | 1.2.4.2.25 | 2026-09-25 | 2026-09-29 | 2026-04-15 | 0 | 5 | 2898 | 0 | 0 |  |  | -83.41 | 0 | As Soon As Possible | Auto Scheduled | AMETEK SAP XXL Project Plan Replan MSP Task.csv | AMETEK SAP XXL Project Plan Replan MSP Task.csv__2f0764ccac__2026-05-05T02-44-15-662Z | Muniraju Surappachari | 167 | True |  | Not started | True  -83.41 0 0 0 0 0 20 | Negative Float Critical 2 0 0  |  | 2583, 2582, 2581, 2578, 2579, 2580 | True |
| 357ae9be-8a60-81af-b007-cc77718943cb | 4495 | Post Load Validation | OTC | 1.2.5.2.60.2 | 1.2.5.2.60.2 | 2026-09-24 | 2026-09-24 | 2026-04-06 | 0 | 6 | 4493 | 1 | 0 | 357ae9be-8a60-81c2-89c4-f129b4ae5c54 |  | -643.52 | 0 | As Soon As Possible | Auto Scheduled | AMETEK SAP XXL Project Plan Replan MSP Task.csv | AMETEK SAP XXL Project Plan Replan MSP Task.csv__2f0764ccac__2026-05-05T02-44-15-662Z | James VanRiper | 171 | True |  | Not started | True  -643.52 0 0 0 0 0 20 | Negative Float, Open Finish Critical 3 0 0  |  |  |  |
| 357ae9be-8a60-81af-bc4a-e7d232581ca1 | 1919 | Simulate Load | Data | 1.2.2.2.36.3 | 1.2.2.2.36.3 | 2026-05-26 | 2026-05-26 | 2026-04-20 | 0 | 6 | 1916 | 1 | 1 | 357ae9be-8a60-815c-8c5a-f63e5756be43 | 357ae9be-8a60-8114-987c-ec5e2f105b71 | -53.77 | 0 | As Soon As Possible | Auto Scheduled | AMETEK SAP XXL Project Plan Replan MSP Task.csv | AMETEK SAP XXL Project Plan Replan MSP Task.csv__2f0764ccac__2026-05-05T02-44-15-662Z | Jyoti Nain | 36 | True |  | Not started | True  -53.77 0 1 0 0 0 26 | Negative Float Critical 2 0 0  |  |  |  |
| 357ae9be-8a60-81b0-8751-d8d632a9bade | 2027 | Post Load Validation | OTC | 1.2.2.2.63.2 | 1.2.2.2.63.2 | 2026-05-28 | 2026-05-29 | 2026-04-16 | 0 | 6 | 2025 | 1 | 0 | 357ae9be-8a60-817d-9ff6-c59e3efb8777 |  | -70.27 | 0 | As Soon As Possible | Auto Scheduled | AMETEK SAP XXL Project Plan Replan MSP Task.csv | AMETEK SAP XXL Project Plan Replan MSP Task.csv__2f0764ccac__2026-05-05T02-44-15-662Z | James VanRiper | 43 | True |  | Not started | True  -70.27 0 0 0 0 0 20 | Negative Float, Open Finish Critical 3 0 0  |  |  |  |
| 357ae9be-8a60-81b0-90a1-ea8f91d653f6 | 2508 | Load | Data | 1.2.4.2.14.5 | 1.2.4.2.14.5 | 2026-09-30 | 2026-09-30 | 2026-04-10 | 0 | 6 | 2503 | 1 | 2 | 357ae9be-8a60-8127-9b9e-df2003c82808 | 357ae9be-8a60-8194-8b31-ebdfccfeb50e, 357ae9be-8a60-817d-8c66-d73c1a869d3c | -718.5 | 0 | As Soon As Possible | Auto Scheduled | AMETEK SAP XXL Project Plan Replan MSP Task.csv | AMETEK SAP XXL Project Plan Replan MSP Task.csv__2f0764ccac__2026-05-05T02-44-15-662Z | Jyoti Nain | 173 | True |  | Not started | True  -718.5 0 2 2 767 0 37 | Wrong Successor, Negative Float Critical 5 0 2  |  |  |  |
| 357ae9be-8a60-81b0-967a-c77e5905b210 | 3249 | Simulate Load | Data | 1.2.3.2.50.3 | 1.2.3.2.50.3 | 2026-06-18 | 2026-06-18 | 2026-04-20 | 0 | 6 | 3246 | 1 | 1 | 357ae9be-8a60-81b2-ba35-fbadd37c1c73 | 357ae9be-8a60-81ba-ae20-fcc76a803442 | -187.27 | 0 | As Soon As Possible | Auto Scheduled | AMETEK SAP XXL Project Plan Replan MSP Task.csv | AMETEK SAP XXL Project Plan Replan MSP Task.csv__2f0764ccac__2026-05-05T02-44-15-662Z | Jyoti Nain | 59 | True |  | Not started | True  -187.27 0 1 0 0 0 26 | Negative Float Critical 2 0 0  |  |  |  |
| 357ae9be-8a60-81b0-99fc-f3b06d5b962d | 643 | Manual Technical Tasks | Basis | 1.1.1.4.11 | 1.1.1.4.11 | 2026-02-05 | 2026-02-06 | 2026-02-06 | 100 | 5 | 88 | 1 | 1 | 357ae9be-8a60-814d-847f-e185ce7e42a7 | 357ae9be-8a60-816b-a234-f41a5d72c961 | 0 | 0 | As Soon As Possible | Auto Scheduled | AMETEK SAP XXL Project Plan Replan MSP Task.csv | AMETEK SAP XXL Project Plan Replan MSP Task.csv__2f0764ccac__2026-05-05T02-44-15-662Z | Lokchetan Meghavath |  |  |  | Done | True  0 0 1 0 0 0 18 | Low 0 0 0  |  |  |  |
| 357ae9be-8a60-81b0-a46f-f586265ab10c | 2470 | Simulate Load | Data | 1.2.4.2.8.3 | 1.2.4.2.8.3 | 2026-09-25 | 2026-09-28 | 2026-04-08 | 0 | 6 | 2467 | 1 | 1 | 357ae9be-8a60-815c-8372-f9fec60c7a83 | 357ae9be-8a60-8141-8898-d05c92d4cdf5 | -662.5 | 0 | As Soon As Possible | Auto Scheduled | AMETEK SAP XXL Project Plan Replan MSP Task.csv | AMETEK SAP XXL Project Plan Replan MSP Task.csv__2f0764ccac__2026-05-05T02-44-15-662Z | Jyoti Nain | 173 | True |  | Not started | True  -662.5 0 1 0 0 0 26 | Negative Float Critical 2 0 0  |  |  |  |
| 357ae9be-8a60-81b0-b0d9-c7be56ac13f3 | 264 | Workflow setup | (Unassigned) | 1.1.2.3 | 1.1.2.3 | 2026-03-24 | 2026-04-06 | 2026-04-06 | 100 | 4 | 248 | 0 | 0 |  |  | 0 | 0 | As Soon As Possible | Auto Scheduled | AMETEK SAP XXL Project Plan Replan MSP Task.csv | AMETEK SAP XXL Project Plan Replan MSP Task.csv__2f0764ccac__2026-05-05T02-44-15-662Z | COULD NOT BE DETERMINED |  |  |  | Done | True  0 0 0 0 0 0 12 | Low 0 0 0  |  | 265, 266 | True |
| 357ae9be-8a60-81b0-b625-f7febfa213b2 | 715 | PTM_CM55_Class assignment to materials | PTM | 1.2.1.55 | 1.2.1.55 | 2026-04-16 | 2026-04-17 | 2026-04-17 | 100 | 4 | 425 | 0 | 0 |  |  | 0 | 0 | As Soon As Possible | Auto Scheduled | AMETEK SAP XXL Project Plan Replan MSP Task.csv | AMETEK SAP XXL Project Plan Replan MSP Task.csv__2f0764ccac__2026-05-05T02-44-15-662Z | Brad Meseck |  |  |  | Done | True  0 0 0 0 0 0 12 | Low 0 0 0  |  | 1135, 1137, 1136, 1134, 1133, 1138 | True |
| 357ae9be-8a60-81b0-bb0f-c405ccc2c927 | 1033 | Pre Load Validation | PTM | 1.2.1.27.2 | 1.2.1.27.2 | 2026-04-14 | 2026-04-14 | 2026-04-14 | 100 | 5 | 749 | 1 | 1 | 357ae9be-8a60-81c6-9147-c12703a93283 | 357ae9be-8a60-81f4-aab5-c9f63036bcec | 0 | 0 | As Soon As Possible | Auto Scheduled | AMETEK SAP XXL Project Plan Replan MSP Task.csv | AMETEK SAP XXL Project Plan Replan MSP Task.csv__2f0764ccac__2026-05-05T02-44-15-662Z | Eric Heisler |  |  |  | Done | True  0 0 1 0 0 0 18 | Wrong Dependency High 3 1 0  |  |  |  |
| 357ae9be-8a60-81b1-8147-eb282c9c9e93 | 4387 | Load File Staged and Posted "Ready" | PTM | 1.2.5.2.35.1 | 1.2.5.2.35.1 | 2026-09-30 | 2026-10-01 | 2026-04-17 | 0 | 6 | 4386 | 1 | 1 | 357ae9be-8a60-8127-aeaa-d9f2f6a8b729 | 357ae9be-8a60-813c-aa67-e55287381e4f | -41746 | 0 | As Soon As Possible | Auto Scheduled | AMETEK SAP XXL Project Plan Replan MSP Task.csv | AMETEK SAP XXL Project Plan Replan MSP Task.csv__2f0764ccac__2026-05-05T02-44-15-662Z | Brad Meseck | 167 | True |  | Not started | True  -41746 0 1 0 0 0 26 | Negative Float Critical 2 0 0  |  |  |  |

| id | uid | name | workstream | outlineNumber | wbs | start | finish | baselineFinish | pct | outlineLevel | parentUid | predCount | sucCount | predIds | sucIds | totalSlackDaysRaw | freeSlackDaysRaw | constraintType | taskMode | mspSourceFile | mspImportVersion | assignedTo | slipDays | isSlipped | isDue14 | status | cpm | scheduleQuality | constraintDate | childUids | isSummary |
| --- | --- | --- | --- | --- | --- | --- | --- | --- | --- | --- | --- | --- | --- | --- | --- | --- | --- | --- | --- | --- | --- | --- | --- | --- | --- | --- | --- | --- | --- | --- | --- |
| 357ae9be-8a60-81b1-8511-e3c1bcc62876 | 4401 | Run ALE Transaction to QS5 from DS4 130 | PTM | 1.2.5.2.37.1 | 1.2.5.2.37.1 | 2026-09-24 | 2026-09-24 | 2026-04-06 | 0 | 6 | 4400 | 1 | 1 | 357ae9be-8a60-81e0-9d16-ea967b28bc5d | 357ae9be-8a60-817b-ad1e-de699978a427 | -661.52 | 0 | As Soon As Possible | Auto Scheduled | AMETEK SAP XXL Project Plan Replan MSP Task.csv | AMETEK SAP XXL Project Plan Replan MSP Task.csv__2f0764ccac__2026-05-05T02-44-15-662Z | Eric Heisler | 171 | True |  | Not started | True  -661.52 0 1 0 0 0 26 | Negative Float Critical 2 0 0  |  |  |  |
| 357ae9be-8a60-81b1-8596-f22e5747c832 | 1180 | Load Descartes XML File | OTC | 1.2.1.60.1 | 1.2.1.60.1 | 2026-04-16 | 2026-04-16 | 2026-04-16 | 100 | 5 | 699 | 1 | 1 | 357ae9be-8a60-81a9-a851-ddfbc35e7437 | 357ae9be-8a60-81de-8131-eaf293c31949 | 0 | 0 | Finish No Earlier Than | Auto Scheduled | AMETEK SAP XXL Project Plan Replan MSP Task.csv | AMETEK SAP XXL Project Plan Replan MSP Task.csv__2f0764ccac__2026-05-05T02-44-15-662Z | James VanRiper |  |  |  | Done | True  0 0 1 0 0 1 18 | Constraint Causes Issue Critical 4 0 0 True | 2026-04-17 |  |  |
| 357ae9be-8a60-81b1-8d5b-c0852c76c837 | 2724 | Simulate Load | Data | 1.2.4.2.52.3 | 1.2.4.2.52.3 | 2026-09-24 | 2026-09-30 | 2026-04-10 | 0 | 6 | 2721 | 1 | 1 | 357ae9be-8a60-81c2-819c-f178984dbc74 | 357ae9be-8a60-81c9-8aac-cdcd16198d69 | -694.5 | 0 | Finish No Earlier Than | Auto Scheduled | AMETEK SAP XXL Project Plan Replan MSP Task.csv | AMETEK SAP XXL Project Plan Replan MSP Task.csv__2f0764ccac__2026-05-05T02-44-15-662Z | Jyoti Nain | 173 | True |  | Not started | True  -694.5 0 1 0 0 0 26 | Negative Float Critical 2 0 0 True | 2026-04-20 |  |  |
| 357ae9be-8a60-81b1-9755-fd8140e56513 | 802 | Load File Staged and Posted "Ready" | Finance | 1.2.1.5.1 | 1.2.1.5.1 | 2026-04-06 | 2026-04-06 | 2026-04-06 | 100 | 5 | 759 | 1 | 1 | 357ae9be-8a60-81f9-8103-c2590b210309 | 357ae9be-8a60-81f0-9870-df7773002bb7 | 0 | 0 | As Soon As Possible | Auto Scheduled | AMETEK SAP XXL Project Plan Replan MSP Task.csv | AMETEK SAP XXL Project Plan Replan MSP Task.csv__2f0764ccac__2026-05-05T02-44-15-662Z | Kasey Hughes |  |  |  | Done | True  0 0 1 0 0 0 18 | Low 0 0 0  |  |  |  |
| 357ae9be-8a60-81b1-986d-d20e96435b95 | 4469 | Load | PTM | 1.2.5.2.53.2 | 1.2.5.2.53.2 | 2026-09-29 | 2026-09-29 | 2026-04-16 | 0 | 6 | 4467 | 1 | 1 | 357ae9be-8a60-8136-95ae-e0b8c603c5d3 | 357ae9be-8a60-81c0-88dd-cc78371dbc58 | -41326 | 0 | As Soon As Possible | Auto Scheduled | AMETEK SAP XXL Project Plan Replan MSP Task.csv | AMETEK SAP XXL Project Plan Replan MSP Task.csv__2f0764ccac__2026-05-05T02-44-15-662Z | Brad Meseck | 166 | True |  | Not started | True  -41326 0 1 0 0 0 26 | Negative Float Critical 2 0 0  |  |  |  |
| 357ae9be-8a60-81b1-9c78-cd7e0786332b | 71 | Testing Complete | TESTING | 1.1.2.10.1.3 | 1.1.2.10.1.3 | 2025-03-13 | 2025-03-13 | 2025-03-13 | 100 | 6 | 59 | 0 | 0 |  |  | 0 | 0 | As Soon As Possible | Auto Scheduled | AMETEK SAP XXL Project Plan Replan MSP Task.csv | AMETEK SAP XXL Project Plan Replan MSP Task.csv__2f0764ccac__2026-05-05T02-44-15-662Z | Kishore Kakarla |  |  |  | Done | True  0 0 0 0 0 0 12 | Low 0 0 0  |  |  |  |
| 357ae9be-8a60-81b1-aeb4-e3d3c2943b4b | 253 | System Setup & Connectivity | (Unassigned) | 1.1.2.2 | 1.1.2.2 | 2025-07-28 | 2026-03-23 | 2026-03-23 | 100 | 4 | 248 | 0 | 0 |  |  | 0 | 0 | As Soon As Possible | Auto Scheduled | AMETEK SAP XXL Project Plan Replan MSP Task.csv | AMETEK SAP XXL Project Plan Replan MSP Task.csv__2f0764ccac__2026-05-05T02-44-15-662Z | COULD NOT BE DETERMINED |  |  |  | Done | True  0 0 0 0 0 0 12 | Low 0 0 0  |  | 262, 254, 260, 258, 261, 263, 259 | True |
| 357ae9be-8a60-81b1-b232-f76433eec76c | 682 | Data Readiness | Data | 1.2 | 1.2 | 2026-04-06 | 2026-10-12 | 2026-04-21 | 20 | 2 | 1 | 0 | 0 |  |  | -2.03 | 0 | As Soon As Possible | Auto Scheduled | AMETEK SAP XXL Project Plan Replan MSP Task.csv | AMETEK SAP XXL Project Plan Replan MSP Task.csv__2f0764ccac__2026-05-05T02-44-15-662Z | Jyoti Nain | 174 | True |  | Not started | True  -2.03 0 0 0 0 0 20 | Negative Float High 2 0 0  |  | 2809, 425, 2422, 2053, 4160 | True |
| 357ae9be-8a60-81b1-ba6c-d1f3754e777f | 1314 | Close Client | Basis | 1.1.1.6.3.3 | 1.1.1.6.3.3 | 2026-05-29 | 2026-05-29 | 2026-05-28 | 0 | 6 | 1311 | 1 | 1 | 357ae9be-8a60-81ae-a08a-c5c91b22a335 | 357ae9be-8a60-811a-963c-cb0eae80b7e7 | -14491 | 0 | As Soon As Possible | Auto Scheduled | AMETEK SAP XXL Project Plan Replan MSP Task.csv | AMETEK SAP XXL Project Plan Replan MSP Task.csv__2f0764ccac__2026-05-05T02-44-15-662Z | Lokchetan Meghavath | 1 | True |  | Not started | True  -14491 0 1 0 0 0 26 | Negative Float Critical 2 0 0  |  |  |  |
| 357ae9be-8a60-81b1-bcc0-ddfc0280fb71 | 88 | QS5 ITC-1 Refresh | (Unassigned) | 1.1.1.4 | 1.1.1.4 | 2025-03-13 | 2026-04-06 | 2026-04-06 | 100 | 4 | 5 | 0 | 0 |  |  | 0 | 0 | As Soon As Possible | Auto Scheduled | AMETEK SAP XXL Project Plan Replan MSP Task.csv | AMETEK SAP XXL Project Plan Replan MSP Task.csv__2f0764ccac__2026-05-05T02-44-15-662Z | COULD NOT BE DETERMINED |  |  |  | Done | True  0 0 0 0 0 0 12 | Low 0 0 0  |  | 652, 674, 642, 671, 641, 833, 640, 644, 830, 669, 673, 670, 647, 645, 654, 662, 663, 643, 646, 655, 653, 672 | True |
| 357ae9be-8a60-81b2-9d84-fdcd4fecb5bb | 3276 | Run material interface to GTS | OTC | 1.2.3.2.55.1 | 1.2.3.2.55.1 | 2026-06-11 | 2026-06-15 | 2026-04-16 | 0 | 6 | 3275 | 1 | 1 | 357ae9be-8a60-8156-af35-d73666b65652 | 357ae9be-8a60-81ec-b83f-e3ad72203fbb | -190.27 | 0 | As Soon As Possible | Auto Scheduled | AMETEK SAP XXL Project Plan Replan MSP Task.csv | AMETEK SAP XXL Project Plan Replan MSP Task.csv__2f0764ccac__2026-05-05T02-44-15-662Z | James VanRiper | 60 | True |  | Not started | True  -190.27 0 1 0 0 0 26 | Wrong Dependency, Negative Float Critical 5 1 0  |  |  |  |
| 357ae9be-8a60-81b2-a7bf-ce732059ecee | 1943 | Post Load Validation | PTM | 1.2.2.2.43.2 | 1.2.2.2.43.2 | 2026-05-22 | 2026-05-22 | 2026-04-17 | 0 | 6 | 1941 | 1 | 1 | 357ae9be-8a60-8161-82ce-dd51ec62c6a3 | 357ae9be-8a60-81da-84f0-dcf7c80e6adf | -40.27 | 0 | As Soon As Possible | Auto Scheduled | AMETEK SAP XXL Project Plan Replan MSP Task.csv | AMETEK SAP XXL Project Plan Replan MSP Task.csv__2f0764ccac__2026-05-05T02-44-15-662Z | Eric Heisler | 35 | True |  | Not started | True  -40.27 0 1 0 0 0 26 | Negative Float Critical 2 0 0  |  |  |  |
| 357ae9be-8a60-81b2-ba35-fbadd37c1c73 | 3248 | Pre Load Validation | OTC | 1.2.3.2.50.2 | 1.2.3.2.50.2 | 2026-06-18 | 2026-06-18 | 2026-04-20 | 0 | 6 | 3246 | 1 | 1 | 357ae9be-8a60-8140-b282-dfbd75bf19e1 | 357ae9be-8a60-81b0-967a-c77e5905b210 | -11236 | 0 | As Soon As Possible | Auto Scheduled | AMETEK SAP XXL Project Plan Replan MSP Task.csv | AMETEK SAP XXL Project Plan Replan MSP Task.csv__2f0764ccac__2026-05-05T02-44-15-662Z | Ric Haraida | 59 | True |  | Not started | True  -11236 0 1 0 0 0 26 | Negative Float Critical 2 0 0  |  |  |  |
| 357ae9be-8a60-81b2-bf24-de1126110d2b | 4510 | Set Embargo situations | OTC | 1.2.5.2.65.2 | 1.2.5.2.65.2 | 2026-09-25 | 2026-09-25 | 2026-04-13 | 0 | 6 | 4508 | 1 | 1 | 357ae9be-8a60-814d-a26c-d67710da181a | 357ae9be-8a60-8156-9cde-c6e00a6c3915 | -653.52 | 0 | As Soon As Possible | Auto Scheduled | AMETEK SAP XXL Project Plan Replan MSP Task.csv | AMETEK SAP XXL Project Plan Replan MSP Task.csv__2f0764ccac__2026-05-05T02-44-15-662Z | James VanRiper | 165 | True |  | Not started | True  -653.52 0 1 0 0 0 26 | Negative Float Critical 2 0 0  |  |  |  |
| 357ae9be-8a60-81b3-8552-ed710632d1d9 | 4267 | Error and Defect Mitigation | PTP | 1.2.5.2.17.4 | 1.2.5.2.17.4 | 2026-10-01 | 2026-10-01 | 2026-04-10 | 0 | 6 | 4263 | 1 | 1 | 357ae9be-8a60-8126-92e0-ff77e9612194 | 357ae9be-8a60-8185-86a3-f252d5cdaacc | -707.02 | 0 | As Soon As Possible | Auto Scheduled | AMETEK SAP XXL Project Plan Replan MSP Task.csv | AMETEK SAP XXL Project Plan Replan MSP Task.csv__2f0764ccac__2026-05-05T02-44-15-662Z | Nevin Varkey | 174 | True |  | Not started | True  -707.02 0 1 0 0 0 26 | Negative Float Critical 2 0 0  |  |  |  |
| 357ae9be-8a60-81b3-86ce-f6cec501df62 | 936 | PTP_CM28_Purchase_Info_Record External Processing | PTP | 1.2.1.29 | 1.2.1.29 | 2026-04-15 | 2026-04-17 | 2026-04-16 | 100 | 4 | 425 | 0 | 0 |  |  | 0 | 0 | As Soon As Possible | Auto Scheduled | AMETEK SAP XXL Project Plan Replan MSP Task.csv | AMETEK SAP XXL Project Plan Replan MSP Task.csv__2f0764ccac__2026-05-05T02-44-15-662Z | Muniraju Surappachari |  |  |  | Done | True  0 0 0 0 0 0 12 | Low 0 0 0  |  | 1045, 1049, 1046, 1048, 1047, 1044 | True |
| 357ae9be-8a60-81b3-9029-d651db7edab4 | 1291 | Connect Systems and Validate | Basis | 1.1.1.6.1.5 | 1.1.1.6.1.5 | 2026-05-26 | 2026-05-26 | 2026-05-14 | 0 | 6 | 3339 | 1 | 1 | 357ae9be-8a60-8167-abda-dafd8e1538ba | 357ae9be-8a60-81d8-ad19-d3f1751abee4 | 7 | 0 | As Soon As Possible | Auto Scheduled | AMETEK SAP XXL Project Plan Replan MSP Task.csv | AMETEK SAP XXL Project Plan Replan MSP Task.csv__2f0764ccac__2026-05-05T02-44-15-662Z | Lokchetan Meghavath | 12 | True |  | Not started | True  7 0 1 0 0 0 26 | Low 0 0 0  |  |  |  |
| 357ae9be-8a60-81b3-9526-dc4f957206a5 | 2422 | UAT Data Load Tasks QS4 | Data | 1.2.4 | 1.2.4 | 2026-06-22 | 2026-10-12 | 2026-04-21 | 0 | 3 | 682 | 1 | 0 | 357ae9be-8a60-81a7-9700-c986f6127f18 |  | -40.66 | 0 | As Soon As Possible | Auto Scheduled | AMETEK SAP XXL Project Plan Replan MSP Task.csv | AMETEK SAP XXL Project Plan Replan MSP Task.csv__2f0764ccac__2026-05-05T02-44-15-662Z | Jyoti Nain | 174 | True |  | Not started | True  -40.66 0 0 0 0 0 20 | Wrong Dependency, Negative Float Critical 5 1 0  |  | 3350, 2423, 2938, 3360, 2898 | True |
| 357ae9be-8a60-81b3-a430-ceaf2ab631ad | 996 | Error and Defect Mitigation | Finance | 1.2.1.19.4 | 1.2.1.19.4 | 2026-04-17 | 2026-04-17 | 2026-04-10 | 100 | 5 | 768 | 1 | 0 | 357ae9be-8a60-812a-927c-ec4a7b08404c |  | 0 | 0 | As Soon As Possible | Auto Scheduled | AMETEK SAP XXL Project Plan Replan MSP Task.csv | AMETEK SAP XXL Project Plan Replan MSP Task.csv__2f0764ccac__2026-05-05T02-44-15-662Z | Kasey Hughes |  |  |  | Done | True  0 0 0 0 0 0 12 | Low 0 0 0  |  |  |  |
| 357ae9be-8a60-81b3-ae9a-cc86e380a852 | 2792 | Assign Resources to Depolyment 1 locations | PMO | 1.3.3.6.1 | 1.3.3.6.1 | 2026-05-29 | 2026-06-01 | 2026-04-30 | 0 | 5 | 2791 | 1 | 1 | 357ae9be-8a60-8132-b9d5-c57d0f14703b | 357ae9be-8a60-817f-a3a6-c45c235db3cf | -12 | 0 | As Soon As Possible | Auto Scheduled | AMETEK SAP XXL Project Plan Replan MSP Task.csv | AMETEK SAP XXL Project Plan Replan MSP Task.csv__2f0764ccac__2026-05-05T02-44-15-662Z | Renee DiTullio | 32 | True |  | Not started | True  -12 0 1 1 3 0 31 | Negative Float Critical 2 0 0  |  |  |  |
| 357ae9be-8a60-81b3-af97-cc3b4954e5ac | 4493 | GTS - HTS - Create | (Unassigned) | 1.2.5.2.60 | 1.2.5.2.60 | 2026-09-24 | 2026-09-24 | 2026-04-06 | 0 | 5 | 4162 | 0 | 0 |  |  | -80.44 | 0 | As Soon As Possible | Auto Scheduled | AMETEK SAP XXL Project Plan Replan MSP Task.csv | AMETEK SAP XXL Project Plan Replan MSP Task.csv__2f0764ccac__2026-05-05T02-44-15-662Z | COULD NOT BE DETERMINED | 171 | True |  | Not started | True  -80.44 0 0 0 0 0 20 | Negative Float Critical 2 0 0  |  | 4495, 4494 | True |
| 357ae9be-8a60-81b3-b42d-c0f8d5d4c507 | 3141 | PTP_CM28_Purchase_Info_Record Subcontracting and Consignment | PTP | 1.2.3.2.29 | 1.2.3.2.29 | 2026-06-11 | 2026-06-12 | 2026-04-16 | 0 | 5 | 2959 | 0 | 0 |  |  | -23.78 | 0 | As Soon As Possible | Auto Scheduled | AMETEK SAP XXL Project Plan Replan MSP Task.csv | AMETEK SAP XXL Project Plan Replan MSP Task.csv__2f0764ccac__2026-05-05T02-44-15-662Z | Muniraju Surappachari | 57 | True |  | Not started | True  -23.78 0 0 0 0 0 20 | Negative Float Critical 2 0 0  |  | 3145, 3142, 3144, 3146, 3143, 3147 | True |
| 357ae9be-8a60-81b3-b6aa-ffaac809cf16 | 704 | PTP_CM29_Source_List | PTP | 1.2.1.52 | 1.2.1.52 | 2026-04-17 | 2026-04-20 | 2026-04-14 | 100 | 4 | 425 | 0 | 0 |  |  | 0 | 0 | As Soon As Possible | Auto Scheduled | AMETEK SAP XXL Project Plan Replan MSP Task.csv | AMETEK SAP XXL Project Plan Replan MSP Task.csv__2f0764ccac__2026-05-05T02-44-15-662Z | Muniraju Surappachari |  |  |  | Done | True  0 0 0 0 0 0 12 | Low 0 0 0  |  | 1120, 1118, 1119 | True |
| 357ae9be-8a60-81b3-bd7d-d97f31905016 | 4445 | OTC_CM22_Pricing_Condition | OTC | 1.2.5.2.49 | 1.2.5.2.49 | 2026-10-07 | 2026-10-08 | 2026-04-21 | 0 | 5 | 4162 | 0 | 0 |  |  | -90.75 | 0 | As Soon As Possible | Auto Scheduled | AMETEK SAP XXL Project Plan Replan MSP Task.csv | AMETEK SAP XXL Project Plan Replan MSP Task.csv__2f0764ccac__2026-05-05T02-44-15-662Z | Anitha Jothi | 170 | True |  | Not started | True  -90.75 0 0 0 0 0 20 | Negative Float Critical 2 0 0  |  | 4448, 4446, 4447 | True |
| 357ae9be-8a60-81b4-8352-f31d44b79177 | 1100 | Load File Staged and Posted "Ready" | PTM | 1.2.1.48.1 | 1.2.1.48.1 | 2026-04-16 | 2026-04-16 | 2026-04-16 | 100 | 5 | 714 | 1 | 1 | 357ae9be-8a60-8192-a803-d469c1919201 | 357ae9be-8a60-811b-a7a5-ed9b5894af75 | 0 | 0 | As Soon As Possible | Auto Scheduled | AMETEK SAP XXL Project Plan Replan MSP Task.csv | AMETEK SAP XXL Project Plan Replan MSP Task.csv__2f0764ccac__2026-05-05T02-44-15-662Z | Eric Heisler |  |  |  | Done | True  0 0 1 0 0 1 18 | Low 0 0 0  |  |  |  |
| 357ae9be-8a60-81b4-88e2-ecf42d78350e | 1039 | Pre Load Validation | PTP | 1.2.1.28.2 | 1.2.1.28.2 | 2026-04-15 | 2026-04-16 | 2026-04-16 | 100 | 5 | 703 | 1 | 1 | 357ae9be-8a60-8167-9e4b-e3aee0aa7005 | 357ae9be-8a60-8137-9aa6-dc07a32cec9d | 0 | 0 | As Soon As Possible | Auto Scheduled | AMETEK SAP XXL Project Plan Replan MSP Task.csv | AMETEK SAP XXL Project Plan Replan MSP Task.csv__2f0764ccac__2026-05-05T02-44-15-662Z | Nevin Varkey |  |  |  | Done | True  0 0 1 0 0 0 18 | Wrong Dependency High 3 1 0  |  |  |  |
| 357ae9be-8a60-81b4-89ad-eacb37ffcb0c | 267 | Rule Set & Role Design | (Unassigned) | 1.1.2.4 | 1.1.2.4 | 2025-03-13 | 2026-05-21 | 2025-12-10 | 77 | 4 | 248 | 0 | 0 |  |  | 122 | 122 | As Soon As Possible | Auto Scheduled | AMETEK SAP XXL Project Plan Replan MSP Task.csv | AMETEK SAP XXL Project Plan Replan MSP Task.csv__2f0764ccac__2026-05-05T02-44-15-662Z | COULD NOT BE DETERMINED | 162 | True |  | In progress |   122 122 0 0 0 0 8 | Low 0 0 0  |  | 285, 269, 283, 281, 303, 284, 270, 282, 268, 286 | True |
| 357ae9be-8a60-81b4-8e9a-ede2a5ab87bf | 4373 | Load File Staged and Posted "Ready" | PTM | 1.2.5.2.33.1 | 1.2.5.2.33.1 | 2026-09-29 | 2026-09-29 | 2026-04-16 | 0 | 6 | 4372 | 1 | 2 | 357ae9be-8a60-8112-b3aa-e421a350f01a | 357ae9be-8a60-8154-b740-ccb7f3b50fcc, 357ae9be-8a60-8136-95ae-e0b8c603c5d3 | -41746 | 0 | Start No Earlier Than | Auto Scheduled | AMETEK SAP XXL Project Plan Replan MSP Task.csv | AMETEK SAP XXL Project Plan Replan MSP Task.csv__2f0764ccac__2026-05-05T02-44-15-662Z | Brad Meseck | 166 | True |  | Not started | True  -41746 0 2 0 0 0 32 | Negative Float Critical 2 0 0 True | 2026-04-20 |  |  |
| 357ae9be-8a60-81b4-9a08-caf58c9aff37 | 2705 | Post Load Validation | PTM | 1.2.4.2.48.3 | 1.2.4.2.48.3 | 2026-10-07 | 2026-10-07 | 2026-04-20 | 0 | 6 | 2702 | 1 | 1 | 357ae9be-8a60-81fd-96bc-d09780c2913c | 357ae9be-8a60-8173-8156-e15d77bd8d31 | -726 | 0 | As Soon As Possible | Auto Scheduled | AMETEK SAP XXL Project Plan Replan MSP Task.csv | AMETEK SAP XXL Project Plan Replan MSP Task.csv__2f0764ccac__2026-05-05T02-44-15-662Z | Eric Heisler | 170 | True |  | Not started | True  -726 0 1 0 0 0 26 | Negative Float Critical 2 0 0  |  |  |  |
| 357ae9be-8a60-81b4-9a55-e4e99e3114f6 | 2511 | Update number range BP02 from Internal to External | OTC | 1.2.4.2.14.8 | 1.2.4.2.14.8 | 2026-09-29 | 2026-09-29 | 2026-04-09 | 0 | 6 | 2503 | 1 | 1 | 357ae9be-8a60-8153-9a1a-f053920b49e7 | 357ae9be-8a60-81d1-84d1-f2453cd3263d | -40305 | 0 | As Soon As Possible | Auto Scheduled | AMETEK SAP XXL Project Plan Replan MSP Task.csv | AMETEK SAP XXL Project Plan Replan MSP Task.csv__2f0764ccac__2026-05-05T02-44-15-662Z | Ric Haraida | 173 | True |  | Not started | True  -40305 0 1 0 0 0 26 | Negative Float Critical 2 0 0  |  |  |  |
| 357ae9be-8a60-81b4-a15e-f2b53adaaab4 | 4405 | Post Load Validation | PTM | 1.2.5.2.38.2 | 1.2.5.2.38.2 | 2026-09-24 | 2026-09-25 | 2026-04-07 | 0 | 6 | 4403 | 1 | 1 | 357ae9be-8a60-81d1-85f5-fea66247f689 | 357ae9be-8a60-8172-bbeb-ea59cce9fa87 | -661.52 | 0 | As Soon As Possible | Auto Scheduled | AMETEK SAP XXL Project Plan Replan MSP Task.csv | AMETEK SAP XXL Project Plan Replan MSP Task.csv__2f0764ccac__2026-05-05T02-44-15-662Z | Eric Heisler | 171 | True |  | Not started | True  -661.52 0 1 0 0 0 26 | Negative Float Critical 2 0 0  |  |  |  |
| 357ae9be-8a60-81b4-a50f-e0d917d4f024 | 3187 | Error and Defect Mitigation | PTM | 1.2.3.2.35.4 | 1.2.3.2.35.4 | 2026-06-15 | 2026-06-15 | 2026-04-17 | 0 | 6 | 3183 | 1 | 1 | 357ae9be-8a60-810d-8ed4-d0f8b0591acd | 357ae9be-8a60-81a9-be4d-eb7d27ad5d94 | -173.77 | 0 | As Soon As Possible | Auto Scheduled | AMETEK SAP XXL Project Plan Replan MSP Task.csv | AMETEK SAP XXL Project Plan Replan MSP Task.csv__2f0764ccac__2026-05-05T02-44-15-662Z | Brad Meseck | 59 | True |  | Not started | True  -173.77 0 1 0 0 0 26 | Negative Float Critical 2 0 0  |  |  |  |
| 357ae9be-8a60-81b4-a7cd-f977cbce7c8d | 3123 | Simulate Load | Data | 1.2.3.2.26.3 | 1.2.3.2.26.3 | 2026-06-10 | 2026-06-10 | 2026-04-14 | 0 | 6 | 3120 | 1 | 1 | 357ae9be-8a60-8135-93e3-fd048c8faa85 | 357ae9be-8a60-81af-9442-ff22eb92697e | -190.27 | 0 | As Soon As Possible | Auto Scheduled | AMETEK SAP XXL Project Plan Replan MSP Task.csv | AMETEK SAP XXL Project Plan Replan MSP Task.csv__2f0764ccac__2026-05-05T02-44-15-662Z | Jyoti Nain | 57 | True |  | Not started | True  -190.27 0 1 0 0 0 26 | Negative Float Critical 2 0 0  |  |  |  |
| 357ae9be-8a60-81b4-b17c-f10012398136 | 3272 | Error and Defect Mitigation | PTM | 1.2.3.2.54.4 | 1.2.3.2.54.4 | 2026-06-12 | 2026-06-12 | 2026-04-16 | 0 | 6 | 3268 | 1 | 1 | 357ae9be-8a60-81ea-9f38-fa509422ad1c | 357ae9be-8a60-812d-b600-e5a7b358807f | -159.27 | 0 | As Soon As Possible | Auto Scheduled | AMETEK SAP XXL Project Plan Replan MSP Task.csv | AMETEK SAP XXL Project Plan Replan MSP Task.csv__2f0764ccac__2026-05-05T02-44-15-662Z | Brad Meseck | 57 | True |  | Not started | True  -159.27 0 1 0 0 0 26 | Negative Float Critical 2 0 0  |  |  |  |
| 357ae9be-8a60-81b4-bf0b-cd1bca2665d9 | 4443 | Load | PTM | 1.2.5.2.48.2 | 1.2.5.2.48.2 | 2026-10-07 | 2026-10-07 | 2026-04-17 | 0 | 6 | 4441 | 1 | 1 | 357ae9be-8a60-8113-8003-d3128b981412 | 357ae9be-8a60-819f-a5d8-de81f7a71e54 | -726.02 | 0 | As Soon As Possible | Auto Scheduled | AMETEK SAP XXL Project Plan Replan MSP Task.csv | AMETEK SAP XXL Project Plan Replan MSP Task.csv__2f0764ccac__2026-05-05T02-44-15-662Z | Eric Heisler | 173 | True |  | Not started | True  -726.02 0 1 0 0 0 26 | Negative Float Critical 2 0 0  |  |  |  |
| 357ae9be-8a60-81b5-97b1-fc457641930d | 2630 | Error and Defect Mitigation | PTM | 1.2.4.2.32.4 | 1.2.4.2.32.4 | 2026-10-05 | 2026-10-05 | 2026-04-20 | 0 | 6 | 2626 | 1 | 1 | 357ae9be-8a60-8121-b166-cf6e7d7493fc | 357ae9be-8a60-81a1-aaa5-e71fb76e3921 | -704.38 | 0 | Start No Earlier Than | Auto Scheduled | AMETEK SAP XXL Project Plan Replan MSP Task.csv | AMETEK SAP XXL Project Plan Replan MSP Task.csv__2f0764ccac__2026-05-05T02-44-15-662Z | Brad Meseck | 168 | True |  | Not started | True  -704.38 0 1 0 0 0 26 | Negative Float Critical 2 0 0 True | 2026-04-17 |  |  |
| 357ae9be-8a60-81b5-9929-e6a7c23ee7ec | 2476 | Pre Load Validation | Finance | 1.2.4.2.9.2 | 1.2.4.2.9.2 | 2026-09-29 | 2026-09-29 | 2026-04-09 | 0 | 6 | 2474 | 1 | 0 | 357ae9be-8a60-810e-acb6-fae0cda074c9 |  | -672 | 0 | As Soon As Possible | Auto Scheduled | AMETEK SAP XXL Project Plan Replan MSP Task.csv | AMETEK SAP XXL Project Plan Replan MSP Task.csv__2f0764ccac__2026-05-05T02-44-15-662Z | Kasey Hughes | 173 | True |  | Not started | True  -672 0 0 0 0 0 20 | Negative Float, Open Finish Critical 3 0 0  |  |  |  |
| 357ae9be-8a60-81b5-9f73-e6eb004abfa1 | 1142 | Error and Defect Mitigation | Finance | 1.2.1.68.4 | 1.2.1.68.4 | 2026-04-20 | 2026-04-20 | 2026-04-17 | 100 | 5 | 950 | 1 | 1 | 357ae9be-8a60-814b-a818-d663be665793 | 357ae9be-8a60-81d6-b663-ff1c737ad7c6 | 0 | 0 | As Soon As Possible | Auto Scheduled | AMETEK SAP XXL Project Plan Replan MSP Task.csv | AMETEK SAP XXL Project Plan Replan MSP Task.csv__2f0764ccac__2026-05-05T02-44-15-662Z | Kasey Hughes |  |  |  | Done | True  0 0 1 0 0 0 18 | Low 0 0 0  |  |  |  |
| 357ae9be-8a60-81b5-a3a5-c40db00435bc | 818 | Pre Load Validation | OTC | 1.2.1.15.2 | 1.2.1.15.2 | 2026-04-09 | 2026-04-09 | 2026-04-09 | 100 | 5 | 762 | 1 | 0 | 357ae9be-8a60-8122-8ad8-e14d89ede36d |  | 0 | 0 | As Soon As Possible | Auto Scheduled | AMETEK SAP XXL Project Plan Replan MSP Task.csv | AMETEK SAP XXL Project Plan Replan MSP Task.csv__2f0764ccac__2026-05-05T02-44-15-662Z | Ric Haraida |  |  |  | Done | True  0 0 0 0 0 0 12 | Low 0 0 0  |  |  |  |
| 357ae9be-8a60-81b5-a3d7-c805460f451d | 3095 | Simulate Load | Data | 1.2.3.2.22.3 | 1.2.3.2.22.3 | 2026-06-08 | 2026-06-08 | 2026-04-13 | 0 | 6 | 3092 | 1 | 1 | 357ae9be-8a60-81ed-8b9c-d26549fc1775 | 357ae9be-8a60-817a-8cfb-ef1a68f2b7b5 | -131.52 | 0 | As Soon As Possible | Auto Scheduled | AMETEK SAP XXL Project Plan Replan MSP Task.csv | AMETEK SAP XXL Project Plan Replan MSP Task.csv__2f0764ccac__2026-05-05T02-44-15-662Z | Jyoti Nain | 56 | True |  | Not started | True  -131.52 0 1 0 0 0 26 | Negative Float Critical 2 0 0  |  |  |  |
| 357ae9be-8a60-81b5-ae59-d42984fda7e3 | 4203 | Error and Defect Mitigation | Finance | 1.2.5.2.7.4 | 1.2.5.2.7.4 | 2026-09-30 | 2026-09-30 | 2026-04-09 | 0 | 6 | 4199 | 1 | 1 | 357ae9be-8a60-8184-817a-f551e3acc57a | 357ae9be-8a60-81cb-bacc-f37bc30b71f0 | -680.02 | 0 | As Soon As Possible | Auto Scheduled | AMETEK SAP XXL Project Plan Replan MSP Task.csv | AMETEK SAP XXL Project Plan Replan MSP Task.csv__2f0764ccac__2026-05-05T02-44-15-662Z | Kasey Hughes | 174 | True |  | Not started | True  -680.02 0 1 0 0 0 26 | Negative Float Critical 2 0 0  |  |  |  |
| 357ae9be-8a60-81b5-b02b-ce8906bbc292 | 2023 | Load Descartes XML File | OTC | 1.2.2.2.62.1 | 1.2.2.2.62.1 | 2026-05-26 | 2026-05-26 | 2026-04-16 | 0 | 6 | 2022 | 1 | 1 | 357ae9be-8a60-8194-ac9d-f6d7fc37c7e1 | 357ae9be-8a60-81b6-b1a4-fed7714eab25 | -51.02 | 0 | As Soon As Possible | Auto Scheduled | AMETEK SAP XXL Project Plan Replan MSP Task.csv | AMETEK SAP XXL Project Plan Replan MSP Task.csv__2f0764ccac__2026-05-05T02-44-15-662Z | James VanRiper | 40 | True |  | Not started | True  -51.02 0 1 0 0 0 26 | Wrong Dependency, Negative Float Critical 5 1 0  |  |  |  |
| 357ae9be-8a60-81b6-8301-f6cd2931b233 | 3336 | Service Orders(Manual) | (Unassigned) | 1.2.3.4.7 | 1.2.3.4.7 | 2026-06-22 | 2026-06-22 | 2026-06-22 | 0 | 5 | 3326 | 1 | 0 | 357ae9be-8a60-812b-99d2-f7a1aa058a4c |  | -23.56 | 0 | As Soon As Possible | Auto Scheduled | AMETEK SAP XXL Project Plan Replan MSP Task.csv | AMETEK SAP XXL Project Plan Replan MSP Task.csv__2f0764ccac__2026-05-05T02-44-15-662Z | COULD NOT BE DETERMINED |  |  |  | Not started | True  -23.56 0 0 0 0 0 12 | Wrong Dependency, Negative Float, Open Finish Critical 6 1 0  |  |  |  |
| 357ae9be-8a60-81b6-8a5e-e62605c175a8 | 3009 | Post Load Validation | Finance | 1.2.3.2.8.6 | 1.2.3.2.8.6 | 2026-06-10 | 2026-06-10 | 2026-04-08 | 0 | 6 | 3003 | 1 | 0 | 357ae9be-8a60-8195-8916-fae3d3285352 |  | -140.52 | 0 | As Soon As Possible | Auto Scheduled | AMETEK SAP XXL Project Plan Replan MSP Task.csv | AMETEK SAP XXL Project Plan Replan MSP Task.csv__2f0764ccac__2026-05-05T02-44-15-662Z | Kasey Hughes | 63 | True |  | Not started | True  -140.52 0 0 0 0 0 20 | Negative Float, Open Finish Critical 3 0 0  |  |  |  |
| 357ae9be-8a60-81b6-8d57-de4d65e4cbe5 | 3325 | Post Load Validation | Finance | 1.2.3.2.68.6 | 1.2.3.2.68.6 | 2026-06-09 | 2026-06-09 | 2026-04-17 | 0 | 6 | 3319 | 1 | 0 | 357ae9be-8a60-816c-9756-cb4b3534e9a0 |  | -129.52 | 0 | As Soon As Possible | Auto Scheduled | AMETEK SAP XXL Project Plan Replan MSP Task.csv | AMETEK SAP XXL Project Plan Replan MSP Task.csv__2f0764ccac__2026-05-05T02-44-15-662Z | Kasey Hughes | 53 | True |  | Not started | True  -129.52 0 0 0 0 0 20 | Negative Float, Open Finish Critical 3 0 0  |  |  |  |
| 357ae9be-8a60-81b6-9251-fa970d4a5b6e | 4188 | Load File Staged and Posted "Ready" | Finance | 1.2.5.2.5.1 | 1.2.5.2.5.1 | 2026-09-25 | 2026-09-28 | 2026-04-08 | 0 | 6 | 4187 | 1 | 1 | 357ae9be-8a60-81c7-b336-fd06c18191cb | 357ae9be-8a60-81f4-970c-e95b60d4be16 | -665.52 | 0 | As Soon As Possible | Auto Scheduled | AMETEK SAP XXL Project Plan Replan MSP Task.csv | AMETEK SAP XXL Project Plan Replan MSP Task.csv__2f0764ccac__2026-05-05T02-44-15-662Z | Kasey Hughes | 173 | True |  | Not started | True  -665.52 0 1 0 0 0 26 | Negative Float Critical 2 0 0  |  |  |  |
| 357ae9be-8a60-81b6-9b9b-f1b1488f39ff | 1791 | Load | Data | 1.2.2.2.17.5 | 1.2.2.2.17.5 | 2026-05-25 | 2026-05-28 | 2026-04-13 | 0 | 6 | 1786 | 1 | 1 | 357ae9be-8a60-81c9-86d6-e1261b986497 | 357ae9be-8a60-8172-bd33-c5cc52b05f77 | -65.02 | 0 | As Soon As Possible | Auto Scheduled | AMETEK SAP XXL Project Plan Replan MSP Task.csv | AMETEK SAP XXL Project Plan Replan MSP Task.csv__2f0764ccac__2026-05-05T02-44-15-662Z | Jyoti Nain | 45 | True |  | Not started | True  -65.02 0 1 0 0 0 26 | Negative Float Critical 2 0 0  |  |  |  |
| 357ae9be-8a60-81b6-9d8c-dae0b423fd1d | 4174 | Simulate Load | Data | 1.2.5.2.3.3 | 1.2.5.2.3.3 | 2026-09-25 | 2026-09-28 | 2026-04-08 | 0 | 6 | 4171 | 1 | 1 | 357ae9be-8a60-81c8-b7cd-c1f76a030587 | 357ae9be-8a60-8196-a7b9-da4e1b6ebbcc | -718.52 | 0 | As Soon As Possible | Auto Scheduled | AMETEK SAP XXL Project Plan Replan MSP Task.csv | AMETEK SAP XXL Project Plan Replan MSP Task.csv__2f0764ccac__2026-05-05T02-44-15-662Z | Jyoti Nain | 173 | True |  | Not started | True  -718.52 0 1 0 0 0 26 | Negative Float Critical 2 0 0  |  |  |  |
| 357ae9be-8a60-81b6-9ff0-e13bff8bdba6 | 1011 | Manual File Staged and Posted "Ready" | Finance | 1.2.1.22.1 | 1.2.1.22.1 | 2026-04-15 | 2026-04-15 | 2026-04-10 | 100 | 5 | 935 | 1 | 0 | 357ae9be-8a60-81b3-a430-ceaf2ab631ad |  | 0 | 0 | Start No Earlier Than | Auto Scheduled | AMETEK SAP XXL Project Plan Replan MSP Task.csv | AMETEK SAP XXL Project Plan Replan MSP Task.csv__2f0764ccac__2026-05-05T02-44-15-662Z | Kasey Hughes |  |  |  | Done | True  0 0 0 0 0 1 12 | Wrong Dependency High 3 1 0 True | 2026-04-15 |  |  |
| 357ae9be-8a60-81b6-ab8b-c4b14f1485e0 | 1854 | Extract File | Data | 1.2.2.2.27.1 | 1.2.2.2.27.1 | 2026-05-21 | 2026-05-21 | 2026-04-15 | 0 | 6 | 1853 | 1 | 2 | 357ae9be-8a60-811c-a632-c761fdfa4cc5 | 357ae9be-8a60-811c-a632-c761fdfa4cc5, 357ae9be-8a60-818f-be8e-fa86486fe95d | -62.39 | 0 | As Soon As Possible | Auto Scheduled | AMETEK SAP XXL Project Plan Replan MSP Task.csv | AMETEK SAP XXL Project Plan Replan MSP Task.csv__2f0764ccac__2026-05-05T02-44-15-662Z | Jyoti Nain | 36 | True |  | Not started | True  -62.39 0 2 2 43 1 37 | Wrong Dependency, Wrong Successor, Negative Float Critical 8 1 2  |  |  |  |
| 357ae9be-8a60-81b6-b1a4-fed7714eab25 | 2024 | Post Load Validation | OTC | 1.2.2.2.62.2 | 1.2.2.2.62.2 | 2026-05-26 | 2026-05-26 | 2026-04-16 | 0 | 6 | 2022 | 1 | 0 | 357ae9be-8a60-81b5-b02b-ce8906bbc292 |  | -51.02 | 0 | As Soon As Possible | Auto Scheduled | AMETEK SAP XXL Project Plan Replan MSP Task.csv | AMETEK SAP XXL Project Plan Replan MSP Task.csv__2f0764ccac__2026-05-05T02-44-15-662Z | James VanRiper | 40 | True |  | Not started | True  -51.02 0 0 0 0 0 20 | Negative Float, Open Finish Critical 3 0 0  |  |  |  |
| 357ae9be-8a60-81b6-b8fc-cdac9ff3f6b1 | 2821 | Bank and Cash | (Unassigned) | 1.2.2.4.4 | 1.2.2.4.4 | 2026-10-12 | 2026-10-12 | 2026-10-12 | 0 | 5 | 2801 | 1 | 0 | 357ae9be-8a60-812c-b36d-c2eccfdb2868 |  | -726 | 0 | As Soon As Possible | Auto Scheduled | AMETEK SAP XXL Project Plan Replan MSP Task.csv | AMETEK SAP XXL Project Plan Replan MSP Task.csv__2f0764ccac__2026-05-05T02-44-15-662Z | COULD NOT BE DETERMINED |  |  |  | Not started | True  -726 0 0 0 0 0 12 | Negative Float, Open Finish Critical 3 0 0  |  |  |  |
| 357ae9be-8a60-81b6-bd70-c5d5d5b3d063 | 2053 | ITC3 Data Load Tasks QS5 | Data | 1.2.3 | 1.2.3 | 2026-06-08 | 2026-06-23 | 2026-04-21 | 0 | 3 | 682 | 0 | 1 |  | 357ae9be-8a60-81b3-9526-dc4f957206a5 | -24.31 | 0 | As Soon As Possible | Auto Scheduled | AMETEK SAP XXL Project Plan Replan MSP Task.csv | AMETEK SAP XXL Project Plan Replan MSP Task.csv__2f0764ccac__2026-05-05T02-44-15-662Z | Jyoti Nain | 63 | True |  | Not started | True  -24.31 0 1 1 1 0 31 | Wrong Successor, Negative Float Critical 5 0 1  |  | 3326, 2054, 2959, 2958, 2421 | True |
| 357ae9be-8a60-81b7-83c6-f8d51b8728a7 | 1891 | Simulate Load | Data | 1.2.2.2.32.3 | 1.2.2.2.32.3 | 2026-05-27 | 2026-05-27 | 2026-04-20 | 0 | 6 | 1888 | 1 | 1 | 357ae9be-8a60-8125-8b44-feff7c2c8e69 | 357ae9be-8a60-8163-a675-fe2bede6e7eb | -62.39 | 0 | As Soon As Possible | Auto Scheduled | AMETEK SAP XXL Project Plan Replan MSP Task.csv | AMETEK SAP XXL Project Plan Replan MSP Task.csv__2f0764ccac__2026-05-05T02-44-15-662Z | Jyoti Nain | 37 | True |  | Not started | True  -62.39 0 1 0 0 0 26 | Negative Float Critical 2 0 0  |  |  |  |
| 357ae9be-8a60-81b7-84de-f4ceefa9feeb | 2047 | Pre Load Validation | Finance | 1.2.2.2.68.2 | 1.2.2.2.68.2 | 2026-05-18 | 2026-05-18 | 2026-04-10 | 0 | 6 | 2045 | 1 | 1 | 357ae9be-8a60-8100-80e4-db51325be5c4 | 357ae9be-8a60-812a-82db-dbcd9c2b6c29 | -571 | 0 | As Soon As Possible | Auto Scheduled | AMETEK SAP XXL Project Plan Replan MSP Task.csv | AMETEK SAP XXL Project Plan Replan MSP Task.csv__2f0764ccac__2026-05-05T02-44-15-662Z | Kasey Hughes | 38 | True | True | Not started | True  -571 0 1 0 0 0 26 | Negative Float Critical 2 0 0  |  |  |  |
| 357ae9be-8a60-81b7-8b65-fdde0ee8d8ef | 3175 | Post Load Validation | PTM | 1.2.3.2.33.6 | 1.2.3.2.33.6 | 2026-06-12 | 2026-06-15 | 2026-04-17 | 0 | 6 | 3169 | 1 | 1 | 357ae9be-8a60-81d5-822d-c4bb4d8aa129 | 357ae9be-8a60-81dc-a9cf-ecc320b995a1 | -173.77 | 0 | As Soon As Possible | Auto Scheduled | AMETEK SAP XXL Project Plan Replan MSP Task.csv | AMETEK SAP XXL Project Plan Replan MSP Task.csv__2f0764ccac__2026-05-05T02-44-15-662Z | Brad Meseck | 59 | True |  | Not started | True  -173.77 0 1 0 0 0 26 | Negative Float Critical 2 0 0  |  |  |  |
| 357ae9be-8a60-81b7-901c-ca232f355464 | 771 | OTC_CM23_Customer_Hierarchy | OTC | 1.2.1.17 | 1.2.1.17 | 2026-04-10 | 2026-04-15 | 2026-04-10 | 100 | 4 | 425 | 1 | 1 | 357ae9be-8a60-81fa-920c-c1088950f221 | 357ae9be-8a60-81ff-b288-f5be1e35aae6 | 0 | 0 | As Soon As Possible | Auto Scheduled | AMETEK SAP XXL Project Plan Replan MSP Task.csv | AMETEK SAP XXL Project Plan Replan MSP Task.csv__2f0764ccac__2026-05-05T02-44-15-662Z | Anitha Jothi |  |  |  | Done | True  0 0 1 1 5 1 23 | Low 0 0 0  |  | 985, 986, 984 | True |
| 357ae9be-8a60-81b7-9315-ea2b5f994564 | 1701 | Extend GL to all Company Codes | Finance | 1.2.2.2.3.7 | 1.2.2.2.3.7 | 2026-05-21 | 2026-05-21 | 2026-04-09 | 0 | 6 | 1694 | 1 | 1 | 357ae9be-8a60-812a-8ff8-e70b785cc280 | 357ae9be-8a60-810e-935f-ea6407202b2b | -76.52 | 0 | As Soon As Possible | Auto Scheduled | AMETEK SAP XXL Project Plan Replan MSP Task.csv | AMETEK SAP XXL Project Plan Replan MSP Task.csv__2f0764ccac__2026-05-05T02-44-15-662Z | Kasey Hughes | 42 | True |  | Not started | True  -76.52 0 1 0 0 0 26 | Wrong Dependency, Negative Float Critical 5 1 0  |  |  |  |
| 357ae9be-8a60-81b7-9a9c-ee8a637217d0 | 4540 | PRO Data Loads Complete | PMO | 1.2.5.5 | 1.2.5.5 | 2026-10-05 | 2026-10-05 | 2026-04-21 | 0 | 4 | 4160 | 1 | 1 | 357ae9be-8a60-81cd-9641-fb00a0a50d18 | 357ae9be-8a60-8116-ab4e-dd9324687cda | -16846 | 0 | As Soon As Possible | Auto Scheduled | AMETEK SAP XXL Project Plan Replan MSP Task.csv | AMETEK SAP XXL Project Plan Replan MSP Task.csv__2f0764ccac__2026-05-05T02-44-15-662Z | Mark George | 167 | True |  | Not started | True  -16846 0 0 0 0 0 22 | Negative Float Critical 2 0 0  |  |  |  |
| 357ae9be-8a60-81b7-a0b8-e0a8e6d5c5d4 | 1218 | Post Load Validation | OTC | 1.2.1.65.2 | 1.2.1.65.2 | 2026-04-15 | 2026-04-15 | 2025-03-13 | 100 | 5 | 1216 | 1 | 0 | 357ae9be-8a60-8138-8b93-f96b58cd5b5f |  | 0 | 0 | As Soon As Possible | Auto Scheduled | AMETEK SAP XXL Project Plan Replan MSP Task.csv | AMETEK SAP XXL Project Plan Replan MSP Task.csv__2f0764ccac__2026-05-05T02-44-15-662Z | James VanRiper |  |  |  | Done | True  0 0 0 0 0 0 12 | Low 0 0 0  |  |  |  |
| 357ae9be-8a60-81b7-a4bf-f8b21972d7fa | 3288 | Load Descartes XML File | OTC | 1.2.3.2.59.1 | 1.2.3.2.59.1 | 2026-06-15 | 2026-06-15 | 2026-04-16 | 0 | 6 | 3287 | 1 | 1 | 357ae9be-8a60-81ec-b83f-e3ad72203fbb | 357ae9be-8a60-812e-9301-eb5e05ef0513 | -190.27 | 0 | As Soon As Possible | Auto Scheduled | AMETEK SAP XXL Project Plan Replan MSP Task.csv | AMETEK SAP XXL Project Plan Replan MSP Task.csv__2f0764ccac__2026-05-05T02-44-15-662Z | James VanRiper | 60 | True |  | Not started | True  -190.27 0 1 0 0 0 26 | Negative Float Critical 2 0 0  |  |  |  |
| 357ae9be-8a60-81b7-b8cc-c219c0f042fc | 1079 | Load | Data | 1.2.1.33.5 | 1.2.1.33.5 | 2026-04-20 | 2026-04-20 | 2026-04-20 | 100 | 5 | 707 | 1 | 1 | 357ae9be-8a60-81ab-9b37-fbadfe9dd7b1 | 357ae9be-8a60-8104-8856-f915637f2752 | 0 | 0 | Start No Earlier Than | Auto Scheduled | AMETEK SAP XXL Project Plan Replan MSP Task.csv | AMETEK SAP XXL Project Plan Replan MSP Task.csv__2f0764ccac__2026-05-05T02-44-15-662Z | Jyoti Nain |  |  |  | Done | True  0 0 1 0 0 0 18 | Low 0 0 0 True | 2026-04-20 |  |  |
| 357ae9be-8a60-81b7-b8d4-cdad76b1053a | 2666 | Post Load Validation | PTM | 1.2.4.2.38.2 | 1.2.4.2.38.2 | 2026-09-24 | 2026-09-25 | 2026-04-07 | 0 | 6 | 2664 | 1 | 1 | 357ae9be-8a60-8139-9e40-e75ee0d408df | 357ae9be-8a60-81be-9d1d-ec760139afa1 | -661.5 | 0 | As Soon As Possible | Auto Scheduled | AMETEK SAP XXL Project Plan Replan MSP Task.csv | AMETEK SAP XXL Project Plan Replan MSP Task.csv__2f0764ccac__2026-05-05T02-44-15-662Z | Eric Heisler | 171 | True |  | Not started | True  -661.5 0 1 0 0 0 26 | Negative Float Critical 2 0 0  |  |  |  |
| 357ae9be-8a60-81b7-b8dc-c7d79f914e5e | 4206 | RTR_CM12_Activity Rates | (Unassigned) | 1.2.5.2.8 | 1.2.5.2.8 | 2026-09-25 | 2026-09-28 | 2026-04-08 | 0 | 5 | 4162 | 0 | 0 |  |  | -82.81 | 0 | As Soon As Possible | Auto Scheduled | AMETEK SAP XXL Project Plan Replan MSP Task.csv | AMETEK SAP XXL Project Plan Replan MSP Task.csv__2f0764ccac__2026-05-05T02-44-15-662Z | COULD NOT BE DETERMINED | 173 | True |  | Not started | True  -82.81 0 0 0 0 0 20 | Negative Float Critical 2 0 0  |  | 4207, 4209, 4212, 4211, 4208, 4210 | True |
| 357ae9be-8a60-81b7-bdff-e977e8bf72f6 | 2752 | Load Descartes XML File | OTC | 1.2.4.2.59.1 | 1.2.4.2.59.1 | 2026-10-01 | 2026-10-01 | 2026-04-16 | 0 | 6 | 2751 | 1 | 1 | 357ae9be-8a60-8141-824b-e8fd9d3a2e0b | 357ae9be-8a60-8181-afeb-f49e49dec902 | -712.25 | 0 | Finish No Earlier Than | Auto Scheduled | AMETEK SAP XXL Project Plan Replan MSP Task.csv | AMETEK SAP XXL Project Plan Replan MSP Task.csv__2f0764ccac__2026-05-05T02-44-15-662Z | James VanRiper | 168 | True |  | Not started | True  -712.25 0 1 0 0 0 26 | Negative Float Critical 2 0 0 True | 2026-04-17 |  |  |
| 357ae9be-8a60-81b8-88ee-f911612fa3a6 | 1200 | Load | Data | 1.2.1.36.5 | 1.2.1.36.5 | 2026-04-21 | 2026-04-21 | 2026-04-20 | 100 | 5 | 1194 | 1 | 1 | 357ae9be-8a60-81ef-905d-d7a65cc86da2 | 357ae9be-8a60-8181-a92d-e4e135604429 | 0 | 0 | As Soon As Possible | Auto Scheduled | AMETEK SAP XXL Project Plan Replan MSP Task.csv | AMETEK SAP XXL Project Plan Replan MSP Task.csv__2f0764ccac__2026-05-05T02-44-15-662Z | Jyoti Nain |  |  |  | Done | True  0 0 1 0 0 0 18 | Low 0 0 0  |  |  |  |
| 357ae9be-8a60-81b8-95f5-d49dbdc3b29e | 1766 | Load File Staged and Posted "Ready" | OTC | 1.2.2.2.14.1 | 1.2.2.2.14.1 | 2026-05-21 | 2026-05-21 | 2026-04-09 | 0 | 6 | 1765 | 1 | 1 | 357ae9be-8a60-8165-879e-ff7efed7f937 | 357ae9be-8a60-8164-b87f-d06e7eba6c39 | -1741 | 0 | As Soon As Possible | Auto Scheduled | AMETEK SAP XXL Project Plan Replan MSP Task.csv | AMETEK SAP XXL Project Plan Replan MSP Task.csv__2f0764ccac__2026-05-05T02-44-15-662Z | Ric Haraida | 42 | True |  | Not started | True  -1741 0 1 0 0 0 26 | Wrong Dependency, Negative Float Critical 5 1 0  |  |  |  |
| 357ae9be-8a60-81b8-98c5-fe1166163e1b | 3315 | Simulate Load | Data | 1.2.3.2.67.3 | 1.2.3.2.67.3 | 2026-06-08 | 2026-06-08 | 2026-04-16 | 0 | 6 | 3312 | 1 | 1 | 357ae9be-8a60-8189-8e58-d1a18ca9d74d | 357ae9be-8a60-81e8-80ab-ee9c0a7bf5ae | -129.02 | 0 | As Soon As Possible | Auto Scheduled | AMETEK SAP XXL Project Plan Replan MSP Task.csv | AMETEK SAP XXL Project Plan Replan MSP Task.csv__2f0764ccac__2026-05-05T02-44-15-662Z | Jyoti Nain | 53 | True |  | Not started | True  -129.02 0 1 0 0 0 26 | Negative Float Critical 2 0 0  |  |  |  |
| 357ae9be-8a60-81b8-a405-f89c81819aa4 | 949 | VC_VK30 Pricing Variant | (Unassigned) | 1.2.1.49 | 1.2.1.49 | 2026-04-16 | 2026-04-16 | 2026-04-20 | 100 | 4 | 425 | 0 | 0 |  |  | 0 | 0 | As Soon As Possible | Auto Scheduled | AMETEK SAP XXL Project Plan Replan MSP Task.csv | AMETEK SAP XXL Project Plan Replan MSP Task.csv__2f0764ccac__2026-05-05T02-44-15-662Z | COULD NOT BE DETERMINED |  |  |  | Done | True  0 0 0 0 0 0 12 | Low 0 0 0  |  | 1106, 1108, 1107 | True |
| 357ae9be-8a60-81b8-a433-e66fb7a302e1 | 1112 | Load File Staged and Posted "Ready" | OTC | 1.2.1.51.1 | 1.2.1.51.1 | 2026-04-20 | 2026-04-20 | 2026-04-20 | 100 | 5 | 691 | 1 | 1 | 357ae9be-8a60-8102-a94c-cdab647a33ea | 357ae9be-8a60-8114-9797-f03b69b043bc | 0 | 0 | As Soon As Possible | Auto Scheduled | AMETEK SAP XXL Project Plan Replan MSP Task.csv | AMETEK SAP XXL Project Plan Replan MSP Task.csv__2f0764ccac__2026-05-05T02-44-15-662Z | Ric Haraida |  |  |  | Done | True  0 0 1 1 4 0 23 | Wrong Dependency High 3 1 0  |  |  |  |

| id | uid | name | workstream | outlineNumber | wbs | start | finish | baselineFinish | pct | outlineLevel | parentUid | predCount | sucCount | predIds | sucIds | totalSlackDaysRaw | freeSlackDaysRaw | constraintType | taskMode | mspSourceFile | mspImportVersion | assignedTo | slipDays | isSlipped | isDue14 | status | cpm | scheduleQuality | constraintDate | childUids | isSummary |
| --- | --- | --- | --- | --- | --- | --- | --- | --- | --- | --- | --- | --- | --- | --- | --- | --- | --- | --- | --- | --- | --- | --- | --- | --- | --- | --- | --- | --- | --- | --- | --- |
| 357ae9be-8a60-81b8-a4ff-c5e3efd06614 | 1862 | Pre Load Validation | PTP | 1.2.2.2.28.2 | 1.2.2.2.28.2 | 2026-05-21 | 2026-05-21 | 2026-04-15 | 0 | 6 | 1860 | 1 | 1 | 357ae9be-8a60-81ed-9345-d65edf6dcd68 | 357ae9be-8a60-81ea-bd71-c090833600e6 | -2056 | 0 | As Soon As Possible | Auto Scheduled | AMETEK SAP XXL Project Plan Replan MSP Task.csv | AMETEK SAP XXL Project Plan Replan MSP Task.csv__2f0764ccac__2026-05-05T02-44-15-662Z | Nevin Varkey | 36 | True |  | Not started | True  -2056 0 1 0 0 0 26 | Negative Float Critical 2 0 0  |  |  |  |
| 357ae9be-8a60-81b8-a72d-e5ef503e8f76 | 1162 | Run ALE Transaction to QS5 from DS4 130 | PTM | 1.2.1.43.1 | 1.2.1.43.1 | 2026-04-15 | 2026-04-16 | 2026-04-16 | 100 | 5 | 943 | 1 | 1 | 357ae9be-8a60-8129-9c37-e7c6a71bbf70 | 357ae9be-8a60-81c0-9714-cbf76c5b0677 | 0 | 0 | As Soon As Possible | Auto Scheduled | AMETEK SAP XXL Project Plan Replan MSP Task.csv | AMETEK SAP XXL Project Plan Replan MSP Task.csv__2f0764ccac__2026-05-05T02-44-15-662Z | Eric Heisler |  |  |  | Done | True  0 0 1 0 0 0 18 | Wrong Dependency High 3 1 0  |  |  |  |
| 357ae9be-8a60-81b8-b5d2-fe7e40e21c28 | 1747 | Error and Defect Mitigation | Finance | 1.2.2.2.10.4 | 1.2.2.2.10.4 | 2026-05-19 | 2026-05-19 | 2026-04-10 | 0 | 6 | 1743 | 1 | 1 | 357ae9be-8a60-8149-ad97-fdea27e16201 | 357ae9be-8a60-8137-8f18-efa83c85202d | -16.52 | 0 | As Soon As Possible | Auto Scheduled | AMETEK SAP XXL Project Plan Replan MSP Task.csv | AMETEK SAP XXL Project Plan Replan MSP Task.csv__2f0764ccac__2026-05-05T02-44-15-662Z | Kasey Hughes | 39 | True | True | Not started | True  -16.52 0 1 0 0 0 26 | Negative Float Critical 2 0 0  |  |  |  |
| 357ae9be-8a60-81b9-82ce-d0a7b0260051 | 2659 | Load | Data | 1.2.4.2.36.5 | 1.2.4.2.36.5 | 2026-10-02 | 2026-10-02 | 2026-04-21 | 0 | 6 | 2654 | 1 | 0 | 357ae9be-8a60-8180-8a3a-c9263bbfcc43 |  | -695.75 | 0 | Finish No Earlier Than | Auto Scheduled | AMETEK SAP XXL Project Plan Replan MSP Task.csv | AMETEK SAP XXL Project Plan Replan MSP Task.csv__2f0764ccac__2026-05-05T02-44-15-662Z | Jyoti Nain | 164 | True |  | Not started | True  -695.75 0 0 0 0 0 20 | Negative Float, Open Finish Critical 3 0 0 True | 2026-04-21 |  |  |
| 357ae9be-8a60-81b9-84a1-d6d7a03a86bc | 3033 | Update number range BP02 from Internal to External | OTC | 1.2.3.2.13.4 | 1.2.3.2.13.4 | 2026-06-11 | 2026-06-11 | 2026-04-10 | 0 | 6 | 3029 | 1 | 1 | 357ae9be-8a60-815f-a009-cf6d68a662c6 | 357ae9be-8a60-8121-85c5-e1255ff88d54 | -8956 | 0 | As Soon As Possible | Auto Scheduled | AMETEK SAP XXL Project Plan Replan MSP Task.csv | AMETEK SAP XXL Project Plan Replan MSP Task.csv__2f0764ccac__2026-05-05T02-44-15-662Z | Ric Haraida | 62 | True |  | Not started | True  -8956 0 1 0 0 0 26 | Negative Float Critical 2 0 0  |  |  |  |
| 357ae9be-8a60-81b9-9737-ebb246551f5a | 4502 | Commodity Code/Tarif | (Unassigned) | 1.2.5.2.63 | 1.2.5.2.63 | 2026-10-02 | 2026-10-06 | 2026-04-16 | 0 | 5 | 4162 | 0 | 0 |  |  | -89.03 | 0 | As Soon As Possible | Auto Scheduled | AMETEK SAP XXL Project Plan Replan MSP Task.csv | AMETEK SAP XXL Project Plan Replan MSP Task.csv__2f0764ccac__2026-05-05T02-44-15-662Z | COULD NOT BE DETERMINED | 173 | True |  | Not started | True  -89.03 0 0 0 0 0 20 | Negative Float Critical 2 0 0  |  | 4504, 4503 | True |
| 357ae9be-8a60-81b9-a680-ccb4ab1a635e | 2429 | Manual File Staged and Posted "Ready" | Finance | 1.2.4.2.2.1 | 1.2.4.2.2.1 | 2026-09-24 | 2026-09-24 | 2026-04-06 | 0 | 6 | 2428 | 1 | 1 | 357ae9be-8a60-8164-9d0a-fda0094c8875 | 357ae9be-8a60-8166-ac69-e0fd549061d9 | -718.5 | 0 | Start No Earlier Than | Auto Scheduled | AMETEK SAP XXL Project Plan Replan MSP Task.csv | AMETEK SAP XXL Project Plan Replan MSP Task.csv__2f0764ccac__2026-05-05T02-44-15-662Z | Kasey Hughes | 171 | True |  | Not started | True  -718.5 0 1 0 0 0 26 | Wrong Dependency, Negative Float Critical 5 1 0 True | 2026-04-06 |  |  |
| 357ae9be-8a60-81b9-a8d4-fdbcce932b06 | 1826 | Load File Staged and Posted "Ready" | PTP;OTC | 1.2.2.2.23.1 | 1.2.2.2.23.1 | 2026-05-18 | 2026-05-18 | 2026-04-13 | 0 | 6 | 1825 | 0 | 0 |  |  | -1 | 0 | As Soon As Possible | Auto Scheduled | AMETEK SAP XXL Project Plan Replan MSP Task.csv | AMETEK SAP XXL Project Plan Replan MSP Task.csv__2f0764ccac__2026-05-05T02-44-15-662Z | Nevin Varkey | 35 | True | True | Not started | True  -1 0 0 0 0 0 20 | Negative Float, Open Start, Open Finish High 4 0 0  |  |  |  |
| 357ae9be-8a60-81b9-b573-f0eec733742b | 3050 | Extract File | Data | 1.2.3.2.15.1 | 1.2.3.2.15.1 | 2026-06-15 | 2026-06-15 | 2026-04-10 | 0 | 6 | 3049 | 1 | 1 | 357ae9be-8a60-8185-a2d9-d16ed2b25102 | 357ae9be-8a60-8127-8926-d844ab4f8e3e | -196.52 | 0 | As Soon As Possible | Auto Scheduled | AMETEK SAP XXL Project Plan Replan MSP Task.csv | AMETEK SAP XXL Project Plan Replan MSP Task.csv__2f0764ccac__2026-05-05T02-44-15-662Z | Jyoti Nain | 66 | True |  | Not started | True  -196.52 0 1 0 0 0 26 | Wrong Dependency, Negative Float Critical 5 1 0  |  |  |  |
| 357ae9be-8a60-81b9-ba8b-eb88a2b87fa7 | 3245 | Post Load Validation | OTC | 1.2.3.2.49.3 | 1.2.3.2.49.3 | 2026-06-18 | 2026-06-18 | 2026-04-21 | 0 | 6 | 3242 | 1 | 0 | 357ae9be-8a60-81be-9309-cc7ef19947f8 |  | -186.27 | 0 | As Soon As Possible | Auto Scheduled | AMETEK SAP XXL Project Plan Replan MSP Task.csv | AMETEK SAP XXL Project Plan Replan MSP Task.csv__2f0764ccac__2026-05-05T02-44-15-662Z | Ric Haraida | 58 | True |  | Not started | True  -186.27 0 0 0 0 0 20 | Wrong Dependency, Negative Float, Open Finish Critical 6 1 0  |  |  |  |
| 357ae9be-8a60-81ba-80c3-cd008aac624f | 4294 | Post Load Validation | Finance | 1.2.5.2.21.3 | 1.2.5.2.21.3 | 2026-10-02 | 2026-10-05 | 2026-04-13 | 0 | 6 | 4291 | 1 | 0 | 357ae9be-8a60-812c-b726-c9729f4a8c39 |  | -699.77 | 0 | As Soon As Possible | Auto Scheduled | AMETEK SAP XXL Project Plan Replan MSP Task.csv | AMETEK SAP XXL Project Plan Replan MSP Task.csv__2f0764ccac__2026-05-05T02-44-15-662Z | Kasey Hughes | 175 | True |  | Not started | True  -699.77 0 0 0 0 0 20 | Negative Float, Open Finish Critical 3 0 0  |  |  |  |
| 357ae9be-8a60-81ba-849f-f9409342a203 | 1134 | Pre Load Validation | PTM | 1.2.1.55.2 | 1.2.1.55.2 | 2026-04-16 | 2026-04-16 | 2026-04-16 | 100 | 5 | 715 | 1 | 1 | 357ae9be-8a60-81c8-8304-e8fae34f64be | 357ae9be-8a60-8114-9ddd-c9ed98d76f10 | 0 | 0 | As Soon As Possible | Auto Scheduled | AMETEK SAP XXL Project Plan Replan MSP Task.csv | AMETEK SAP XXL Project Plan Replan MSP Task.csv__2f0764ccac__2026-05-05T02-44-15-662Z | Brad Meseck |  |  |  | Done | True  0 0 1 0 0 0 18 | Low 0 0 0  |  |  |  |
| 357ae9be-8a60-81ba-8906-ed7df9dfa75f | 1214 | Load | OTC | 1.2.1.64.1 | 1.2.1.64.1 | 2026-04-16 | 2026-04-20 | 2026-04-16 | 100 | 5 | 1213 | 1 | 1 | 357ae9be-8a60-8108-b4e6-d20455b939d8 | 357ae9be-8a60-8138-9740-c3a2e26ce964 | 0 | 0 | Finish No Earlier Than | Auto Scheduled | AMETEK SAP XXL Project Plan Replan MSP Task.csv | AMETEK SAP XXL Project Plan Replan MSP Task.csv__2f0764ccac__2026-05-05T02-44-15-662Z | James VanRiper |  |  |  | Done | True  0 0 1 0 0 0 18 | Wrong Dependency High 3 1 0 True | 2026-04-20 |  |  |
| 357ae9be-8a60-81ba-8c68-c9dfba5c3471 | 4351 | PTM_CM31_BOM Conversion | PTM | 1.2.5.2.30 | 1.2.5.2.30 | 2026-09-29 | 2026-10-01 | 2026-04-17 | 0 | 5 | 4162 | 0 | 0 |  |  | -87.55 | 0 | As Soon As Possible | Auto Scheduled | AMETEK SAP XXL Project Plan Replan MSP Task.csv | AMETEK SAP XXL Project Plan Replan MSP Task.csv__2f0764ccac__2026-05-05T02-44-15-662Z | Brad Meseck | 167 | True |  | Not started | True  -87.55 0 0 0 0 0 20 | Negative Float Critical 2 0 0  |  | 4357, 4356, 4355, 4353, 4354, 4352 | True |
| 357ae9be-8a60-81ba-8dd6-de8382df1265 | 964 | Post Load Validation | Finance | 1.2.1.6.6 | 1.2.1.6.6 | 2026-04-08 | 2026-04-09 | 2026-04-09 | 100 | 5 | 767 | 1 | 0 | 357ae9be-8a60-8141-8e10-fc3d20299796 |  | 0 | 0 | As Soon As Possible | Auto Scheduled | AMETEK SAP XXL Project Plan Replan MSP Task.csv | AMETEK SAP XXL Project Plan Replan MSP Task.csv__2f0764ccac__2026-05-05T02-44-15-662Z | Kasey Hughes |  |  |  | Done | True  0 0 0 0 0 0 12 | Low 0 0 0  |  |  |  |
| 357ae9be-8a60-81ba-8f50-ce4b6cf5cc1d | 966 | Pre Load Validation | Finance | 1.2.1.9.2 | 1.2.1.9.2 | 2026-04-07 | 2026-04-07 | 2026-04-07 | 100 | 5 | 753 | 1 | 1 | 357ae9be-8a60-814f-ad89-edc8c17fb7c1 | 357ae9be-8a60-81a4-9c9d-dc7e6334c756 | 0 | 0 | As Soon As Possible | Auto Scheduled | AMETEK SAP XXL Project Plan Replan MSP Task.csv | AMETEK SAP XXL Project Plan Replan MSP Task.csv__2f0764ccac__2026-05-05T02-44-15-662Z | Kasey Hughes |  |  |  | Done | True  0 0 1 0 0 0 18 | Low 0 0 0  |  |  |  |
| 357ae9be-8a60-81ba-96b1-c0533b227b88 | 4321 | Load | Data | 1.2.5.2.25.5 | 1.2.5.2.25.5 | 2026-09-28 | 2026-09-28 | 2026-04-15 | 0 | 6 | 4316 | 1 | 1 | 357ae9be-8a60-815f-b171-f1b001db5eeb | 357ae9be-8a60-81f7-8e1f-e0cd03bcbdec | -667.27 | 0 | As Soon As Possible | Auto Scheduled | AMETEK SAP XXL Project Plan Replan MSP Task.csv | AMETEK SAP XXL Project Plan Replan MSP Task.csv__2f0764ccac__2026-05-05T02-44-15-662Z | Jyoti Nain | 166 | True |  | Not started | True  -667.27 0 1 0 0 0 26 | Negative Float Critical 2 0 0  |  |  |  |
| 357ae9be-8a60-81ba-995f-e2e5cccdccc6 | 1188 | Load Descartes XML File | OTC | 1.2.1.67.1 | 1.2.1.67.1 | 2026-04-16 | 2026-04-16 | 2026-04-16 | 100 | 5 | 955 | 1 | 1 | 357ae9be-8a60-8108-b4e6-d20455b939d8 | 357ae9be-8a60-8167-b0ab-f07e70c41731 | 0 | 0 | As Soon As Possible | Auto Scheduled | AMETEK SAP XXL Project Plan Replan MSP Task.csv | AMETEK SAP XXL Project Plan Replan MSP Task.csv__2f0764ccac__2026-05-05T02-44-15-662Z | James VanRiper |  |  |  | Done | True  0 0 0 0 0 0 14 | Wrong Dependency, Wrong Successor Critical 6 1 1  |  |  |  |
| 357ae9be-8a60-81ba-9965-e975cd83e4c3 | 2484 | Simulate Load | Data | 1.2.4.2.10.3 | 1.2.4.2.10.3 | 2026-09-25 | 2026-09-25 | 2026-04-10 | 0 | 6 | 2481 | 1 | 1 | 357ae9be-8a60-8122-aa76-c00f46155d21 | 357ae9be-8a60-813c-9a64-f6e14b6c9683 | -658.5 | 0 | As Soon As Possible | Auto Scheduled | AMETEK SAP XXL Project Plan Replan MSP Task.csv | AMETEK SAP XXL Project Plan Replan MSP Task.csv__2f0764ccac__2026-05-05T02-44-15-662Z | Jyoti Nain | 168 | True |  | Not started | True  -658.5 0 1 0 0 0 26 | Negative Float Critical 2 0 0  |  |  |  |
| 357ae9be-8a60-81ba-a4c4-cc35e34a4349 | 3090 | Load | Finance | 1.2.3.2.21.2 | 1.2.3.2.21.2 | 2026-06-16 | 2026-06-17 | 2026-04-13 | 0 | 6 | 3088 | 1 | 1 | 357ae9be-8a60-8184-a2dd-e06846377ce6 | 357ae9be-8a60-817d-b258-ef9b07b323f1 | -177.77 | 0 | As Soon As Possible | Auto Scheduled | AMETEK SAP XXL Project Plan Replan MSP Task.csv | AMETEK SAP XXL Project Plan Replan MSP Task.csv__2f0764ccac__2026-05-05T02-44-15-662Z | Kasey Hughes | 65 | True |  | Not started | True  -177.77 0 1 0 0 0 26 | Wrong Dependency, Negative Float Critical 5 1 0  |  |  |  |
| 357ae9be-8a60-81ba-a6d8-f4fea5b8e4c0 | 3000 | Error and Defect Mitigation | Finance | 1.2.3.2.7.4 | 1.2.3.2.7.4 | 2026-06-12 | 2026-06-12 | 2026-04-09 | 0 | 6 | 2996 | 1 | 1 | 357ae9be-8a60-819a-ace4-ffa75758544e | 357ae9be-8a60-81fc-9ee0-ea551c5d3fda | -158.02 | 0 | As Soon As Possible | Auto Scheduled | AMETEK SAP XXL Project Plan Replan MSP Task.csv | AMETEK SAP XXL Project Plan Replan MSP Task.csv__2f0764ccac__2026-05-05T02-44-15-662Z | Kasey Hughes | 64 | True |  | Not started | True  -158.02 0 1 0 0 0 26 | Negative Float Critical 2 0 0  |  |  |  |
| 357ae9be-8a60-81ba-ae20-fcc76a803442 | 3250 | Error and Defect Mitigation | OTC | 1.2.3.2.50.4 | 1.2.3.2.50.4 | 2026-06-18 | 2026-06-18 | 2026-04-21 | 0 | 6 | 3246 | 1 | 1 | 357ae9be-8a60-81b0-967a-c77e5905b210 | 357ae9be-8a60-8189-aca6-c0214ba15331 | -187.27 | 0 | As Soon As Possible | Auto Scheduled | AMETEK SAP XXL Project Plan Replan MSP Task.csv | AMETEK SAP XXL Project Plan Replan MSP Task.csv__2f0764ccac__2026-05-05T02-44-15-662Z | Ric Haraida | 58 | True |  | Not started | True  -187.27 0 1 0 0 0 26 | Negative Float Critical 2 0 0  |  |  |  |
| 357ae9be-8a60-81ba-af14-edd006ddda83 | 1007 | Simulate Load/ Not Needed | PTP | 1.2.1.21.3 | 1.2.1.21.3 | 2026-04-16 | 2026-04-16 | 2026-04-10 | 100 | 5 | 692 | 1 | 1 | 357ae9be-8a60-8114-84e5-ec0de541e927 | 357ae9be-8a60-8128-990c-f0e73118848a | 0 | 0 | As Soon As Possible | Auto Scheduled | AMETEK SAP XXL Project Plan Replan MSP Task.csv | AMETEK SAP XXL Project Plan Replan MSP Task.csv__2f0764ccac__2026-05-05T02-44-15-662Z | Nevin Varkey |  |  |  | Done | True  0 0 1 1 399 0 23 | Wrong Successor High 3 0 1  |  |  |  |
| 357ae9be-8a60-81bb-81ab-fb001b48bd4a | 1055 | Post Load Validation | PTP | 1.2.1.30.6 | 1.2.1.30.6 | 2026-04-16 | 2026-04-16 | 2026-04-16 | 100 | 5 | 937 | 1 | 0 | 357ae9be-8a60-813e-9086-da5ee1cca0d0 |  | 0 | 0 | As Soon As Possible | Auto Scheduled | AMETEK SAP XXL Project Plan Replan MSP Task.csv | AMETEK SAP XXL Project Plan Replan MSP Task.csv__2f0764ccac__2026-05-05T02-44-15-662Z | Nevin Varkey |  |  |  | Done | True  0 0 0 0 0 0 12 | Low 0 0 0  |  |  |  |
| 357ae9be-8a60-81bb-9659-e03253dd803c | 1285 | System Refresh Basis(Workinig with NS2) | Basis | 1.1.1.6.1.1 | 1.1.1.6.1.1 | 2026-05-18 | 2026-05-20 | 2026-05-01 | 0 | 6 | 3339 | 0 | 1 |  | 357ae9be-8a60-818f-80a6-d8c478ba9f00 | 0 | 0 | Must Start On | Auto Scheduled | AMETEK SAP XXL Project Plan Replan MSP Task.csv | AMETEK SAP XXL Project Plan Replan MSP Task.csv__2f0764ccac__2026-05-05T02-44-15-662Z | Lokchetan Meghavath | 19 | True | True | Not started | True  0 0 1 0 0 0 26 | Open Start Medium 1 0 0 True | 2026-05-18 |  |  |
| 357ae9be-8a60-81bb-96bd-dc1afe742a6c | 2898 | Master Data Loads | Data | 1.2.4.2 | 1.2.4.2 | 2026-09-24 | 2026-10-08 | 2026-10-08 | 0 | 4 | 2422 | 1 | 1 | 357ae9be-8a60-8107-ad19-eb3f9a8b23bc | 357ae9be-8a60-8186-82d7-dea6d97c0abb | -90.75 | 0 | As Soon As Possible | Auto Scheduled | AMETEK SAP XXL Project Plan Replan MSP Task.csv | AMETEK SAP XXL Project Plan Replan MSP Task.csv__2f0764ccac__2026-05-05T02-44-15-662Z | Jyoti Nain |  |  |  | Not started | True  -90.75 0 1 0 0 0 18 | Wrong Dependency, Negative Float Critical 5 1 0  |  |  | True |
| 357ae9be-8a60-81bb-9f23-e337f1055c39 | 1732 | Simulate Load | Data | 1.2.2.2.8.3 | 1.2.2.2.8.3 | 2026-05-20 | 2026-05-20 | 2026-04-08 | 0 | 6 | 1729 | 1 | 1 | 357ae9be-8a60-81d0-a6cc-eb33168f1f1d | 357ae9be-8a60-819f-9913-ff22bc821c2c | -20.52 | 0 | As Soon As Possible | Auto Scheduled | AMETEK SAP XXL Project Plan Replan MSP Task.csv | AMETEK SAP XXL Project Plan Replan MSP Task.csv__2f0764ccac__2026-05-05T02-44-15-662Z | Jyoti Nain | 42 | True | True | Not started | True  -20.52 0 1 0 0 0 26 | Negative Float Critical 2 0 0  |  |  |  |
| 357ae9be-8a60-81bb-b8c6-ec1c09c974e8 | 2716 | Post Load Validation | OTC | 1.2.4.2.50.6 | 1.2.4.2.50.6 | 2026-10-08 | 2026-10-08 | 2026-04-21 | 0 | 6 | 2710 | 1 | 0 | 357ae9be-8a60-81a6-afc8-eff693af38b3 |  | -726 | 0 | As Soon As Possible | Auto Scheduled | AMETEK SAP XXL Project Plan Replan MSP Task.csv | AMETEK SAP XXL Project Plan Replan MSP Task.csv__2f0764ccac__2026-05-05T02-44-15-662Z | Ric Haraida | 170 | True |  | Not started | True  -726 0 0 0 0 0 20 | Negative Float, Open Finish Critical 3 0 0  |  |  |  |
| 357ae9be-8a60-81bc-8468-d3249e5e4458 | 1849 | Simulate Load | Data | 1.2.2.2.26.3 | 1.2.2.2.26.3 | 2026-05-20 | 2026-05-20 | 2026-04-14 | 0 | 6 | 1846 | 1 | 1 | 357ae9be-8a60-8123-a7a5-dd8ef0c1f036 | 357ae9be-8a60-8171-b015-f586e694fecc | -70.27 | 0 | As Soon As Possible | Auto Scheduled | AMETEK SAP XXL Project Plan Replan MSP Task.csv | AMETEK SAP XXL Project Plan Replan MSP Task.csv__2f0764ccac__2026-05-05T02-44-15-662Z | Jyoti Nain | 36 | True | True | Not started | True  -70.27 0 1 0 0 0 26 | Negative Float Critical 2 0 0  |  |  |  |
| 357ae9be-8a60-81bc-92bf-e7a3456f3cfc | 2989 | Load | Data | 1.2.3.2.5.5 | 1.2.3.2.5.5 | 2026-06-10 | 2026-06-10 | 2026-04-08 | 0 | 6 | 2984 | 1 | 1 | 357ae9be-8a60-813d-8409-e017c2722552 | 357ae9be-8a60-811f-b3bd-fc58add07958 | -183.52 | 0 | As Soon As Possible | Auto Scheduled | AMETEK SAP XXL Project Plan Replan MSP Task.csv | AMETEK SAP XXL Project Plan Replan MSP Task.csv__2f0764ccac__2026-05-05T02-44-15-662Z | Jyoti Nain | 63 | True |  | Not started | True  -183.52 0 1 0 0 0 26 | Negative Float Critical 2 0 0  |  |  |  |
| 357ae9be-8a60-81bc-a252-d09f686ad4e4 | 950 | RTR_CM17_Project Definition / Builder | (Unassigned) | 1.2.1.68 | 1.2.1.68 | 2026-04-20 | 2026-04-21 | 2026-04-17 | 100 | 4 | 425 | 0 | 0 |  |  | 0 | 0 | As Soon As Possible | Auto Scheduled | AMETEK SAP XXL Project Plan Replan MSP Task.csv | AMETEK SAP XXL Project Plan Replan MSP Task.csv__2f0764ccac__2026-05-05T02-44-15-662Z | COULD NOT BE DETERMINED |  |  |  | Done | True  0 0 0 0 0 0 12 | Low 0 0 0  |  | 1140, 1144, 1141, 1139, 1142, 1143 | True |
| 357ae9be-8a60-81bc-ab5f-e84a78bf6dd0 | 3221 | VC_Characteristic Groups | (Unassigned) | 1.2.3.2.45 | 1.2.3.2.45 | 2026-06-12 | 2026-06-16 | 2026-04-17 | 0 | 5 | 2959 | 0 | 0 |  |  | -20.75 | 0 | As Soon As Possible | Auto Scheduled | AMETEK SAP XXL Project Plan Replan MSP Task.csv | AMETEK SAP XXL Project Plan Replan MSP Task.csv__2f0764ccac__2026-05-05T02-44-15-662Z | COULD NOT BE DETERMINED | 60 | True |  | Not started | True  -20.75 0 0 0 0 0 20 | Negative Float Critical 2 0 0  |  | 3223, 3222 | True |
| 357ae9be-8a60-81bc-b0a6-f724853cc828 | 1124 | Error and Defect Mitigation | Finance | 1.2.1.53.4 | 1.2.1.53.4 | 2026-04-21 | 2026-04-22 | 2026-04-10 | 100 | 5 | 702 | 1 | 1 | 357ae9be-8a60-812a-9549-e49160ba8123 | 357ae9be-8a60-814b-917a-dc7033595b70 | 0 | 0 | Finish No Earlier Than | Auto Scheduled | AMETEK SAP XXL Project Plan Replan MSP Task.csv | AMETEK SAP XXL Project Plan Replan MSP Task.csv__2f0764ccac__2026-05-05T02-44-15-662Z | Kasey Hughes |  |  |  | Done | True  0 0 1 0 0 0 18 | Low 0 0 0 True | 2026-04-17 |  |  |
| 357ae9be-8a60-81bc-bda6-ef5dab0a516e | 2742 | GTS - Customers initial load from S4 (Run Interface) | (Unassigned) | 1.2.4.2.56 | 1.2.4.2.56 | 2026-09-24 | 2026-09-24 | 2026-04-10 | 0 | 5 | 2898 | 0 | 0 |  |  | -80.44 | 0 | As Soon As Possible | Auto Scheduled | AMETEK SAP XXL Project Plan Replan MSP Task.csv | AMETEK SAP XXL Project Plan Replan MSP Task.csv__2f0764ccac__2026-05-05T02-44-15-662Z | COULD NOT BE DETERMINED | 167 | True |  | Not started | True  -80.44 0 0 0 0 0 20 | Negative Float Critical 2 0 0  |  | 2744, 2743 | True |
| 357ae9be-8a60-81bd-8572-c9e803b0a8e9 | 1204 | Simulate Load | Data | 1.2.1.37.3 | 1.2.1.37.3 | 2026-04-22 | 2026-04-22 | 2026-04-20 | 100 | 5 | 1195 | 1 | 1 | 357ae9be-8a60-81ce-a22e-d9f8795df7bf | 357ae9be-8a60-8111-a18c-f94bd7480c26 | 0 | 0 | As Soon As Possible | Auto Scheduled | AMETEK SAP XXL Project Plan Replan MSP Task.csv | AMETEK SAP XXL Project Plan Replan MSP Task.csv__2f0764ccac__2026-05-05T02-44-15-662Z | Jyoti Nain |  |  |  | Done | True  0 0 1 0 0 0 18 | Low 0 0 0  |  |  |  |
| 357ae9be-8a60-81bd-88ea-ecf738c80151 | 4516 | Load File Staged and Posted "Ready" | Finance | 1.2.5.2.67.1 | 1.2.5.2.67.1 | 2026-09-24 | 2026-09-24 | 2026-04-10 | 0 | 6 | 4515 | 1 | 2 | 357ae9be-8a60-8165-bfc0-eec719389d3f | 357ae9be-8a60-814a-bcd1-e3c51083fd6a, 357ae9be-8a60-8146-873e-eac75feabbe6 | -39091 | 0 | Start No Earlier Than | Auto Scheduled | AMETEK SAP XXL Project Plan Replan MSP Task.csv | AMETEK SAP XXL Project Plan Replan MSP Task.csv__2f0764ccac__2026-05-05T02-44-15-662Z | Kasey Hughes | 167 | True |  | Not started | True  -39091 0 2 0 0 0 32 | Negative Float Critical 2 0 0 True | 2026-04-20 |  |  |
| 357ae9be-8a60-81bd-897f-e579420227f1 | 4164 | Manual File Staged and Posted "Ready" | Finance | 1.2.5.2.1.1 | 1.2.5.2.1.1 | 2026-09-24 | 2026-09-24 | 2026-04-06 | 0 | 6 | 4163 | 1 | 1 | 357ae9be-8a60-81e0-9d16-ea967b28bc5d | 357ae9be-8a60-81e6-a029-e1635939f13f | -718.52 | 0 | Start No Earlier Than | Auto Scheduled | AMETEK SAP XXL Project Plan Replan MSP Task.csv | AMETEK SAP XXL Project Plan Replan MSP Task.csv__2f0764ccac__2026-05-05T02-44-15-662Z | Kasey Hughes | 171 | True |  | Not started | True  -718.52 0 1 0 0 0 26 | Negative Float Critical 2 0 0 True | 2026-04-06 |  |  |
| 357ae9be-8a60-81bd-923d-f153fc4c76ab | 4302 | PTP_CM27_BP_Intercompany Customer | PTP | 1.2.5.2.23 | 1.2.5.2.23 | 2026-09-24 | 2026-09-25 | 2026-04-14 | 0 | 5 | 4162 | 0 | 0 |  |  | -81.25 | 0 | As Soon As Possible | Auto Scheduled | AMETEK SAP XXL Project Plan Replan MSP Task.csv | AMETEK SAP XXL Project Plan Replan MSP Task.csv__2f0764ccac__2026-05-05T02-44-15-662Z | Muniraju Surappachari | 164 | True |  | Not started | True  -81.25 0 0 0 0 0 20 | Negative Float Critical 2 0 0  |  | 4303, 4305, 4308, 4304, 4307, 4306 | True |
| 357ae9be-8a60-81bd-9497-d135350e1643 | 3029 | OTC_CM19_Customer_Master - Ship-To | OTC | 1.2.3.2.13 | 1.2.3.2.13 | 2026-06-11 | 2026-06-15 | 2026-04-13 | 0 | 5 | 2959 | 0 | 0 |  |  | -24.31 | 0 | As Soon As Possible | Auto Scheduled | AMETEK SAP XXL Project Plan Replan MSP Task.csv | AMETEK SAP XXL Project Plan Replan MSP Task.csv__2f0764ccac__2026-05-05T02-44-15-662Z | Anitha Jothi | 63 | True |  | Not started | True  -24.31 0 0 0 0 0 20 | Negative Float Critical 2 0 0  |  | 3031, 3038, 3034, 3036, 3037, 3030, 3032, 3033, 3035 | True |
| 357ae9be-8a60-81bd-9758-e36d07e44e6d | 4223 | Simulate Load | Data | 1.2.5.2.10.3 | 1.2.5.2.10.3 | 2026-09-25 | 2026-09-25 | 2026-04-10 | 0 | 6 | 4220 | 1 | 1 | 357ae9be-8a60-8182-813b-e09bf94d12da | 357ae9be-8a60-8105-aab0-da7c089be7c3 | -658.52 | 0 | As Soon As Possible | Auto Scheduled | AMETEK SAP XXL Project Plan Replan MSP Task.csv | AMETEK SAP XXL Project Plan Replan MSP Task.csv__2f0764ccac__2026-05-05T02-44-15-662Z | Jyoti Nain | 168 | True |  | Not started | True  -658.52 0 1 0 0 0 26 | Negative Float Critical 2 0 0  |  |  |  |
| 357ae9be-8a60-81bd-ade7-c1b72500e034 | 1873 | Post Load Validation | PTP | 1.2.2.2.29.6 | 1.2.2.2.29.6 | 2026-05-22 | 2026-05-22 | 2026-04-16 | 0 | 6 | 1867 | 1 | 0 | 357ae9be-8a60-8125-bd31-c3fd6e8cf868 |  | -34.27 | 0 | As Soon As Possible | Auto Scheduled | AMETEK SAP XXL Project Plan Replan MSP Task.csv | AMETEK SAP XXL Project Plan Replan MSP Task.csv__2f0764ccac__2026-05-05T02-44-15-662Z | Nevin Varkey | 36 | True |  | Not started | True  -34.27 0 0 0 0 0 20 | Negative Float, Open Finish Critical 3 0 0  |  |  |  |
| 357ae9be-8a60-81bd-b11f-ddf90c656d6c | 1241 | Update number range BP02 from Internal to External | OTC | 1.2.1.15.8 | 1.2.1.15.8 | 2026-04-09 | 2026-04-09 | 2026-04-09 | 100 | 5 | 762 | 1 | 1 | 357ae9be-8a60-8122-92fd-dc2e76279754 | 357ae9be-8a60-818a-afb2-e5962f5c53fc | 0 | 0 | As Soon As Possible | Auto Scheduled | AMETEK SAP XXL Project Plan Replan MSP Task.csv | AMETEK SAP XXL Project Plan Replan MSP Task.csv__2f0764ccac__2026-05-05T02-44-15-662Z | Ric Haraida |  |  |  | Done | True  0 0 1 0 0 0 18 | Low 0 0 0  |  |  |  |
| 357ae9be-8a60-81bd-b148-e03fada240e5 | 3065 | Load | Data | 1.2.3.2.17.5 | 1.2.3.2.17.5 | 2026-06-15 | 2026-06-18 | 2026-04-13 | 0 | 6 | 3060 | 1 | 1 | 357ae9be-8a60-81ca-880c-ca2bd9dec1f6 | 357ae9be-8a60-811f-ac51-d708aae733f7 | -185.02 | 0 | As Soon As Possible | Auto Scheduled | AMETEK SAP XXL Project Plan Replan MSP Task.csv | AMETEK SAP XXL Project Plan Replan MSP Task.csv__2f0764ccac__2026-05-05T02-44-15-662Z | Jyoti Nain | 66 | True |  | Not started | True  -185.02 0 1 0 0 0 26 | Negative Float Critical 2 0 0  |  |  |  |
| 357ae9be-8a60-81bd-bb6b-f2832b045154 | 4377 | Load | Data | 1.2.5.2.33.5 | 1.2.5.2.33.5 | 2026-09-30 | 2026-09-30 | 2026-04-17 | 0 | 6 | 4372 | 1 | 1 | 357ae9be-8a60-81a8-aecc-f7996977e225 | 357ae9be-8a60-81f6-871b-ea524cbb2802 | -695.77 | 0 | As Soon As Possible | Auto Scheduled | AMETEK SAP XXL Project Plan Replan MSP Task.csv | AMETEK SAP XXL Project Plan Replan MSP Task.csv__2f0764ccac__2026-05-05T02-44-15-662Z | Jyoti Nain | 166 | True |  | Not started | True  -695.77 0 1 0 0 0 26 | Negative Float Critical 2 0 0  |  |  |  |
| 357ae9be-8a60-81be-8698-c1c31a955ed7 | 1121 | Load File Staged and Posted "Ready" | Finance | 1.2.1.53.1 | 1.2.1.53.1 | 2026-04-15 | 2026-04-15 | 2026-04-10 | 100 | 5 | 702 | 0 | 1 |  | 357ae9be-8a60-81a1-8a3c-db65589908bd | 0 | 0 | Start No Earlier Than | Auto Scheduled | AMETEK SAP XXL Project Plan Replan MSP Task.csv | AMETEK SAP XXL Project Plan Replan MSP Task.csv__2f0764ccac__2026-05-05T02-44-15-662Z | Kasey Hughes |  |  |  | Done | True  0 0 0 0 0 0 14 | Wrong Successor High 3 0 1 True | 2026-04-15 |  |  |
| 357ae9be-8a60-81be-87b5-cc80be19e66b | 1871 | Error and Defect Mitigation | PTP | 1.2.2.2.29.4 | 1.2.2.2.29.4 | 2026-05-21 | 2026-05-21 | 2026-04-16 | 0 | 6 | 1867 | 1 | 1 | 357ae9be-8a60-8190-a12b-da3a9cac7964 | 357ae9be-8a60-8125-bd31-c3fd6e8cf868 | -34.27 | 0 | As Soon As Possible | Auto Scheduled | AMETEK SAP XXL Project Plan Replan MSP Task.csv | AMETEK SAP XXL Project Plan Replan MSP Task.csv__2f0764ccac__2026-05-05T02-44-15-662Z | Nevin Varkey | 35 | True |  | Not started | True  -34.27 0 1 0 0 0 26 | Wrong Dependency, Negative Float Critical 5 1 0  |  |  |  |
| 357ae9be-8a60-81be-9309-cc7ef19947f8 | 3244 | Load | OTC | 1.2.3.2.49.2 | 1.2.3.2.49.2 | 2026-06-17 | 2026-06-18 | 2026-04-20 | 0 | 6 | 3242 | 1 | 2 | 357ae9be-8a60-818f-831c-f6235bfbdd72 | 357ae9be-8a60-8108-90f1-c7a2d99193b6, 357ae9be-8a60-8127-91c7-d678dee33ec0 | -187.27 | 0 | As Soon As Possible | Auto Scheduled | AMETEK SAP XXL Project Plan Replan MSP Task.csv | AMETEK SAP XXL Project Plan Replan MSP Task.csv__2f0764ccac__2026-05-05T02-44-15-662Z | Ric Haraida | 59 | True |  | Not started | True  -187.27 0 1 1 423 0 33 | Wrong Successor, Negative Float Critical 5 0 2  |  |  |  |
| 357ae9be-8a60-81be-94ed-e3eff74ac789 | 4507 | Post Load Validation | OTC | 1.2.5.2.64.2 | 1.2.5.2.64.2 | 2026-10-02 | 2026-10-02 | 2025-03-13 | 0 | 6 | 4505 | 1 | 0 | 357ae9be-8a60-8131-9cc8-e4548099f127 |  | -691.02 | 0 | As Soon As Possible | Auto Scheduled | AMETEK SAP XXL Project Plan Replan MSP Task.csv | AMETEK SAP XXL Project Plan Replan MSP Task.csv__2f0764ccac__2026-05-05T02-44-15-662Z | James VanRiper | 568 | True |  | Not started | True  -691.02 0 0 0 0 0 20 | Negative Float, Open Finish Critical 3 0 0  |  |  |  |
| 357ae9be-8a60-81be-955c-fdd5e9141514 | 1988 | Load | Data | 1.2.2.2.52.5 | 1.2.2.2.52.5 | 2026-05-21 | 2026-05-21 | 2026-04-10 | 0 | 6 | 1983 | 1 | 1 | 357ae9be-8a60-8141-acad-c3a930ba728c | 357ae9be-8a60-8159-b1f5-ca1fd718d5fe | -29.52 | 0 | As Soon As Possible | Auto Scheduled | AMETEK SAP XXL Project Plan Replan MSP Task.csv | AMETEK SAP XXL Project Plan Replan MSP Task.csv__2f0764ccac__2026-05-05T02-44-15-662Z | Jyoti Nain | 41 | True |  | Not started | True  -29.52 0 1 0 0 0 26 | Negative Float Critical 2 0 0  |  |  |  |
| 357ae9be-8a60-81be-9a7c-f90344943d1c | 3205 | Post Load Validation | PTM | 1.2.3.2.39.2 | 1.2.3.2.39.2 | 2026-06-09 | 2026-06-10 | 2026-04-07 | 0 | 6 | 3203 | 1 | 1 | 357ae9be-8a60-8125-b8c1-f8ca2404d996 | 357ae9be-8a60-81ee-803a-ded81e38ad12 | -139.52 | 0 | As Soon As Possible | Auto Scheduled | AMETEK SAP XXL Project Plan Replan MSP Task.csv | AMETEK SAP XXL Project Plan Replan MSP Task.csv__2f0764ccac__2026-05-05T02-44-15-662Z | Eric Heisler | 64 | True |  | Not started | True  -139.52 0 1 0 0 0 26 | Wrong Successor, Negative Float Critical 5 0 1  |  |  |  |
| 357ae9be-8a60-81be-9cc0-e30dca35ec61 | 1954 | Error and Defect Mitigation | PTM | 1.2.2.2.46.4 | 1.2.2.2.46.4 | 2026-05-22 | 2026-05-22 | 2026-04-16 | 0 | 6 | 1950 | 1 | 1 | 357ae9be-8a60-8133-a4b7-d8780793bdb3 | 357ae9be-8a60-812e-b105-d4bd153b4c77 | -67.27 | 0 | As Soon As Possible | Auto Scheduled | AMETEK SAP XXL Project Plan Replan MSP Task.csv | AMETEK SAP XXL Project Plan Replan MSP Task.csv__2f0764ccac__2026-05-05T02-44-15-662Z | Eric Heisler | 36 | True |  | Not started | True  -67.27 0 1 0 0 0 26 | Negative Float Critical 2 0 0  |  |  |  |
| 357ae9be-8a60-81be-9d1d-ec760139afa1 | 2668 | Run ALE Transaction to QS5 from DS4 130 | PTM | 1.2.4.2.39.1 | 1.2.4.2.39.1 | 2026-09-25 | 2026-09-25 | 2026-04-07 | 0 | 6 | 2667 | 1 | 1 | 357ae9be-8a60-81b7-b8d4-cdad76b1053a | 357ae9be-8a60-8115-a512-cbb55bde2cca | -661.5 | 0 | As Soon As Possible | Auto Scheduled | AMETEK SAP XXL Project Plan Replan MSP Task.csv | AMETEK SAP XXL Project Plan Replan MSP Task.csv__2f0764ccac__2026-05-05T02-44-15-662Z | Eric Heisler | 171 | True |  | Not started | True  -661.5 0 1 0 0 0 26 | Negative Float Critical 2 0 0  |  |  |  |
| 357ae9be-8a60-81be-a0e4-d940959289e5 | 877 | Environment Ready for Test | PMO | 1.1.1.5.4 | 1.1.1.5.4 | 2026-05-14 | 2026-05-14 | 2026-07-16 | 0 | 5 | 849 | 1 | 0 | 357ae9be-8a60-81f2-ace4-d2324c0b7816 |  | -3931 | 0 | As Soon As Possible | Auto Scheduled | AMETEK SAP XXL Project Plan Replan MSP Task.csv | AMETEK SAP XXL Project Plan Replan MSP Task.csv__2f0764ccac__2026-05-05T02-44-15-662Z | Chris Hanily |  |  | True | Not started | True  -3931 0 0 0 0 0 12 | Negative Float, Open Finish Critical 3 0 0  |  |  |  |
| 357ae9be-8a60-81be-a859-f8c4d20103b7 | 4349 | Load | Data | 1.2.5.2.29.5 | 1.2.5.2.29.5 | 2026-09-29 | 2026-09-30 | 2026-04-16 | 0 | 6 | 4344 | 1 | 1 | 357ae9be-8a60-81c4-b7e5-fdc0952abaab | 357ae9be-8a60-81dc-b1d9-dab1813b07a5 | -676.27 | 0 | As Soon As Possible | Auto Scheduled | AMETEK SAP XXL Project Plan Replan MSP Task.csv | AMETEK SAP XXL Project Plan Replan MSP Task.csv__2f0764ccac__2026-05-05T02-44-15-662Z | Jyoti Nain | 167 | True |  | Not started | True  -676.27 0 1 0 0 0 26 | Negative Float Critical 2 0 0  |  |  |  |
| 357ae9be-8a60-81be-b299-f877cde78027 | 2981 | Error and Defect Mitigation | Finance | 1.2.3.2.4.4 | 1.2.3.2.4.4 | 2026-06-09 | 2026-06-09 | 2026-04-07 | 0 | 6 | 2977 | 1 | 1 | 357ae9be-8a60-819a-8c65-feccaf258a0f | 357ae9be-8a60-81cc-bc23-d33af56cbc0d | -183.52 | 0 | As Soon As Possible | Auto Scheduled | AMETEK SAP XXL Project Plan Replan MSP Task.csv | AMETEK SAP XXL Project Plan Replan MSP Task.csv__2f0764ccac__2026-05-05T02-44-15-662Z | Kasey Hughes | 63 | True |  | Not started | True  -183.52 0 1 0 0 0 26 | Negative Float Critical 2 0 0  |  |  |  |
| 357ae9be-8a60-81be-bdd7-f6be26ecc566 | 1184 | Load Descartes XML File | OTC | 1.2.1.62.1 | 1.2.1.62.1 | 2026-04-16 | 2026-04-16 | 2026-04-16 | 100 | 5 | 701 | 1 | 2 | 357ae9be-8a60-81de-8131-eaf293c31949 | 357ae9be-8a60-8187-9d2b-ce8f2dad5d54, 357ae9be-8a60-8105-bf78-d7b328b4d427 | 0 | 0 | As Soon As Possible | Auto Scheduled | AMETEK SAP XXL Project Plan Replan MSP Task.csv | AMETEK SAP XXL Project Plan Replan MSP Task.csv__2f0764ccac__2026-05-05T02-44-15-662Z | James VanRiper |  |  |  | Done | True  0 0 0 0 0 0 16 | Wrong Successor High 3 0 2  |  |  |  |
| 357ae9be-8a60-81bf-88b4-de4f088a3648 | 1758 | Open client for BP number range update | Basis | 1.2.2.2.13.3 | 1.2.2.2.13.3 | 2026-05-21 | 2026-05-21 | 2026-04-09 | 0 | 6 | 1755 | 1 | 1 | 357ae9be-8a60-8165-879e-ff7efed7f937 | 357ae9be-8a60-817a-afe8-e5e3801fb7e8 | -1756 | 0 | As Soon As Possible | Auto Scheduled | AMETEK SAP XXL Project Plan Replan MSP Task.csv | AMETEK SAP XXL Project Plan Replan MSP Task.csv__2f0764ccac__2026-05-05T02-44-15-662Z | Lokchetan Meghavath | 42 | True |  | Not started | True  -1756 0 1 0 0 0 26 | Wrong Dependency, Negative Float Critical 5 1 0  |  |  |  |
| 357ae9be-8a60-81bf-8c0a-c54dc7a28c40 | 3127 | PTP_CM28_Purchase_Info_Records | PTP | 1.2.3.2.27 | 1.2.3.2.27 | 2026-06-08 | 2026-06-12 | 2026-04-16 | 0 | 5 | 2959 | 0 | 0 |  |  | -19.96 | 0 | As Soon As Possible | Auto Scheduled | AMETEK SAP XXL Project Plan Replan MSP Task.csv | AMETEK SAP XXL Project Plan Replan MSP Task.csv__2f0764ccac__2026-05-05T02-44-15-662Z | Muniraju Surappachari | 57 | True |  | Not started | True  -19.96 0 0 0 0 0 20 | Negative Float Critical 2 0 0  |  | 3130, 3132, 3133, 3128, 3129, 3131 | True |
| 357ae9be-8a60-81bf-9459-dc652a23da67 | 2687 | Post Load Validation | PTM | 1.2.4.2.45.2 | 1.2.4.2.45.2 | 2026-10-01 | 2026-10-01 | 2026-04-17 | 0 | 6 | 2685 | 1 | 0 | 357ae9be-8a60-8100-838c-f8aa75091c8f |  | -688 | 0 | As Soon As Possible | Auto Scheduled | AMETEK SAP XXL Project Plan Replan MSP Task.csv | AMETEK SAP XXL Project Plan Replan MSP Task.csv__2f0764ccac__2026-05-05T02-44-15-662Z | Eric Heisler | 167 | True |  | Not started | True  -688 0 0 0 0 0 20 | Negative Float, Open Finish Critical 3 0 0  |  |  |  |
| 357ae9be-8a60-81bf-95c0-f8387cea4efe | 1693 | Post Load Validation | Finance | 1.2.2.2.2.3 | 1.2.2.2.2.3 | 2026-05-19 | 2026-05-19 | 2026-04-07 | 0 | 6 | 1690 | 1 | 1 | 357ae9be-8a60-8194-b3bd-cf5513088f2f | 357ae9be-8a60-8112-870e-ca1b30835281 | -76.52 | 0 | As Soon As Possible | Auto Scheduled | AMETEK SAP XXL Project Plan Replan MSP Task.csv | AMETEK SAP XXL Project Plan Replan MSP Task.csv__2f0764ccac__2026-05-05T02-44-15-662Z | Kasey Hughes | 42 | True | True | Not started | True  -76.52 0 1 1 34 0 31 | Wrong Successor, Negative Float Critical 5 0 1  |  |  |  |
| 357ae9be-8a60-81bf-9ce4-c355c11c34ec | 943 | VC_Configuration Profiles | (Unassigned) | 1.2.1.43 | 1.2.1.43 | 2026-04-15 | 2026-04-16 | 2026-04-16 | 100 | 4 | 425 | 0 | 0 |  |  | 0 | 0 | As Soon As Possible | Auto Scheduled | AMETEK SAP XXL Project Plan Replan MSP Task.csv | AMETEK SAP XXL Project Plan Replan MSP Task.csv__2f0764ccac__2026-05-05T02-44-15-662Z | COULD NOT BE DETERMINED |  |  |  | Done | True  0 0 0 0 0 0 12 | Low 0 0 0  |  | 1162, 1163 | True |
| 357ae9be-8a60-81bf-a1b8-dbb5f74595ed | 3253 | PTP_CM29_Source_List | PTP | 1.2.3.2.51 | 1.2.3.2.51 | 2026-06-09 | 2026-06-17 | 2026-04-14 | 0 | 5 | 2959 | 0 | 0 |  |  | -22.22 | 0 | As Soon As Possible | Auto Scheduled | AMETEK SAP XXL Project Plan Replan MSP Task.csv | AMETEK SAP XXL Project Plan Replan MSP Task.csv__2f0764ccac__2026-05-05T02-44-15-662Z | Muniraju Surappachari | 64 | True |  | Not started | True  -22.22 0 0 0 0 0 20 | Negative Float Critical 2 0 0  |  | 3254, 3255, 3256 | True |
| 357ae9be-8a60-81bf-a672-c7de31a62d4f | 1233 | Close Client | Basis | 1.2.1.14.5 | 1.2.1.14.5 | 2026-04-10 | 2026-04-10 | 2026-04-13 | 100 | 5 | 763 | 1 | 0 | 357ae9be-8a60-8151-9dec-d88d3b5733dd |  | 0 | 0 | As Soon As Possible | Auto Scheduled | AMETEK SAP XXL Project Plan Replan MSP Task.csv | AMETEK SAP XXL Project Plan Replan MSP Task.csv__2f0764ccac__2026-05-05T02-44-15-662Z | Lokchetan Meghavath |  |  |  | Done | True  0 0 0 0 0 0 12 | Low 0 0 0  |  |  |  |
| 357ae9be-8a60-81bf-b426-f5111592f00d | 2711 | Load File Staged and Posted "Ready" | OTC | 1.2.4.2.50.1 | 1.2.4.2.50.1 | 2026-10-08 | 2026-10-08 | 2026-04-20 | 0 | 6 | 2710 | 2 | 1 | 357ae9be-8a60-8125-8286-d7af3f5eeee5, 357ae9be-8a60-8183-a95c-daf66687cb6f | 357ae9be-8a60-812a-9872-cc68c59f780e | -43560 | 0 | As Soon As Possible | Auto Scheduled | AMETEK SAP XXL Project Plan Replan MSP Task.csv | AMETEK SAP XXL Project Plan Replan MSP Task.csv__2f0764ccac__2026-05-05T02-44-15-662Z | Ric Haraida | 171 | True |  | Not started | True  -43560 0 1 0 0 0 26 | Wrong Dependency, Negative Float Critical 5 2 0  |  |  |  |
| 357ae9be-8a60-81bf-bd43-c94da4989471 | 26 | Finance | Finance | 1.1.2.9.1.2 | 1.1.2.9.1.2 | 2025-04-07 | 2025-08-28 | 2025-08-28 | 100 | 6 | 25 | 0 | 0 |  |  | 0 | 0 | As Soon As Possible | Auto Scheduled | AMETEK SAP XXL Project Plan Replan MSP Task.csv | AMETEK SAP XXL Project Plan Replan MSP Task.csv__2f0764ccac__2026-05-05T02-44-15-662Z | Brian Wagner |  |  |  | Done | True  0 0 0 0 0 0 12 | Low 0 0 0  |  | 32, 134, 31 | True |
| 357ae9be-8a60-81bf-bfca-c1e4fbbd06dd | 1930 | Run ALE Transaction to QS5 from DS4 130 | PTM | 1.2.2.2.39.1 | 1.2.2.2.39.1 | 2026-05-19 | 2026-05-19 | 2026-04-07 | 0 | 6 | 1929 | 1 | 1 | 357ae9be-8a60-819b-ac12-dc5034db999a | 357ae9be-8a60-815d-8a03-f23e6bd97724 | -19.52 | 0 | As Soon As Possible | Auto Scheduled | AMETEK SAP XXL Project Plan Replan MSP Task.csv | AMETEK SAP XXL Project Plan Replan MSP Task.csv__2f0764ccac__2026-05-05T02-44-15-662Z | Eric Heisler | 42 | True | True | Not started | True  -19.52 0 1 0 0 0 26 | Negative Float Critical 2 0 0  |  |  |  |
| 357ae9be-8a60-81c0-81b4-c9a80094ad80 | 1934 | Post Load Validation | PTM | 1.2.2.2.40.2 | 1.2.2.2.40.2 | 2026-05-21 | 2026-05-22 | 2026-04-16 | 0 | 6 | 1932 | 1 | 0 | 357ae9be-8a60-819c-bd01-cc197f664c16 |  | -30.27 | 0 | As Soon As Possible | Auto Scheduled | AMETEK SAP XXL Project Plan Replan MSP Task.csv | AMETEK SAP XXL Project Plan Replan MSP Task.csv__2f0764ccac__2026-05-05T02-44-15-662Z | Eric Heisler | 36 | True |  | Not started | True  -30.27 0 0 0 0 0 20 | Negative Float, Open Finish Critical 3 0 0  |  |  |  |
| 357ae9be-8a60-81c0-8623-f78795353752 | 2963 | Post Load Validation | Finance | 1.2.3.2.1.3 | 1.2.3.2.1.3 | 2026-06-08 | 2026-06-08 | 2026-04-06 | 0 | 6 | 2960 | 1 | 2 | 357ae9be-8a60-8162-8574-fe26fc0fd6f4 | 357ae9be-8a60-816c-ad9a-cf035f1ccd99, 357ae9be-8a60-813c-b53e-d758eb3e8aaf | -196.52 | 0 | As Soon As Possible | Auto Scheduled | AMETEK SAP XXL Project Plan Replan MSP Task.csv | AMETEK SAP XXL Project Plan Replan MSP Task.csv__2f0764ccac__2026-05-05T02-44-15-662Z | Kasey Hughes | 63 | True |  | Not started | True  -196.52 0 2 2 490 0 37 | Wrong Successor, Negative Float Critical 5 0 2  |  |  |  |
| 357ae9be-8a60-81c0-88dd-cc78371dbc58 | 4470 | Post Load Validation | PTM | 1.2.5.2.53.3 | 1.2.5.2.53.3 | 2026-09-29 | 2026-10-01 | 2026-04-16 | 0 | 6 | 4467 | 1 | 0 | 357ae9be-8a60-81b1-986d-d20e96435b95 |  | -688.77 | 0 | Finish No Earlier Than | Auto Scheduled | AMETEK SAP XXL Project Plan Replan MSP Task.csv | AMETEK SAP XXL Project Plan Replan MSP Task.csv__2f0764ccac__2026-05-05T02-44-15-662Z | Brad Meseck | 168 | True |  | Not started | True  -688.77 0 0 0 0 0 20 | Negative Float, Open Finish Critical 3 0 0 True | 2026-04-20 |  |  |
| 357ae9be-8a60-81c0-89e6-e3edb5b5cedf | 4289 | Load | PTP | 1.2.5.2.20.5 | 1.2.5.2.20.5 | 2026-09-24 | 2026-09-24 | 2026-04-15 | 0 | 6 | 4284 | 1 | 1 | 357ae9be-8a60-81d1-9d81-e05d3d5e0d01 | 357ae9be-8a60-81ff-a4e5-c4ad996ac6aa | -653.52 | 0 | As Soon As Possible | Auto Scheduled | AMETEK SAP XXL Project Plan Replan MSP Task.csv | AMETEK SAP XXL Project Plan Replan MSP Task.csv__2f0764ccac__2026-05-05T02-44-15-662Z | Nevin Varkey | 162 | True |  | Not started | True  -653.52 0 1 0 0 0 26 | Negative Float Critical 2 0 0  |  |  |  |

| id | uid | name | workstream | outlineNumber | wbs | start | finish | baselineFinish | pct | outlineLevel | parentUid | predCount | sucCount | predIds | sucIds | totalSlackDaysRaw | freeSlackDaysRaw | constraintType | taskMode | mspSourceFile | mspImportVersion | assignedTo | slipDays | isSlipped | isDue14 | status | cpm | scheduleQuality | constraintDate | childUids | isSummary | isOverdueStart |
| --- | --- | --- | --- | --- | --- | --- | --- | --- | --- | --- | --- | --- | --- | --- | --- | --- | --- | --- | --- | --- | --- | --- | --- | --- | --- | --- | --- | --- | --- | --- | --- | --- |
| 357ae9be-8a60-81c0-90e8-c416063b5fed | 2461 | Load File Staged and Posted "Ready" | Finance | 1.2.4.2.7.1 | 1.2.4.2.7.1 | 2026-09-29 | 2026-09-29 | 2026-04-08 | 0 | 6 | 2460 | 1 | 1 | 357ae9be-8a60-814f-9909-dc7f6a9040f5 | 357ae9be-8a60-813c-84cf-ec8f08ad52b1 | -680 | 0 | As Soon As Possible | Auto Scheduled | AMETEK SAP XXL Project Plan Replan MSP Task.csv | AMETEK SAP XXL Project Plan Replan MSP Task.csv__2f0764ccac__2026-05-05T02-44-15-662Z | Kasey Hughes | 174 | True |  | Not started | True  -680 0 1 0 0 0 26 | Wrong Dependency, Negative Float Critical 5 1 0  |  |  |  |  |
| 357ae9be-8a60-81c0-9714-cbf76c5b0677 | 1163 | Post Load Validation | PTM | 1.2.1.43.2 | 1.2.1.43.2 | 2026-04-16 | 2026-04-16 | 2026-04-16 | 100 | 5 | 943 | 1 | 1 | 357ae9be-8a60-81b8-a72d-e5ef503e8f76 | 357ae9be-8a60-81de-9c27-db4a5c7927c0 | 0 | 0 | As Soon As Possible | Auto Scheduled | AMETEK SAP XXL Project Plan Replan MSP Task.csv | AMETEK SAP XXL Project Plan Replan MSP Task.csv__2f0764ccac__2026-05-05T02-44-15-662Z | Eric Heisler |  |  |  | Done | True  0 0 1 0 0 0 18 | Wrong Successor High 3 0 1  |  |  |  |  |
| 357ae9be-8a60-81c0-98b0-e5b24aa79782 | 870 | Import Group 2 - Core Transports | Development;PTM;Finance;PMO;Europe IT lead;OTC;TESTING | 1.1.1.5.2.3 | 1.1.1.5.2.3 | 2026-05-08 | 2026-05-08 | 2026-05-22 | 0 | 6 | 867 | 1 | 1 | 357ae9be-8a60-8109-ba5c-c56ecdf6a68d | 357ae9be-8a60-818e-9931-df8e6f1719d0 | -204.02 | 0 | As Soon As Possible | Auto Scheduled | AMETEK SAP XXL Project Plan Replan MSP Task.csv | AMETEK SAP XXL Project Plan Replan MSP Task.csv__2f0764ccac__2026-05-05T02-44-15-662Z | Bijoykrishna Das |  |  | True | Not started | True  -204.02 0 0 0 0 0 14 | Negative Float Critical 2 0 0  |  |  |  |  |
| 357ae9be-8a60-81c0-9c6a-c86a7b5a12ef | 2451 | Simulate Load | Data | 1.2.4.2.5.3 | 1.2.4.2.5.3 | 2026-09-28 | 2026-09-28 | 2026-04-08 | 0 | 6 | 2448 | 1 | 1 | 357ae9be-8a60-810c-8c73-e2097e3635cb | 357ae9be-8a60-81c1-be6a-fa552b9fe805 | -665.5 | 0 | As Soon As Possible | Auto Scheduled | AMETEK SAP XXL Project Plan Replan MSP Task.csv | AMETEK SAP XXL Project Plan Replan MSP Task.csv__2f0764ccac__2026-05-05T02-44-15-662Z | Jyoti Nain | 173 | True |  | Not started | True  -665.5 0 1 0 0 0 26 | Negative Float Critical 2 0 0  |  |  |  |  |
| 357ae9be-8a60-81c0-9f8f-f0fb4e2b30ce | 1128 | Load | PTM | 1.2.1.54.2 | 1.2.1.54.2 | 2026-04-16 | 2026-04-16 | 2026-04-16 | 100 | 5 | 712 | 1 | 1 | 357ae9be-8a60-8107-a8b1-cb3fa3e7fe9a | 357ae9be-8a60-81da-b66a-fc1e3022e6f7 | 0 | 0 | As Soon As Possible | Auto Scheduled | AMETEK SAP XXL Project Plan Replan MSP Task.csv | AMETEK SAP XXL Project Plan Replan MSP Task.csv__2f0764ccac__2026-05-05T02-44-15-662Z | Brad Meseck |  |  |  | Done | True  0 0 1 0 0 0 18 | Wrong Dependency High 3 1 0  |  |  |  |  |
| 357ae9be-8a60-81c0-a605-d1917e4681be | 755 | RTR_CM02_Profit Center Hierarchy | (Unassigned) | 1.2.1.2 | 1.2.1.2 | 2026-04-06 | 2026-04-06 | 2026-04-06 | 100 | 4 | 425 | 0 | 3 |  | 357ae9be-8a60-8162-bad5-e08ffb0a4cec, 357ae9be-8a60-810a-bd4a-c1b875eb1c60, 357ae9be-8a60-813c-ba4e-f0b7b9201b7f | 0 | 0 | As Soon As Possible | Auto Scheduled | AMETEK SAP XXL Project Plan Replan MSP Task.csv | AMETEK SAP XXL Project Plan Replan MSP Task.csv__2f0764ccac__2026-05-05T02-44-15-662Z | COULD NOT BE DETERMINED |  |  |  | Done | True  0 0 1 0 0 0 22 | Wrong Successor High 3 0 1  |  | 777, 780, 781 | True |  |
| 357ae9be-8a60-81c0-bced-e1838da4f24f | 4181 | Load File Staged and Posted "Ready" | Finance | 1.2.5.2.4.1 | 1.2.5.2.4.1 | 2026-09-24 | 2026-09-24 | 2026-04-06 | 0 | 6 | 4180 | 1 | 1 | 357ae9be-8a60-81dc-b681-eb8ad24cbc70 | 357ae9be-8a60-81ea-9d48-d55c33a537fe | -677.77 | 0 | As Soon As Possible | Auto Scheduled | AMETEK SAP XXL Project Plan Replan MSP Task.csv | AMETEK SAP XXL Project Plan Replan MSP Task.csv__2f0764ccac__2026-05-05T02-44-15-662Z | Kasey Hughes | 171 | True |  | Not started | True  -677.77 0 1 0 0 0 26 | Negative Float Critical 2 0 0  |  |  |  |  |
| 357ae9be-8a60-81c1-8705-ed93717d70fd | 885 | System Refresh Basis(Workinig with NS2) | Basis | 1.1.1.7.1.1 | 1.1.1.7.1.1 | 2026-06-08 | 2026-06-09 | 2026-06-19 | 0 | 6 | 3338 | 0 | 1 |  | 357ae9be-8a60-8111-aba6-e3685ccac787 | 0 | 0 | Must Start On | Auto Scheduled | AMETEK SAP XXL Project Plan Replan MSP Task.csv | AMETEK SAP XXL Project Plan Replan MSP Task.csv__2f0764ccac__2026-05-05T02-44-15-662Z | Lokchetan Meghavath |  |  |  | Not started | True  0 0 1 0 0 0 18 | Open Start Medium 1 0 0 True | 2026-06-08 |  |  |  |
| 357ae9be-8a60-81c1-99bf-ea1e95940603 | 897 | Fiori App Activation | Development | 1.1.1.7.1.11 | 1.1.1.7.1.11 | 2026-06-16 | 2026-06-16 | 2026-07-07 | 0 | 6 | 3338 | 1 | 0 | 357ae9be-8a60-81eb-8d67-d6df52782048 |  | -36.25 | 0 | As Soon As Possible | Auto Scheduled | AMETEK SAP XXL Project Plan Replan MSP Task.csv | AMETEK SAP XXL Project Plan Replan MSP Task.csv__2f0764ccac__2026-05-05T02-44-15-662Z | Bijoykrishna Das |  |  |  | Not started | True  -36.25 0 0 0 0 0 12 | Negative Float, Open Finish Critical 3 0 0  |  |  |  |  |
| 357ae9be-8a60-81c1-9add-ec09fa3dbaac | 3082 | Extract File(Will Extract from LFA1) | PTP | 1.2.3.2.20.1 | 1.2.3.2.20.1 | 2026-06-08 | 2026-06-08 | 2026-04-10 | 0 | 6 | 3081 | 0 | 2 |  | 357ae9be-8a60-8161-a7ee-c6935d18bcd8, 357ae9be-8a60-810b-ae6c-e77ada18665c | -131.52 | 0 | As Soon As Possible | Auto Scheduled | AMETEK SAP XXL Project Plan Replan MSP Task.csv | AMETEK SAP XXL Project Plan Replan MSP Task.csv__2f0764ccac__2026-05-05T02-44-15-662Z | Nevin Varkey | 59 | True |  | Not started | True  -131.52 0 2 2 462 0 37 | Wrong Successor, Negative Float, Open Start Critical 6 0 2  |  |  |  |  |
| 357ae9be-8a60-81c1-9c36-f997150ac33a | 683 | Business Readniess | (Unassigned) | 1.4 | 1.4 | 2026-02-16 | 2026-11-09 | 2026-10-16 | 38 | 2 | 1 | 0 | 0 |  |  | 0 | 0 | As Soon As Possible | Auto Scheduled | AMETEK SAP XXL Project Plan Replan MSP Task.csv | AMETEK SAP XXL Project Plan Replan MSP Task.csv__2f0764ccac__2026-05-05T02-44-15-662Z | COULD NOT BE DETERMINED | 24 | True |  | In progress | True  0 0 0 0 0 0 20 | Low 0 0 0  |  | 215 | True |  |
| 357ae9be-8a60-81c1-9f50-d58106e03ab6 | 1157 | Post Load Validation | PTM | 1.2.1.40.2 | 1.2.1.40.2 | 2026-04-07 | 2026-04-07 | 2026-04-07 | 100 | 5 | 940 | 1 | 1 | 357ae9be-8a60-8148-bbe7-c548ad29af9b | 357ae9be-8a60-818f-9cfa-fddbf4c6cdda | 0 | 0 | As Soon As Possible | Auto Scheduled | AMETEK SAP XXL Project Plan Replan MSP Task.csv | AMETEK SAP XXL Project Plan Replan MSP Task.csv__2f0764ccac__2026-05-05T02-44-15-662Z | Eric Heisler |  |  |  | Done | True  0 0 0 0 0 0 14 | Wrong Successor High 3 0 1  |  |  |  |  |
| 357ae9be-8a60-81c1-a608-d881c9103611 | 2004 | GTS - Customers initial load from S4 (Run Interface) | (Unassigned) | 1.2.2.2.56 | 1.2.2.2.56 | 2026-05-18 | 2026-05-18 | 2026-04-10 | 0 | 5 | 2800 | 0 | 0 |  |  | -0.19 | 0 | As Soon As Possible | Auto Scheduled | AMETEK SAP XXL Project Plan Replan MSP Task.csv | AMETEK SAP XXL Project Plan Replan MSP Task.csv__2f0764ccac__2026-05-05T02-44-15-662Z | COULD NOT BE DETERMINED | 38 | True | True | Not started | True  -0.19 0 0 0 0 0 20 | Negative Float High 2 0 0  |  | 2005, 2006 | True |  |
| 357ae9be-8a60-81c1-a696-d0c36baf32b4 | 1189 | Post Load Validation | OTC | 1.2.1.67.2 | 1.2.1.67.2 | 2026-04-16 | 2026-04-16 | 2026-04-16 | 100 | 5 | 955 | 1 | 0 | 357ae9be-8a60-81ba-995f-e2e5cccdccc6 |  | 0 | 0 | As Soon As Possible | Auto Scheduled | AMETEK SAP XXL Project Plan Replan MSP Task.csv | AMETEK SAP XXL Project Plan Replan MSP Task.csv__2f0764ccac__2026-05-05T02-44-15-662Z | James VanRiper |  |  |  | Done | True  0 0 0 0 0 0 12 | Wrong Dependency High 3 1 0  |  |  |  |  |
| 357ae9be-8a60-81c1-a7e6-de6352b5e171 | 1906 | Error and Defect Mitigation | PTM | 1.2.2.2.34.4 | 1.2.2.2.34.4 | 2026-05-25 | 2026-05-25 | 2026-04-17 | 0 | 6 | 1902 | 1 | 1 | 357ae9be-8a60-8154-9a45-fb1f3ee50841 | 357ae9be-8a60-819f-8912-cf402a06af87 | -47.27 | 0 | As Soon As Possible | Auto Scheduled | AMETEK SAP XXL Project Plan Replan MSP Task.csv | AMETEK SAP XXL Project Plan Replan MSP Task.csv__2f0764ccac__2026-05-05T02-44-15-662Z | Brad Meseck | 38 | True |  | Not started | True  -47.27 0 1 0 0 0 26 | Negative Float Critical 2 0 0  |  |  |  |  |
| 357ae9be-8a60-81c1-a7ef-d95d5e47841f | 3119 | Post Load Validation | PTP;OTC | 1.2.3.2.25.6 | 1.2.3.2.25.6 | 2026-06-11 | 2026-06-11 | 2026-04-15 | 0 | 6 | 3113 | 1 | 0 | 357ae9be-8a60-8153-8e48-e73b72b653ee |  | -145.27 | 0 | As Soon As Possible | Auto Scheduled | AMETEK SAP XXL Project Plan Replan MSP Task.csv | AMETEK SAP XXL Project Plan Replan MSP Task.csv__2f0764ccac__2026-05-05T02-44-15-662Z | Nevin Varkey | 57 | True |  | Not started | True  -145.27 0 0 0 0 0 20 | Negative Float, Open Finish Critical 3 0 0  |  |  |  |  |
| 357ae9be-8a60-81c1-ab23-d04649fb5c7f | 2628 | Pre Load Validation | PTM | 1.2.4.2.32.2 | 1.2.4.2.32.2 | 2026-10-02 | 2026-10-05 | 2026-04-20 | 0 | 6 | 2626 | 1 | 1 | 357ae9be-8a60-81c8-af8d-d404ef822b71 | 357ae9be-8a60-8121-b166-cf6e7d7493fc | -700.38 | 0 | As Soon As Possible | Auto Scheduled | AMETEK SAP XXL Project Plan Replan MSP Task.csv | AMETEK SAP XXL Project Plan Replan MSP Task.csv__2f0764ccac__2026-05-05T02-44-15-662Z | Brad Meseck | 168 | True |  | Not started | True  -700.38 0 1 0 0 0 26 | Negative Float Critical 2 0 0  |  |  |  |  |
| 357ae9be-8a60-81c1-bc75-c5b3536bdb84 | 2764 | Load | OTC | 1.2.4.2.63.1 | 1.2.4.2.63.1 | 2026-10-02 | 2026-10-06 | 2026-04-16 | 0 | 6 | 2763 | 1 | 1 | 357ae9be-8a60-819f-bed0-e0aa659e199c | 357ae9be-8a60-8190-8710-cc1a3f261e4f | -712.25 | 0 | Finish No Earlier Than | Auto Scheduled | AMETEK SAP XXL Project Plan Replan MSP Task.csv | AMETEK SAP XXL Project Plan Replan MSP Task.csv__2f0764ccac__2026-05-05T02-44-15-662Z | James VanRiper | 173 | True |  | Not started | True  -712.25 0 1 0 0 0 26 | Wrong Dependency, Negative Float Critical 5 1 0 True | 2026-04-20 |  |  |  |
| 357ae9be-8a60-81c1-be6a-fa552b9fe805 | 2452 | Error and Defect Mitigation | Finance | 1.2.4.2.5.4 | 1.2.4.2.5.4 | 2026-09-28 | 2026-09-28 | 2026-04-08 | 0 | 6 | 2448 | 1 | 1 | 357ae9be-8a60-81c0-9c6a-c86a7b5a12ef | 357ae9be-8a60-813a-bb2c-f9fc075c9d21 | -665.5 | 0 | As Soon As Possible | Auto Scheduled | AMETEK SAP XXL Project Plan Replan MSP Task.csv | AMETEK SAP XXL Project Plan Replan MSP Task.csv__2f0764ccac__2026-05-05T02-44-15-662Z | Kasey Hughes | 173 | True |  | Not started | True  -665.5 0 1 0 0 0 26 | Negative Float Critical 2 0 0  |  |  |  |  |
| 357ae9be-8a60-81c1-beec-f015ac57e0ef | 260 | Activate BC Sets | (Unassigned) | 1.1.2.2.4 | 1.1.2.2.4 | 2026-03-04 | 2026-03-05 | 2026-03-05 | 100 | 5 | 253 | 1 | 1 | 357ae9be-8a60-81fb-a42d-d36966b2e8cf | 357ae9be-8a60-81c7-96c1-d5aa84493c00 | 0 | 0 | As Soon As Possible | Auto Scheduled | AMETEK SAP XXL Project Plan Replan MSP Task.csv | AMETEK SAP XXL Project Plan Replan MSP Task.csv__2f0764ccac__2026-05-05T02-44-15-662Z | COULD NOT BE DETERMINED |  |  |  | Done | True  0 0 1 0 0 0 18 | Low 0 0 0  |  |  |  |  |
| 357ae9be-8a60-81c2-819c-f178984dbc74 | 2723 | Pre Load Validation | Finance | 1.2.4.2.52.2 | 1.2.4.2.52.2 | 2026-09-24 | 2026-09-24 | 2026-04-10 | 0 | 6 | 2721 | 1 | 1 | 357ae9be-8a60-8163-84fd-f9d0ff240ac7 | 357ae9be-8a60-81b1-8d5b-c0852c76c837 | -41670 | 0 | As Soon As Possible | Auto Scheduled | AMETEK SAP XXL Project Plan Replan MSP Task.csv | AMETEK SAP XXL Project Plan Replan MSP Task.csv__2f0764ccac__2026-05-05T02-44-15-662Z | Kasey Hughes | 167 | True |  | Not started | True  -41670 0 1 0 0 0 26 | Wrong Dependency, Negative Float Critical 5 1 0  |  |  |  |  |
| 357ae9be-8a60-81c2-89c4-f129b4ae5c54 | 4494 | Load Descartes XML File | OTC | 1.2.5.2.60.1 | 1.2.5.2.60.1 | 2026-09-24 | 2026-09-24 | 2026-04-06 | 0 | 6 | 4493 | 1 | 1 | 357ae9be-8a60-81e0-9d16-ea967b28bc5d | 357ae9be-8a60-81af-b007-cc77718943cb | -643.52 | 0 | As Soon As Possible | Auto Scheduled | AMETEK SAP XXL Project Plan Replan MSP Task.csv | AMETEK SAP XXL Project Plan Replan MSP Task.csv__2f0764ccac__2026-05-05T02-44-15-662Z | James VanRiper | 171 | True |  | Not started | True  -643.52 0 1 0 0 0 26 | Negative Float Critical 2 0 0  |  |  |  |  |
| 357ae9be-8a60-81c2-908c-e4eabf77284c | 3060 | PTP_CM27_Vendor Master - Z001 - External Sales Rep | PTP | 1.2.3.2.17 | 1.2.3.2.17 | 2026-06-15 | 2026-06-18 | 2026-04-13 | 0 | 5 | 2959 | 0 | 0 |  |  | -23.13 | 0 | As Soon As Possible | Auto Scheduled | AMETEK SAP XXL Project Plan Replan MSP Task.csv | AMETEK SAP XXL Project Plan Replan MSP Task.csv__2f0764ccac__2026-05-05T02-44-15-662Z | Muniraju Surappachari | 66 | True |  | Not started | True  -23.13 0 0 0 0 0 20 | Negative Float Critical 2 0 0  |  | 3066, 3063, 3061, 3062, 3065, 3064 | True |  |
| 357ae9be-8a60-81c2-9e8a-f8a0705e3bb4 | 809 | Pre Load Validation | Finance | 1.2.1.8.2 | 1.2.1.8.2 | 2026-04-08 | 2026-04-09 | 2026-04-09 | 100 | 5 | 760 | 1 | 1 | 357ae9be-8a60-8191-be93-f1ccbdb227f2 | 357ae9be-8a60-81d9-9566-dcc0bde780f4 | 0 | 0 | As Soon As Possible | Auto Scheduled | AMETEK SAP XXL Project Plan Replan MSP Task.csv | AMETEK SAP XXL Project Plan Replan MSP Task.csv__2f0764ccac__2026-05-05T02-44-15-662Z | Kasey Hughes |  |  |  | Done | True  0 0 1 0 0 0 18 | Low 0 0 0  |  |  |  |  |
| 357ae9be-8a60-81c2-a625-c95fd7284022 | 4259 | OTC_CM23_Customer_Hierarchy | OTC | 1.2.5.2.16 | 1.2.5.2.16 | 2026-09-30 | 2026-10-01 | 2026-04-10 | 0 | 5 | 4162 | 0 | 0 |  |  | -85.69 | 0 | As Soon As Possible | Auto Scheduled | AMETEK SAP XXL Project Plan Replan MSP Task.csv | AMETEK SAP XXL Project Plan Replan MSP Task.csv__2f0764ccac__2026-05-05T02-44-15-662Z | Anitha Jothi | 174 | True |  | Not started | True  -85.69 0 0 0 0 0 20 | Negative Float Critical 2 0 0  |  | 4261, 4260, 4262 | True |  |
| 357ae9be-8a60-81c2-a74f-c364563ab045 | 1029 | Error and Defect Mitigation | PTP;OTC | 1.2.1.26.4 | 1.2.1.26.4 | 2026-04-14 | 2026-04-15 | 2026-04-15 | 100 | 5 | 748 | 1 | 1 | 357ae9be-8a60-81d5-bd7d-ce0145c1c069 | 357ae9be-8a60-8109-bc85-e8fdc818bcc9 | 0 | 0 | As Soon As Possible | Auto Scheduled | AMETEK SAP XXL Project Plan Replan MSP Task.csv | AMETEK SAP XXL Project Plan Replan MSP Task.csv__2f0764ccac__2026-05-05T02-44-15-662Z | Nevin Varkey |  |  |  | Done | True  0 0 1 0 0 0 18 | Low 0 0 0  |  |  |  |  |
| 357ae9be-8a60-81c3-813c-dbcdc8c6cceb | 2750 | Post Load Validation | OTC | 1.2.4.2.58.2 | 1.2.4.2.58.2 | 2026-09-25 | 2026-09-25 | 2026-04-13 | 0 | 6 | 2748 | 1 | 1 | 357ae9be-8a60-81ee-80ef-f16d7d611c40 | 357ae9be-8a60-8172-a12a-f83e1215c838 | -653.5 | 0 | As Soon As Possible | Auto Scheduled | AMETEK SAP XXL Project Plan Replan MSP Task.csv | AMETEK SAP XXL Project Plan Replan MSP Task.csv__2f0764ccac__2026-05-05T02-44-15-662Z | James VanRiper | 165 | True |  | Not started | True  -653.5 0 1 0 0 0 26 | Wrong Dependency, Negative Float Critical 5 1 0  |  |  |  |  |
| 357ae9be-8a60-81c3-8769-cc236331bb6d | 806 | Load | Data | 1.2.1.5.5 | 1.2.1.5.5 | 2026-04-07 | 2026-04-07 | 2026-04-07 | 100 | 5 | 759 | 1 | 1 | 357ae9be-8a60-8124-9005-e815c5ae627c | 357ae9be-8a60-8149-b297-f48afb2a029f | 0 | 0 | As Soon As Possible | Auto Scheduled | AMETEK SAP XXL Project Plan Replan MSP Task.csv | AMETEK SAP XXL Project Plan Replan MSP Task.csv__2f0764ccac__2026-05-05T02-44-15-662Z | Jyoti Nain |  |  |  | Done | True  0 0 1 0 0 0 18 | Low 0 0 0  |  |  |  |  |
| 357ae9be-8a60-81c3-961b-efc687ca6b79 | 4459 | Post Load Validation | PTP | 1.2.5.2.51.3 | 1.2.5.2.51.3 | 2026-10-02 | 2026-10-05 | 2026-04-13 | 0 | 6 | 4456 | 1 | 0 | 357ae9be-8a60-8150-a345-d170849776e1 |  | -699.77 | 0 | As Soon As Possible | Auto Scheduled | AMETEK SAP XXL Project Plan Replan MSP Task.csv | AMETEK SAP XXL Project Plan Replan MSP Task.csv__2f0764ccac__2026-05-05T02-44-15-662Z | Nevin Varkey | 175 | True |  | Not started | True  -699.77 0 0 0 0 0 20 | Negative Float, Open Finish Critical 3 0 0  |  |  |  |  |
| 357ae9be-8a60-81c3-9699-f4d5e8610f9a | 901 | Release Security roles to Functional Team | Security | 1.1.1.7.1.15 | 1.1.1.7.1.15 | 2026-06-17 | 2026-06-17 | 2026-07-07 | 0 | 6 | 3338 | 1 | 0 | 357ae9be-8a60-81de-ae15-de842048dbc0 |  | -291.02 | 0 | As Soon As Possible | Auto Scheduled | AMETEK SAP XXL Project Plan Replan MSP Task.csv | AMETEK SAP XXL Project Plan Replan MSP Task.csv__2f0764ccac__2026-05-05T02-44-15-662Z | Manjunatha Umesha |  |  |  | Not started | True  -291.02 0 0 0 0 0 12 | Negative Float, Open Finish Critical 3 0 0  |  |  |  |  |
| 357ae9be-8a60-81c3-9889-ecfa8eb03333 | 1795 | Pre Load Validation | Finance | 1.2.2.2.18.2 | 1.2.2.2.18.2 | 2026-05-25 | 2026-05-25 | 2026-04-10 | 0 | 6 | 1793 | 1 | 1 | 357ae9be-8a60-81a9-a347-d53363db3361 | 357ae9be-8a60-817f-968c-d2b33f69e607 | -3526 | 0 | As Soon As Possible | Auto Scheduled | AMETEK SAP XXL Project Plan Replan MSP Task.csv | AMETEK SAP XXL Project Plan Replan MSP Task.csv__2f0764ccac__2026-05-05T02-44-15-662Z | Kasey Hughes | 45 | True |  | Not started | True  -3526 0 1 0 0 0 26 | Negative Float Critical 2 0 0  |  |  |  |  |
| 357ae9be-8a60-81c3-9973-ef10b7cbd6bd | 849 | QS4 ITC-2 Refresh | (Unassigned) | 1.1.1.5 | 1.1.1.5 | 2026-04-27 | 2026-05-14 | 2026-07-16 | 31 | 4 | 5 | 0 | 2 |  | 357ae9be-8a60-81f9-86e0-d06eb0ca7bf1, 357ae9be-8a60-8121-8da3-da12b1c4d208 | -8.19 | 0 | Start No Earlier Than | Auto Scheduled | AMETEK SAP XXL Project Plan Replan MSP Task.csv | AMETEK SAP XXL Project Plan Replan MSP Task.csv__2f0764ccac__2026-05-05T02-44-15-662Z | COULD NOT BE DETERMINED |  |  | True | In progress | True  -8.19 0 0 0 0 0 16 | Negative Float High 2 0 0 True | 2026-04-27 | 3340, 867, 1226, 877 | True |  |
| 357ae9be-8a60-81c3-a587-fc5515a92008 | 1853 | PTP_CM28_Purchase_Info_Records | PTP | 1.2.2.2.27 | 1.2.2.2.27 | 2026-05-18 | 2026-05-22 | 2026-04-16 | 0 | 5 | 2800 | 0 | 0 |  |  | -4.96 | 0 | As Soon As Possible | Auto Scheduled | AMETEK SAP XXL Project Plan Replan MSP Task.csv | AMETEK SAP XXL Project Plan Replan MSP Task.csv__2f0764ccac__2026-05-05T02-44-15-662Z | Muniraju Surappachari | 36 | True |  | Not started | True  -4.96 0 0 0 0 0 20 | Negative Float High 2 0 0  |  | 1856, 1858, 1855, 1859, 1854, 1857 | True |  |
| 357ae9be-8a60-81c4-8102-d444f107a5e7 | 2626 | PTM_CM38_Routing Conversion | PTM | 1.2.4.2.32 | 1.2.4.2.32 | 2026-09-29 | 2026-10-05 | 2026-04-21 | 0 | 5 | 2898 | 0 | 0 |  |  | -88.05 | 0 | As Soon As Possible | Auto Scheduled | AMETEK SAP XXL Project Plan Replan MSP Task.csv | AMETEK SAP XXL Project Plan Replan MSP Task.csv__2f0764ccac__2026-05-05T02-44-15-662Z | Brad Meseck | 167 | True |  | Not started | True  -88.05 0 0 0 0 0 20 | Negative Float Critical 2 0 0  |  | 2629, 2632, 2631, 2630, 2628, 2627 | True |  |
| 357ae9be-8a60-81c4-876f-ed398b2fd900 | 1704 | Load File Staged and Posted "Ready" | Finance | 1.2.2.2.4.1 | 1.2.2.2.4.1 | 2026-05-19 | 2026-05-19 | 2026-04-06 | 0 | 6 | 1703 | 1 | 1 | 357ae9be-8a60-815e-bb84-e90438d3fdc9 | 357ae9be-8a60-81eb-a17b-db32c78fea8a | -63.52 | 0 | As Soon As Possible | Auto Scheduled | AMETEK SAP XXL Project Plan Replan MSP Task.csv | AMETEK SAP XXL Project Plan Replan MSP Task.csv__2f0764ccac__2026-05-05T02-44-15-662Z | Kasey Hughes | 43 | True | True | Not started | True  -63.52 0 1 0 0 0 26 | Wrong Dependency, Negative Float Critical 5 1 0  |  |  |  |  |
| 357ae9be-8a60-81c4-8995-e807244adc01 | 858 | Security Transports | Security | 1.1.1.5.1.7 | 1.1.1.5.1.7 | 2026-05-04 | 2026-05-04 | 2026-05-15 | 0 | 6 | 3340 | 1 | 2 | 357ae9be-8a60-81f3-a3fb-d85aa3f49b30 | 357ae9be-8a60-8126-8bae-f08810204ae0, 357ae9be-8a60-81e8-ad39-ce5a06555264 | -204.02 | 0 | As Soon As Possible | Auto Scheduled | AMETEK SAP XXL Project Plan Replan MSP Task.csv | AMETEK SAP XXL Project Plan Replan MSP Task.csv__2f0764ccac__2026-05-05T02-44-15-662Z | Manjunatha Umesha |  |  |  | Not started | True  -204.02 0 2 0 0 0 24 | Negative Float Critical 2 0 0  |  |  |  | True |
| 357ae9be-8a60-81c4-9887-ec15432a8d61 | 2465 | Load | Data | 1.2.4.2.7.5 | 1.2.4.2.7.5 | 2026-09-30 | 2026-09-30 | 2026-04-09 | 0 | 6 | 2460 | 1 | 1 | 357ae9be-8a60-81a5-be8e-fc31e808e65f | 357ae9be-8a60-81a2-b6db-ca52893e6d43 | -680 | 0 | As Soon As Possible | Auto Scheduled | AMETEK SAP XXL Project Plan Replan MSP Task.csv | AMETEK SAP XXL Project Plan Replan MSP Task.csv__2f0764ccac__2026-05-05T02-44-15-662Z | Jyoti Nain | 174 | True |  | Not started | True  -680 0 1 0 0 0 26 | Negative Float Critical 2 0 0  |  |  |  |  |
| 357ae9be-8a60-81c4-a00c-f109fb560207 | 1884 | Simulate Load | Data | 1.2.2.2.31.3 | 1.2.2.2.31.3 | 2026-05-26 | 2026-05-26 | 2026-04-17 | 0 | 6 | 1881 | 1 | 1 | 357ae9be-8a60-8166-b06d-ec57c8a50304 | 357ae9be-8a60-816e-bc81-d9a94880e92e | -62.39 | 0 | As Soon As Possible | Auto Scheduled | AMETEK SAP XXL Project Plan Replan MSP Task.csv | AMETEK SAP XXL Project Plan Replan MSP Task.csv__2f0764ccac__2026-05-05T02-44-15-662Z | Jyoti Nain | 39 | True |  | Not started | True  -62.39 0 1 0 0 0 26 | Negative Float Critical 2 0 0  |  |  |  |  |
| 357ae9be-8a60-81c4-ae97-e675a141bed2 | 4163 | RTR_CM02_Profit Center Hierarchy | (Unassigned) | 1.2.5.2.1 | 1.2.5.2.1 | 2026-09-24 | 2026-09-24 | 2026-04-06 | 0 | 5 | 4162 | 0 | 2 |  | 357ae9be-8a60-812f-85bf-d49c1d4fc08a, 357ae9be-8a60-819c-9c43-d9d355b60ec5 | -89.81 | 0 | As Soon As Possible | Auto Scheduled | AMETEK SAP XXL Project Plan Replan MSP Task.csv | AMETEK SAP XXL Project Plan Replan MSP Task.csv__2f0764ccac__2026-05-05T02-44-15-662Z | COULD NOT BE DETERMINED | 171 | True |  | Not started | True  -89.81 0 0 0 0 0 24 | Negative Float Critical 2 0 0  |  | 4164, 4166, 4165 | True |  |
| 357ae9be-8a60-81c4-afce-ef641568f8d3 | 923 | Defect Correction / Retesting / Mitigation / Close | TESTING | 1.3.3.7.8 | 1.3.3.7.8 | 2026-07-16 | 2026-07-22 | 2026-07-24 | 0 | 5 | 915 | 1 | 1 | 357ae9be-8a60-81ac-a587-fbf566c37062 | 357ae9be-8a60-8119-b74a-d453d4fed8b4 | 78 | 0 | As Soon As Possible | Auto Scheduled | AMETEK SAP XXL Project Plan Replan MSP Task.csv | AMETEK SAP XXL Project Plan Replan MSP Task.csv__2f0764ccac__2026-05-05T02-44-15-662Z | Kishore Kakarla |  |  |  | Not started | True  78 0 1 1 1 1 23 | Low 0 0 0  |  |  |  |  |
| 357ae9be-8a60-81c4-b2a4-eebbdd96f8ff | 2611 | Post Load Validation | PTP | 1.2.4.2.29.6 | 1.2.4.2.29.6 | 2026-09-30 | 2026-09-30 | 2026-04-16 | 0 | 6 | 2605 | 1 | 0 | 357ae9be-8a60-8103-b2bc-ed218fbc500d |  | -676.25 | 0 | As Soon As Possible | Auto Scheduled | AMETEK SAP XXL Project Plan Replan MSP Task.csv | AMETEK SAP XXL Project Plan Replan MSP Task.csv__2f0764ccac__2026-05-05T02-44-15-662Z | Nevin Varkey | 167 | True |  | Not started | True  -676.25 0 0 0 0 0 20 | Negative Float, Open Finish Critical 3 0 0  |  |  |  |  |
| 357ae9be-8a60-81c4-b30c-cf71956a4954 | 1977 | Load | Data | 1.2.2.2.50.5 | 1.2.2.2.50.5 | 2026-05-28 | 2026-05-28 | 2026-04-21 | 0 | 6 | 1972 | 1 | 1 | 357ae9be-8a60-813a-a3fc-f5e1e3acf49c | 357ae9be-8a60-8115-ba2f-d2318990c2a8 | -67.27 | 0 | As Soon As Possible | Auto Scheduled | AMETEK SAP XXL Project Plan Replan MSP Task.csv | AMETEK SAP XXL Project Plan Replan MSP Task.csv__2f0764ccac__2026-05-05T02-44-15-662Z | Jyoti Nain | 37 | True |  | Not started | True  -67.27 0 1 0 0 0 26 | Negative Float Critical 2 0 0  |  |  |  |  |
| 357ae9be-8a60-81c4-b7e5-fdc0952abaab | 4348 | Error and Defect Mitigation | PTP | 1.2.5.2.29.4 | 1.2.5.2.29.4 | 2026-09-29 | 2026-09-29 | 2026-04-16 | 0 | 6 | 4344 | 1 | 1 | 357ae9be-8a60-8114-ba70-d652a823b48b | 357ae9be-8a60-81be-a859-f8c4d20103b7 | -676.27 | 0 | As Soon As Possible | Auto Scheduled | AMETEK SAP XXL Project Plan Replan MSP Task.csv | AMETEK SAP XXL Project Plan Replan MSP Task.csv__2f0764ccac__2026-05-05T02-44-15-662Z | Nevin Varkey | 166 | True |  | Not started | True  -676.27 0 1 0 0 0 26 | Negative Float Critical 2 0 0  |  |  |  |  |
| 357ae9be-8a60-81c4-bb3c-fbad7881e0b5 | 3195 | Load | Data | 1.2.3.2.36.5 | 1.2.3.2.36.5 | 2026-06-16 | 2026-06-17 | 2026-04-21 | 0 | 6 | 3190 | 1 | 0 | 357ae9be-8a60-81d5-92e3-d8d46c12c321 |  | -173.77 | 0 | As Soon As Possible | Auto Scheduled | AMETEK SAP XXL Project Plan Replan MSP Task.csv | AMETEK SAP XXL Project Plan Replan MSP Task.csv__2f0764ccac__2026-05-05T02-44-15-662Z | Jyoti Nain | 57 | True |  | Not started | True  -173.77 0 0 0 0 0 20 | Negative Float, Open Finish Critical 3 0 0  |  |  |  |  |
| 357ae9be-8a60-81c5-8021-d36a05bbe9e2 | 839 | Workflow | (Unassigned) | 1.3.2.4 | 1.3.2.4 | 2026-05-04 | 2026-08-14 | 2026-05-22 | 0 | 4 | 835 | 0 | 0 |  |  | 61 | 61 | Start No Earlier Than | Auto Scheduled | AMETEK SAP XXL Project Plan Replan MSP Task.csv | AMETEK SAP XXL Project Plan Replan MSP Task.csv__2f0764ccac__2026-05-05T02-44-15-662Z | COULD NOT BE DETERMINED | 84 | True |  | Not started |   61 61 0 0 0 0 8 | Open Start, Open Finish Medium 2 0 0 True | 2026-05-04 |  |  | True |
| 357ae9be-8a60-81c5-825c-d31d75f94911 | 1979 | PTP_CM29_Source_List | PTP | 1.2.2.2.51 | 1.2.2.2.51 | 2026-05-19 | 2026-05-27 | 2026-04-14 | 0 | 5 | 2800 | 0 | 0 |  |  | -7.22 | 0 | As Soon As Possible | Auto Scheduled | AMETEK SAP XXL Project Plan Replan MSP Task.csv | AMETEK SAP XXL Project Plan Replan MSP Task.csv__2f0764ccac__2026-05-05T02-44-15-662Z | Muniraju Surappachari | 43 | True |  | Not started | True  -7.22 0 0 0 0 0 20 | Negative Float High 2 0 0  |  | 1981, 1980, 1982 | True |  |
| 357ae9be-8a60-81c5-84f1-c75ccee56860 | 258 | Install plug-ins on target systems | (Unassigned) | 1.1.2.2.2 | 1.1.2.2.2 | 2026-02-18 | 2026-02-24 | 2026-02-24 | 100 | 5 | 253 | 1 | 1 | 357ae9be-8a60-817d-8c66-d73c1a869d3c | 357ae9be-8a60-81fb-a42d-d36966b2e8cf | 0 | 0 | As Soon As Possible | Auto Scheduled | AMETEK SAP XXL Project Plan Replan MSP Task.csv | AMETEK SAP XXL Project Plan Replan MSP Task.csv__2f0764ccac__2026-05-05T02-44-15-662Z | COULD NOT BE DETERMINED |  |  |  | Done | True  0 0 1 0 0 0 18 | Low 0 0 0  |  |  |  |  |
| 357ae9be-8a60-81c5-8c02-e999eb1cf783 | 1032 | Load File Staged and Posted "Ready" | PTM | 1.2.1.27.1 | 1.2.1.27.1 | 2026-04-07 | 2026-04-07 | 2026-04-07 | 100 | 5 | 749 | 1 | 0 | 357ae9be-8a60-8149-b297-f48afb2a029f |  | 0 | 0 | As Soon As Possible | Auto Scheduled | AMETEK SAP XXL Project Plan Replan MSP Task.csv | AMETEK SAP XXL Project Plan Replan MSP Task.csv__2f0764ccac__2026-05-05T02-44-15-662Z | Eric Heisler |  |  |  | Done | True  0 0 0 0 0 0 12 | Wrong Dependency High 3 1 0  |  |  |  |  |
| 357ae9be-8a60-81c5-9a11-c820c15a1e93 | 1727 | Load | Data | 1.2.2.2.7.5 | 1.2.2.2.7.5 | 2026-05-22 | 2026-05-22 | 2026-04-09 | 0 | 6 | 1722 | 1 | 1 | 357ae9be-8a60-8179-91ef-cc35ec714e1f | 357ae9be-8a60-81ad-9412-ef57bd08d57e | -38.02 | 0 | As Soon As Possible | Auto Scheduled | AMETEK SAP XXL Project Plan Replan MSP Task.csv | AMETEK SAP XXL Project Plan Replan MSP Task.csv__2f0764ccac__2026-05-05T02-44-15-662Z | Jyoti Nain | 43 | True |  | Not started | True  -38.02 0 1 0 0 0 26 | Negative Float Critical 2 0 0  |  |  |  |  |
| 357ae9be-8a60-81c5-9ba2-d7811c4f6283 | 2692 | Error and Defect Mitigation | PTM | 1.2.4.2.46.4 | 1.2.4.2.46.4 | 2026-10-02 | 2026-10-02 | 2026-04-16 | 0 | 6 | 2688 | 1 | 1 | 357ae9be-8a60-8116-983a-ec6a16e69d56 | 357ae9be-8a60-8122-a8de-f102c9eb3fbb | -726 | 0 | Finish No Earlier Than | Auto Scheduled | AMETEK SAP XXL Project Plan Replan MSP Task.csv | AMETEK SAP XXL Project Plan Replan MSP Task.csv__2f0764ccac__2026-05-05T02-44-15-662Z | Eric Heisler | 169 | True |  | Not started | True  -726 0 1 0 0 0 26 | Negative Float Critical 2 0 0 True | 2026-04-17 |  |  |  |
| 357ae9be-8a60-81c5-ad01-efd18624f82d | 2680 | Run ALE Transaction to QS5 from DS4 130 | PTM | 1.2.4.2.43.1 | 1.2.4.2.43.1 | 2026-09-29 | 2026-09-30 | 2026-04-16 | 0 | 6 | 2679 | 1 | 1 | 357ae9be-8a60-81a8-b353-cfe1d84027a4 | 357ae9be-8a60-8168-8076-d13e0d77cd2a | -682.25 | 0 | As Soon As Possible | Auto Scheduled | AMETEK SAP XXL Project Plan Replan MSP Task.csv | AMETEK SAP XXL Project Plan Replan MSP Task.csv__2f0764ccac__2026-05-05T02-44-15-662Z | Eric Heisler | 167 | True |  | Not started | True  -682.25 0 1 0 0 0 26 | Wrong Dependency, Negative Float Critical 5 1 0  |  |  |  |  |
| 357ae9be-8a60-81c5-b944-ed2982d6ba08 | 4524 | Pre Load Validation | Finance | 1.2.5.2.68.2 | 1.2.5.2.68.2 | 2026-09-24 | 2026-09-24 | 2026-04-10 | 0 | 6 | 4522 | 1 | 1 | 357ae9be-8a60-8146-873e-eac75feabbe6 | 357ae9be-8a60-8130-accb-cf794d8250fb | -39091 | 0 | As Soon As Possible | Auto Scheduled | AMETEK SAP XXL Project Plan Replan MSP Task.csv | AMETEK SAP XXL Project Plan Replan MSP Task.csv__2f0764ccac__2026-05-05T02-44-15-662Z | Kasey Hughes | 167 | True |  | Not started | True  -39091 0 1 0 0 0 26 | Negative Float Critical 2 0 0  |  |  |  |  |
| 357ae9be-8a60-81c6-8858-e4e74ab78f08 | 1968 | OTC_CM22_Pricing_Condition | OTC | 1.2.2.2.49 | 1.2.2.2.49 | 2026-05-27 | 2026-05-28 | 2026-04-21 | 0 | 5 | 2800 | 0 | 0 |  |  | -8.41 | 0 | As Soon As Possible | Auto Scheduled | AMETEK SAP XXL Project Plan Replan MSP Task.csv | AMETEK SAP XXL Project Plan Replan MSP Task.csv__2f0764ccac__2026-05-05T02-44-15-662Z | Anitha Jothi | 37 | True |  | Not started | True  -8.41 0 0 0 0 0 20 | Negative Float High 2 0 0  |  | 1971, 1970, 1969 | True |  |
| 357ae9be-8a60-81c6-8cee-ec58591a3bbc | 2491 | Post Load Validation | Finance | 1.2.4.2.11.3 | 1.2.4.2.11.3 | 2026-10-05 | 2026-10-05 | 2026-04-15 | 0 | 6 | 2488 | 1 | 0 | 357ae9be-8a60-8133-912a-d9c61895017a |  | -704.5 | 0 | Start No Earlier Than | Auto Scheduled | AMETEK SAP XXL Project Plan Replan MSP Task.csv | AMETEK SAP XXL Project Plan Replan MSP Task.csv__2f0764ccac__2026-05-05T02-44-15-662Z | Kasey Hughes | 173 | True |  | Not started | True  -704.5 0 0 0 0 0 20 | Negative Float, Open Finish Critical 3 0 0 True | 2026-04-17 |  |  |  |
| 357ae9be-8a60-81c6-8eae-e06f4b4f42e2 | 993 | Load File Staged and Posted "Ready" | Finance | 1.2.1.19.1 | 1.2.1.19.1 | 2026-04-10 | 2026-04-10 | 2026-04-10 | 100 | 5 | 768 | 1 | 1 | 357ae9be-8a60-81a9-a799-fb2443f06fc1 | 357ae9be-8a60-8148-9b58-f75c580810e7 | 0 | 0 | As Soon As Possible | Auto Scheduled | AMETEK SAP XXL Project Plan Replan MSP Task.csv | AMETEK SAP XXL Project Plan Replan MSP Task.csv__2f0764ccac__2026-05-05T02-44-15-662Z | Kasey Hughes |  |  |  | Done | True  0 0 1 0 0 0 18 | Low 0 0 0  |  |  |  |  |
| 357ae9be-8a60-81c6-9147-c12703a93283 | 1024 | Load | Data | 1.2.1.25.5 | 1.2.1.25.5 | 2026-04-14 | 2026-04-15 | 2026-04-15 | 100 | 5 | 741 | 1 | 2 | 357ae9be-8a60-81fc-9268-d7f795d0883f | 357ae9be-8a60-8183-aec1-ff1b65ede0a2, 357ae9be-8a60-8185-a59f-d11f46aa5b30 | 0 | 0 | As Soon As Possible | Auto Scheduled | AMETEK SAP XXL Project Plan Replan MSP Task.csv | AMETEK SAP XXL Project Plan Replan MSP Task.csv__2f0764ccac__2026-05-05T02-44-15-662Z | Jyoti Nain |  |  |  | Done | True  0 0 1 1 372 0 25 | Wrong Successor High 3 0 2  |  |  |  |  |
| 357ae9be-8a60-81c6-9c2c-f555162f358d | 278 | Testing & Training | TESTING | 1.1.2.7 | 1.1.2.7 | 2026-05-01 | 2026-08-05 | 2026-02-12 | 0 | 4 | 248 | 0 | 0 |  |  | 68 | 68 | As Soon As Possible | Auto Scheduled | AMETEK SAP XXL Project Plan Replan MSP Task.csv | AMETEK SAP XXL Project Plan Replan MSP Task.csv__2f0764ccac__2026-05-05T02-44-15-662Z | Kishore Kakarla | 174 | True |  | Not started |   68 68 0 0 0 0 8 | Low 0 0 0  |  | 280, 290, 287, 291, 292, 289, 288, 293, 279 | True | True |
| 357ae9be-8a60-81c6-9d1b-f7f33881528a | 1925 | Post Load Validation | PTM | 1.2.2.2.37.2 | 1.2.2.2.37.2 | 2026-05-18 | 2026-05-18 | 2026-04-06 | 0 | 6 | 1923 | 1 | 1 | 357ae9be-8a60-8138-9ac0-d3be3f66fa61 | 357ae9be-8a60-818a-ac08-c60d28b5a42d | -19.52 | 0 | As Soon As Possible | Auto Scheduled | AMETEK SAP XXL Project Plan Replan MSP Task.csv | AMETEK SAP XXL Project Plan Replan MSP Task.csv__2f0764ccac__2026-05-05T02-44-15-662Z | Eric Heisler | 42 | True | True | Not started | True  -19.52 0 1 0 0 0 26 | Negative Float Critical 2 0 0  |  |  |  |  |
| 357ae9be-8a60-81c6-a3b1-ec7b87104b3d | 4288 | Error and Defect Mitigation | PTP | 1.2.5.2.20.4 | 1.2.5.2.20.4 | 2026-09-24 | 2026-09-24 | 2026-04-13 | 0 | 6 | 4284 | 1 | 0 | 357ae9be-8a60-81d1-9d81-e05d3d5e0d01 |  | -647.52 | 0 | As Soon As Possible | Auto Scheduled | AMETEK SAP XXL Project Plan Replan MSP Task.csv | AMETEK SAP XXL Project Plan Replan MSP Task.csv__2f0764ccac__2026-05-05T02-44-15-662Z | Nevin Varkey | 164 | True |  | Not started | True  -647.52 0 0 0 0 0 20 | Negative Float, Open Finish Critical 3 0 0  |  |  |  |  |
| 357ae9be-8a60-81c6-a7f4-d3810673149f | 3081 | PTP_CM27_Vendor Master - Mass Maintenance - LFA1-WERKR | PTP | 1.2.3.2.20 | 1.2.3.2.20 | 2026-06-08 | 2026-06-09 | 2026-04-15 | 0 | 5 | 2959 | 0 | 0 |  |  | -16.44 | 0 | As Soon As Possible | Auto Scheduled | AMETEK SAP XXL Project Plan Replan MSP Task.csv | AMETEK SAP XXL Project Plan Replan MSP Task.csv__2f0764ccac__2026-05-05T02-44-15-662Z | Muniraju Surappachari | 55 | True |  | Not started | True  -16.44 0 0 0 0 0 20 | Negative Float Critical 2 0 0  |  | 3086, 3087, 3085, 3082, 3084, 3083 | True |  |
| 357ae9be-8a60-81c6-ad76-e4b115a129fd | 2524 | PTP_CM27_Vendor Master - Z001 - External Sales Rep | PTP | 1.2.4.2.17 | 1.2.4.2.17 | 2026-09-30 | 2026-10-06 | 2026-04-13 | 0 | 5 | 2898 | 0 | 0 |  |  | -88.38 | 0 | As Soon As Possible | Auto Scheduled | AMETEK SAP XXL Project Plan Replan MSP Task.csv | AMETEK SAP XXL Project Plan Replan MSP Task.csv__2f0764ccac__2026-05-05T02-44-15-662Z | Muniraju Surappachari | 176 | True |  | Not started | True  -88.38 0 0 0 0 0 20 | Negative Float Critical 2 0 0  |  | 2527, 2528, 2530, 2525, 2526, 2529 | True |  |
| 357ae9be-8a60-81c6-b44c-d3d7597dfd0f | 975 | Error and Defect Mitigation | PTP | 1.2.1.16.4 | 1.2.1.16.4 | 2026-04-10 | 2026-04-14 | 2026-04-14 | 100 | 5 | 765 | 1 | 1 | 357ae9be-8a60-81e9-8d3a-c6760459bab9 | 357ae9be-8a60-816b-bd03-efee92b2ae6f | 0 | 0 | As Soon As Possible | Auto Scheduled | AMETEK SAP XXL Project Plan Replan MSP Task.csv | AMETEK SAP XXL Project Plan Replan MSP Task.csv__2f0764ccac__2026-05-05T02-44-15-662Z | Nevin Varkey |  |  |  | Done | True  0 0 1 1 4 1 23 | Low 0 0 0  |  |  |  |  |
| 357ae9be-8a60-81c7-80b0-d1e5a7de2fac | 3197 | VC_Object Dependencies | (Unassigned) | 1.2.3.2.37 | 1.2.3.2.37 | 2026-06-08 | 2026-06-08 | 2026-04-06 | 0 | 5 | 2959 | 0 | 0 |  |  | -17.44 | 0 | As Soon As Possible | Auto Scheduled | AMETEK SAP XXL Project Plan Replan MSP Task.csv | AMETEK SAP XXL Project Plan Replan MSP Task.csv__2f0764ccac__2026-05-05T02-44-15-662Z | COULD NOT BE DETERMINED | 63 | True |  | Not started | True  -17.44 0 0 0 0 0 20 | Negative Float Critical 2 0 0  |  | 3198, 3199 | True |  |
| 357ae9be-8a60-81c7-887a-d6e38a41661d | 1311 | Data Project Create | Data | 1.1.1.6.3 | 1.1.1.6.3 | 2026-05-29 | 2026-05-29 | 2026-05-28 | 0 | 5 | 1284 | 1 | 0 | 357ae9be-8a60-8123-922a-c49fc5877537 |  | -30.19 | 0 | As Soon As Possible | Auto Scheduled | AMETEK SAP XXL Project Plan Replan MSP Task.csv | AMETEK SAP XXL Project Plan Replan MSP Task.csv__2f0764ccac__2026-05-05T02-44-15-662Z | Jyoti Nain | 1 | True |  | Not started | True  -30.19 0 0 0 0 0 20 | Wrong Dependency, Negative Float Critical 5 1 0  |  | 1312, 1313, 1314 | True |  |
| 357ae9be-8a60-81c7-8f3d-d911a4c73c88 | 2446 | Load | Data | 1.2.4.2.4.5 | 1.2.4.2.4.5 | 2026-09-25 | 2026-09-25 | 2026-04-07 | 0 | 6 | 2441 | 1 | 1 | 357ae9be-8a60-81f2-8c02-e33f92861d88 | 357ae9be-8a60-81d9-97a1-d8800c6089d8 | -677.75 | 0 | As Soon As Possible | Auto Scheduled | AMETEK SAP XXL Project Plan Replan MSP Task.csv | AMETEK SAP XXL Project Plan Replan MSP Task.csv__2f0764ccac__2026-05-05T02-44-15-662Z | Jyoti Nain | 171 | True |  | Not started | True  -677.75 0 1 0 0 0 26 | Negative Float Critical 2 0 0  |  |  |  |  |
| 357ae9be-8a60-81c7-9518-f825e8f2772a | 1886 | Load | Data | 1.2.2.2.31.5 | 1.2.2.2.31.5 | 2026-05-26 | 2026-05-26 | 2026-04-17 | 0 | 6 | 1881 | 1 | 1 | 357ae9be-8a60-816e-bc81-d9a94880e92e | 357ae9be-8a60-81e4-b73d-c606aa6b3cc5 | -62.39 | 0 | As Soon As Possible | Auto Scheduled | AMETEK SAP XXL Project Plan Replan MSP Task.csv | AMETEK SAP XXL Project Plan Replan MSP Task.csv__2f0764ccac__2026-05-05T02-44-15-662Z | Jyoti Nain | 39 | True |  | Not started | True  -62.39 0 1 0 0 0 26 | Negative Float Critical 2 0 0  |  |  |  |  |
| 357ae9be-8a60-81c7-96c1-d5aa84493c00 | 261 | Connector configuration (S4 / LDAP Connector) | (Unassigned) | 1.1.2.2.5 | 1.1.2.2.5 | 2026-03-06 | 2026-03-12 | 2026-03-12 | 100 | 5 | 253 | 1 | 1 | 357ae9be-8a60-81c1-beec-f015ac57e0ef | 357ae9be-8a60-8114-a6a7-d2483ab41737 | 0 | 0 | As Soon As Possible | Auto Scheduled | AMETEK SAP XXL Project Plan Replan MSP Task.csv | AMETEK SAP XXL Project Plan Replan MSP Task.csv__2f0764ccac__2026-05-05T02-44-15-662Z | COULD NOT BE DETERMINED |  |  |  | Done | True  0 0 1 0 0 0 18 | Low 0 0 0  |  |  |  |  |
| 357ae9be-8a60-81c7-9a3f-ef9279205d97 | 1001 | Simulate Load | Data | 1.2.1.20.3 | 1.2.1.20.3 | 2026-04-10 | 2026-04-10 | 2026-04-14 | 100 | 5 | 752 | 1 | 1 | 357ae9be-8a60-813a-898d-f2752dcc1fe0 | 357ae9be-8a60-815f-98c9-d88398a3f9f2 | 0 | 0 | Finish No Earlier Than | Auto Scheduled | AMETEK SAP XXL Project Plan Replan MSP Task.csv | AMETEK SAP XXL Project Plan Replan MSP Task.csv__2f0764ccac__2026-05-05T02-44-15-662Z | Jyoti Nain |  |  |  | Done | True  0 0 0 0 0 0 14 | Low 0 0 0 True | 2026-04-10 |  |  |  |
| 357ae9be-8a60-81c7-9c2f-c10649eb12fe | 2536 | Load | Data | 1.2.4.2.18.5 | 1.2.4.2.18.5 | 2026-10-01 | 2026-10-01 | 2026-04-10 | 0 | 6 | 2531 | 1 | 1 | 357ae9be-8a60-8173-85d2-ffceab2bc257 | 357ae9be-8a60-81a2-8ca5-d23c802c0264 | -700.75 | 0 | As Soon As Possible | Auto Scheduled | AMETEK SAP XXL Project Plan Replan MSP Task.csv | AMETEK SAP XXL Project Plan Replan MSP Task.csv__2f0764ccac__2026-05-05T02-44-15-662Z | Jyoti Nain | 174 | True |  | Not started | True  -700.75 0 1 0 0 0 26 | Wrong Dependency, Negative Float Critical 5 1 0  |  |  |  |  |
| 357ae9be-8a60-81c7-a61b-fba032e0a3e1 | 4337 | PTP_CM28_Purchase_Info_Record External Processing | PTP | 1.2.5.2.28 | 1.2.5.2.28 | 2026-09-29 | 2026-09-30 | 2026-04-16 | 0 | 5 | 4162 | 0 | 0 |  |  | -84.53 | 0 | As Soon As Possible | Auto Scheduled | AMETEK SAP XXL Project Plan Replan MSP Task.csv | AMETEK SAP XXL Project Plan Replan MSP Task.csv__2f0764ccac__2026-05-05T02-44-15-662Z | Muniraju Surappachari | 167 | True |  | Not started | True  -84.53 0 0 0 0 0 20 | Negative Float Critical 2 0 0  |  | 4342, 4341, 4338, 4339, 4343, 4340 | True |  |

| id | uid | name | workstream | outlineNumber | wbs | start | finish | baselineFinish | pct | outlineLevel | parentUid | predCount | sucCount | predIds | sucIds | totalSlackDaysRaw | freeSlackDaysRaw | constraintType | taskMode | mspSourceFile | mspImportVersion | assignedTo | slipDays | isSlipped | isDue14 | status | cpm | scheduleQuality | constraintDate | childUids | isSummary | isOverdueStart |
| --- | --- | --- | --- | --- | --- | --- | --- | --- | --- | --- | --- | --- | --- | --- | --- | --- | --- | --- | --- | --- | --- | --- | --- | --- | --- | --- | --- | --- | --- | --- | --- | --- |
| 357ae9be-8a60-81c7-a956-ec6d8b082ff4 | 2012 | Post Load Validation | OTC | 1.2.2.2.58.2 | 1.2.2.2.58.2 | 2026-05-19 | 2026-05-19 | 2026-04-13 | 0 | 6 | 2010 | 1 | 1 | 357ae9be-8a60-8102-a957-c18983a4a1c0 | 357ae9be-8a60-812e-887f-fcb8605465dd | -11.52 | 0 | As Soon As Possible | Auto Scheduled | AMETEK SAP XXL Project Plan Replan MSP Task.csv | AMETEK SAP XXL Project Plan Replan MSP Task.csv__2f0764ccac__2026-05-05T02-44-15-662Z | James VanRiper | 36 | True | True | Not started | True  -11.52 0 1 0 0 0 26 | Wrong Dependency, Negative Float Critical 5 1 0  |  |  |  |  |
| 357ae9be-8a60-81c7-b336-fd06c18191cb | 4186 | Post Load Validation | Finance | 1.2.5.2.4.6 | 1.2.5.2.4.6 | 2026-09-25 | 2026-09-25 | 2026-04-07 | 0 | 6 | 4180 | 1 | 3 | 357ae9be-8a60-819f-b02e-e3accb75e565 | 357ae9be-8a60-81b6-9251-fa970d4a5b6e, 357ae9be-8a60-814a-bdf3-d4b4e5641c4c, 357ae9be-8a60-81c7-b519-f5aa60e2770a | -677.77 | 0 | As Soon As Possible | Auto Scheduled | AMETEK SAP XXL Project Plan Replan MSP Task.csv | AMETEK SAP XXL Project Plan Replan MSP Task.csv__2f0764ccac__2026-05-05T02-44-15-662Z | Kasey Hughes | 171 | True |  | Not started | True  -677.77 0 3 0 0 0 38 | Negative Float Critical 2 0 0  |  |  |  |  |
| 357ae9be-8a60-81c7-b519-f5aa60e2770a | 4324 | Load File Staged and Posted "Ready" | PTM | 1.2.5.2.26.1 | 1.2.5.2.26.1 | 2026-09-25 | 2026-09-28 | 2026-04-07 | 0 | 6 | 4323 | 1 | 0 | 357ae9be-8a60-81c7-b336-fd06c18191cb |  | -40666 | 0 | As Soon As Possible | Auto Scheduled | AMETEK SAP XXL Project Plan Replan MSP Task.csv | AMETEK SAP XXL Project Plan Replan MSP Task.csv__2f0764ccac__2026-05-05T02-44-15-662Z | Eric Heisler | 174 | True |  | Not started | True  -40666 0 0 0 0 0 20 | Negative Float, Open Finish Critical 3 0 0  |  |  |  |  |
| 357ae9be-8a60-81c8-800a-e71143824b08 | 2858 | Open Production Orders(Manual) | (Unassigned) | 1.2.2.4.8 | 1.2.2.4.8 | 2026-10-09 | 2026-10-12 | 2026-10-12 | 0 | 5 | 2801 | 1 | 0 | 357ae9be-8a60-81e3-b4fa-f1222ef8b771 |  | -90.25 | 0 | As Soon As Possible | Auto Scheduled | AMETEK SAP XXL Project Plan Replan MSP Task.csv | AMETEK SAP XXL Project Plan Replan MSP Task.csv__2f0764ccac__2026-05-05T02-44-15-662Z | COULD NOT BE DETERMINED |  |  |  | Not started | True  -90.25 0 0 0 0 0 12 | Wrong Dependency, Negative Float, Open Finish Critical 6 1 0  |  |  |  |  |
| 357ae9be-8a60-81c8-8304-e8fae34f64be | 1133 | Load File Staged and Posted "Ready" | PTM | 1.2.1.55.1 | 1.2.1.55.1 | 2026-04-16 | 2026-04-16 | 2026-04-16 | 100 | 5 | 715 | 1 | 1 | 357ae9be-8a60-8107-a8b1-cb3fa3e7fe9a | 357ae9be-8a60-81ba-849f-f9409342a203 | 0 | 0 | As Soon As Possible | Auto Scheduled | AMETEK SAP XXL Project Plan Replan MSP Task.csv | AMETEK SAP XXL Project Plan Replan MSP Task.csv__2f0764ccac__2026-05-05T02-44-15-662Z | Sam Penrod |  |  |  | Done | True  0 0 1 0 0 0 18 | Wrong Dependency High 3 1 0  |  |  |  |  |
| 357ae9be-8a60-81c8-9408-ec026783ec8c | 1833 | Extract File | Data | 1.2.2.2.24.1 | 1.2.2.2.24.1 | 2026-05-18 | 2026-05-19 | 2026-04-13 | 0 | 6 | 1832 | 1 | 0 | 357ae9be-8a60-816e-af41-c14436fd6ae0 |  | -7.27 | 0 | As Soon As Possible | Auto Scheduled | AMETEK SAP XXL Project Plan Replan MSP Task.csv | AMETEK SAP XXL Project Plan Replan MSP Task.csv__2f0764ccac__2026-05-05T02-44-15-662Z | Jyoti Nain | 36 | True | True | Not started | True  -7.27 0 0 0 0 0 20 | Wrong Dependency, Negative Float, Open Finish High 6 1 0  |  |  |  |  |
| 357ae9be-8a60-81c8-9422-d6c20308bfc4 | 3169 | PTM_CM36_Production Version Conversion | PTM | 1.2.3.2.33 | 1.2.3.2.33 | 2026-06-11 | 2026-06-15 | 2026-04-17 | 0 | 5 | 2959 | 0 | 0 |  |  | -21.72 | 0 | As Soon As Possible | Auto Scheduled | AMETEK SAP XXL Project Plan Replan MSP Task.csv | AMETEK SAP XXL Project Plan Replan MSP Task.csv__2f0764ccac__2026-05-05T02-44-15-662Z | Brad Meseck | 59 | True |  | Not started | True  -21.72 0 0 0 0 0 20 | Negative Float Critical 2 0 0  |  | 3172, 3173, 3170, 3175, 3174, 3171 | True |  |
| 357ae9be-8a60-81c8-a6dd-d01ee73c0a5e | 1915 | Post Load Validation | PTM | 1.2.2.2.35.6 | 1.2.2.2.35.6 | 2026-05-25 | 2026-05-26 | 2026-04-20 | 0 | 6 | 1909 | 1 | 1 | 357ae9be-8a60-81c9-988b-f4691c53f9f9 | 357ae9be-8a60-8120-841e-d3f95fb10d85 | -53.77 | 0 | As Soon As Possible | Auto Scheduled | AMETEK SAP XXL Project Plan Replan MSP Task.csv | AMETEK SAP XXL Project Plan Replan MSP Task.csv__2f0764ccac__2026-05-05T02-44-15-662Z | Brad Meseck | 36 | True |  | Not started | True  -53.77 0 1 0 0 0 26 | Negative Float Critical 2 0 0  |  |  |  |  |
| 357ae9be-8a60-81c8-a940-dd913ea00426 | 2486 | Load | Data | 1.2.4.2.10.5 | 1.2.4.2.10.5 | 2026-09-25 | 2026-09-25 | 2026-04-10 | 0 | 6 | 2481 | 1 | 1 | 357ae9be-8a60-813c-9a64-f6e14b6c9683 | 357ae9be-8a60-817a-8b67-c89a7dff18e5 | -658.5 | 0 | As Soon As Possible | Auto Scheduled | AMETEK SAP XXL Project Plan Replan MSP Task.csv | AMETEK SAP XXL Project Plan Replan MSP Task.csv__2f0764ccac__2026-05-05T02-44-15-662Z | Jyoti Nain | 168 | True |  | Not started | True  -658.5 0 1 0 0 0 26 | Negative Float Critical 2 0 0  |  |  |  |  |
| 357ae9be-8a60-81c8-af8d-d404ef822b71 | 2625 | Post Load Validation | PTM | 1.2.4.2.31.6 | 1.2.4.2.31.6 | 2026-10-02 | 2026-10-02 | 2026-04-20 | 0 | 6 | 2619 | 1 | 1 | 357ae9be-8a60-81d1-94a2-fbf84a6568f7 | 357ae9be-8a60-81c1-ab23-d04649fb5c7f | -700.38 | 0 | As Soon As Possible | Auto Scheduled | AMETEK SAP XXL Project Plan Replan MSP Task.csv | AMETEK SAP XXL Project Plan Replan MSP Task.csv__2f0764ccac__2026-05-05T02-44-15-662Z | Brad Meseck | 165 | True |  | Not started | True  -700.38 0 1 0 0 0 26 | Negative Float Critical 2 0 0  |  |  |  |  |
| 357ae9be-8a60-81c8-b0ed-cc5d4b0de079 | 1710 | RTR_CM04_Cost_Center | (Unassigned) | 1.2.2.2.5 | 1.2.2.2.5 | 2026-05-20 | 2026-05-21 | 2026-04-09 | 0 | 5 | 2800 | 0 | 1 |  | 357ae9be-8a60-8116-8d75-d41e455d0436 | -7.94 | 0 | As Soon As Possible | Auto Scheduled | AMETEK SAP XXL Project Plan Replan MSP Task.csv | AMETEK SAP XXL Project Plan Replan MSP Task.csv__2f0764ccac__2026-05-05T02-44-15-662Z | COULD NOT BE DETERMINED | 42 | True |  | Not started | True  -7.94 0 1 0 0 0 26 | Negative Float High 2 0 0  |  | 1713, 1716, 1712, 1711, 1714, 1715 | True |  |
| 357ae9be-8a60-81c8-b7cd-c1f76a030587 | 4173 | Pre Load Validation | Finance | 1.2.5.2.3.2 | 1.2.5.2.3.2 | 2026-09-25 | 2026-09-25 | 2026-04-07 | 0 | 6 | 4171 | 1 | 1 | 357ae9be-8a60-8124-bcb4-ec9d96461fc1 | 357ae9be-8a60-81b6-9d8c-dae0b423fd1d | -718.52 | 0 | As Soon As Possible | Auto Scheduled | AMETEK SAP XXL Project Plan Replan MSP Task.csv | AMETEK SAP XXL Project Plan Replan MSP Task.csv__2f0764ccac__2026-05-05T02-44-15-662Z | Kasey Hughes | 171 | True |  | Not started | True  -718.52 0 1 0 0 0 26 | Negative Float Critical 2 0 0  |  |  |  |  |
| 357ae9be-8a60-81c9-86d6-e1261b986497 | 1790 | Error and Defect Mitigation | PTP | 1.2.2.2.17.4 | 1.2.2.2.17.4 | 2026-05-25 | 2026-05-25 | 2026-04-10 | 0 | 6 | 1786 | 1 | 1 | 357ae9be-8a60-816c-823c-c1b9c1b61c3b | 357ae9be-8a60-81b6-9b9b-f1b1488f39ff | -65.02 | 0 | As Soon As Possible | Auto Scheduled | AMETEK SAP XXL Project Plan Replan MSP Task.csv | AMETEK SAP XXL Project Plan Replan MSP Task.csv__2f0764ccac__2026-05-05T02-44-15-662Z | Nevin Varkey | 45 | True |  | Not started | True  -65.02 0 1 0 0 0 26 | Negative Float Critical 2 0 0  |  |  |  |  |
| 357ae9be-8a60-81c9-86d7-f174eebfb663 | 2642 | Pre Load Validation | PTM | 1.2.4.2.34.2 | 1.2.4.2.34.2 | 2026-09-30 | 2026-10-01 | 2026-04-17 | 0 | 6 | 2640 | 1 | 1 | 357ae9be-8a60-8115-a54a-e65caa42148c | 357ae9be-8a60-812e-8799-e0dabe267ef6 | -41355 | 0 | As Soon As Possible | Auto Scheduled | AMETEK SAP XXL Project Plan Replan MSP Task.csv | AMETEK SAP XXL Project Plan Replan MSP Task.csv__2f0764ccac__2026-05-05T02-44-15-662Z | Brad Meseck | 167 | True |  | Not started | True  -41355 0 1 0 0 0 26 | Wrong Dependency, Negative Float Critical 5 1 0  |  |  |  |  |
| 357ae9be-8a60-81c9-8aac-cdcd16198d69 | 2725 | Error and Defect Mitigation | Finance | 1.2.4.2.52.4 | 1.2.4.2.52.4 | 2026-09-30 | 2026-10-02 | 2026-04-10 | 0 | 6 | 2721 | 1 | 1 | 357ae9be-8a60-81b1-8d5b-c0852c76c837 | 357ae9be-8a60-816f-bb63-ece5e94786fe | -694.5 | 0 | Finish No Earlier Than | Auto Scheduled | AMETEK SAP XXL Project Plan Replan MSP Task.csv | AMETEK SAP XXL Project Plan Replan MSP Task.csv__2f0764ccac__2026-05-05T02-44-15-662Z | Kasey Hughes | 175 | True |  | Not started | True  -694.5 0 1 0 0 0 26 | Negative Float Critical 2 0 0 True | 2026-04-17 |  |  |  |
| 357ae9be-8a60-81c9-8f77-ef73e3057ac4 | 2801 | Mock Transactional Data | Data | 1.2.2.4 | 1.2.2.4 | 2026-10-08 | 2026-10-12 | 2026-10-12 | 0 | 4 | 2809 | 1 | 1 | 357ae9be-8a60-8157-a04a-f9cfe59a7980 | 357ae9be-8a60-81e5-994b-f3a88ec32bb8 | -90.75 | 0 | As Soon As Possible | Auto Scheduled | AMETEK SAP XXL Project Plan Replan MSP Task.csv | AMETEK SAP XXL Project Plan Replan MSP Task.csv__2f0764ccac__2026-05-05T02-44-15-662Z | Jyoti Nain |  |  |  | Not started | True  -90.75 0 1 0 0 1 18 | Wrong Dependency, Negative Float Critical 5 1 0  |  | 2860, 2824, 2944, 2838, 2829, 2821, 2858, 2945 | True |  |
| 357ae9be-8a60-81c9-9763-d2f67f05664a | 1057 | Pre Load Validation | PTM | 1.2.1.31.2 | 1.2.1.31.2 | 2026-04-16 | 2026-04-16 | 2026-04-16 | 100 | 5 | 694 | 1 | 1 | 357ae9be-8a60-8130-88eb-ce801b94b7af | 357ae9be-8a60-819b-b154-e350e2bb268a | 0 | 0 | As Soon As Possible | Auto Scheduled | AMETEK SAP XXL Project Plan Replan MSP Task.csv | AMETEK SAP XXL Project Plan Replan MSP Task.csv__2f0764ccac__2026-05-05T02-44-15-662Z | Brad Meseck |  |  |  | Done | True  0 0 1 0 0 0 18 | Wrong Dependency High 3 1 0  |  |  |  |  |
| 357ae9be-8a60-81c9-988b-f4691c53f9f9 | 1914 | Load | Data | 1.2.2.2.35.5 | 1.2.2.2.35.5 | 2026-05-25 | 2026-05-25 | 2026-04-20 | 0 | 6 | 1909 | 1 | 1 | 357ae9be-8a60-81f9-953d-dd531f6faa78 | 357ae9be-8a60-81c8-a6dd-d01ee73c0a5e | -53.77 | 0 | As Soon As Possible | Auto Scheduled | AMETEK SAP XXL Project Plan Replan MSP Task.csv | AMETEK SAP XXL Project Plan Replan MSP Task.csv__2f0764ccac__2026-05-05T02-44-15-662Z | Jyoti Nain | 35 | True |  | Not started | True  -53.77 0 1 0 0 0 26 | Negative Float Critical 2 0 0  |  |  |  |  |
| 357ae9be-8a60-81c9-9de8-e8f1dc7bf44a | 4536 | Open Purchase Orders(Manual) | (Unassigned) | 1.2.5.4.5 | 1.2.5.4.5 | 2026-10-01 | 2026-10-02 | 2026-10-02 | 0 | 5 | 4531 | 1 | 0 | 357ae9be-8a60-816c-a955-f517ebe8c18c |  | -34.6 | 0 | As Soon As Possible | Auto Scheduled | AMETEK SAP XXL Project Plan Replan MSP Task.csv | AMETEK SAP XXL Project Plan Replan MSP Task.csv__2f0764ccac__2026-05-05T02-44-15-662Z | COULD NOT BE DETERMINED |  |  |  | Not started | True  -34.6 0 0 0 0 0 12 | Negative Float, Open Finish Critical 3 0 0  |  |  |  |  |
| 357ae9be-8a60-81c9-a2dd-f1b3c32bc6de | 28 | Procure to Pay | (Unassigned) | 1.1.2.9.1.4 | 1.1.2.9.1.4 | 2025-04-07 | 2025-09-18 | 2025-09-18 | 100 | 6 | 25 | 0 | 0 |  |  | 0 | 0 | As Soon As Possible | Auto Scheduled | AMETEK SAP XXL Project Plan Replan MSP Task.csv | AMETEK SAP XXL Project Plan Replan MSP Task.csv__2f0764ccac__2026-05-05T02-44-15-662Z | COULD NOT BE DETERMINED |  |  |  | Done | True  0 0 0 0 0 0 12 | Low 0 0 0  |  | 136, 36, 35 | True |  |
| 357ae9be-8a60-81c9-a6a2-e829c39393ba | 4216 | Simulate Load | Data | 1.2.5.2.9.3 | 1.2.5.2.9.3 | 2026-09-24 | 2026-09-24 | 2026-04-09 | 0 | 6 | 4213 | 0 | 1 |  | 357ae9be-8a60-8127-8c09-d510449286ba | -690.52 | 0 | Start No Earlier Than | Auto Scheduled | AMETEK SAP XXL Project Plan Replan MSP Task.csv | AMETEK SAP XXL Project Plan Replan MSP Task.csv__2f0764ccac__2026-05-05T02-44-15-662Z | Jyoti Nain | 168 | True |  | Not started | True  -690.52 0 1 0 0 0 26 | Negative Float, Open Start Critical 3 0 0 True | 2026-04-15 |  |  |  |
| 357ae9be-8a60-81c9-b926-d6f48350f144 | 4312 | Simulate Load | Data | 1.2.5.2.24.3 | 1.2.5.2.24.3 | 2026-09-25 | 2026-09-25 | 2026-04-14 | 0 | 6 | 4309 | 1 | 1 | 357ae9be-8a60-81e5-9b3f-c5ad24e97b87 | 357ae9be-8a60-81d9-966e-ebb1a9d0ce67 | -726.02 | 0 | As Soon As Possible | Auto Scheduled | AMETEK SAP XXL Project Plan Replan MSP Task.csv | AMETEK SAP XXL Project Plan Replan MSP Task.csv__2f0764ccac__2026-05-05T02-44-15-662Z | Jyoti Nain | 164 | True |  | Not started | True  -726.02 0 1 0 0 0 26 | Negative Float Critical 2 0 0  |  |  |  |  |
| 357ae9be-8a60-81c9-bcf4-cae73a4883d5 | 2619 | PTM_CM40_Work Center Conversion | PTM | 1.2.4.2.31 | 1.2.4.2.31 | 2026-09-29 | 2026-10-02 | 2026-04-20 | 0 | 5 | 2898 | 0 | 0 |  |  | -87.55 | 0 | As Soon As Possible | Auto Scheduled | AMETEK SAP XXL Project Plan Replan MSP Task.csv | AMETEK SAP XXL Project Plan Replan MSP Task.csv__2f0764ccac__2026-05-05T02-44-15-662Z | Brad Meseck | 165 | True |  | Not started | True  -87.55 0 0 0 0 0 20 | Negative Float Critical 2 0 0  |  | 2622, 2620, 2625, 2621, 2624, 2623 | True |  |
| 357ae9be-8a60-81c9-be80-dde98fc8d226 | 2585 | Load File Staged and Posted "Ready" | PTM | 1.2.4.2.26.1 | 1.2.4.2.26.1 | 2026-09-25 | 2026-09-25 | 2026-04-07 | 0 | 6 | 2584 | 1 | 0 | 357ae9be-8a60-81d9-97a1-d8800c6089d8 |  | -40665 | 0 | As Soon As Possible | Auto Scheduled | AMETEK SAP XXL Project Plan Replan MSP Task.csv | AMETEK SAP XXL Project Plan Replan MSP Task.csv__2f0764ccac__2026-05-05T02-44-15-662Z | Eric Heisler | 171 | True |  | Not started | True  -40665 0 0 0 0 0 20 | Wrong Dependency, Negative Float, Open Finish Critical 6 1 0  |  |  |  |  |
| 357ae9be-8a60-81ca-817f-ded15e75ea27 | 1877 | Simulate Load | Data | 1.2.2.2.30.3 | 1.2.2.2.30.3 | 2026-05-21 | 2026-05-25 | 2026-04-16 | 0 | 6 | 1874 | 1 | 1 | 357ae9be-8a60-810b-926e-f8e31e39917f | 357ae9be-8a60-8195-bbcf-f741998e7807 | -62.39 | 0 | As Soon As Possible | Auto Scheduled | AMETEK SAP XXL Project Plan Replan MSP Task.csv | AMETEK SAP XXL Project Plan Replan MSP Task.csv__2f0764ccac__2026-05-05T02-44-15-662Z | Jyoti Nain | 39 | True |  | Not started | True  -62.39 0 1 0 0 0 26 | Negative Float Critical 2 0 0  |  |  |  |  |
| 357ae9be-8a60-81ca-880c-ca2bd9dec1f6 | 3064 | Error and Defect Mitigation | PTP | 1.2.3.2.17.4 | 1.2.3.2.17.4 | 2026-06-15 | 2026-06-15 | 2026-04-10 | 0 | 6 | 3060 | 1 | 1 | 357ae9be-8a60-8140-a693-c73c855c587d | 357ae9be-8a60-81bd-b148-e03fada240e5 | -185.02 | 0 | As Soon As Possible | Auto Scheduled | AMETEK SAP XXL Project Plan Replan MSP Task.csv | AMETEK SAP XXL Project Plan Replan MSP Task.csv__2f0764ccac__2026-05-05T02-44-15-662Z | Nevin Varkey | 66 | True |  | Not started | True  -185.02 0 1 0 0 0 26 | Negative Float Critical 2 0 0  |  |  |  |  |
| 357ae9be-8a60-81ca-abff-e32cc3aac5b4 | 1962 | Load | Data | 1.2.2.2.47.5 | 1.2.2.2.47.5 | 2026-05-26 | 2026-05-27 | 2026-04-17 | 0 | 6 | 1957 | 1 | 2 | 357ae9be-8a60-8138-9dfa-c8b84bf09dd8 | 357ae9be-8a60-8101-a382-e8a212fb3518, 357ae9be-8a60-814f-ad89-edc8c17fb7c1 | -67.27 | 0 | As Soon As Possible | Auto Scheduled | AMETEK SAP XXL Project Plan Replan MSP Task.csv | AMETEK SAP XXL Project Plan Replan MSP Task.csv__2f0764ccac__2026-05-05T02-44-15-662Z | Jyoti Nain | 40 | True |  | Not started | True  -67.27 0 2 2 91 0 37 | Wrong Successor, Negative Float Critical 5 0 2  |  |  |  |  |
| 357ae9be-8a60-81ca-bf77-f5a62ede8fb8 | 35 | In Draft | (Unassigned) | 1.1.2.9.1.4.1 | 1.1.2.9.1.4.1 | 2025-04-07 | 2025-08-18 | 2025-08-18 | 100 | 7 | 28 | 0 | 0 |  |  | 0 | 0 | Finish No Earlier Than | Auto Scheduled | AMETEK SAP XXL Project Plan Replan MSP Task.csv | AMETEK SAP XXL Project Plan Replan MSP Task.csv__2f0764ccac__2026-05-05T02-44-15-662Z | COULD NOT BE DETERMINED |  |  |  | Done | True  0 0 0 0 0 0 12 | Low 0 0 0 True | 2025-08-18 |  |  |  |
| 357ae9be-8a60-81cb-86d2-ddab8394af74 | 702 | RTR_CM11_Asset_Master | (Unassigned) | 1.2.1.53 | 1.2.1.53 | 2026-04-15 | 2026-04-23 | 2026-04-13 | 100 | 4 | 425 | 0 | 0 |  |  | 0 | 0 | As Soon As Possible | Auto Scheduled | AMETEK SAP XXL Project Plan Replan MSP Task.csv | AMETEK SAP XXL Project Plan Replan MSP Task.csv__2f0764ccac__2026-05-05T02-44-15-662Z | COULD NOT BE DETERMINED |  |  |  | Done | True  0 0 0 0 0 0 12 | Low 0 0 0  |  | 1123, 1125, 1126, 1122, 1124, 1121 | True |  |
| 357ae9be-8a60-81cb-876e-d1051fc0a159 | 793 | Load | Data | 1.2.1.10.5 | 1.2.1.10.5 | 2026-04-15 | 2026-04-15 | 2026-04-09 | 100 | 5 | 757 | 1 | 2 | 357ae9be-8a60-8196-bb5c-d5df25346ba5 | 357ae9be-8a60-813a-8c88-f03f957c1587, 357ae9be-8a60-817e-a9a1-de2ed273ea35 | 0 | 0 | Finish No Earlier Than | Auto Scheduled | AMETEK SAP XXL Project Plan Replan MSP Task.csv | AMETEK SAP XXL Project Plan Replan MSP Task.csv__2f0764ccac__2026-05-05T02-44-15-662Z | Jyoti Nain |  |  |  | Done | True  0 0 2 1 6 0 29 | Low 0 0 0 True | 2026-04-15 |  |  |  |
| 357ae9be-8a60-81cb-8958-d03617c7c0a3 | 799 | Error and Defect Mitigation | Finance | 1.2.1.11.4 | 1.2.1.11.4 | 2026-04-10 | 2026-04-10 | 2026-04-10 | 100 | 5 | 758 | 1 | 1 | 357ae9be-8a60-813c-b9b0-dac44b65adde | 357ae9be-8a60-8142-9972-cd1ecdb5f8b2 | 0 | 0 | As Soon As Possible | Auto Scheduled | AMETEK SAP XXL Project Plan Replan MSP Task.csv | AMETEK SAP XXL Project Plan Replan MSP Task.csv__2f0764ccac__2026-05-05T02-44-15-662Z | Kasey Hughes |  |  |  | Done | True  0 0 1 0 0 0 18 | Low 0 0 0  |  |  |  |  |
| 357ae9be-8a60-81cb-8e4e-c36d0058f2e8 | 864 | Business Functions Validation | Basis | 1.1.1.5.1.13 | 1.1.1.5.1.13 | 2026-05-05 | 2026-05-05 | 2026-05-20 | 0 | 6 | 3340 | 1 | 0 | 357ae9be-8a60-8187-9d2b-ce8f2dad5d54 |  | -204.02 | 0 | As Soon As Possible | Auto Scheduled | AMETEK SAP XXL Project Plan Replan MSP Task.csv | AMETEK SAP XXL Project Plan Replan MSP Task.csv__2f0764ccac__2026-05-05T02-44-15-662Z | Lokchetan Meghavath |  |  |  | Not started | True  -204.02 0 0 0 0 0 12 | Negative Float, Open Finish Critical 3 0 0  |  |  |  | True |
| 357ae9be-8a60-81cb-8ef5-d5300e28987b | 838 | Enhanchments | (Unassigned) | 1.3.2.3 | 1.3.2.3 | 2026-05-04 | 2026-08-14 | 2026-05-22 | 0 | 4 | 835 | 0 | 0 |  |  | 61 | 61 | Finish No Earlier Than | Auto Scheduled | AMETEK SAP XXL Project Plan Replan MSP Task.csv | AMETEK SAP XXL Project Plan Replan MSP Task.csv__2f0764ccac__2026-05-05T02-44-15-662Z | COULD NOT BE DETERMINED | 84 | True |  | Not started |   61 61 0 0 0 0 8 | Open Start, Open Finish Medium 2 0 0 True | 2026-08-14 |  |  | True |
| 357ae9be-8a60-81cb-8fbf-fbaa96ac686d | 288 | Workflow Activation / Data load in Test System | Data | 1.1.2.7.4 | 1.1.2.7.4 | 2026-05-22 | 2026-05-28 | 2025-12-05 | 0 | 5 | 278 | 1 | 1 | 357ae9be-8a60-8169-921b-c44297a8f37c | 357ae9be-8a60-8196-9ce7-d918ccb0b9dd | 68 | 0 | Start No Earlier Than | Auto Scheduled | AMETEK SAP XXL Project Plan Replan MSP Task.csv | AMETEK SAP XXL Project Plan Replan MSP Task.csv__2f0764ccac__2026-05-05T02-44-15-662Z | Jyoti Nain | 174 | True |  | Not started | True  68 0 1 0 0 0 26 | Low 0 0 0 True | 2026-04-30 |  |  |  |
| 357ae9be-8a60-81cb-9dc3-d8e7ead5ebd2 | 3043 | Error and Defect Mitigation | OTC | 1.2.3.2.14.4 | 1.2.3.2.14.4 | 2026-06-12 | 2026-06-12 | 2026-04-09 | 0 | 6 | 3039 | 1 | 1 | 357ae9be-8a60-812a-86db-fdce52228fbd | 357ae9be-8a60-8185-a2d9-d16ed2b25102 | -196.52 | 0 | As Soon As Possible | Auto Scheduled | AMETEK SAP XXL Project Plan Replan MSP Task.csv | AMETEK SAP XXL Project Plan Replan MSP Task.csv__2f0764ccac__2026-05-05T02-44-15-662Z | Ric Haraida | 64 | True |  | Not started | True  -196.52 0 1 0 0 0 26 | Negative Float Critical 2 0 0  |  |  |  |  |
| 357ae9be-8a60-81cb-9ee1-f5e17e4f3e95 | 1823 | Load | Data | 1.2.2.2.22.5 | 1.2.2.2.22.5 | 2026-05-19 | 2026-05-19 | 2026-04-14 | 0 | 6 | 1818 | 1 | 2 | 357ae9be-8a60-8105-b287-efa1280d878d | 357ae9be-8a60-811c-a632-c761fdfa4cc5, 357ae9be-8a60-814d-ae0e-f42e994a14e9 | -11.52 | 0 | As Soon As Possible | Auto Scheduled | AMETEK SAP XXL Project Plan Replan MSP Task.csv | AMETEK SAP XXL Project Plan Replan MSP Task.csv__2f0764ccac__2026-05-05T02-44-15-662Z | Jyoti Nain | 35 | True | True | Not started | True  -11.52 0 1 1 33 0 33 | Wrong Successor, Negative Float Critical 5 0 2  |  |  |  |  |
| 357ae9be-8a60-81cb-a4b5-cc9017ecec41 | 3143 | Pre Load Validation | PTP | 1.2.3.2.29.2 | 1.2.3.2.29.2 | 2026-06-11 | 2026-06-11 | 2026-04-15 | 0 | 6 | 3141 | 1 | 1 | 357ae9be-8a60-8147-9cc5-f90ead68a698 | 357ae9be-8a60-8156-af35-d73666b65652 | -11416 | 0 | As Soon As Possible | Auto Scheduled | AMETEK SAP XXL Project Plan Replan MSP Task.csv | AMETEK SAP XXL Project Plan Replan MSP Task.csv__2f0764ccac__2026-05-05T02-44-15-662Z | Nevin Varkey | 57 | True |  | Not started | True  -11416 0 1 0 0 0 26 | Negative Float Critical 2 0 0  |  |  |  |  |
| 357ae9be-8a60-81cb-b382-f677190f5acb | 1857 | Error and Defect Mitigation | PTP | 1.2.2.2.27.4 | 1.2.2.2.27.4 | 2026-05-21 | 2026-05-22 | 2026-04-16 | 0 | 6 | 1853 | 1 | 0 | 357ae9be-8a60-811c-b07e-d2d554a818af |  | -31.27 | 0 | As Soon As Possible | Auto Scheduled | AMETEK SAP XXL Project Plan Replan MSP Task.csv | AMETEK SAP XXL Project Plan Replan MSP Task.csv__2f0764ccac__2026-05-05T02-44-15-662Z | Nevin Varkey | 36 | True |  | Not started | True  -31.27 0 0 0 0 0 20 | Negative Float, Open Finish Critical 3 0 0  |  |  |  |  |
| 357ae9be-8a60-81cb-b45a-fcdbf16cbf67 | 1763 | Load | Data | 1.2.2.2.13.8 | 1.2.2.2.13.8 | 2026-05-22 | 2026-05-22 | 2026-04-09 | 0 | 6 | 1755 | 1 | 1 | 357ae9be-8a60-81ed-ac06-d227b4043db5 | 357ae9be-8a60-812a-bf60-cd37cd2d76df | -39.02 | 0 | As Soon As Possible | Auto Scheduled | AMETEK SAP XXL Project Plan Replan MSP Task.csv | AMETEK SAP XXL Project Plan Replan MSP Task.csv__2f0764ccac__2026-05-05T02-44-15-662Z | Jyoti Nain | 43 | True |  | Not started | True  -39.02 0 1 0 0 0 26 | Negative Float Critical 2 0 0  |  |  |  |  |
| 357ae9be-8a60-81cb-bacc-f37bc30b71f0 | 4204 | Load | Data | 1.2.5.2.7.5 | 1.2.5.2.7.5 | 2026-09-30 | 2026-09-30 | 2026-04-09 | 0 | 6 | 4199 | 1 | 1 | 357ae9be-8a60-81b5-ae59-d42984fda7e3 | 357ae9be-8a60-81e0-9571-d9fe5e9c0dee | -680.02 | 0 | As Soon As Possible | Auto Scheduled | AMETEK SAP XXL Project Plan Replan MSP Task.csv | AMETEK SAP XXL Project Plan Replan MSP Task.csv__2f0764ccac__2026-05-05T02-44-15-662Z | Jyoti Nain | 174 | True |  | Not started | True  -680.02 0 1 0 0 0 26 | Negative Float Critical 2 0 0  |  |  |  |  |
| 357ae9be-8a60-81cb-bfeb-d91fb3ac3c84 | 2421 | ITC3 Mock Data Loads Complete | PMO | 1.2.3.5 | 1.2.3.5 | 2026-06-23 | 2026-06-23 | 2026-04-21 | 0 | 4 | 2053 | 1 | 1 | 357ae9be-8a60-8109-b78d-fb9671d400c0 | 357ae9be-8a60-8116-9f13-ebe42c8bf5e2 | -11791 | 0 | As Soon As Possible | Auto Scheduled | AMETEK SAP XXL Project Plan Replan MSP Task.csv | AMETEK SAP XXL Project Plan Replan MSP Task.csv__2f0764ccac__2026-05-05T02-44-15-662Z | Mark George | 63 | True |  | Not started | True  -11791 0 0 0 0 0 22 | Negative Float Critical 2 0 0  |  |  |  |  |
| 357ae9be-8a60-81cc-83de-df75b47f05b7 | 2602 | Error and Defect Mitigation | PTP | 1.2.4.2.28.4 | 1.2.4.2.28.4 | 2026-09-29 | 2026-09-29 | 2026-04-16 | 0 | 6 | 2598 | 1 | 1 | 357ae9be-8a60-810f-981e-c3499217565c | 357ae9be-8a60-813e-ac7a-e527c6540992 | -676.25 | 0 | As Soon As Possible | Auto Scheduled | AMETEK SAP XXL Project Plan Replan MSP Task.csv | AMETEK SAP XXL Project Plan Replan MSP Task.csv__2f0764ccac__2026-05-05T02-44-15-662Z | Nevin Varkey | 166 | True |  | Not started | True  -676.25 0 1 0 0 0 26 | Negative Float Critical 2 0 0  |  |  |  |  |
| 357ae9be-8a60-81cc-9018-f538b91ee690 | 1949 | Post Load Validation | PTM | 1.2.2.2.45.2 | 1.2.2.2.45.2 | 2026-05-25 | 2026-05-26 | 2026-04-17 | 0 | 6 | 1947 | 1 | 0 | 357ae9be-8a60-815d-8843-ee8bb476a4cc |  | -46.02 | 0 | As Soon As Possible | Auto Scheduled | AMETEK SAP XXL Project Plan Replan MSP Task.csv | AMETEK SAP XXL Project Plan Replan MSP Task.csv__2f0764ccac__2026-05-05T02-44-15-662Z | Eric Heisler | 39 | True |  | Not started | True  -46.02 0 0 0 0 0 20 | Negative Float, Open Finish Critical 3 0 0  |  |  |  |  |
| 357ae9be-8a60-81cc-965d-c842e3af70a7 | 3295 | Post Load Validation | OTC | 1.2.3.2.61.2 | 1.2.3.2.61.2 | 2026-06-16 | 2026-06-16 | 2026-04-16 | 0 | 6 | 3293 | 1 | 1 | 357ae9be-8a60-81a1-be62-f2042da3ef7f | 357ae9be-8a60-8185-a59f-d11f46aa5b30 | -190.27 | 0 | As Soon As Possible | Auto Scheduled | AMETEK SAP XXL Project Plan Replan MSP Task.csv | AMETEK SAP XXL Project Plan Replan MSP Task.csv__2f0764ccac__2026-05-05T02-44-15-662Z | James VanRiper | 61 | True |  | Not started | True  -190.27 0 1 1 434 0 31 | Wrong Dependency, Wrong Successor, Negative Float Critical 8 1 1  |  |  |  |  |
| 357ae9be-8a60-81cc-a1de-f80fe61aab20 | 3156 | Extract File | Data | 1.2.3.2.31.1 | 1.2.3.2.31.1 | 2026-06-11 | 2026-06-11 | 2026-04-16 | 0 | 6 | 3155 | 1 | 1 | 357ae9be-8a60-81e2-a0b5-ebbf0741e05a | 357ae9be-8a60-8183-aa50-c4141e2eefd1 | -173.77 | 0 | As Soon As Possible | Auto Scheduled | AMETEK SAP XXL Project Plan Replan MSP Task.csv | AMETEK SAP XXL Project Plan Replan MSP Task.csv__2f0764ccac__2026-05-05T02-44-15-662Z | Jyoti Nain | 56 | True |  | Not started | True  -173.77 0 1 0 0 0 26 | Wrong Dependency, Negative Float Critical 5 1 0  |  |  |  |  |
| 357ae9be-8a60-81cc-a542-d62954825610 | 4276 | Post Load Validation | Finance | 1.2.5.2.18.6 | 1.2.5.2.18.6 | 2026-10-01 | 2026-10-02 | 2026-04-13 | 0 | 6 | 4270 | 1 | 2 | 357ae9be-8a60-8128-b5ad-da80f9efee96 | 357ae9be-8a60-812c-b726-c9729f4a8c39, 357ae9be-8a60-8150-a345-d170849776e1 | -700.77 | 0 | As Soon As Possible | Auto Scheduled | AMETEK SAP XXL Project Plan Replan MSP Task.csv | AMETEK SAP XXL Project Plan Replan MSP Task.csv__2f0764ccac__2026-05-05T02-44-15-662Z | Kasey Hughes | 172 | True |  | Not started | True  -700.77 0 2 0 0 0 32 | Negative Float Critical 2 0 0  |  |  |  |  |
| 357ae9be-8a60-81cc-b9c6-f02be067db6f | 3157 | Pre Load Validation | PTM | 1.2.3.2.31.2 | 1.2.3.2.31.2 | 2026-06-16 | 2026-06-16 | 2026-04-17 | 0 | 6 | 3155 | 1 | 1 | 357ae9be-8a60-8104-b8e3-e89dc44950c7 | 357ae9be-8a60-8121-b120-c64de69a52ea | -182.39 | 0 | As Soon As Possible | Auto Scheduled | AMETEK SAP XXL Project Plan Replan MSP Task.csv | AMETEK SAP XXL Project Plan Replan MSP Task.csv__2f0764ccac__2026-05-05T02-44-15-662Z | Brad Meseck | 60 | True |  | Not started | True  -182.39 0 1 0 0 0 26 | Negative Float Critical 2 0 0  |  |  |  |  |
| 357ae9be-8a60-81cc-bc23-d33af56cbc0d | 2982 | Load | Data | 1.2.3.2.4.5 | 1.2.3.2.4.5 | 2026-06-09 | 2026-06-09 | 2026-04-07 | 0 | 6 | 2977 | 1 | 1 | 357ae9be-8a60-81be-b299-f877cde78027 | 357ae9be-8a60-81ec-b52c-d19359ee27ae | -183.52 | 0 | As Soon As Possible | Auto Scheduled | AMETEK SAP XXL Project Plan Replan MSP Task.csv | AMETEK SAP XXL Project Plan Replan MSP Task.csv__2f0764ccac__2026-05-05T02-44-15-662Z | Jyoti Nain | 63 | True |  | Not started | True  -183.52 0 1 0 0 0 26 | Negative Float Critical 2 0 0  |  |  |  |  |
| 357ae9be-8a60-81cd-80dc-f4374abc5127 | 3200 | VC_Characteristics | (Unassigned) | 1.2.3.2.38 | 1.2.3.2.38 | 2026-06-08 | 2026-06-09 | 2026-04-07 | 0 | 5 | 2959 | 0 | 0 |  |  | -17.44 | 0 | As Soon As Possible | Auto Scheduled | AMETEK SAP XXL Project Plan Replan MSP Task.csv | AMETEK SAP XXL Project Plan Replan MSP Task.csv__2f0764ccac__2026-05-05T02-44-15-662Z | COULD NOT BE DETERMINED | 63 | True |  | Not started | True  -17.44 0 0 0 0 0 20 | Negative Float Critical 2 0 0  |  | 3201, 3202 | True |  |
| 357ae9be-8a60-81cd-81d1-c0de95ecfbcb | 293 | Initiate Preparation of Cutover Plans | (Unassigned) | 1.1.2.7.9 | 1.1.2.7.9 | 2026-07-27 | 2026-08-05 | 2026-02-12 | 0 | 5 | 278 | 1 | 0 | 357ae9be-8a60-817c-b996-df6f26f27ab2 |  | 68 | 68 | Start No Earlier Than | Auto Scheduled | AMETEK SAP XXL Project Plan Replan MSP Task.csv | AMETEK SAP XXL Project Plan Replan MSP Task.csv__2f0764ccac__2026-05-05T02-44-15-662Z | COULD NOT BE DETERMINED | 174 | True |  | Not started |   68 68 0 0 0 0 8 | Open Finish Medium 1 0 0 True | 2026-04-30 |  |  |  |
| 357ae9be-8a60-81cd-8a6c-cbc50bc14c08 | 972 | Extract File | Data | 1.2.1.16.1 | 1.2.1.16.1 | 2026-04-10 | 2026-04-10 | 2026-04-10 | 100 | 5 | 765 | 1 | 1 | 357ae9be-8a60-81a9-a799-fb2443f06fc1 | 357ae9be-8a60-8172-95d7-f08cb5837bec | 0 | 0 | As Soon As Possible | Auto Scheduled | AMETEK SAP XXL Project Plan Replan MSP Task.csv | AMETEK SAP XXL Project Plan Replan MSP Task.csv__2f0764ccac__2026-05-05T02-44-15-662Z | Jyoti Nain |  |  |  | Done | True  0 0 1 0 0 0 18 | Low 0 0 0  |  |  |  |  |
| 357ae9be-8a60-81cd-8c09-e457da07ac98 | 774 | Simulate Load | Data | 1.2.1.4.3 | 1.2.1.4.3 | 2026-04-07 | 2026-04-08 | 2026-04-08 | 100 | 5 | 740 | 1 | 1 | 357ae9be-8a60-81e2-a260-eb6621be81ab | 357ae9be-8a60-811f-9059-fa4c89e88bb7 | 0 | 0 | As Soon As Possible | Auto Scheduled | AMETEK SAP XXL Project Plan Replan MSP Task.csv | AMETEK SAP XXL Project Plan Replan MSP Task.csv__2f0764ccac__2026-05-05T02-44-15-662Z | Jyoti Nain |  |  |  | Done | True  0 0 1 0 0 0 18 | Low 0 0 0  |  |  |  |  |
| 357ae9be-8a60-81cd-9088-d70cee098476 | 3014 | Error and Defect Mitigation | Finance | 1.2.3.2.9.4 | 1.2.3.2.9.4 | 2026-06-08 | 2026-06-08 | 2026-04-09 | 0 | 6 | 3010 | 1 | 1 | 357ae9be-8a60-819c-aa05-e04b69c5451a | 357ae9be-8a60-8131-b8ae-e7b2519f4dca | -168.52 | 0 | As Soon As Possible | Auto Scheduled | AMETEK SAP XXL Project Plan Replan MSP Task.csv | AMETEK SAP XXL Project Plan Replan MSP Task.csv__2f0764ccac__2026-05-05T02-44-15-662Z | Kasey Hughes | 60 | True |  | Not started | True  -168.52 0 1 0 0 0 26 | Negative Float Critical 2 0 0  |  |  |  |  |
| 357ae9be-8a60-81cd-9641-fb00a0a50d18 | 4531 | Mock Transactional Data | Data | 1.2.5.4 | 1.2.5.4 | 2026-10-01 | 2026-10-05 | 2026-10-05 | 0 | 4 | 4160 | 1 | 1 | 357ae9be-8a60-81d2-b413-e8ebd9ac365c | 357ae9be-8a60-81b7-9a9c-ee8a637217d0 | -35.1 | 0 | As Soon As Possible | Auto Scheduled | AMETEK SAP XXL Project Plan Replan MSP Task.csv | AMETEK SAP XXL Project Plan Replan MSP Task.csv__2f0764ccac__2026-05-05T02-44-15-662Z | Jyoti Nain |  |  |  | Not started | True  -35.1 0 1 0 0 0 18 | Negative Float Critical 2 0 0  |  | 4532, 4533, 4538, 4537, 4536, 4534, 4535, 4539 | True |  |
| 357ae9be-8a60-81cd-987c-ca881428729d | 930 | Gate Review | (Unassigned) | 1.3.3.8.8 | 1.3.3.8.8 | 2026-08-25 | 2026-08-25 | 2026-09-03 | 0 | 5 | 22 | 1 | 0 | 357ae9be-8a60-811d-8cbd-fe64a0af8f39 |  | 432 | 432 | As Soon As Possible | Auto Scheduled | AMETEK SAP XXL Project Plan Replan MSP Task.csv | AMETEK SAP XXL Project Plan Replan MSP Task.csv__2f0764ccac__2026-05-05T02-44-15-662Z | COULD NOT BE DETERMINED |  |  |  | Not started |   432 432 0 0 0 0 0 | Open Finish Medium 1 0 0  |  |  |  |  |
| 357ae9be-8a60-81cd-9be8-e71c99cf6a97 | 2672 | Post Load Validation | PTM | 1.2.4.2.40.2 | 1.2.4.2.40.2 | 2026-09-29 | 2026-09-29 | 2026-04-16 | 0 | 6 | 2670 | 1 | 0 | 357ae9be-8a60-818a-9f6c-fbf3cd888a64 |  | -672.25 | 0 | As Soon As Possible | Auto Scheduled | AMETEK SAP XXL Project Plan Replan MSP Task.csv | AMETEK SAP XXL Project Plan Replan MSP Task.csv__2f0764ccac__2026-05-05T02-44-15-662Z | Eric Heisler | 166 | True |  | Not started | True  -672.25 0 0 0 0 0 20 | Negative Float, Open Finish Critical 3 0 0  |  |  |  |  |
| 357ae9be-8a60-81cd-a164-c19c8dda4757 | 1982 | Post Load Validation | PTP | 1.2.2.2.51.3 | 1.2.2.2.51.3 | 2026-05-27 | 2026-05-27 | 2026-04-13 | 0 | 6 | 1979 | 1 | 0 | 357ae9be-8a60-8152-bc48-ce5f670d3f5e |  | -57.77 | 0 | As Soon As Possible | Auto Scheduled | AMETEK SAP XXL Project Plan Replan MSP Task.csv | AMETEK SAP XXL Project Plan Replan MSP Task.csv__2f0764ccac__2026-05-05T02-44-15-662Z | Nevin Varkey | 44 | True |  | Not started | True  -57.77 0 0 0 0 0 20 | Wrong Dependency, Negative Float, Open Finish Critical 6 1 0  |  |  |  |  |
| 357ae9be-8a60-81ce-847f-e221885ba10c | 2997 | Load File Staged and Posted "Ready" | Finance | 1.2.3.2.7.1 | 1.2.3.2.7.1 | 2026-06-11 | 2026-06-11 | 2026-04-08 | 0 | 6 | 2996 | 1 | 1 | 357ae9be-8a60-8185-8ff0-e7244c64b7d0 | 357ae9be-8a60-8123-8a38-e85edcee7dce | -158.02 | 0 | As Soon As Possible | Auto Scheduled | AMETEK SAP XXL Project Plan Replan MSP Task.csv | AMETEK SAP XXL Project Plan Replan MSP Task.csv__2f0764ccac__2026-05-05T02-44-15-662Z | Kasey Hughes | 64 | True |  | Not started | True  -158.02 0 1 0 0 0 26 | Wrong Dependency, Negative Float Critical 5 1 0  |  |  |  |  |
| 357ae9be-8a60-81ce-8d54-c19a401b7d89 | 3280 | Post Load Validation | OTC | 1.2.3.2.56.2 | 1.2.3.2.56.2 | 2026-06-08 | 2026-06-08 | 2026-04-10 | 0 | 6 | 3278 | 1 | 0 | 357ae9be-8a60-8154-858c-cae961219d56 |  | -121.52 | 0 | As Soon As Possible | Auto Scheduled | AMETEK SAP XXL Project Plan Replan MSP Task.csv | AMETEK SAP XXL Project Plan Replan MSP Task.csv__2f0764ccac__2026-05-05T02-44-15-662Z | James VanRiper | 59 | True |  | Not started | True  -121.52 0 0 0 0 0 20 | Negative Float, Open Finish Critical 3 0 0  |  |  |  |  |
| 357ae9be-8a60-81ce-8ed6-e0e738718238 | 2621 | Pre Load Validation | PTM | 1.2.4.2.31.2 | 1.2.4.2.31.2 | 2026-10-01 | 2026-10-02 | 2026-04-17 | 0 | 6 | 2619 | 1 | 1 | 357ae9be-8a60-815d-b926-c5ab34997416 | 357ae9be-8a60-817a-bd23-fe36762be0f9 | -700.38 | 0 | As Soon As Possible | Auto Scheduled | AMETEK SAP XXL Project Plan Replan MSP Task.csv | AMETEK SAP XXL Project Plan Replan MSP Task.csv__2f0764ccac__2026-05-05T02-44-15-662Z | Brad Meseck | 168 | True |  | Not started | True  -700.38 0 1 0 0 0 26 | Negative Float Critical 2 0 0  |  |  |  |  |
| 357ae9be-8a60-81ce-a22e-d9f8795df7bf | 1203 | Pre Load Validation | PTM | 1.2.1.37.2 | 1.2.1.37.2 | 2026-04-22 | 2026-04-22 | 2026-04-20 | 100 | 5 | 1195 | 1 | 1 | 357ae9be-8a60-8122-ac37-debd07d88176 | 357ae9be-8a60-81bd-8572-c9e803b0a8e9 | 0 | 0 | As Soon As Possible | Auto Scheduled | AMETEK SAP XXL Project Plan Replan MSP Task.csv | AMETEK SAP XXL Project Plan Replan MSP Task.csv__2f0764ccac__2026-05-05T02-44-15-662Z | Brad Meseck |  |  |  | Done | True  0 0 1 0 0 0 18 | Low 0 0 0  |  |  |  |  |
| 357ae9be-8a60-81ce-a502-febace550237 | 3394 | Open Client | Basis | 1.1.1.8.3.1 | 1.1.1.8.3.1 | 2026-09-23 | 2026-09-23 | 2026-07-15 | 0 | 6 | 3393 | 1 | 1 | 357ae9be-8a60-8173-a309-f25314369f9f | 357ae9be-8a60-813a-9f08-d37583343dee | -43561 | 0 | As Soon As Possible | Auto Scheduled | AMETEK SAP XXL Project Plan Replan MSP Task.csv | AMETEK SAP XXL Project Plan Replan MSP Task.csv__2f0764ccac__2026-05-05T02-44-15-662Z | Lokchetan Meghavath | 70 | True |  | Not started | True  -43561 0 1 0 0 0 26 | Negative Float Critical 2 0 0  |  |  |  |  |
| 357ae9be-8a60-81ce-afd3-e1674f14f7c9 | 1170 | ITC1 Mock Data Loads Complete | PMO | 1.2.1.70 | 1.2.1.70 | 2026-04-23 | 2026-04-23 | 2026-04-21 | 100 | 4 | 425 | 0 | 1 |  | 357ae9be-8a60-8145-abcf-ead9952da254 | 0 | 0 | As Soon As Possible | Auto Scheduled | AMETEK SAP XXL Project Plan Replan MSP Task.csv | AMETEK SAP XXL Project Plan Replan MSP Task.csv__2f0764ccac__2026-05-05T02-44-15-662Z | Mark George |  |  |  | Done | True  0 0 1 1 7 0 23 | Low 0 0 0  |  |  |  |  |
| 357ae9be-8a60-81ce-bc1d-dd7a1aeebdef | 1110 | Load | OTC | 1.2.1.50.2 | 1.2.1.50.2 | 2026-04-15 | 2026-04-15 | 2026-04-20 | 100 | 5 | 951 | 1 | 0 | 357ae9be-8a60-811a-8ad1-c32d4543b1bc |  | 0 | 0 | As Soon As Possible | Auto Scheduled | AMETEK SAP XXL Project Plan Replan MSP Task.csv | AMETEK SAP XXL Project Plan Replan MSP Task.csv__2f0764ccac__2026-05-05T02-44-15-662Z | Ric Haraida |  |  |  | Done | True  0 0 0 0 0 0 12 | Low 0 0 0  |  |  |  |  |
| 357ae9be-8a60-81ce-bd07-db73319ed2eb | 1842 | Simulate Load | Data | 1.2.2.2.25.3 | 1.2.2.2.25.3 | 2026-05-20 | 2026-05-20 | 2026-04-14 | 0 | 6 | 1839 | 1 | 1 | 357ae9be-8a60-8125-adc7-db00a3945811 | 357ae9be-8a60-8185-af98-e5cb8df2cf96 | -25.27 | 0 | As Soon As Possible | Auto Scheduled | AMETEK SAP XXL Project Plan Replan MSP Task.csv | AMETEK SAP XXL Project Plan Replan MSP Task.csv__2f0764ccac__2026-05-05T02-44-15-662Z | Jyoti Nain | 36 | True | True | Not started | True  -25.27 0 1 0 0 0 26 | Negative Float Critical 2 0 0  |  |  |  |  |
| 357ae9be-8a60-81cf-8e07-d81fbe1523d2 | 3161 | Post Load Validation | PTM | 1.2.3.2.31.6 | 1.2.3.2.31.6 | 2026-06-16 | 2026-06-16 | 2026-04-20 | 0 | 6 | 3155 | 1 | 1 | 357ae9be-8a60-813b-a188-e0ffa4fd5979 | 357ae9be-8a60-8162-87a7-de28bb7ef31f | -182.39 | 0 | As Soon As Possible | Auto Scheduled | AMETEK SAP XXL Project Plan Replan MSP Task.csv | AMETEK SAP XXL Project Plan Replan MSP Task.csv__2f0764ccac__2026-05-05T02-44-15-662Z | Brad Meseck | 57 | True |  | Not started | True  -182.39 0 1 0 0 0 26 | Negative Float Critical 2 0 0  |  |  |  |  |
| 357ae9be-8a60-81cf-967c-e3879f0970ff | 4298 | Simulate Load | Data | 1.2.5.2.22.3 | 1.2.5.2.22.3 | 2026-09-24 | 2026-09-24 | 2026-04-13 | 0 | 6 | 4295 | 1 | 1 | 357ae9be-8a60-8177-9ed9-ef1dd4b3beee | 357ae9be-8a60-8107-bd8d-e1378475df2b | -653.52 | 0 | As Soon As Possible | Auto Scheduled | AMETEK SAP XXL Project Plan Replan MSP Task.csv | AMETEK SAP XXL Project Plan Replan MSP Task.csv__2f0764ccac__2026-05-05T02-44-15-662Z | Jyoti Nain | 164 | True |  | Not started | True  -653.52 0 1 0 0 0 26 | Negative Float Critical 2 0 0  |  |  |  |  |
| 357ae9be-8a60-81cf-9699-f6d13ae8cd39 | 3396 | Close Client | Basis | 1.1.1.8.3.3 | 1.1.1.8.3.3 | 2026-09-24 | 2026-09-24 | 2026-07-16 | 0 | 6 | 3393 | 1 | 0 | 357ae9be-8a60-813a-9f08-d37583343dee |  | -43561 | 0 | As Soon As Possible | Auto Scheduled | AMETEK SAP XXL Project Plan Replan MSP Task.csv | AMETEK SAP XXL Project Plan Replan MSP Task.csv__2f0764ccac__2026-05-05T02-44-15-662Z | Lokchetan Meghavath | 70 | True |  | Not started | True  -43561 0 0 0 0 0 20 | Negative Float, Open Finish Critical 3 0 0  |  |  |  |  |
| 357ae9be-8a60-81cf-a5e4-d493f0e81a43 | 3268 | PTM_CM55_Class assignment to materials | PTM | 1.2.3.2.54 | 1.2.3.2.54 | 2026-06-12 | 2026-06-15 | 2026-04-17 | 0 | 5 | 2959 | 0 | 0 |  |  | -19.91 | 0 | As Soon As Possible | Auto Scheduled | AMETEK SAP XXL Project Plan Replan MSP Task.csv | AMETEK SAP XXL Project Plan Replan MSP Task.csv__2f0764ccac__2026-05-05T02-44-15-662Z | Brad Meseck | 59 | True |  | Not started | True  -19.91 0 0 0 0 0 20 | Negative Float Critical 2 0 0  |  | 3270, 3273, 3269, 3274, 3272, 3271 | True |  |
| 357ae9be-8a60-81cf-ac47-c7000ac6719a | 4381 | Pre Load Validation | PTM | 1.2.5.2.34.2 | 1.2.5.2.34.2 | 2026-09-30 | 2026-10-01 | 2026-04-17 | 0 | 6 | 4379 | 1 | 1 | 357ae9be-8a60-8127-aeaa-d9f2f6a8b729 | 357ae9be-8a60-81dd-9c8f-d92eb6f9f088 | -41356 | 0 | As Soon As Possible | Auto Scheduled | AMETEK SAP XXL Project Plan Replan MSP Task.csv | AMETEK SAP XXL Project Plan Replan MSP Task.csv__2f0764ccac__2026-05-05T02-44-15-662Z | Brad Meseck | 167 | True |  | Not started | True  -41356 0 1 0 0 0 26 | Negative Float Critical 2 0 0  |  |  |  |  |

| id | uid | name | workstream | outlineNumber | wbs | start | finish | baselineFinish | pct | outlineLevel | parentUid | predCount | sucCount | predIds | sucIds | totalSlackDaysRaw | freeSlackDaysRaw | constraintType | taskMode | mspSourceFile | mspImportVersion | assignedTo | slipDays | isSlipped | isDue14 | status | cpm | scheduleQuality | constraintDate | childUids | isSummary | isOverdueStart |
| --- | --- | --- | --- | --- | --- | --- | --- | --- | --- | --- | --- | --- | --- | --- | --- | --- | --- | --- | --- | --- | --- | --- | --- | --- | --- | --- | --- | --- | --- | --- | --- | --- |
| 357ae9be-8a60-81cf-b3b3-c58386b06300 | 3267 | Post Load Validation | PTM | 1.2.3.2.53.3 | 1.2.3.2.53.3 | 2026-06-12 | 2026-06-16 | 2026-04-16 | 0 | 6 | 3264 | 1 | 0 | 357ae9be-8a60-818c-ab70-f3fc6ffffe05 |  | -166.77 | 0 | As Soon As Possible | Auto Scheduled | AMETEK SAP XXL Project Plan Replan MSP Task.csv | AMETEK SAP XXL Project Plan Replan MSP Task.csv__2f0764ccac__2026-05-05T02-44-15-662Z | Brad Meseck | 61 | True |  | Not started | True  -166.77 0 0 0 0 0 20 | Negative Float, Open Finish Critical 3 0 0  |  |  |  |  |
| 357ae9be-8a60-81d0-80f9-f5dd48ec91b9 | 2569 | Post Load Validation | PTP;OTC | 1.2.4.2.23.6 | 1.2.4.2.23.6 | 2026-09-24 | 2026-09-25 | 2026-04-14 | 0 | 6 | 2563 | 1 | 0 | 357ae9be-8a60-818b-98b5-f25c3b0cfedb |  | -650 | 0 | As Soon As Possible | Auto Scheduled | AMETEK SAP XXL Project Plan Replan MSP Task.csv | AMETEK SAP XXL Project Plan Replan MSP Task.csv__2f0764ccac__2026-05-05T02-44-15-662Z | Nevin Varkey | 164 | True |  | Not started | True  -650 0 0 0 0 0 20 | Wrong Dependency, Negative Float, Open Finish Critical 6 1 0  |  |  |  |  |
| 357ae9be-8a60-81d0-8263-fe83f0e9b3bd | 3053 | Error and Defect Mitigation | PTP | 1.2.3.2.15.4 | 1.2.3.2.15.4 | 2026-06-16 | 2026-06-18 | 2026-04-14 | 0 | 6 | 3049 | 1 | 1 | 357ae9be-8a60-8148-8f7b-eae199250a6e | 357ae9be-8a60-81dc-9faf-f9614b9ac4d5 | -196.52 | 0 | As Soon As Possible | Auto Scheduled | AMETEK SAP XXL Project Plan Replan MSP Task.csv | AMETEK SAP XXL Project Plan Replan MSP Task.csv__2f0764ccac__2026-05-05T02-44-15-662Z | Nevin Varkey | 65 | True |  | Not started | True  -196.52 0 1 0 0 0 26 | Negative Float Critical 2 0 0  |  |  |  |  |
| 357ae9be-8a60-81d0-8b99-d51a46959c2c | 1250 | Load | Data | 1.2.1.24.5 | 1.2.1.24.5 | 2026-04-13 | 2026-04-14 | 2026-04-14 | 100 | 5 | 1245 | 1 | 0 | 357ae9be-8a60-810d-8813-eba71e9a6e9c |  | 0 | 0 | As Soon As Possible | Auto Scheduled | AMETEK SAP XXL Project Plan Replan MSP Task.csv | AMETEK SAP XXL Project Plan Replan MSP Task.csv__2f0764ccac__2026-05-05T02-44-15-662Z | Jyoti Nain |  |  |  | Done | True  0 0 0 0 0 0 12 | Low 0 0 0  |  |  |  |  |
| 357ae9be-8a60-81d0-a6cc-eb33168f1f1d | 1731 | Pre Load Validation | Finance | 1.2.2.2.8.2 | 1.2.2.2.8.2 | 2026-05-19 | 2026-05-20 | 2026-04-07 | 0 | 6 | 1729 | 1 | 1 | 357ae9be-8a60-8102-8cfc-effae7c18089 | 357ae9be-8a60-81bb-9f23-e337f1055c39 | -20.52 | 0 | As Soon As Possible | Auto Scheduled | AMETEK SAP XXL Project Plan Replan MSP Task.csv | AMETEK SAP XXL Project Plan Replan MSP Task.csv__2f0764ccac__2026-05-05T02-44-15-662Z | Kasey Hughes | 43 | True | True | Not started | True  -20.52 0 1 0 0 0 26 | Negative Float Critical 2 0 0  |  |  |  |  |
| 357ae9be-8a60-81d0-ba9b-fac3ecf31398 | 4234 | Pre Load Validation | OTC | 1.2.5.2.13.2 | 1.2.5.2.13.2 | 2026-09-29 | 2026-09-29 | 2026-04-08 | 0 | 6 | 4232 | 1 | 3 | 357ae9be-8a60-8174-a6a6-ccad5369af93 | 357ae9be-8a60-8105-bb11-e5515e5ce67b, 357ae9be-8a60-813e-814f-eba85c5f881c, 357ae9be-8a60-8141-b86c-da8c08198aaa | -42991 | 0 | As Soon As Possible | Auto Scheduled | AMETEK SAP XXL Project Plan Replan MSP Task.csv | AMETEK SAP XXL Project Plan Replan MSP Task.csv__2f0764ccac__2026-05-05T02-44-15-662Z | Ric Haraida | 174 | True |  | Not started | True  -42991 0 3 0 0 0 38 | Negative Float Critical 2 0 0  |  |  |  |  |
| 357ae9be-8a60-81d1-83ad-eccb38381cae | 1117 | Post Load Validation | OTC | 1.2.1.51.6 | 1.2.1.51.6 | 2026-04-16 | 2026-04-16 | 2026-04-21 | 100 | 5 | 691 | 1 | 0 | 357ae9be-8a60-818d-a0ad-fd2514efcf2f |  | 0 | 0 | As Soon As Possible | Auto Scheduled | AMETEK SAP XXL Project Plan Replan MSP Task.csv | AMETEK SAP XXL Project Plan Replan MSP Task.csv__2f0764ccac__2026-05-05T02-44-15-662Z | Ric Haraida |  |  |  | Done | True  0 0 0 0 0 0 12 | Low 0 0 0  |  |  |  |  |
| 357ae9be-8a60-81d1-84d1-f2453cd3263d | 2512 | Close Client | Basis | 1.2.4.2.14.9 | 1.2.4.2.14.9 | 2026-09-29 | 2026-09-29 | 2026-04-09 | 0 | 6 | 2503 | 1 | 0 | 357ae9be-8a60-81b4-9a55-e4e99e3114f6 |  | -40305 | 0 | As Soon As Possible | Auto Scheduled | AMETEK SAP XXL Project Plan Replan MSP Task.csv | AMETEK SAP XXL Project Plan Replan MSP Task.csv__2f0764ccac__2026-05-05T02-44-15-662Z | Lokchetan Meghavath | 173 | True |  | Not started | True  -40305 0 0 0 0 0 20 | Negative Float, Open Finish Critical 3 0 0  |  |  |  |  |
| 357ae9be-8a60-81d1-85f5-fea66247f689 | 4404 | Run ALE Transaction to QS5 from DS4 130 | PTM | 1.2.5.2.38.1 | 1.2.5.2.38.1 | 2026-09-24 | 2026-09-24 | 2026-04-06 | 0 | 6 | 4403 | 1 | 1 | 357ae9be-8a60-817b-ad1e-de699978a427 | 357ae9be-8a60-81b4-a15e-f2b53adaaab4 | -661.52 | 0 | As Soon As Possible | Auto Scheduled | AMETEK SAP XXL Project Plan Replan MSP Task.csv | AMETEK SAP XXL Project Plan Replan MSP Task.csv__2f0764ccac__2026-05-05T02-44-15-662Z | Eric Heisler | 171 | True |  | Not started | True  -661.52 0 1 0 0 0 26 | Negative Float Critical 2 0 0  |  |  |  |  |
| 357ae9be-8a60-81d1-8841-f9e0052c8453 | 4247 | Load | Data | 1.2.5.2.14.5 | 1.2.5.2.14.5 | 2026-09-30 | 2026-09-30 | 2026-04-10 | 0 | 6 | 4242 | 1 | 5 | 357ae9be-8a60-8182-bace-dba100022b97 | 357ae9be-8a60-81ea-9357-e15294fbe023, 357ae9be-8a60-81ee-a24c-e5041559f5a6, 357ae9be-8a60-818e-9a66-eb2accc3d0bd, 357ae9be-8a60-8105-92af-c01eef9c0556, 357ae9be-8a60-815b-a5d7-f52b71d928c8 | -718.52 | 0 | As Soon As Possible | Auto Scheduled | AMETEK SAP XXL Project Plan Replan MSP Task.csv | AMETEK SAP XXL Project Plan Replan MSP Task.csv__2f0764ccac__2026-05-05T02-44-15-662Z | Jyoti Nain | 173 | True |  | Not started | True  -718.52 0 5 0 0 0 50 | Negative Float Critical 2 0 0  |  |  |  |  |
| 357ae9be-8a60-81d1-94a2-fbf84a6568f7 | 2624 | Load | Data | 1.2.4.2.31.5 | 1.2.4.2.31.5 | 2026-10-02 | 2026-10-02 | 2026-04-17 | 0 | 6 | 2619 | 1 | 1 | 357ae9be-8a60-81e3-bd35-e40878ae49c2 | 357ae9be-8a60-81c8-af8d-d404ef822b71 | -700.38 | 0 | As Soon As Possible | Auto Scheduled | AMETEK SAP XXL Project Plan Replan MSP Task.csv | AMETEK SAP XXL Project Plan Replan MSP Task.csv__2f0764ccac__2026-05-05T02-44-15-662Z | Jyoti Nain | 168 | True |  | Not started | True  -700.38 0 1 0 0 0 26 | Negative Float Critical 2 0 0  |  |  |  |  |
| 357ae9be-8a60-81d1-9d81-e05d3d5e0d01 | 4287 | Simulate Load/ Not Needed | PTP | 1.2.5.2.20.3 | 1.2.5.2.20.3 | 2026-09-24 | 2026-09-24 | 2026-04-10 | 0 | 6 | 4284 | 1 | 2 | 357ae9be-8a60-816e-94d2-ee506a27ddc4 | 357ae9be-8a60-81c6-a3b1-ec7b87104b3d, 357ae9be-8a60-81c0-89e6-e3edb5b5cedf | -653.52 | 0 | As Soon As Possible | Auto Scheduled | AMETEK SAP XXL Project Plan Replan MSP Task.csv | AMETEK SAP XXL Project Plan Replan MSP Task.csv__2f0764ccac__2026-05-05T02-44-15-662Z | Nevin Varkey | 167 | True |  | Not started | True  -653.52 0 2 0 0 0 32 | Negative Float Critical 2 0 0  |  |  |  |  |
| 357ae9be-8a60-81d1-9dab-c8371a875537 | 275 | Firefighter ID setup | (Unassigned) | 1.1.2.6.1 | 1.1.2.6.1 | 2026-05-01 | 2026-05-07 | 2025-10-24 | 0 | 5 | 274 | 0 | 1 |  | 357ae9be-8a60-815d-b5ea-d2e4cbd098fe | 122 | 0 | Start No Earlier Than | Auto Scheduled | AMETEK SAP XXL Project Plan Replan MSP Task.csv | AMETEK SAP XXL Project Plan Replan MSP Task.csv__2f0764ccac__2026-05-05T02-44-15-662Z | COULD NOT BE DETERMINED | 195 | True | True | Not started | True  122 0 1 0 0 0 26 | Open Start Medium 1 0 0 True | 2026-04-30 |  |  | True |
| 357ae9be-8a60-81d1-bc8b-d93fc73eadec | 3297 | Load Descartes XML File | OTC | 1.2.3.2.62.1 | 1.2.3.2.62.1 | 2026-06-16 | 2026-06-16 | 2026-04-16 | 0 | 6 | 3296 | 2 | 1 | 357ae9be-8a60-8108-90f1-c7a2d99193b6, 357ae9be-8a60-81bf-9ce4-c355c11c34ec | 357ae9be-8a60-8143-9347-e72eae6762b8 | -171.02 | 0 | As Soon As Possible | Auto Scheduled | AMETEK SAP XXL Project Plan Replan MSP Task.csv | AMETEK SAP XXL Project Plan Replan MSP Task.csv__2f0764ccac__2026-05-05T02-44-15-662Z | James VanRiper | 61 | True |  | Not started | True  -171.02 0 1 0 0 0 26 | Wrong Dependency, Negative Float Critical 5 2 0  |  |  |  |  |
| 357ae9be-8a60-81d2-837d-fa4d8a880bdd | 3080 | Post Load Validation | PTP | 1.2.3.2.19.6 | 1.2.3.2.19.6 | 2026-06-08 | 2026-06-08 | 2026-04-15 | 0 | 6 | 3074 | 1 | 1 | 357ae9be-8a60-817b-b2e2-d24c86d733ad | 357ae9be-8a60-8172-af25-c2cf0e81dc2a | -190.27 | 0 | As Soon As Possible | Auto Scheduled | AMETEK SAP XXL Project Plan Replan MSP Task.csv | AMETEK SAP XXL Project Plan Replan MSP Task.csv__2f0764ccac__2026-05-05T02-44-15-662Z | Nevin Varkey | 54 | True |  | Not started | True  -190.27 0 1 1 452 0 31 | Wrong Successor, Negative Float Critical 5 0 1  |  |  |  |  |
| 357ae9be-8a60-81d2-87cd-ec378dbb895c | 2743 | Run material interface to GTS | OTC | 1.2.4.2.56.1 | 1.2.4.2.56.1 | 2026-09-24 | 2026-09-24 | 2026-04-10 | 0 | 6 | 2742 | 0 | 1 |  | 357ae9be-8a60-8149-b121-f40a3f9d4f8b | -643.5 | 0 | Start No Earlier Than | Auto Scheduled | AMETEK SAP XXL Project Plan Replan MSP Task.csv | AMETEK SAP XXL Project Plan Replan MSP Task.csv__2f0764ccac__2026-05-05T02-44-15-662Z | James VanRiper | 167 | True |  | Not started | True  -643.5 0 1 0 0 0 26 | Negative Float, Open Start Critical 3 0 0 True | 2026-04-15 |  |  |  |
| 357ae9be-8a60-81d2-8e99-d2e4ba649c85 | 4352 | Extract File | Data | 1.2.5.2.30.1 | 1.2.5.2.30.1 | 2026-09-29 | 2026-09-29 | 2026-04-16 | 0 | 6 | 4351 | 1 | 2 | 357ae9be-8a60-8101-a3f5-fec79702f828 | 357ae9be-8a60-81aa-a9b6-c0806fe010f5, 357ae9be-8a60-8193-a749-dbd3916f3eb7 | -700.39 | 0 | As Soon As Possible | Auto Scheduled | AMETEK SAP XXL Project Plan Replan MSP Task.csv | AMETEK SAP XXL Project Plan Replan MSP Task.csv__2f0764ccac__2026-05-05T02-44-15-662Z | Jyoti Nain | 166 | True |  | Not started | True  -700.39 0 2 0 0 0 32 | Negative Float Critical 2 0 0  |  |  |  |  |
| 357ae9be-8a60-81d2-9618-efcd201d3cb7 | 4249 | Open client for BP number range update | Basis | 1.2.5.2.14.7 | 1.2.5.2.14.7 | 2026-09-29 | 2026-09-29 | 2026-04-09 | 0 | 6 | 4242 | 1 | 1 | 357ae9be-8a60-8105-bb11-e5515e5ce67b | 357ae9be-8a60-8194-9831-faf86ea08922 | -40306 | 0 | As Soon As Possible | Auto Scheduled | AMETEK SAP XXL Project Plan Replan MSP Task.csv | AMETEK SAP XXL Project Plan Replan MSP Task.csv__2f0764ccac__2026-05-05T02-44-15-662Z | Lokchetan Meghavath | 173 | True |  | Not started | True  -40306 0 1 0 0 0 26 | Negative Float Critical 2 0 0  |  |  |  |  |
| 357ae9be-8a60-81d2-9961-cea0bf8d4c47 | 2478 | Error and Defect Mitigation | Finance | 1.2.4.2.9.4 | 1.2.4.2.9.4 | 2026-09-24 | 2026-09-24 | 2026-04-09 | 0 | 6 | 2474 | 1 | 1 | 357ae9be-8a60-817d-89d2-c8d88343aa7c | 357ae9be-8a60-81f5-83b7-cf3dc192f6d2 | -690.5 | 0 | As Soon As Possible | Auto Scheduled | AMETEK SAP XXL Project Plan Replan MSP Task.csv | AMETEK SAP XXL Project Plan Replan MSP Task.csv__2f0764ccac__2026-05-05T02-44-15-662Z | Kasey Hughes | 168 | True |  | Not started | True  -690.5 0 1 0 0 0 26 | Negative Float Critical 2 0 0  |  |  |  |  |
| 357ae9be-8a60-81d2-9c7d-de1e662b63dd | 828 | Post Load Validation | OTC | 1.2.1.14.9 | 1.2.1.14.9 | 2026-04-09 | 2026-04-10 | 2026-04-10 | 100 | 5 | 763 | 1 | 0 | 357ae9be-8a60-815d-bbf0-d2d991b54a63 |  | 0 | 0 | As Soon As Possible | Auto Scheduled | AMETEK SAP XXL Project Plan Replan MSP Task.csv | AMETEK SAP XXL Project Plan Replan MSP Task.csv__2f0764ccac__2026-05-05T02-44-15-662Z | Ric Haraida |  |  |  | Done | True  0 0 0 0 0 0 12 | Low 0 0 0  |  |  |  |  |
| 357ae9be-8a60-81d2-9f75-e6e9d438190d | 2769 | Initialize Embargo situation | (Unassigned) | 1.2.4.2.65 | 1.2.4.2.65 | 2026-09-25 | 2026-09-25 | 2026-04-14 | 0 | 5 | 2898 | 0 | 0 |  |  | -81.69 | 0 | As Soon As Possible | Auto Scheduled | AMETEK SAP XXL Project Plan Replan MSP Task.csv | AMETEK SAP XXL Project Plan Replan MSP Task.csv__2f0764ccac__2026-05-05T02-44-15-662Z | COULD NOT BE DETERMINED | 164 | True |  | Not started | True  -81.69 0 0 0 0 0 20 | Negative Float Critical 2 0 0  |  | 2771, 2770, 2772 | True |  |
| 357ae9be-8a60-81d2-9fe7-dca8628c077f | 4197 | Close Client | Basis | 1.2.5.2.6.3 | 1.2.5.2.6.3 | 2026-09-24 | 2026-09-24 | 2026-04-06 | 0 | 6 | 4194 | 0 | 0 |  |  | -38521 | 0 | As Soon As Possible | Auto Scheduled | AMETEK SAP XXL Project Plan Replan MSP Task.csv | AMETEK SAP XXL Project Plan Replan MSP Task.csv__2f0764ccac__2026-05-05T02-44-15-662Z | Lokchetan Meghavath | 171 | True |  | Not started | True  -38521 0 0 0 0 0 20 | Negative Float, Open Start, Open Finish Critical 4 0 0  |  |  |  |  |
| 357ae9be-8a60-81d2-b413-e8ebd9ac365c | 4530 | PROD Master Data Loads Complete | Data | 1.2.5.3 | 1.2.5.3 | 2026-10-01 | 2026-10-01 | 2026-10-01 | 0 | 4 | 4160 | 1 | 5 | 357ae9be-8a60-812c-9b9d-c71a25cc272f | 357ae9be-8a60-81e3-b4fa-f1222ef8b771, 357ae9be-8a60-81c9-8f77-ef73e3057ac4, 357ae9be-8a60-816c-a955-f517ebe8c18c, 357ae9be-8a60-81cd-9641-fb00a0a50d18, 357ae9be-8a60-811a-9740-f5ff0e5d34b5 | -40891 | 0 | As Soon As Possible | Auto Scheduled | AMETEK SAP XXL Project Plan Replan MSP Task.csv | AMETEK SAP XXL Project Plan Replan MSP Task.csv__2f0764ccac__2026-05-05T02-44-15-662Z | Jyoti Nain |  |  |  | Not started | True  -40891 0 2 0 0 0 30 | Wrong Successor, Negative Float Critical 5 0 1  |  |  |  |  |
| 357ae9be-8a60-81d2-bf7c-d196748509c1 | 4498 | Post Load Validation | OTC | 1.2.5.2.61.2 | 1.2.5.2.61.2 | 2026-10-02 | 2026-10-02 | 2026-04-16 | 0 | 6 | 4496 | 1 | 2 | 357ae9be-8a60-81a1-9812-fee776d84020 | 357ae9be-8a60-8122-b4ac-ffebdc4d2642, 357ae9be-8a60-8159-8f54-cc236a86404e | -712.27 | 0 | As Soon As Possible | Auto Scheduled | AMETEK SAP XXL Project Plan Replan MSP Task.csv | AMETEK SAP XXL Project Plan Replan MSP Task.csv__2f0764ccac__2026-05-05T02-44-15-662Z | James VanRiper | 169 | True |  | Not started | True  -712.27 0 2 0 0 0 32 | Wrong Dependency, Negative Float Critical 5 1 0  |  |  |  |  |
| 357ae9be-8a60-81d3-82cc-c54c9261e09b | 3355 | Open Purchase Orders(Manual) | (Unassigned) | 1.2.4.4.5 | 1.2.4.4.5 | 2026-10-09 | 2026-10-12 | 2026-10-12 | 0 | 5 | 3350 | 1 | 0 | 357ae9be-8a60-8192-a781-cd2922407469 |  | -40.16 | 0 | As Soon As Possible | Auto Scheduled | AMETEK SAP XXL Project Plan Replan MSP Task.csv | AMETEK SAP XXL Project Plan Replan MSP Task.csv__2f0764ccac__2026-05-05T02-44-15-662Z | COULD NOT BE DETERMINED |  |  |  | Not started | True  -40.16 0 0 0 0 0 12 | Negative Float, Open Finish Critical 3 0 0  |  |  |  |  |
| 357ae9be-8a60-81d3-86e6-eadfb7969d7a | 1776 | Extract File | Data | 1.2.2.2.15.1 | 1.2.2.2.15.1 | 2026-05-25 | 2026-05-25 | 2026-04-10 | 0 | 6 | 1775 | 1 | 1 | 357ae9be-8a60-8122-b5a7-f52bb4b3e2ef | 357ae9be-8a60-8171-8d09-c5b743683a84 | -76.52 | 0 | As Soon As Possible | Auto Scheduled | AMETEK SAP XXL Project Plan Replan MSP Task.csv | AMETEK SAP XXL Project Plan Replan MSP Task.csv__2f0764ccac__2026-05-05T02-44-15-662Z | Jyoti Nain | 45 | True |  | Not started | True  -76.52 0 1 0 0 0 26 | Wrong Dependency, Negative Float Critical 5 1 0  |  |  |  |  |
| 357ae9be-8a60-81d3-8b8a-d779d8bdfcb8 | 3035 | Simulate Load | Data | 1.2.3.2.13.6 | 1.2.3.2.13.6 | 2026-06-11 | 2026-06-11 | 2026-04-09 | 0 | 6 | 3029 | 1 | 1 | 357ae9be-8a60-8101-ab0f-e94ffe0140fd | 357ae9be-8a60-8199-9d45-f8c46d2bf52e | -194.52 | 0 | As Soon As Possible | Auto Scheduled | AMETEK SAP XXL Project Plan Replan MSP Task.csv | AMETEK SAP XXL Project Plan Replan MSP Task.csv__2f0764ccac__2026-05-05T02-44-15-662Z | Jyoti Nain | 63 | True |  | Not started | True  -194.52 0 1 1 455 0 31 | Wrong Dependency, Wrong Successor, Negative Float Critical 8 1 1  |  |  |  |  |
| 357ae9be-8a60-81d3-8e1e-d462af184de2 | 3055 | Post Load Validation | PTP | 1.2.3.2.15.6 | 1.2.3.2.15.6 | 2026-06-19 | 2026-06-19 | 2026-04-14 | 0 | 6 | 3049 | 1 | 0 | 357ae9be-8a60-81dc-9faf-f9614b9ac4d5 |  | -196.52 | 0 | As Soon As Possible | Auto Scheduled | AMETEK SAP XXL Project Plan Replan MSP Task.csv | AMETEK SAP XXL Project Plan Replan MSP Task.csv__2f0764ccac__2026-05-05T02-44-15-662Z | Nevin Varkey | 66 | True |  | Not started | True  -196.52 0 0 0 0 0 20 | Negative Float, Open Finish Critical 3 0 0  |  |  |  |  |
| 357ae9be-8a60-81d3-976f-ce91d10ada29 | 3045 | Post Load Validation | OTC | 1.2.3.2.14.6 | 1.2.3.2.14.6 | 2026-06-15 | 2026-06-15 | 2026-04-10 | 0 | 6 | 3039 | 1 | 0 | 357ae9be-8a60-8185-a2d9-d16ed2b25102 |  | -161.02 | 0 | As Soon As Possible | Auto Scheduled | AMETEK SAP XXL Project Plan Replan MSP Task.csv | AMETEK SAP XXL Project Plan Replan MSP Task.csv__2f0764ccac__2026-05-05T02-44-15-662Z | Ric Haraida | 66 | True |  | Not started | True  -161.02 0 0 0 0 0 20 | Wrong Dependency, Negative Float, Open Finish Critical 6 1 0  |  |  |  |  |
| 357ae9be-8a60-81d3-9b0d-f6bfadfdb00a | 225 | Develop Curriculum | Training | 1.4.1.1.2 | 1.4.1.1.2 | 2026-05-01 | 2026-07-31 | 2026-06-05 | 30 | 5 | 216 | 1 | 2 | 357ae9be-8a60-81e2-809c-df100912a844 | 357ae9be-8a60-811f-8c92-cfb2c88118f5, 357ae9be-8a60-8105-bf78-d7b328b4d427 | 0 | 0 | Finish No Earlier Than | Auto Scheduled | AMETEK SAP XXL Project Plan Replan MSP Task.csv | AMETEK SAP XXL Project Plan Replan MSP Task.csv__2f0764ccac__2026-05-05T02-44-15-662Z | Karen Zalnis | 56 | True |  | In progress | True  0 0 1 1 91 1 33 | Low 0 0 0 True | 2026-07-31 |  |  |  |
| 357ae9be-8a60-81d3-a6cc-e06a92e80334 | 3225 | Load File Staged and Posted "Ready" | PTM | 1.2.3.2.46.1 | 1.2.3.2.46.1 | 2026-06-11 | 2026-06-11 | 2026-04-15 | 0 | 6 | 3224 | 1 | 1 | 357ae9be-8a60-81a4-8088-c93ce562ab5e | 357ae9be-8a60-819b-9d83-c65fbbb17cf2 | -11236 | 0 | As Soon As Possible | Auto Scheduled | AMETEK SAP XXL Project Plan Replan MSP Task.csv | AMETEK SAP XXL Project Plan Replan MSP Task.csv__2f0764ccac__2026-05-05T02-44-15-662Z | Eric Heisler | 57 | True |  | Not started | True  -11236 0 1 0 0 0 26 | Wrong Dependency, Negative Float Critical 5 1 0  |  |  |  |  |
| 357ae9be-8a60-81d4-80ef-c274560be6ed | 1053 | Error and Defect Mitigation | PTP | 1.2.1.30.4 | 1.2.1.30.4 | 2026-04-16 | 2026-04-16 | 2026-04-16 | 100 | 5 | 937 | 1 | 1 | 357ae9be-8a60-8192-8bdf-dfd213d023eb | 357ae9be-8a60-813e-9086-da5ee1cca0d0 | 0 | 0 | As Soon As Possible | Auto Scheduled | AMETEK SAP XXL Project Plan Replan MSP Task.csv | AMETEK SAP XXL Project Plan Replan MSP Task.csv__2f0764ccac__2026-05-05T02-44-15-662Z | Nevin Varkey |  |  |  | Done | True  0 0 1 0 0 0 18 | Wrong Dependency High 3 1 0  |  |  |  |  |
| 357ae9be-8a60-81d4-852d-e62dc8f326ec | 2749 | Load Descartes XML File | OTC | 1.2.4.2.58.1 | 1.2.4.2.58.1 | 2026-09-24 | 2026-09-24 | 2026-04-06 | 0 | 6 | 2748 | 1 | 0 | 357ae9be-8a60-8107-ad19-eb3f9a8b23bc |  | -642.5 | 0 | As Soon As Possible | Auto Scheduled | AMETEK SAP XXL Project Plan Replan MSP Task.csv | AMETEK SAP XXL Project Plan Replan MSP Task.csv__2f0764ccac__2026-05-05T02-44-15-662Z | James VanRiper | 171 | True |  | Not started | True  -642.5 0 0 0 0 0 20 | Wrong Dependency, Negative Float, Open Finish Critical 6 1 0  |  |  |  |  |
| 357ae9be-8a60-81d4-8f95-eb0bf0dc09fb | 2588 | Error and Defect Mitigation | PTM | 1.2.4.2.26.4 | 1.2.4.2.26.4 | 2026-09-28 | 2026-09-28 | 2026-04-15 | 0 | 6 | 2584 | 1 | 1 | 357ae9be-8a60-819a-94f5-ff7adfa9d502 | 357ae9be-8a60-8177-9595-eb74156de19a | -726 | 0 | As Soon As Possible | Auto Scheduled | AMETEK SAP XXL Project Plan Replan MSP Task.csv | AMETEK SAP XXL Project Plan Replan MSP Task.csv__2f0764ccac__2026-05-05T02-44-15-662Z | Eric Heisler | 166 | True |  | Not started | True  -726 0 1 0 0 0 26 | Negative Float Critical 2 0 0  |  |  |  |  |
| 357ae9be-8a60-81d4-bba3-c7b09227d12b | 1868 | Load File Staged and Posted "Ready" | PTP | 1.2.2.2.29.1 | 1.2.2.2.29.1 | 2026-05-21 | 2026-05-21 | 2026-04-15 | 0 | 6 | 1867 | 1 | 1 | 357ae9be-8a60-811c-a632-c761fdfa4cc5 | 357ae9be-8a60-8175-93b5-f63dc74484b8 | -4216 | 0 | As Soon As Possible | Auto Scheduled | AMETEK SAP XXL Project Plan Replan MSP Task.csv | AMETEK SAP XXL Project Plan Replan MSP Task.csv__2f0764ccac__2026-05-05T02-44-15-662Z | Nevin Varkey | 36 | True |  | Not started | True  -4216 0 1 0 0 1 26 | Wrong Dependency, Negative Float Critical 5 1 0  |  |  |  |  |
| 357ae9be-8a60-81d5-822d-c4bb4d8aa129 | 3174 | Load | Data | 1.2.3.2.33.5 | 1.2.3.2.33.5 | 2026-06-12 | 2026-06-12 | 2026-04-17 | 0 | 6 | 3169 | 1 | 1 | 357ae9be-8a60-8155-80d2-c71316a4c7a1 | 357ae9be-8a60-81b7-8b65-fdde0ee8d8ef | -173.77 | 0 | As Soon As Possible | Auto Scheduled | AMETEK SAP XXL Project Plan Replan MSP Task.csv | AMETEK SAP XXL Project Plan Replan MSP Task.csv__2f0764ccac__2026-05-05T02-44-15-662Z | Jyoti Nain | 56 | True |  | Not started | True  -173.77 0 1 0 0 0 26 | Negative Float Critical 2 0 0  |  |  |  |  |
| 357ae9be-8a60-81d5-8281-ced5d3b6803b | 4419 | Run ALE Transaction to QS5 from DS4 130 | PTM | 1.2.5.2.43.1 | 1.2.5.2.43.1 | 2026-09-29 | 2026-09-30 | 2026-04-16 | 0 | 6 | 4418 | 1 | 1 | 357ae9be-8a60-8192-b131-f2118b353511 | 357ae9be-8a60-813e-b837-e29c9b646923 | -682.27 | 0 | As Soon As Possible | Auto Scheduled | AMETEK SAP XXL Project Plan Replan MSP Task.csv | AMETEK SAP XXL Project Plan Replan MSP Task.csv__2f0764ccac__2026-05-05T02-44-15-662Z | Eric Heisler | 167 | True |  | Not started | True  -682.27 0 1 0 0 0 26 | Negative Float Critical 2 0 0  |  |  |  |  |
| 357ae9be-8a60-81d5-8a18-dda8b4f99df6 | 2789 | Post Load Validation | Finance | 1.2.4.2.68.6 | 1.2.4.2.68.6 | 2026-09-24 | 2026-09-25 | 2026-04-17 | 0 | 6 | 2783 | 1 | 0 | 357ae9be-8a60-8110-905b-c2eddbac3e85 |  | -651.5 | 0 | As Soon As Possible | Auto Scheduled | AMETEK SAP XXL Project Plan Replan MSP Task.csv | AMETEK SAP XXL Project Plan Replan MSP Task.csv__2f0764ccac__2026-05-05T02-44-15-662Z | Kasey Hughes | 161 | True |  | Not started | True  -651.5 0 0 0 0 0 20 | Negative Float, Open Finish Critical 3 0 0  |  |  |  |  |
| 357ae9be-8a60-81d5-8abf-da999b2142bb | 4345 | Load File Staged and Posted "Ready" | PTP | 1.2.5.2.29.1 | 1.2.5.2.29.1 | 2026-09-29 | 2026-09-29 | 2026-04-15 | 0 | 6 | 4344 | 2 | 1 | 357ae9be-8a60-815a-88f7-ce4ab477ce7a, 357ae9be-8a60-8183-a0d2-d2ac8860e8c6 | 357ae9be-8a60-81e1-957d-fec0a2d2316c | -42736 | 0 | As Soon As Possible | Auto Scheduled | AMETEK SAP XXL Project Plan Replan MSP Task.csv | AMETEK SAP XXL Project Plan Replan MSP Task.csv__2f0764ccac__2026-05-05T02-44-15-662Z | Nevin Varkey | 167 | True |  | Not started | True  -42736 0 1 0 0 0 26 | Negative Float Critical 2 0 0  |  |  |  |  |
| 357ae9be-8a60-81d5-8b1e-d0e19f07578b | 845 | Order to Cash | (Unassigned) | 1.3.1.2 | 1.3.1.2 | 2026-05-04 | 2026-05-29 | 2026-05-22 | 4 | 4 | 843 | 0 | 0 |  |  | 116 | 116 | As Soon As Possible | Auto Scheduled | AMETEK SAP XXL Project Plan Replan MSP Task.csv | AMETEK SAP XXL Project Plan Replan MSP Task.csv__2f0764ccac__2026-05-05T02-44-15-662Z | COULD NOT BE DETERMINED | 7 | True |  | Not started |   116 116 0 0 0 0 8 | Open Start, Open Finish Medium 2 0 0  |  |  |  |  |
| 357ae9be-8a60-81d5-92e3-d8d46c12c321 | 3194 | Error and Defect Mitigation | PTM | 1.2.3.2.36.4 | 1.2.3.2.36.4 | 2026-06-16 | 2026-06-16 | 2026-04-21 | 0 | 6 | 3190 | 1 | 1 | 357ae9be-8a60-81fb-85ba-d3e269a571b6 | 357ae9be-8a60-81c4-bb3c-fbad7881e0b5 | -173.77 | 0 | As Soon As Possible | Auto Scheduled | AMETEK SAP XXL Project Plan Replan MSP Task.csv | AMETEK SAP XXL Project Plan Replan MSP Task.csv__2f0764ccac__2026-05-05T02-44-15-662Z | Brad Meseck | 56 | True |  | Not started | True  -173.77 0 1 0 0 0 26 | Negative Float Critical 2 0 0  |  |  |  |  |
| 357ae9be-8a60-81d5-95df-de9e9e253eea | 4410 | Run ALE Transaction to QS5 from DS4 130 | PTM | 1.2.5.2.40.1 | 1.2.5.2.40.1 | 2026-09-29 | 2026-09-29 | 2026-04-16 | 0 | 6 | 4409 | 1 | 1 | 357ae9be-8a60-8183-a0d2-d2ac8860e8c6 | 357ae9be-8a60-81e5-98db-f48586695e48 | -672.27 | 0 | As Soon As Possible | Auto Scheduled | AMETEK SAP XXL Project Plan Replan MSP Task.csv | AMETEK SAP XXL Project Plan Replan MSP Task.csv__2f0764ccac__2026-05-05T02-44-15-662Z | Eric Heisler | 166 | True |  | Not started | True  -672.27 0 1 0 0 0 26 | Negative Float Critical 2 0 0  |  |  |  |  |
| 357ae9be-8a60-81d5-9a2c-e05c6204ee7d | 2756 | Post Load Validation | OTC | 1.2.4.2.60.2 | 1.2.4.2.60.2 | 2026-09-24 | 2026-09-24 | 2026-04-06 | 0 | 6 | 2754 | 1 | 0 | 357ae9be-8a60-81fb-9d83-c3b3663415f0 |  | -643.5 | 0 | As Soon As Possible | Auto Scheduled | AMETEK SAP XXL Project Plan Replan MSP Task.csv | AMETEK SAP XXL Project Plan Replan MSP Task.csv__2f0764ccac__2026-05-05T02-44-15-662Z | James VanRiper | 171 | True |  | Not started | True  -643.5 0 0 0 0 0 20 | Negative Float, Open Finish Critical 3 0 0  |  |  |  |  |
| 357ae9be-8a60-81d5-afbc-fdf55e2c52f6 | 2992 | Open Client | Basis | 1.2.3.2.6.1 | 1.2.3.2.6.1 | 2026-06-11 | 2026-06-11 | 2026-04-06 | 0 | 6 | 2991 | 0 | 0 |  |  | -8641 | 0 | As Soon As Possible | Auto Scheduled | AMETEK SAP XXL Project Plan Replan MSP Task.csv | AMETEK SAP XXL Project Plan Replan MSP Task.csv__2f0764ccac__2026-05-05T02-44-15-662Z | Lokchetan Meghavath | 66 | True |  | Not started | True  -8641 0 0 0 0 0 20 | Negative Float, Open Start, Open Finish Critical 4 0 0  |  |  |  |  |
| 357ae9be-8a60-81d5-b4a5-f5402d74a94e | 1960 | Simulate Load | Data | 1.2.2.2.47.3 | 1.2.2.2.47.3 | 2026-05-25 | 2026-05-26 | 2026-04-17 | 0 | 6 | 1957 | 1 | 1 | 357ae9be-8a60-81f3-bedb-c2d9f81325ba | 357ae9be-8a60-8138-9dfa-c8b84bf09dd8 | -67.27 | 0 | As Soon As Possible | Auto Scheduled | AMETEK SAP XXL Project Plan Replan MSP Task.csv | AMETEK SAP XXL Project Plan Replan MSP Task.csv__2f0764ccac__2026-05-05T02-44-15-662Z | Jyoti Nain | 39 | True |  | Not started | True  -67.27 0 1 0 0 0 26 | Negative Float Critical 2 0 0  |  |  |  |  |
| 357ae9be-8a60-81d5-bd7d-ce0145c1c069 | 1028 | Simulate Load | Data | 1.2.1.26.3 | 1.2.1.26.3 | 2026-04-14 | 2026-04-14 | 2026-04-14 | 100 | 5 | 748 | 1 | 1 | 357ae9be-8a60-8190-a681-c395c03893ca | 357ae9be-8a60-81c2-a74f-c364563ab045 | 0 | 0 | As Soon As Possible | Auto Scheduled | AMETEK SAP XXL Project Plan Replan MSP Task.csv | AMETEK SAP XXL Project Plan Replan MSP Task.csv__2f0764ccac__2026-05-05T02-44-15-662Z | Jyoti Nain |  |  |  | Done | True  0 0 1 0 0 0 18 | Low 0 0 0  |  |  |  |  |
| 357ae9be-8a60-81d5-bfab-ef2dcb2b56ec | 4473 | Pre Load Validation | PTM | 1.2.5.2.54.2 | 1.2.5.2.54.2 | 2026-09-29 | 2026-09-30 | 2026-04-16 | 0 | 6 | 4471 | 1 | 1 | 357ae9be-8a60-811b-a54f-e90dc6d3ecbd | 357ae9be-8a60-8108-8304-fe9dc6d28665 | -40876 | 0 | As Soon As Possible | Auto Scheduled | AMETEK SAP XXL Project Plan Replan MSP Task.csv | AMETEK SAP XXL Project Plan Replan MSP Task.csv__2f0764ccac__2026-05-05T02-44-15-662Z | Brad Meseck | 167 | True |  | Not started | True  -40876 0 1 0 0 0 26 | Negative Float Critical 2 0 0  |  |  |  |  |
| 357ae9be-8a60-81d6-83f6-fe69a2b3d4d2 | 646 | Functional Leads Validation of Transport List | Development;PTM;Finance;PMO;Europe IT lead;OTC;TESTING | 1.1.1.4.16 | 1.1.1.4.16 | 2026-02-09 | 2026-02-09 | 2026-02-09 | 100 | 5 | 88 | 1 | 2 | 357ae9be-8a60-8199-a80d-cc97cf320c83 | 357ae9be-8a60-814d-af84-c39761f10563, 357ae9be-8a60-8180-8f7c-eefc47c94dd2 | 0 | 0 | As Soon As Possible | Auto Scheduled | AMETEK SAP XXL Project Plan Replan MSP Task.csv | AMETEK SAP XXL Project Plan Replan MSP Task.csv__2f0764ccac__2026-05-05T02-44-15-662Z | Bijoykrishna Das |  |  |  | Done | True  0 0 2 0 0 0 24 | Low 0 0 0  |  |  |  |  |
| 357ae9be-8a60-81d6-8a40-c3dc1959c0bf | 4430 | Simulate Load | Data | 1.2.5.2.46.3 | 1.2.5.2.46.3 | 2026-09-29 | 2026-10-02 | 2026-04-16 | 0 | 6 | 4427 | 1 | 1 | 357ae9be-8a60-8128-b2da-fad5244972a7 | 357ae9be-8a60-8149-be24-f0e0dfad3c19 | -726.02 | 0 | Finish No Earlier Than | Auto Scheduled | AMETEK SAP XXL Project Plan Replan MSP Task.csv | AMETEK SAP XXL Project Plan Replan MSP Task.csv__2f0764ccac__2026-05-05T02-44-15-662Z | Jyoti Nain | 169 | True |  | Not started | True  -726.02 0 1 0 0 0 26 | Negative Float Critical 2 0 0 True | 2026-04-20 |  |  |  |
| 357ae9be-8a60-81d6-9040-ef7283587acf | 263 | Transport setup | (Unassigned) | 1.1.2.2.7 | 1.1.2.2.7 | 2026-03-23 | 2026-03-23 | 2026-03-23 | 100 | 5 | 253 | 1 | 1 | 357ae9be-8a60-8114-a6a7-d2483ab41737 | 357ae9be-8a60-8136-ab32-dcd8e1b4889f | 0 | 0 | As Soon As Possible | Auto Scheduled | AMETEK SAP XXL Project Plan Replan MSP Task.csv | AMETEK SAP XXL Project Plan Replan MSP Task.csv__2f0764ccac__2026-05-05T02-44-15-662Z | COULD NOT BE DETERMINED |  |  |  | Done | True  0 0 1 0 0 0 18 | Low 0 0 0  |  |  |  |  |
| 357ae9be-8a60-81d6-9a69-ec182dfdb301 | 2633 | PTM_CM36_Production Version Conversion | PTM | 1.2.4.2.33 | 1.2.4.2.33 | 2026-09-29 | 2026-09-30 | 2026-04-17 | 0 | 5 | 2898 | 0 | 0 |  |  | -86.97 | 0 | As Soon As Possible | Auto Scheduled | AMETEK SAP XXL Project Plan Replan MSP Task.csv | AMETEK SAP XXL Project Plan Replan MSP Task.csv__2f0764ccac__2026-05-05T02-44-15-662Z | Brad Meseck | 166 | True |  | Not started | True  -86.97 0 0 0 0 0 20 | Negative Float Critical 2 0 0  |  | 2634, 2637, 2639, 2636, 2635, 2638 | True |  |
| 357ae9be-8a60-81d6-a625-ceba75e6af7f | 1093 | Post Load Validation | PTM | 1.2.1.35.6 | 1.2.1.35.6 | 2026-04-21 | 2026-04-22 | 2026-04-20 | 100 | 5 | 710 | 1 | 0 | 357ae9be-8a60-8146-a101-ee6eeebfe426 |  | 0 | 0 | As Soon As Possible | Auto Scheduled | AMETEK SAP XXL Project Plan Replan MSP Task.csv | AMETEK SAP XXL Project Plan Replan MSP Task.csv__2f0764ccac__2026-05-05T02-44-15-662Z | Brad Meseck |  |  |  | Done | True  0 0 0 0 0 0 12 | Low 0 0 0  |  |  |  |  |
| 357ae9be-8a60-81d6-a791-e5766a44b129 | 2516 | Simulate Load | Data | 1.2.4.2.15.3 | 1.2.4.2.15.3 | 2026-10-01 | 2026-10-02 | 2026-04-13 | 0 | 6 | 2513 | 2 | 1 | 357ae9be-8a60-8145-9194-de4910f8b1a0, 357ae9be-8a60-81b1-9755-fd8140e56513 | 357ae9be-8a60-8176-b0e0-dde154b09e8d | -718.5 | 0 | Finish No Earlier Than | Auto Scheduled | AMETEK SAP XXL Project Plan Replan MSP Task.csv | AMETEK SAP XXL Project Plan Replan MSP Task.csv__2f0764ccac__2026-05-05T02-44-15-662Z | Jyoti Nain | 172 | True |  | Not started | True  -718.5 0 1 0 0 0 26 | Wrong Dependency, Negative Float Critical 5 2 0 True | 2026-04-13 |  |  |  |
| 357ae9be-8a60-81d6-b0c9-c03cefd7efae | 2627 | Extract File | Data | 1.2.4.2.32.1 | 1.2.4.2.32.1 | 2026-09-29 | 2026-09-29 | 2026-04-16 | 0 | 6 | 2626 | 1 | 1 | 357ae9be-8a60-819f-a012-cd60a64e727a | 357ae9be-8a60-8102-b889-c4be1d9cd8cc | -695.75 | 0 | As Soon As Possible | Auto Scheduled | AMETEK SAP XXL Project Plan Replan MSP Task.csv | AMETEK SAP XXL Project Plan Replan MSP Task.csv__2f0764ccac__2026-05-05T02-44-15-662Z | Jyoti Nain | 166 | True |  | Not started | True  -695.75 0 1 0 0 0 26 | Negative Float Critical 2 0 0  |  |  |  |  |
| 357ae9be-8a60-81d6-b169-caa7eea2e49c | 2522 | Load | OTC | 1.2.4.2.16.2 | 1.2.4.2.16.2 | 2026-09-30 | 2026-10-01 | 2026-04-10 | 0 | 6 | 2520 | 1 | 1 | 357ae9be-8a60-8189-ad2a-c4e471665abe | 357ae9be-8a60-81f6-b251-d736ecd10e24 | -685.5 | 0 | Start No Earlier Than | Auto Scheduled | AMETEK SAP XXL Project Plan Replan MSP Task.csv | AMETEK SAP XXL Project Plan Replan MSP Task.csv__2f0764ccac__2026-05-05T02-44-15-662Z | Ric Haraida | 174 | True |  | Not started | True  -685.5 0 1 0 0 0 26 | Negative Float Critical 2 0 0 True | 2026-04-15 |  |  |  |
| 357ae9be-8a60-81d6-b663-ff1c737ad7c6 | 1143 | Load | Data | 1.2.1.68.5 | 1.2.1.68.5 | 2026-04-20 | 2026-04-20 | 2026-04-17 | 100 | 5 | 950 | 1 | 1 | 357ae9be-8a60-81b5-9f73-e6eb004abfa1 | 357ae9be-8a60-8135-88cb-e3814e5dabc6 | 0 | 0 | As Soon As Possible | Auto Scheduled | AMETEK SAP XXL Project Plan Replan MSP Task.csv | AMETEK SAP XXL Project Plan Replan MSP Task.csv__2f0764ccac__2026-05-05T02-44-15-662Z | Jyoti Nain |  |  |  | Done | True  0 0 1 0 0 0 18 | Low 0 0 0  |  |  |  |  |
| 357ae9be-8a60-81d6-bbae-c1668dad1223 | 1721 | Intercompany Business Partner Setup | Development;PTM;Finance;PMO;Europe IT lead;OTC;TESTING | 1.2.2.2.6.4 | 1.2.2.2.6.4 | 2026-05-22 | 2026-05-22 | 2026-04-09 | 0 | 6 | 1717 | 2 | 0 | 357ae9be-8a60-81c3-9699-f4d5e8610f9a, 357ae9be-8a60-81cb-86d2-ddab8394af74 |  | -33.02 | 0 | As Soon As Possible | Auto Scheduled | AMETEK SAP XXL Project Plan Replan MSP Task.csv | AMETEK SAP XXL Project Plan Replan MSP Task.csv__2f0764ccac__2026-05-05T02-44-15-662Z | Bijoykrishna Das | 43 | True |  | Not started | True  -33.02 0 0 0 0 1 20 | Wrong Dependency, Negative Float, Open Finish Critical 6 2 0  |  |  |  |  |
| 357ae9be-8a60-81d7-83dd-f92ae69245a3 | 2768 | Post Load Validation | OTC | 1.2.4.2.64.2 | 1.2.4.2.64.2 | 2026-10-02 | 2026-10-02 | 2025-03-13 | 0 | 6 | 2766 | 1 | 0 | 357ae9be-8a60-81e3-bc89-e0aa99f84581 |  | -691 | 0 | As Soon As Possible | Auto Scheduled | AMETEK SAP XXL Project Plan Replan MSP Task.csv | AMETEK SAP XXL Project Plan Replan MSP Task.csv__2f0764ccac__2026-05-05T02-44-15-662Z | James VanRiper | 568 | True |  | Not started | True  -691 0 0 0 0 0 20 | Negative Float, Open Finish Critical 3 0 0  |  |  |  |  |
| 357ae9be-8a60-81d7-8686-ec107d5296e5 | 1706 | Simulate Load | Data | 1.2.2.2.4.3 | 1.2.2.2.4.3 | 2026-05-19 | 2026-05-19 | 2026-04-07 | 0 | 6 | 1703 | 1 | 1 | 357ae9be-8a60-81eb-a17b-db32c78fea8a | 357ae9be-8a60-817a-9c9c-ebab91fc7869 | -63.52 | 0 | As Soon As Possible | Auto Scheduled | AMETEK SAP XXL Project Plan Replan MSP Task.csv | AMETEK SAP XXL Project Plan Replan MSP Task.csv__2f0764ccac__2026-05-05T02-44-15-662Z | Jyoti Nain | 42 | True | True | Not started | True  -63.52 0 1 0 0 0 26 | Negative Float Critical 2 0 0  |  |  |  |  |
| 357ae9be-8a60-81d7-8f0a-d399c69957d4 | 3108 | Pre Load Validation | PTP;OTC | 1.2.3.2.24.2 | 1.2.3.2.24.2 | 2026-06-08 | 2026-06-09 | 2026-04-14 | 0 | 6 | 3106 | 1 | 1 | 357ae9be-8a60-81d2-837d-fa4d8a880bdd | 357ae9be-8a60-813e-8540-e60015b2c301 | -190.27 | 0 | As Soon As Possible | Auto Scheduled | AMETEK SAP XXL Project Plan Replan MSP Task.csv | AMETEK SAP XXL Project Plan Replan MSP Task.csv__2f0764ccac__2026-05-05T02-44-15-662Z | Nevin Varkey | 56 | True |  | Not started | True  -190.27 0 1 0 0 0 26 | Wrong Dependency, Negative Float Critical 5 1 0  |  |  |  |  |
| 357ae9be-8a60-81d7-96d6-f6f608a1e8f5 | 1819 | Load File Staged and Posted "Ready" | PTP;OTC | 1.2.2.2.22.1 | 1.2.2.2.22.1 | 2026-05-18 | 2026-05-18 | 2026-04-13 | 0 | 6 | 1818 | 1 | 1 | 357ae9be-8a60-81a6-975b-ed9ff06b79f5 | 357ae9be-8a60-81fd-aa99-de5b79400379 | -691 | 0 | As Soon As Possible | Auto Scheduled | AMETEK SAP XXL Project Plan Replan MSP Task.csv | AMETEK SAP XXL Project Plan Replan MSP Task.csv__2f0764ccac__2026-05-05T02-44-15-662Z | Nevin Varkey | 35 | True | True | Not started | True  -691 0 1 0 0 0 26 | Wrong Dependency, Negative Float Critical 5 1 0  |  |  |  |  |
| 357ae9be-8a60-81d7-9f33-dcef7e0b94c9 | 3305 | Initialize Embargo situation | (Unassigned) | 1.2.3.2.65 | 1.2.3.2.65 | 2026-06-09 | 2026-06-09 | 2026-04-14 | 0 | 5 | 2959 | 0 | 0 |  |  | -16.44 | 0 | As Soon As Possible | Auto Scheduled | AMETEK SAP XXL Project Plan Replan MSP Task.csv | AMETEK SAP XXL Project Plan Replan MSP Task.csv__2f0764ccac__2026-05-05T02-44-15-662Z | COULD NOT BE DETERMINED | 56 | True |  | Not started | True  -16.44 0 0 0 0 0 20 | Negative Float Critical 2 0 0  |  | 3307, 3306, 3308 | True |  |
| 357ae9be-8a60-81d7-a1f6-d76310775a1c | 2960 | RTR_CM02_Profit Center Hierarchy | (Unassigned) | 1.2.3.2.1 | 1.2.3.2.1 | 2026-06-08 | 2026-06-08 | 2026-04-06 | 0 | 5 | 2959 | 0 | 3 |  | 357ae9be-8a60-816c-ad9a-cf035f1ccd99, 357ae9be-8a60-8145-abcf-ead9952da254, 357ae9be-8a60-812a-927c-ec4a7b08404c | -24.56 | 0 | As Soon As Possible | Auto Scheduled | AMETEK SAP XXL Project Plan Replan MSP Task.csv | AMETEK SAP XXL Project Plan Replan MSP Task.csv__2f0764ccac__2026-05-05T02-44-15-662Z | COULD NOT BE DETERMINED | 63 | True |  | Not started | True  -24.56 0 3 3 532 0 43 | Wrong Successor, Negative Float Critical 5 0 3  |  | 2961, 2962, 2963 | True |  |
| 357ae9be-8a60-81d7-b934-fade5b4e2af9 | 2703 | Manual File Staged and Posted "Ready" | PTM | 1.2.4.2.48.1 | 1.2.4.2.48.1 | 2026-10-07 | 2026-10-07 | 2026-04-17 | 0 | 6 | 2702 | 1 | 1 | 357ae9be-8a60-81ea-b9fa-fc9dde282f69 | 357ae9be-8a60-81fd-96bc-d09780c2913c | -43560 | 0 | Start No Earlier Than | Auto Scheduled | AMETEK SAP XXL Project Plan Replan MSP Task.csv | AMETEK SAP XXL Project Plan Replan MSP Task.csv__2f0764ccac__2026-05-05T02-44-15-662Z | Eric Heisler | 173 | True |  | Not started | True  -43560 0 1 0 0 0 26 | Wrong Dependency, Negative Float Critical 5 1 0 True | 2026-04-06 |  |  |  |
| 357ae9be-8a60-81d8-8d16-c96bb642e48c | 2 | System Readiness | (Unassigned) | 1.1 | 1.1 | 2025-02-17 | 2026-10-22 | 2026-07-16 | 82 | 2 | 1 | 0 | 0 |  |  | 12 | 12 | As Soon As Possible | Auto Scheduled | AMETEK SAP XXL Project Plan Replan MSP Task.csv | AMETEK SAP XXL Project Plan Replan MSP Task.csv__2f0764ccac__2026-05-05T02-44-15-662Z | COULD NOT BE DETERMINED | 98 | True |  | In progress |   12 12 0 0 0 0 8 | Low 0 0 0  |  | 5, 248 | True |  |
| 357ae9be-8a60-81d8-8d43-f4c1972dec58 | 4519 | Error and Defect Mitigation | Finance | 1.2.5.2.67.4 | 1.2.5.2.67.4 | 2026-09-24 | 2026-09-24 | 2026-04-17 | 0 | 6 | 4515 | 1 | 1 | 357ae9be-8a60-81f4-8177-f18d524e6d89 | 357ae9be-8a60-81d9-8f23-e224d8a74606 | -651.02 | 0 | As Soon As Possible | Auto Scheduled | AMETEK SAP XXL Project Plan Replan MSP Task.csv | AMETEK SAP XXL Project Plan Replan MSP Task.csv__2f0764ccac__2026-05-05T02-44-15-662Z | Kasey Hughes | 160 | True |  | Not started | True  -651.02 0 1 0 0 0 26 | Negative Float Critical 2 0 0  |  |  |  |  |
| 357ae9be-8a60-81d8-8f58-e44e8d0c79c4 | 3335 | Open Sales Orders(Manual) | (Unassigned) | 1.2.3.4.6 | 1.2.3.4.6 | 2026-06-22 | 2026-06-23 | 2026-06-23 | 0 | 5 | 3326 | 1 | 0 | 357ae9be-8a60-812b-99d2-f7a1aa058a4c |  | -24.06 | 0 | As Soon As Possible | Auto Scheduled | AMETEK SAP XXL Project Plan Replan MSP Task.csv | AMETEK SAP XXL Project Plan Replan MSP Task.csv__2f0764ccac__2026-05-05T02-44-15-662Z | COULD NOT BE DETERMINED |  |  |  | Not started | True  -24.06 0 0 0 0 0 12 | Wrong Dependency, Negative Float, Open Finish Critical 6 1 0  |  |  |  |  |
| 357ae9be-8a60-81d8-a193-f2612af44809 | 2030 | Post Load Validation | OTC | 1.2.2.2.64.2 | 1.2.2.2.64.2 | 2026-05-26 | 2026-05-26 | 2025-03-13 | 0 | 6 | 2028 | 1 | 0 | 357ae9be-8a60-8119-a342-d70329259565 |  | -49.02 | 0 | As Soon As Possible | Auto Scheduled | AMETEK SAP XXL Project Plan Replan MSP Task.csv | AMETEK SAP XXL Project Plan Replan MSP Task.csv__2f0764ccac__2026-05-05T02-44-15-662Z | James VanRiper | 439 | True |  | Not started | True  -49.02 0 0 0 0 0 20 | Negative Float, Open Finish Critical 3 0 0  |  |  |  |  |
| 357ae9be-8a60-81d8-ad19-d3f1751abee4 | 1292 | Validate Syniti Connections to QS5 | Data | 1.1.1.6.1.6 | 1.1.1.6.1.6 | 2026-05-27 | 2026-05-27 | 2026-05-15 | 0 | 6 | 3339 | 1 | 0 | 357ae9be-8a60-81b3-9029-d651db7edab4 |  | 7 | 7 | As Soon As Possible | Auto Scheduled | AMETEK SAP XXL Project Plan Replan MSP Task.csv | AMETEK SAP XXL Project Plan Replan MSP Task.csv__2f0764ccac__2026-05-05T02-44-15-662Z | Jyoti Nain | 12 | True |  | Not started |   7 7 0 0 0 0 8 | Open Finish Medium 1 0 0  |  |  |  |  |
| 357ae9be-8a60-81d8-afd4-df5816aa9545 | 3071 | Error and Defect Mitigation | Finance | 1.2.3.2.18.4 | 1.2.3.2.18.4 | 2026-06-15 | 2026-06-15 | 2026-04-10 | 0 | 6 | 3067 | 1 | 0 | 357ae9be-8a60-8120-9272-ef557a6f35df |  | -178.77 | 0 | As Soon As Possible | Auto Scheduled | AMETEK SAP XXL Project Plan Replan MSP Task.csv | AMETEK SAP XXL Project Plan Replan MSP Task.csv__2f0764ccac__2026-05-05T02-44-15-662Z | Kasey Hughes | 66 | True |  | Not started | True  -178.77 0 0 0 0 0 20 | Negative Float, Open Finish Critical 3 0 0  |  |  |  |  |

| id | uid | name | workstream | outlineNumber | wbs | start | finish | baselineFinish | pct | outlineLevel | parentUid | predCount | sucCount | predIds | sucIds | totalSlackDaysRaw | freeSlackDaysRaw | constraintType | taskMode | mspSourceFile | mspImportVersion | assignedTo | slipDays | isSlipped | isDue14 | status | cpm | scheduleQuality | constraintDate | childUids | isSummary |
| --- | --- | --- | --- | --- | --- | --- | --- | --- | --- | --- | --- | --- | --- | --- | --- | --- | --- | --- | --- | --- | --- | --- | --- | --- | --- | --- | --- | --- | --- | --- | --- |
| 357ae9be-8a60-81d8-b3a1-c0e88fdfae1f | 2590 | Post Load Validation | PTM | 1.2.4.2.26.6 | 1.2.4.2.26.6 | 2026-09-28 | 2026-09-29 | 2026-04-15 | 0 | 6 | 2584 | 1 | 4 | 357ae9be-8a60-8177-9595-eb74156de19a | 357ae9be-8a60-8194-8b31-ebdfccfeb50e, 357ae9be-8a60-811e-9bb4-ef2a7dc6d026, 357ae9be-8a60-81c1-beec-f015ac57e0ef, 357ae9be-8a60-815e-ba1b-f35e35e5e5a6 | -726 | 0 | As Soon As Possible | Auto Scheduled | AMETEK SAP XXL Project Plan Replan MSP Task.csv | AMETEK SAP XXL Project Plan Replan MSP Task.csv__2f0764ccac__2026-05-05T02-44-15-662Z | Eric Heisler | 167 | True |  | Not started | True  -726 0 4 4 1027 0 49 | Wrong Successor, Negative Float Critical 5 0 4  |  |  |  |
| 357ae9be-8a60-81d8-b7ba-febb39a19ec5 | 1793 | RTR_CM10_Credit_Management_Role | (Unassigned) | 1.2.2.2.18 | 1.2.2.2.18 | 2026-05-25 | 2026-05-26 | 2026-04-13 | 0 | 5 | 2800 | 0 | 0 |  |  | -7.35 | 0 | As Soon As Possible | Auto Scheduled | AMETEK SAP XXL Project Plan Replan MSP Task.csv | AMETEK SAP XXL Project Plan Replan MSP Task.csv__2f0764ccac__2026-05-05T02-44-15-662Z | COULD NOT BE DETERMINED | 43 | True |  | Not started | True  -7.35 0 0 0 0 0 20 | Negative Float High 2 0 0  |  | 1797, 1799, 1798, 1796, 1794, 1795 | True |
| 357ae9be-8a60-81d9-8220-fc7d64850038 | 2468 | Load File Staged and Posted "Ready" | Finance | 1.2.4.2.8.1 | 1.2.4.2.8.1 | 2026-09-25 | 2026-09-25 | 2026-04-07 | 0 | 6 | 2467 | 1 | 1 | 357ae9be-8a60-817c-a312-c693daa64b6e | 357ae9be-8a60-815c-8372-f9fec60c7a83 | -662.5 | 0 | As Soon As Possible | Auto Scheduled | AMETEK SAP XXL Project Plan Replan MSP Task.csv | AMETEK SAP XXL Project Plan Replan MSP Task.csv__2f0764ccac__2026-05-05T02-44-15-662Z | Kasey Hughes | 171 | True |  | Not started | True  -662.5 0 1 0 0 0 26 | Wrong Dependency, Negative Float Critical 5 1 0  |  |  |  |
| 357ae9be-8a60-81d9-82df-e24ffa56737c | 4454 | Load | Data | 1.2.5.2.50.5 | 1.2.5.2.50.5 | 2026-10-08 | 2026-10-08 | 2026-04-21 | 0 | 6 | 4449 | 1 | 1 | 357ae9be-8a60-811c-9a87-f544c3ff3dd3 | 357ae9be-8a60-810f-a1d7-c241456fc760 | -726.02 | 0 | As Soon As Possible | Auto Scheduled | AMETEK SAP XXL Project Plan Replan MSP Task.csv | AMETEK SAP XXL Project Plan Replan MSP Task.csv__2f0764ccac__2026-05-05T02-44-15-662Z | Jyoti Nain | 170 | True |  | Not started | True  -726.02 0 1 0 0 0 26 | Negative Float Critical 2 0 0  |  |  |  |
| 357ae9be-8a60-81d9-860d-cccba81b40f8 | 3116 | Simulate Load | Data | 1.2.3.2.25.3 | 1.2.3.2.25.3 | 2026-06-10 | 2026-06-10 | 2026-04-14 | 0 | 6 | 3113 | 1 | 1 | 357ae9be-8a60-8119-a06f-e6c396f0e8e1 | 357ae9be-8a60-810a-831d-fec95a9bb847 | -145.27 | 0 | As Soon As Possible | Auto Scheduled | AMETEK SAP XXL Project Plan Replan MSP Task.csv | AMETEK SAP XXL Project Plan Replan MSP Task.csv__2f0764ccac__2026-05-05T02-44-15-662Z | Jyoti Nain | 57 | True |  | Not started | True  -145.27 0 1 0 0 0 26 | Negative Float Critical 2 0 0  |  |  |  |
| 357ae9be-8a60-81d9-8f23-e224d8a74606 | 4520 | Load | Data | 1.2.5.2.67.5 | 1.2.5.2.67.5 | 2026-09-24 | 2026-09-24 | 2026-04-17 | 0 | 6 | 4515 | 1 | 1 | 357ae9be-8a60-81d8-8d43-f4c1972dec58 | 357ae9be-8a60-811f-9f7b-f3a76e546e07 | -651.02 | 0 | As Soon As Possible | Auto Scheduled | AMETEK SAP XXL Project Plan Replan MSP Task.csv | AMETEK SAP XXL Project Plan Replan MSP Task.csv__2f0764ccac__2026-05-05T02-44-15-662Z | Jyoti Nain | 160 | True |  | Not started | True  -651.02 0 1 0 0 0 26 | Negative Float Critical 2 0 0  |  |  |  |
| 357ae9be-8a60-81d9-94e0-f71be6ca705c | 2441 | RTR_CM05_Profit_Center | (Unassigned) | 1.2.4.2.4 | 1.2.4.2.4 | 2026-09-24 | 2026-09-25 | 2026-04-07 | 0 | 5 | 2898 | 0 | 0 |  |  | -84.72 | 0 | As Soon As Possible | Auto Scheduled | AMETEK SAP XXL Project Plan Replan MSP Task.csv | AMETEK SAP XXL Project Plan Replan MSP Task.csv__2f0764ccac__2026-05-05T02-44-15-662Z | COULD NOT BE DETERMINED | 171 | True |  | Not started | True  -84.72 0 0 0 0 0 20 | Negative Float Critical 2 0 0  |  | 2444, 2442, 2446, 2447, 2445, 2443 | True |
| 357ae9be-8a60-81d9-9566-dcc0bde780f4 | 810 | Simulate Load | Data | 1.2.1.8.3 | 1.2.1.8.3 | 2026-04-09 | 2026-04-09 | 2026-04-09 | 100 | 5 | 760 | 1 | 1 | 357ae9be-8a60-81c2-9e8a-f8a0705e3bb4 | 357ae9be-8a60-815a-bcb3-f1b9e63f8ba1 | 0 | 0 | As Soon As Possible | Auto Scheduled | AMETEK SAP XXL Project Plan Replan MSP Task.csv | AMETEK SAP XXL Project Plan Replan MSP Task.csv__2f0764ccac__2026-05-05T02-44-15-662Z | Jyoti Nain |  |  |  | Done | True  0 0 1 0 0 0 18 | Low 0 0 0  |  |  |  |
| 357ae9be-8a60-81d9-966e-ebb1a9d0ce67 | 4313 | Error and Defect Mitigation | PTP | 1.2.5.2.24.4 | 1.2.5.2.24.4 | 2026-09-25 | 2026-09-25 | 2026-04-14 | 0 | 6 | 4309 | 1 | 1 | 357ae9be-8a60-81c9-b926-d6f48350f144 | 357ae9be-8a60-8198-9adc-d0022ff6b6a7 | -726.02 | 0 | As Soon As Possible | Auto Scheduled | AMETEK SAP XXL Project Plan Replan MSP Task.csv | AMETEK SAP XXL Project Plan Replan MSP Task.csv__2f0764ccac__2026-05-05T02-44-15-662Z | Nevin Varkey | 164 | True |  | Not started | True  -726.02 0 1 0 0 0 26 | Negative Float Critical 2 0 0  |  |  |  |
| 357ae9be-8a60-81d9-97a1-d8800c6089d8 | 2447 | Post Load Validation | Finance | 1.2.4.2.4.6 | 1.2.4.2.4.6 | 2026-09-25 | 2026-09-25 | 2026-04-07 | 0 | 6 | 2441 | 1 | 1 | 357ae9be-8a60-81c7-8f3d-d911a4c73c88 | 357ae9be-8a60-8176-be0a-e672e3348137 | -677.75 | 0 | As Soon As Possible | Auto Scheduled | AMETEK SAP XXL Project Plan Replan MSP Task.csv | AMETEK SAP XXL Project Plan Replan MSP Task.csv__2f0764ccac__2026-05-05T02-44-15-662Z | Kasey Hughes | 171 | True |  | Not started | True  -677.75 0 1 1 39 0 31 | Wrong Successor, Negative Float Critical 5 0 1  |  |  |  |
| 357ae9be-8a60-81d9-97e7-eb6ab54b2632 | 4418 | VC_Variant Tables | (Unassigned) | 1.2.5.2.43 | 1.2.5.2.43 | 2026-09-29 | 2026-09-30 | 2026-04-17 | 0 | 5 | 4162 | 0 | 0 |  |  | -85.28 | 0 | As Soon As Possible | Auto Scheduled | AMETEK SAP XXL Project Plan Replan MSP Task.csv | AMETEK SAP XXL Project Plan Replan MSP Task.csv__2f0764ccac__2026-05-05T02-44-15-662Z | COULD NOT BE DETERMINED | 166 | True |  | Not started | True  -85.28 0 0 0 0 0 20 | Negative Float Critical 2 0 0  |  | 4420, 4419 | True |
| 357ae9be-8a60-81d9-a615-e2133af8ca96 | 2696 | Load File Staged and Posted "Ready" | PTM | 1.2.4.2.47.1 | 1.2.4.2.47.1 | 2026-10-05 | 2026-10-05 | 2026-04-16 | 0 | 6 | 2695 | 1 | 1 | 357ae9be-8a60-8111-b0a1-dd3de3d9aaa5 | 357ae9be-8a60-8158-b5a6-edd1fd7be2fc | -43560 | 0 | As Soon As Possible | Auto Scheduled | AMETEK SAP XXL Project Plan Replan MSP Task.csv | AMETEK SAP XXL Project Plan Replan MSP Task.csv__2f0764ccac__2026-05-05T02-44-15-662Z | Eric Heisler | 172 | True |  | Not started | True  -43560 0 1 0 0 0 26 | Negative Float Critical 2 0 0  |  |  |  |
| 357ae9be-8a60-81d9-a671-c96fa8e79903 | 4274 | Error and Defect Mitigation | Finance | 1.2.5.2.18.4 | 1.2.5.2.18.4 | 2026-10-01 | 2026-10-01 | 2026-04-10 | 0 | 6 | 4270 | 1 | 2 | 357ae9be-8a60-8138-a474-c96f1ccf6263 | 357ae9be-8a60-8128-b5ad-da80f9efee96, 357ae9be-8a60-81f0-9b8f-ecd5c07565b2 | -700.77 | 0 | As Soon As Possible | Auto Scheduled | AMETEK SAP XXL Project Plan Replan MSP Task.csv | AMETEK SAP XXL Project Plan Replan MSP Task.csv__2f0764ccac__2026-05-05T02-44-15-662Z | Kasey Hughes | 174 | True |  | Not started | True  -700.77 0 2 0 0 0 32 | Negative Float Critical 2 0 0  |  |  |  |
| 357ae9be-8a60-81d9-a937-d758ebd844b3 | 1178 | Load Descartes XML File | OTC | 1.2.1.59.1 | 1.2.1.59.1 | 2026-04-06 | 2026-04-06 | 2026-04-06 | 100 | 5 | 698 | 1 | 0 | 357ae9be-8a60-8197-ad05-e5135192af2c |  | 0 | 0 | As Soon As Possible | Auto Scheduled | AMETEK SAP XXL Project Plan Replan MSP Task.csv | AMETEK SAP XXL Project Plan Replan MSP Task.csv__2f0764ccac__2026-05-05T02-44-15-662Z | James VanRiper |  |  |  | Done | True  0 0 0 0 0 0 12 | Wrong Dependency High 3 1 0  |  |  |  |
| 357ae9be-8a60-81d9-ab9c-dd2b9fd4d1c5 | 3231 | PTM_CM53_Super_Routing | PTM | 1.2.3.2.47 | 1.2.3.2.47 | 2026-06-15 | 2026-06-17 | 2026-04-20 | 0 | 5 | 2959 | 0 | 0 |  |  | -23.41 | 0 | As Soon As Possible | Auto Scheduled | AMETEK SAP XXL Project Plan Replan MSP Task.csv | AMETEK SAP XXL Project Plan Replan MSP Task.csv__2f0764ccac__2026-05-05T02-44-15-662Z | Brad Meseck | 58 | True |  | Not started | True  -23.41 0 0 0 0 0 20 | Negative Float Critical 2 0 0  |  | 3233, 3235, 3232, 3234, 3236, 3237 | True |
| 357ae9be-8a60-81da-84f0-dcf7c80e6adf | 1945 | Run ALE Transaction to QS5 from DS4 130 | PTM | 1.2.2.2.44.1 | 1.2.2.2.44.1 | 2026-05-22 | 2026-05-22 | 2026-04-17 | 0 | 6 | 1944 | 1 | 1 | 357ae9be-8a60-81b2-a7bf-ce732059ecee | 357ae9be-8a60-816c-844b-f828a9b29bdb | -40.27 | 0 | As Soon As Possible | Auto Scheduled | AMETEK SAP XXL Project Plan Replan MSP Task.csv | AMETEK SAP XXL Project Plan Replan MSP Task.csv__2f0764ccac__2026-05-05T02-44-15-662Z | Eric Heisler | 35 | True |  | Not started | True  -40.27 0 1 0 0 0 26 | Negative Float Critical 2 0 0  |  |  |  |
| 357ae9be-8a60-81da-8aea-f14b75b5a5d3 | 740 | RTR_CM01_GL_Account_Master to CC 1000 | (Unassigned) | 1.2.1.4 | 1.2.1.4 | 2026-04-07 | 2026-04-09 | 2026-04-09 | 100 | 4 | 425 | 1 | 2 | 357ae9be-8a60-813c-ba4e-f0b7b9201b7f | 357ae9be-8a60-8162-bad5-e08ffb0a4cec, 357ae9be-8a60-8137-aae4-fff73a3c474f | 0 | 0 | As Soon As Possible | Auto Scheduled | AMETEK SAP XXL Project Plan Replan MSP Task.csv | AMETEK SAP XXL Project Plan Replan MSP Task.csv__2f0764ccac__2026-05-05T02-44-15-662Z | COULD NOT BE DETERMINED |  |  |  | Done | True  0 0 2 2 4 0 29 | Low 0 0 0  |  | 1244, 775, 776, 958, 1243, 774, 773, 795 | True |
| 357ae9be-8a60-81da-90e6-d3fe3f58d4a4 | 3224 | PTM_CM52_Super_BOM | PTM | 1.2.3.2.46 | 1.2.3.2.46 | 2026-06-11 | 2026-06-15 | 2026-04-16 | 0 | 5 | 2959 | 0 | 0 |  |  | -23.41 | 0 | As Soon As Possible | Auto Scheduled | AMETEK SAP XXL Project Plan Replan MSP Task.csv | AMETEK SAP XXL Project Plan Replan MSP Task.csv__2f0764ccac__2026-05-05T02-44-15-662Z | Brad Meseck | 60 | True |  | Not started | True  -23.41 0 0 0 0 0 20 | Negative Float Critical 2 0 0  |  | 3230, 3227, 3228, 3229, 3226, 3225 | True |
| 357ae9be-8a60-81da-94bd-c9d0d5294259 | 1779 | Error and Defect Mitigation | PTP | 1.2.2.2.15.4 | 1.2.2.2.15.4 | 2026-05-26 | 2026-05-28 | 2026-04-14 | 0 | 6 | 1775 | 1 | 1 | 357ae9be-8a60-812c-8a2b-c7867ae1ecef | 357ae9be-8a60-8111-aea0-f5dba62e7cdb | -76.52 | 0 | As Soon As Possible | Auto Scheduled | AMETEK SAP XXL Project Plan Replan MSP Task.csv | AMETEK SAP XXL Project Plan Replan MSP Task.csv__2f0764ccac__2026-05-05T02-44-15-662Z | Nevin Varkey | 44 | True |  | Not started | True  -76.52 0 1 0 0 0 26 | Negative Float Critical 2 0 0  |  |  |  |
| 357ae9be-8a60-81da-9ed8-f6beac5606d5 | 4412 | VC_Dependency Nets | (Unassigned) | 1.2.5.2.41 | 1.2.5.2.41 | 2026-09-29 | 2026-09-29 | 2026-04-16 | 0 | 5 | 4162 | 0 | 0 |  |  | -84.03 | 0 | As Soon As Possible | Auto Scheduled | AMETEK SAP XXL Project Plan Replan MSP Task.csv | AMETEK SAP XXL Project Plan Replan MSP Task.csv__2f0764ccac__2026-05-05T02-44-15-662Z | COULD NOT BE DETERMINED | 166 | True |  | Not started | True  -84.03 0 0 0 0 0 20 | Negative Float Critical 2 0 0  |  | 4413, 4414 | True |
| 357ae9be-8a60-81da-ac47-f247828056e9 | 2729 | Manual File Staged and Posted "Ready" | PTM | 1.2.4.2.53.1 | 1.2.4.2.53.1 | 2026-09-29 | 2026-09-29 | 2026-04-16 | 0 | 6 | 2728 | 1 | 1 | 357ae9be-8a60-8102-b889-c4be1d9cd8cc | 357ae9be-8a60-8125-8286-d7af3f5eeee5 | -41325 | 0 | As Soon As Possible | Auto Scheduled | AMETEK SAP XXL Project Plan Replan MSP Task.csv | AMETEK SAP XXL Project Plan Replan MSP Task.csv__2f0764ccac__2026-05-05T02-44-15-662Z | Sam Penrod | 166 | True |  | Not started | True  -41325 0 1 1 539 0 31 | Wrong Dependency, Wrong Successor, Negative Float Critical 8 1 1  |  |  |  |
| 357ae9be-8a60-81da-b4c3-e05641eb458b | 1894 | Post Load Validation | PTM | 1.2.2.2.32.6 | 1.2.2.2.32.6 | 2026-05-27 | 2026-05-28 | 2026-04-21 | 0 | 6 | 1888 | 1 | 0 | 357ae9be-8a60-8179-a42e-f4475e9fe31e |  | -62.39 | 0 | As Soon As Possible | Auto Scheduled | AMETEK SAP XXL Project Plan Replan MSP Task.csv | AMETEK SAP XXL Project Plan Replan MSP Task.csv__2f0764ccac__2026-05-05T02-44-15-662Z | Brad Meseck | 37 | True |  | Not started | True  -62.39 0 0 0 0 0 20 | Negative Float, Open Finish Critical 3 0 0  |  |  |  |
| 357ae9be-8a60-81da-b66a-fc1e3022e6f7 | 1129 | Post Load Validation | PTM | 1.2.1.54.3 | 1.2.1.54.3 | 2026-04-17 | 2026-04-20 | 2026-04-16 | 100 | 5 | 712 | 1 | 0 | 357ae9be-8a60-81c0-9f8f-f0fb4e2b30ce |  | 0 | 0 | Finish No Earlier Than | Auto Scheduled | AMETEK SAP XXL Project Plan Replan MSP Task.csv | AMETEK SAP XXL Project Plan Replan MSP Task.csv__2f0764ccac__2026-05-05T02-44-15-662Z | Brad Meseck |  |  |  | Done | True  0 0 0 0 0 0 12 | Low 0 0 0 True | 2026-04-20 |  |  |
| 357ae9be-8a60-81da-b9d5-feab11f1f37a | 4409 | VC_Classification (Class Type 200) | (Unassigned) | 1.2.5.2.40 | 1.2.5.2.40 | 2026-09-29 | 2026-09-29 | 2026-04-16 | 0 | 5 | 4162 | 0 | 0 |  |  | -84.03 | 0 | As Soon As Possible | Auto Scheduled | AMETEK SAP XXL Project Plan Replan MSP Task.csv | AMETEK SAP XXL Project Plan Replan MSP Task.csv__2f0764ccac__2026-05-05T02-44-15-662Z | COULD NOT BE DETERMINED | 166 | True |  | Not started | True  -84.03 0 0 0 0 0 20 | Negative Float Critical 2 0 0  |  | 4410, 4411 | True |
| 357ae9be-8a60-81da-baab-cafe7d1f1a8f | 4296 | Load File Staged and Posted "Ready" | PTP;OTC | 1.2.5.2.22.1 | 1.2.5.2.22.1 | 2026-09-24 | 2026-09-24 | 2026-04-13 | 0 | 6 | 4295 | 1 | 1 | 357ae9be-8a60-814a-b11f-fa49bd036ce8 | 357ae9be-8a60-8177-9ed9-ef1dd4b3beee | -39211 | 0 | As Soon As Possible | Auto Scheduled | AMETEK SAP XXL Project Plan Replan MSP Task.csv | AMETEK SAP XXL Project Plan Replan MSP Task.csv__2f0764ccac__2026-05-05T02-44-15-662Z | Nevin Varkey | 164 | True |  | Not started | True  -39211 0 1 0 0 0 26 | Negative Float Critical 2 0 0  |  |  |  |
| 357ae9be-8a60-81db-8006-ea849229d0f6 | 1686 | RTR_CM02_Profit Center Hierarchy | (Unassigned) | 1.2.2.2.1 | 1.2.2.2.1 | 2026-05-18 | 2026-05-18 | 2026-04-06 | 0 | 5 | 2800 | 0 | 0 |  |  | -9.56 | 0 | As Soon As Possible | Auto Scheduled | AMETEK SAP XXL Project Plan Replan MSP Task.csv | AMETEK SAP XXL Project Plan Replan MSP Task.csv__2f0764ccac__2026-05-05T02-44-15-662Z | COULD NOT BE DETERMINED | 42 | True | True | Not started | True  -9.56 0 0 0 0 0 20 | Negative Float High 2 0 0  |  | 1688, 1689, 1687 | True |
| 357ae9be-8a60-81db-9abf-e69c30846126 | 2529 | Load | Data | 1.2.4.2.17.5 | 1.2.4.2.17.5 | 2026-10-01 | 2026-10-05 | 2026-04-13 | 0 | 6 | 2524 | 1 | 1 | 357ae9be-8a60-817d-b433-fe2c101bf1b5 | 357ae9be-8a60-8184-8b7c-ea85cd49ac0b | -707 | 0 | As Soon As Possible | Auto Scheduled | AMETEK SAP XXL Project Plan Replan MSP Task.csv | AMETEK SAP XXL Project Plan Replan MSP Task.csv__2f0764ccac__2026-05-05T02-44-15-662Z | Jyoti Nain | 175 | True |  | Not started | True  -707 0 1 0 0 0 26 | Negative Float Critical 2 0 0  |  |  |  |
| 357ae9be-8a60-81db-a2a2-dcebf558a7ff | 1783 | Manual File Staged and Posted "Ready" | OTC | 1.2.2.2.16.1 | 1.2.2.2.16.1 | 2026-05-25 | 2026-05-25 | 2026-04-10 | 0 | 6 | 1782 | 1 | 1 | 357ae9be-8a60-8122-b5a7-f52bb4b3e2ef | 357ae9be-8a60-8190-b2f9-e48f1d47eab5 | -2611 | 0 | As Soon As Possible | Auto Scheduled | AMETEK SAP XXL Project Plan Replan MSP Task.csv | AMETEK SAP XXL Project Plan Replan MSP Task.csv__2f0764ccac__2026-05-05T02-44-15-662Z | Ric Haraida | 45 | True |  | Not started | True  -2611 0 1 0 0 0 26 | Wrong Dependency, Negative Float Critical 5 1 0  |  |  |  |
| 357ae9be-8a60-81db-b40a-d6260f6e4327 | 962 | Error and Defect Mitigation | Finance | 1.2.1.6.4 | 1.2.1.6.4 | 2026-04-08 | 2026-04-08 | 2026-04-08 | 100 | 5 | 767 | 1 | 1 | 357ae9be-8a60-8146-8071-f1cf16d2681c | 357ae9be-8a60-8141-8e10-fc3d20299796 | 0 | 0 | As Soon As Possible | Auto Scheduled | AMETEK SAP XXL Project Plan Replan MSP Task.csv | AMETEK SAP XXL Project Plan Replan MSP Task.csv__2f0764ccac__2026-05-05T02-44-15-662Z | Kasey Hughes |  |  |  | Done | True  0 0 1 0 0 0 18 | Low 0 0 0  |  |  |  |
| 357ae9be-8a60-81db-b7d7-fd7f9d1352a0 | 3182 | Post Load Validation | PTM | 1.2.3.2.34.6 | 1.2.3.2.34.6 | 2026-06-15 | 2026-06-16 | 2026-04-20 | 0 | 6 | 3176 | 1 | 0 | 357ae9be-8a60-8160-9c56-e07d479eb32a |  | -167.27 | 0 | As Soon As Possible | Auto Scheduled | AMETEK SAP XXL Project Plan Replan MSP Task.csv | AMETEK SAP XXL Project Plan Replan MSP Task.csv__2f0764ccac__2026-05-05T02-44-15-662Z | Brad Meseck | 57 | True |  | Not started | True  -167.27 0 0 0 0 0 20 | Negative Float, Open Finish Critical 3 0 0  |  |  |  |
| 357ae9be-8a60-81dc-9faf-f9614b9ac4d5 | 3054 | Load | Data | 1.2.3.2.15.5 | 1.2.3.2.15.5 | 2026-06-18 | 2026-06-19 | 2026-04-14 | 0 | 6 | 3049 | 1 | 1 | 357ae9be-8a60-81d0-8263-fe83f0e9b3bd | 357ae9be-8a60-81d3-8e1e-d462af184de2 | -196.52 | 0 | As Soon As Possible | Auto Scheduled | AMETEK SAP XXL Project Plan Replan MSP Task.csv | AMETEK SAP XXL Project Plan Replan MSP Task.csv__2f0764ccac__2026-05-05T02-44-15-662Z | Jyoti Nain | 66 | True |  | Not started | True  -196.52 0 1 0 0 0 26 | Negative Float Critical 2 0 0  |  |  |  |
| 357ae9be-8a60-81dc-a39c-ce06bb1197b8 | 2656 | Pre Load Validation | PTM | 1.2.4.2.36.2 | 1.2.4.2.36.2 | 2026-10-02 | 2026-10-02 | 2026-04-20 | 0 | 6 | 2654 | 1 | 1 | 357ae9be-8a60-810a-a25f-f62b02b25c9c | 357ae9be-8a60-81ea-9131-cf0d24af7207 | -41745 | 0 | As Soon As Possible | Auto Scheduled | AMETEK SAP XXL Project Plan Replan MSP Task.csv | AMETEK SAP XXL Project Plan Replan MSP Task.csv__2f0764ccac__2026-05-05T02-44-15-662Z | Brad Meseck | 165 | True |  | Not started | True  -41745 0 1 0 0 0 26 | Negative Float Critical 2 0 0  |  |  |  |
| 357ae9be-8a60-81dc-a9cf-ecc320b995a1 | 3177 | Load File Staged and Posted "Ready" | PTM | 1.2.3.2.34.1 | 1.2.3.2.34.1 | 2026-06-15 | 2026-06-15 | 2026-04-17 | 0 | 6 | 3176 | 1 | 2 | 357ae9be-8a60-81b7-8b65-fdde0ee8d8ef | 357ae9be-8a60-81e4-ad85-f3407bb2ec98, 357ae9be-8a60-813d-a1c6-f96b9af3ecb2 | -10426 | 0 | As Soon As Possible | Auto Scheduled | AMETEK SAP XXL Project Plan Replan MSP Task.csv | AMETEK SAP XXL Project Plan Replan MSP Task.csv__2f0764ccac__2026-05-05T02-44-15-662Z | Brad Meseck | 59 | True |  | Not started | True  -10426 0 2 2 504 0 37 | Wrong Successor, Negative Float Critical 5 0 2  |  |  |  |
| 357ae9be-8a60-81dc-ac0c-d1d3dc9d5dac | 4242 | OTC_CM19_Customer_Master - Sold-To | OTC | 1.2.5.2.14 | 1.2.5.2.14 | 2026-09-29 | 2026-10-01 | 2026-04-10 | 0 | 5 | 4162 | 0 | 0 |  |  | -89.44 | 0 | As Soon As Possible | Auto Scheduled | AMETEK SAP XXL Project Plan Replan MSP Task.csv | AMETEK SAP XXL Project Plan Replan MSP Task.csv__2f0764ccac__2026-05-05T02-44-15-662Z | Anitha Jothi | 174 | True |  | Not started | True  -89.44 0 0 0 0 0 20 | Negative Float Critical 2 0 0  |  | 4251, 4243, 4245, 4246, 4250, 4247, 4249, 4248, 4244 | True |
| 357ae9be-8a60-81dc-b1d9-dab1813b07a5 | 4350 | Post Load Validation | PTP | 1.2.5.2.29.6 | 1.2.5.2.29.6 | 2026-09-30 | 2026-09-30 | 2026-04-16 | 0 | 6 | 4344 | 1 | 0 | 357ae9be-8a60-81be-a859-f8c4d20103b7 |  | -676.27 | 0 | As Soon As Possible | Auto Scheduled | AMETEK SAP XXL Project Plan Replan MSP Task.csv | AMETEK SAP XXL Project Plan Replan MSP Task.csv__2f0764ccac__2026-05-05T02-44-15-662Z | Nevin Varkey | 167 | True |  | Not started | True  -676.27 0 0 0 0 0 20 | Negative Float, Open Finish Critical 3 0 0  |  |  |  |
| 357ae9be-8a60-81dc-b1e2-e65885183926 | 1155 | Post Load Validation | PTM | 1.2.1.39.2 | 1.2.1.39.2 | 2026-04-06 | 2026-04-07 | 2026-04-07 | 100 | 5 | 939 | 1 | 1 | 357ae9be-8a60-813e-bc0e-d226d1e7dae0 | 357ae9be-8a60-8148-bbe7-c548ad29af9b | 0 | 0 | As Soon As Possible | Auto Scheduled | AMETEK SAP XXL Project Plan Replan MSP Task.csv | AMETEK SAP XXL Project Plan Replan MSP Task.csv__2f0764ccac__2026-05-05T02-44-15-662Z | Eric Heisler |  |  |  | Done | True  0 0 1 0 0 0 18 | Low 0 0 0  |  |  |  |
| 357ae9be-8a60-81dc-b681-eb8ad24cbc70 | 4166 | Post Load Validation | Finance | 1.2.5.2.1.3 | 1.2.5.2.1.3 | 2026-09-24 | 2026-09-24 | 2026-04-06 | 0 | 6 | 4163 | 1 | 2 | 357ae9be-8a60-81e6-a029-e1635939f13f | 357ae9be-8a60-81e5-8162-f2c28b788ce5, 357ae9be-8a60-81c0-bced-e1838da4f24f | -718.52 | 0 | As Soon As Possible | Auto Scheduled | AMETEK SAP XXL Project Plan Replan MSP Task.csv | AMETEK SAP XXL Project Plan Replan MSP Task.csv__2f0764ccac__2026-05-05T02-44-15-662Z | Kasey Hughes | 171 | True |  | Not started | True  -718.52 0 2 0 0 0 32 | Negative Float Critical 2 0 0  |  |  |  |
| 357ae9be-8a60-81dc-b77b-ff004ab7e813 | 1048 | Load | Data | 1.2.1.29.5 | 1.2.1.29.5 | 2026-04-17 | 2026-04-17 | 2026-04-16 | 100 | 5 | 936 | 1 | 1 | 357ae9be-8a60-81e6-a99d-c3f6fd22a481 | 357ae9be-8a60-8106-bf02-f6239a221934 | 0 | 0 | As Soon As Possible | Auto Scheduled | AMETEK SAP XXL Project Plan Replan MSP Task.csv | AMETEK SAP XXL Project Plan Replan MSP Task.csv__2f0764ccac__2026-05-05T02-44-15-662Z | Jyoti Nain |  |  |  | Done | True  0 0 1 1 1 0 23 | Low 0 0 0  |  |  |  |
| 357ae9be-8a60-81dc-bde3-d618436406b1 | 928 | Team Testing | TESTING | 1.3.3.8.6 | 1.3.3.8.6 | 2026-08-17 | 2026-08-28 | 2026-08-28 | 0 | 5 | 22 | 1 | 1 | 357ae9be-8a60-8176-be0a-e672e3348137 | 357ae9be-8a60-811d-8cbd-fe64a0af8f39 | 51 | 0 | As Soon As Possible | Auto Scheduled | AMETEK SAP XXL Project Plan Replan MSP Task.csv | AMETEK SAP XXL Project Plan Replan MSP Task.csv__2f0764ccac__2026-05-05T02-44-15-662Z | Kishore Kakarla |  |  |  | Not started | True  51 0 1 1 9 0 23 | Low 0 0 0  |  |  |  |
| 357ae9be-8a60-81dd-8a96-ddc9809ad094 | 1846 | PTP_CM26_Material_Master - KMAT - Configurable Materials | PTP | 1.2.2.2.26 | 1.2.2.2.26 | 2026-05-20 | 2026-05-21 | 2026-04-15 | 0 | 5 | 2800 | 0 | 2 |  | 357ae9be-8a60-8101-a382-e8a212fb3518, 357ae9be-8a60-81b3-86ce-f6cec501df62 | -8.5 | 0 | As Soon As Possible | Auto Scheduled | AMETEK SAP XXL Project Plan Replan MSP Task.csv | AMETEK SAP XXL Project Plan Replan MSP Task.csv__2f0764ccac__2026-05-05T02-44-15-662Z | Muniraju Surappachari | 36 | True |  | Not started | True  -8.5 0 2 2 71 0 37 | Wrong Successor, Negative Float High 5 0 2  |  | 1847, 1848, 1851, 1850, 1852, 1849 | True |
| 357ae9be-8a60-81dd-92a5-dfcc7deacf21 | 3069 | Pre Load Validation | Finance | 1.2.3.2.18.2 | 1.2.3.2.18.2 | 2026-06-15 | 2026-06-15 | 2026-04-10 | 0 | 6 | 3067 | 1 | 1 | 357ae9be-8a60-816b-b0c2-d545a91db5ce | 357ae9be-8a60-8120-9272-ef557a6f35df | -10726 | 0 | As Soon As Possible | Auto Scheduled | AMETEK SAP XXL Project Plan Replan MSP Task.csv | AMETEK SAP XXL Project Plan Replan MSP Task.csv__2f0764ccac__2026-05-05T02-44-15-662Z | Kasey Hughes | 66 | True |  | Not started | True  -10726 0 1 0 0 0 26 | Negative Float Critical 2 0 0  |  |  |  |
| 357ae9be-8a60-81dd-9592-c64ad2325610 | 1695 | Load File Staged and Posted "Ready" | Finance | 1.2.2.2.3.1 | 1.2.2.2.3.1 | 2026-05-19 | 2026-05-19 | 2026-04-07 | 0 | 6 | 1694 | 1 | 1 | 357ae9be-8a60-81bf-95c0-f8387cea4efe | 357ae9be-8a60-817f-a806-fbc0e091f3af | -76.52 | 0 | As Soon As Possible | Auto Scheduled | AMETEK SAP XXL Project Plan Replan MSP Task.csv | AMETEK SAP XXL Project Plan Replan MSP Task.csv__2f0764ccac__2026-05-05T02-44-15-662Z | Kasey Hughes | 42 | True | True | Not started | True  -76.52 0 1 0 0 0 26 | Wrong Dependency, Negative Float Critical 5 1 0  |  |  |  |
| 357ae9be-8a60-81dd-9c8f-d92eb6f9f088 | 4382 | Simulate Load | Data | 1.2.5.2.34.3 | 1.2.5.2.34.3 | 2026-10-01 | 2026-10-01 | 2026-04-17 | 0 | 6 | 4379 | 1 | 1 | 357ae9be-8a60-81cf-ac47-c7000ac6719a | 357ae9be-8a60-8131-8753-fa3c6105d009 | -689.27 | 0 | As Soon As Possible | Auto Scheduled | AMETEK SAP XXL Project Plan Replan MSP Task.csv | AMETEK SAP XXL Project Plan Replan MSP Task.csv__2f0764ccac__2026-05-05T02-44-15-662Z | Jyoti Nain | 167 | True |  | Not started | True  -689.27 0 1 0 0 0 26 | Negative Float Critical 2 0 0  |  |  |  |
| 357ae9be-8a60-81dd-be57-ea7666758298 | 4436 | Pre Load Validation | PTM | 1.2.5.2.47.2 | 1.2.5.2.47.2 | 2026-10-05 | 2026-10-05 | 2026-04-17 | 0 | 6 | 4434 | 1 | 1 | 357ae9be-8a60-8125-9f41-c19534e57992 | 357ae9be-8a60-8143-bf1d-f5a4b1c67878 | -43561 | 0 | As Soon As Possible | Auto Scheduled | AMETEK SAP XXL Project Plan Replan MSP Task.csv | AMETEK SAP XXL Project Plan Replan MSP Task.csv__2f0764ccac__2026-05-05T02-44-15-662Z | Eric Heisler | 171 | True |  | Not started | True  -43561 0 1 0 0 0 26 | Negative Float Critical 2 0 0  |  |  |  |
| 357ae9be-8a60-81de-8131-eaf293c31949 | 1181 | Post Load Validation | OTC | 1.2.1.60.2 | 1.2.1.60.2 | 2026-04-16 | 2026-04-16 | 2026-04-16 | 100 | 5 | 699 | 1 | 1 | 357ae9be-8a60-81b1-8596-f22e5747c832 | 357ae9be-8a60-81be-bdd7-f6be26ecc566 | 0 | 0 | As Soon As Possible | Auto Scheduled | AMETEK SAP XXL Project Plan Replan MSP Task.csv | AMETEK SAP XXL Project Plan Replan MSP Task.csv__2f0764ccac__2026-05-05T02-44-15-662Z | James VanRiper |  |  |  | Done | True  0 0 1 0 0 0 18 | Low 0 0 0  |  |  |  |
| 357ae9be-8a60-81de-8316-c0cf679237ed | 2737 | Load | Data | 1.2.4.2.54.5 | 1.2.4.2.54.5 | 2026-09-30 | 2026-09-30 | 2026-04-17 | 0 | 6 | 2732 | 1 | 1 | 357ae9be-8a60-81fe-9a3f-c1794f1eca76 | 357ae9be-8a60-8113-8c93-e9c834bff860 | -681.25 | 0 | As Soon As Possible | Auto Scheduled | AMETEK SAP XXL Project Plan Replan MSP Task.csv | AMETEK SAP XXL Project Plan Replan MSP Task.csv__2f0764ccac__2026-05-05T02-44-15-662Z | Jyoti Nain | 166 | True |  | Not started | True  -681.25 0 1 0 0 0 26 | Negative Float Critical 2 0 0  |  |  |  |
| 357ae9be-8a60-81de-8f77-c9190b5eb9c1 | 2714 | Error and Defect Mitigation | OTC | 1.2.4.2.50.4 | 1.2.4.2.50.4 | 2026-10-08 | 2026-10-08 | 2026-04-21 | 0 | 6 | 2710 | 1 | 1 | 357ae9be-8a60-81f4-9306-de7147a35343 | 357ae9be-8a60-81a6-afc8-eff693af38b3 | -726 | 0 | As Soon As Possible | Auto Scheduled | AMETEK SAP XXL Project Plan Replan MSP Task.csv | AMETEK SAP XXL Project Plan Replan MSP Task.csv__2f0764ccac__2026-05-05T02-44-15-662Z | Ric Haraida | 170 | True |  | Not started | True  -726 0 1 0 0 0 26 | Negative Float Critical 2 0 0  |  |  |  |
| 357ae9be-8a60-81de-91a3-e018c66fda0c | 65 | Procure to Pay | (Unassigned) | 1.1.2.10.3 | 1.1.2.10.3 | 2025-03-13 | 2025-03-13 | 2025-03-13 | 100 | 5 | 55 | 0 | 0 |  |  | 0 | 0 | As Soon As Possible | Auto Scheduled | AMETEK SAP XXL Project Plan Replan MSP Task.csv | AMETEK SAP XXL Project Plan Replan MSP Task.csv__2f0764ccac__2026-05-05T02-44-15-662Z | COULD NOT BE DETERMINED |  |  |  | Done | True  0 0 0 0 0 0 12 | Low 0 0 0  |  | 79, 80, 77, 78 | True |
| 357ae9be-8a60-81de-9b3f-d5345c1bf5d0 | 2969 | Load File Staged and Posted "Ready" | Finance | 1.2.3.2.3.1 | 1.2.3.2.3.1 | 2026-06-09 | 2026-06-09 | 2026-04-07 | 0 | 6 | 2968 | 1 | 1 | 357ae9be-8a60-8177-a79b-f1bbe8d82d00 | 357ae9be-8a60-8199-b049-c7c966f03949 | -196.52 | 0 | As Soon As Possible | Auto Scheduled | AMETEK SAP XXL Project Plan Replan MSP Task.csv | AMETEK SAP XXL Project Plan Replan MSP Task.csv__2f0764ccac__2026-05-05T02-44-15-662Z | Kasey Hughes | 63 | True |  | Not started | True  -196.52 0 1 0 0 0 26 | Wrong Dependency, Negative Float Critical 5 1 0  |  |  |  |
| 357ae9be-8a60-81de-9c27-db4a5c7927c0 | 681 | Solution Readniess | (Unassigned) | 1.3 | 1.3 | 2026-04-16 | 2026-10-16 | 2026-09-03 | 3 | 2 | 1 | 0 | 0 |  |  | 16.63 | 16.63 | As Soon As Possible | Auto Scheduled | AMETEK SAP XXL Project Plan Replan MSP Task.csv | AMETEK SAP XXL Project Plan Replan MSP Task.csv__2f0764ccac__2026-05-05T02-44-15-662Z | COULD NOT BE DETERMINED | 43 | True |  | Not started |   16.63 16.63 0 0 0 0 8 | Low 0 0 0  |  | 835, 18, 843 | True |
| 357ae9be-8a60-81de-a5fb-e7ecf7da5267 | 1903 | Load File Staged and Posted "Ready" | PTM | 1.2.2.2.34.1 | 1.2.2.2.34.1 | 2026-05-25 | 2026-05-25 | 2026-04-17 | 0 | 6 | 1902 | 1 | 2 | 357ae9be-8a60-81f6-8575-df565710e8fa | 357ae9be-8a60-8101-a382-e8a212fb3518, 357ae9be-8a60-81ac-b21c-ed8932fb2550 | -3226 | 0 | As Soon As Possible | Auto Scheduled | AMETEK SAP XXL Project Plan Replan MSP Task.csv | AMETEK SAP XXL Project Plan Replan MSP Task.csv__2f0764ccac__2026-05-05T02-44-15-662Z | Brad Meseck | 38 | True |  | Not started | True  -3226 0 1 1 39 0 33 | Wrong Successor, Negative Float Critical 5 0 2  |  |  |  |
| 357ae9be-8a60-81de-ae15-de842048dbc0 | 900 | Functional Leads Validation of Transport List | Development;PTM;Finance;PMO;Europe IT lead;OTC;TESTING | 1.1.1.7.1.14 | 1.1.1.7.1.14 | 2026-06-16 | 2026-06-16 | 2026-07-07 | 0 | 6 | 3338 | 1 | 2 | 357ae9be-8a60-81eb-8d67-d6df52782048 | 357ae9be-8a60-8120-a46c-e69bf21bab1f, 357ae9be-8a60-81c3-9699-f4d5e8610f9a | -36.38 | 0 | As Soon As Possible | Auto Scheduled | AMETEK SAP XXL Project Plan Replan MSP Task.csv | AMETEK SAP XXL Project Plan Replan MSP Task.csv__2f0764ccac__2026-05-05T02-44-15-662Z | Bijoykrishna Das |  |  |  | Not started | True  -36.38 0 1 0 0 0 20 | Negative Float Critical 2 0 0  |  |  |  |
| 357ae9be-8a60-81de-bf24-f6de4ba875d0 | 2702 | VC_VK30 Pricing Variant | (Unassigned) | 1.2.4.2.48 | 1.2.4.2.48 | 2026-10-07 | 2026-10-07 | 2026-04-20 | 0 | 5 | 2898 | 0 | 0 |  |  | -90.75 | 0 | As Soon As Possible | Auto Scheduled | AMETEK SAP XXL Project Plan Replan MSP Task.csv | AMETEK SAP XXL Project Plan Replan MSP Task.csv__2f0764ccac__2026-05-05T02-44-15-662Z | COULD NOT BE DETERMINED | 170 | True |  | Not started | True  -90.75 0 0 0 0 0 20 | Negative Float Critical 2 0 0  |  | 2705, 2703, 2704 | True |
| 357ae9be-8a60-81df-8be0-c95206558dcf | 4240 | Load | Data | 1.2.5.2.13.8 | 1.2.5.2.13.8 | 2026-09-30 | 2026-09-30 | 2026-04-09 | 0 | 6 | 4232 | 1 | 1 | 357ae9be-8a60-8107-b6bb-ce8be9fd0afd | 357ae9be-8a60-81e8-8736-da2504eb6e63 | -681.02 | 0 | As Soon As Possible | Auto Scheduled | AMETEK SAP XXL Project Plan Replan MSP Task.csv | AMETEK SAP XXL Project Plan Replan MSP Task.csv__2f0764ccac__2026-05-05T02-44-15-662Z | Jyoti Nain | 174 | True |  | Not started | True  -681.02 0 1 0 0 0 26 | Negative Float Critical 2 0 0  |  |  |  |
| 357ae9be-8a60-81df-96a7-e6d94bf1fd21 | 2499 | Simulate Load | Data | 1.2.4.2.13.6 | 1.2.4.2.13.6 | 2026-09-29 | 2026-09-29 | 2026-04-09 | 0 | 6 | 2493 | 1 | 3 | 357ae9be-8a60-8125-970d-fc892cccb65b | 357ae9be-8a60-81af-9699-c8a375eaed29, 357ae9be-8a60-8194-8b31-ebdfccfeb50e, 357ae9be-8a60-81aa-880d-e1a162854cd1 | -716.5 | 0 | As Soon As Possible | Auto Scheduled | AMETEK SAP XXL Project Plan Replan MSP Task.csv | AMETEK SAP XXL Project Plan Replan MSP Task.csv__2f0764ccac__2026-05-05T02-44-15-662Z | Jyoti Nain | 173 | True |  | Not started | True  -716.5 0 3 3 1694 0 43 | Wrong Dependency, Wrong Successor, Negative Float Critical 8 1 3  |  |  |  |
| 357ae9be-8a60-81df-98a1-f72510b9046d | 1697 | Simulate Load | Data | 1.2.2.2.3.3 | 1.2.2.2.3.3 | 2026-05-20 | 2026-05-20 | 2026-04-08 | 0 | 6 | 1694 | 1 | 1 | 357ae9be-8a60-817f-a806-fbc0e091f3af | 357ae9be-8a60-8183-b6ed-cbc661660177 | -76.52 | 0 | As Soon As Possible | Auto Scheduled | AMETEK SAP XXL Project Plan Replan MSP Task.csv | AMETEK SAP XXL Project Plan Replan MSP Task.csv__2f0764ccac__2026-05-05T02-44-15-662Z | Jyoti Nain | 42 | True | True | Not started | True  -76.52 0 1 0 0 0 26 | Negative Float Critical 2 0 0  |  |  |  |
| 357ae9be-8a60-81df-9f74-e49791a7288b | 1756 | Load File Staged and Posted "Ready" | OTC | 1.2.2.2.13.1 | 1.2.2.2.13.1 | 2026-05-21 | 2026-05-21 | 2026-04-08 | 0 | 6 | 1755 | 1 | 1 | 357ae9be-8a60-812a-8ff8-e70b785cc280 | 357ae9be-8a60-8165-879e-ff7efed7f937 | -4471 | 0 | As Soon As Possible | Auto Scheduled | AMETEK SAP XXL Project Plan Replan MSP Task.csv | AMETEK SAP XXL Project Plan Replan MSP Task.csv__2f0764ccac__2026-05-05T02-44-15-662Z | Ric Haraida | 43 | True |  | Not started | True  -4471 0 1 0 0 0 26 | Wrong Dependency, Negative Float Critical 5 1 0  |  |  |  |
| 357ae9be-8a60-81df-a3aa-e8f1868a9be4 | 2016 | GTS - HTS - Create | (Unassigned) | 1.2.2.2.60 | 1.2.2.2.60 | 2026-05-18 | 2026-05-18 | 2026-04-06 | 0 | 5 | 2800 | 0 | 0 |  |  | -0.19 | 0 | As Soon As Possible | Auto Scheduled | AMETEK SAP XXL Project Plan Replan MSP Task.csv | AMETEK SAP XXL Project Plan Replan MSP Task.csv__2f0764ccac__2026-05-05T02-44-15-662Z | COULD NOT BE DETERMINED | 42 | True | True | Not started | True  -0.19 0 0 0 0 0 20 | Negative Float High 2 0 0  |  | 2017, 2018 | True |
| 357ae9be-8a60-81df-b41c-f9fce2a3839b | 905 | Import Group 2 - Core Transports | Development;PTM;Finance;PMO;Europe IT lead;OTC;TESTING | 1.1.1.7.2.3 | 1.1.1.7.2.3 | 2026-06-22 | 2026-06-22 | 2026-07-10 | 0 | 6 | 902 | 1 | 1 | 357ae9be-8a60-81ff-8013-e5ebd725cb91 | 357ae9be-8a60-8150-8481-d0c9baaeab5c | -298.02 | 0 | As Soon As Possible | Auto Scheduled | AMETEK SAP XXL Project Plan Replan MSP Task.csv | AMETEK SAP XXL Project Plan Replan MSP Task.csv__2f0764ccac__2026-05-05T02-44-15-662Z | Bijoykrishna Das |  |  |  | Not started | True  -298.02 0 1 0 0 0 18 | Negative Float Critical 2 0 0  |  |  |  |
| 357ae9be-8a60-81e0-871e-f8ac12899265 | 3006 | Simulate Load | Data | 1.2.3.2.8.3 | 1.2.3.2.8.3 | 2026-06-10 | 2026-06-10 | 2026-04-08 | 0 | 6 | 3003 | 1 | 1 | 357ae9be-8a60-81a8-9319-f276d3dadefe | 357ae9be-8a60-81f6-8f97-f94fe9c2fec3 | -140.52 | 0 | As Soon As Possible | Auto Scheduled | AMETEK SAP XXL Project Plan Replan MSP Task.csv | AMETEK SAP XXL Project Plan Replan MSP Task.csv__2f0764ccac__2026-05-05T02-44-15-662Z | Jyoti Nain | 63 | True |  | Not started | True  -140.52 0 1 0 0 0 26 | Negative Float Critical 2 0 0  |  |  |  |
| 357ae9be-8a60-81e0-9571-d9fe5e9c0dee | 4205 | Post Load Validation | Finance | 1.2.5.2.7.6 | 1.2.5.2.7.6 | 2026-09-30 | 2026-09-30 | 2026-04-09 | 0 | 6 | 4199 | 1 | 0 | 357ae9be-8a60-81cb-bacc-f37bc30b71f0 |  | -680.02 | 0 | As Soon As Possible | Auto Scheduled | AMETEK SAP XXL Project Plan Replan MSP Task.csv | AMETEK SAP XXL Project Plan Replan MSP Task.csv__2f0764ccac__2026-05-05T02-44-15-662Z | Kasey Hughes | 174 | True |  | Not started | True  -680.02 0 0 0 0 0 20 | Negative Float, Open Finish Critical 3 0 0  |  |  |  |
| 357ae9be-8a60-81e0-9d16-ea967b28bc5d | 4161 | PMO Authorization to Start Data Loads | PMO | 1.2.5.1 | 1.2.5.1 | 2026-09-24 | 2026-09-24 | 2026-04-06 | 0 | 4 | 4160 | 1 | 5 | 357ae9be-8a60-8147-a65f-ce9d9fe9d77f | 357ae9be-8a60-81bd-897f-e579420227f1, 357ae9be-8a60-81b1-8511-e3c1bcc62876, 357ae9be-8a60-819a-b8b0-d68206eb1a47, 357ae9be-8a60-81c2-89c4-f129b4ae5c54, 357ae9be-8a60-812c-9b9d-c71a25cc272f | -43561 | 0 | As Soon As Possible | Auto Scheduled | AMETEK SAP XXL Project Plan Replan MSP Task.csv | AMETEK SAP XXL Project Plan Replan MSP Task.csv__2f0764ccac__2026-05-05T02-44-15-662Z | Mark George | 171 | True |  | Not started | True  -43561 0 5 0 0 0 50 | Wrong Dependency, Negative Float Critical 5 1 0  |  |  |  |
| 357ae9be-8a60-81e0-a039-e14902b9cd1e | 268 | Extract the default Global Ruleset from SAP | (Unassigned) | 1.1.2.4.1 | 1.1.2.4.1 | 2025-09-02 | 2025-09-05 | 2025-09-05 | 100 | 5 | 267 | 0 | 1 |  | 357ae9be-8a60-8129-858a-d04f4c744c5c | 0 | 0 | Start No Earlier Than | Auto Scheduled | AMETEK SAP XXL Project Plan Replan MSP Task.csv | AMETEK SAP XXL Project Plan Replan MSP Task.csv__2f0764ccac__2026-05-05T02-44-15-662Z | COULD NOT BE DETERMINED |  |  |  | Done | True  0 0 0 0 0 0 14 | Low 0 0 0 True | 2025-09-02 |  |  |
| 357ae9be-8a60-81e0-aabc-e5662840c716 | 3023 | Post Load Validation | Finance | 1.2.3.2.10.6 | 1.2.3.2.10.6 | 2026-06-10 | 2026-06-10 | 2026-04-10 | 0 | 6 | 3017 | 1 | 0 | 357ae9be-8a60-81a1-80ad-db1b04513b88 |  | -136.52 | 0 | As Soon As Possible | Auto Scheduled | AMETEK SAP XXL Project Plan Replan MSP Task.csv | AMETEK SAP XXL Project Plan Replan MSP Task.csv__2f0764ccac__2026-05-05T02-44-15-662Z | Kasey Hughes | 61 | True |  | Not started | True  -136.52 0 0 0 0 0 20 | Negative Float, Open Finish Critical 3 0 0  |  |  |  |
| 357ae9be-8a60-81e0-af18-cfb648393790 | 2649 | Pre Load Validation | PTM | 1.2.4.2.35.2 | 1.2.4.2.35.2 | 2026-10-01 | 2026-10-01 | 2026-04-17 | 0 | 6 | 2647 | 1 | 1 | 357ae9be-8a60-8147-97ab-f4f156324632 | 357ae9be-8a60-81fc-bc9e-dddf2a7ce0ac | -41745 | 0 | As Soon As Possible | Auto Scheduled | AMETEK SAP XXL Project Plan Replan MSP Task.csv | AMETEK SAP XXL Project Plan Replan MSP Task.csv__2f0764ccac__2026-05-05T02-44-15-662Z | Brad Meseck | 167 | True |  | Not started | True  -41745 0 1 0 0 0 26 | Negative Float Critical 2 0 0  |  |  |  |
| 357ae9be-8a60-81e0-b010-d9729f6e0465 | 1175 | Post Load Validation | OTC | 1.2.1.57.2 | 1.2.1.57.2 | 2026-04-20 | 2026-04-20 | 2026-04-10 | 100 | 5 | 953 | 1 | 0 | 357ae9be-8a60-8136-8a5c-d9212533f4ce |  | 0 | 0 | Finish No Earlier Than | Auto Scheduled | AMETEK SAP XXL Project Plan Replan MSP Task.csv | AMETEK SAP XXL Project Plan Replan MSP Task.csv__2f0764ccac__2026-05-05T02-44-15-662Z | James VanRiper |  |  |  | Done | True  0 0 0 0 0 0 12 | Low 0 0 0 True | 2026-04-20 |  |  |
| 357ae9be-8a60-81e1-8f9e-dd0d8a504df8 | 1005 | Extract File(Will Extract from LFA1) | PTP | 1.2.1.21.1 | 1.2.1.21.1 | 2026-04-16 | 2026-04-16 | 2026-04-10 | 100 | 5 | 692 | 0 | 1 |  | 357ae9be-8a60-8128-86eb-e8a4f3d1c354 | 0 | 0 | Start No Earlier Than | Auto Scheduled | AMETEK SAP XXL Project Plan Replan MSP Task.csv | AMETEK SAP XXL Project Plan Replan MSP Task.csv__2f0764ccac__2026-05-05T02-44-15-662Z | Nevin Varkey |  |  |  | Done | True  0 0 1 1 399 0 23 | Wrong Successor High 3 0 1 True | 2026-04-16 |  |  |
| 357ae9be-8a60-81e1-94e0-c3772a9a7f3b | 1824 | Post Load Validation | PTP;OTC | 1.2.2.2.22.6 | 1.2.2.2.22.6 | 2026-05-19 | 2026-05-19 | 2026-04-14 | 0 | 6 | 1818 | 1 | 0 | 357ae9be-8a60-81cb-9ee1-f5e17e4f3e95 |  | -11.52 | 0 | As Soon As Possible | Auto Scheduled | AMETEK SAP XXL Project Plan Replan MSP Task.csv | AMETEK SAP XXL Project Plan Replan MSP Task.csv__2f0764ccac__2026-05-05T02-44-15-662Z | Nevin Varkey | 35 | True | True | Not started | True  -11.52 0 0 0 0 0 20 | Wrong Dependency, Negative Float, Open Finish Critical 6 1 0  |  |  |  |
| 357ae9be-8a60-81e1-957d-fec0a2d2316c | 4346 | Pre Load Validation | PTP | 1.2.5.2.29.2 | 1.2.5.2.29.2 | 2026-09-29 | 2026-09-29 | 2026-04-15 | 0 | 6 | 4344 | 1 | 1 | 357ae9be-8a60-81d5-8abf-da999b2142bb | 357ae9be-8a60-8114-ba70-d652a823b48b | -42736 | 0 | As Soon As Possible | Auto Scheduled | AMETEK SAP XXL Project Plan Replan MSP Task.csv | AMETEK SAP XXL Project Plan Replan MSP Task.csv__2f0764ccac__2026-05-05T02-44-15-662Z | Nevin Varkey | 167 | True |  | Not started | True  -42736 0 1 0 0 0 26 | Negative Float Critical 2 0 0  |  |  |  |
| 357ae9be-8a60-81e1-9d56-f9d53d29ff98 | 2719 | Load | PTP | 1.2.4.2.51.2 | 1.2.4.2.51.2 | 2026-10-02 | 2026-10-02 | 2026-04-13 | 0 | 6 | 2717 | 1 | 1 | 357ae9be-8a60-81a2-8ca5-d23c802c0264 | 357ae9be-8a60-8125-8286-d7af3f5eeee5 | -700.75 | 0 | Finish No Earlier Than | Auto Scheduled | AMETEK SAP XXL Project Plan Replan MSP Task.csv | AMETEK SAP XXL Project Plan Replan MSP Task.csv__2f0764ccac__2026-05-05T02-44-15-662Z | Nevin Varkey | 172 | True |  | Not started | True  -700.75 0 1 1 542 0 31 | Wrong Dependency, Wrong Successor, Negative Float Critical 8 1 1 True | 2026-04-17 |  |  |

| id | uid | name | workstream | outlineNumber | wbs | start | finish | baselineFinish | pct | outlineLevel | parentUid | predCount | sucCount | predIds | sucIds | totalSlackDaysRaw | freeSlackDaysRaw | constraintType | taskMode | mspSourceFile | mspImportVersion | assignedTo | slipDays | isSlipped | isDue14 | status | cpm | scheduleQuality | constraintDate | childUids | isSummary | isOverdueStart |
| --- | --- | --- | --- | --- | --- | --- | --- | --- | --- | --- | --- | --- | --- | --- | --- | --- | --- | --- | --- | --- | --- | --- | --- | --- | --- | --- | --- | --- | --- | --- | --- | --- |
| 357ae9be-8a60-81e1-a114-f1cc04c45ab8 | 1811 | Error and Defect Mitigation | PTP | 1.2.2.2.20.4 | 1.2.2.2.20.4 | 2026-05-18 | 2026-05-18 | 2026-04-13 | 0 | 6 | 1807 | 1 | 0 | 357ae9be-8a60-8127-9dd9-eb57ce65bb26 |  | -5.52 | 0 | As Soon As Possible | Auto Scheduled | AMETEK SAP XXL Project Plan Replan MSP Task.csv | AMETEK SAP XXL Project Plan Replan MSP Task.csv__2f0764ccac__2026-05-05T02-44-15-662Z | Nevin Varkey | 35 | True | True | Not started | True  -5.52 0 0 0 0 0 20 | Wrong Dependency, Negative Float, Open Finish High 6 1 0  |  |  |  |  |
| 357ae9be-8a60-81e1-b398-e0c34ce1a023 | 1782 | OTC_CM23_Customer_Hierarchy | OTC | 1.2.2.2.16 | 1.2.2.2.16 | 2026-05-25 | 2026-05-25 | 2026-04-10 | 0 | 5 | 2800 | 0 | 0 |  |  | -5.44 | 0 | As Soon As Possible | Auto Scheduled | AMETEK SAP XXL Project Plan Replan MSP Task.csv | AMETEK SAP XXL Project Plan Replan MSP Task.csv__2f0764ccac__2026-05-05T02-44-15-662Z | Anitha Jothi | 45 | True |  | Not started | True  -5.44 0 0 0 0 0 20 | Negative Float High 2 0 0  |  | 1785, 1784, 1783 | True |  |
| 357ae9be-8a60-81e1-bb8c-eb223e9a2b07 | 4464 | Error and Defect Mitigation | Finance | 1.2.5.2.52.4 | 1.2.5.2.52.4 | 2026-09-30 | 2026-10-02 | 2026-04-10 | 0 | 6 | 4460 | 1 | 1 | 357ae9be-8a60-81ad-97b0-c0d0235bb849 | 357ae9be-8a60-8100-85d1-eab373d86bef | -694.52 | 0 | Finish No Earlier Than | Auto Scheduled | AMETEK SAP XXL Project Plan Replan MSP Task.csv | AMETEK SAP XXL Project Plan Replan MSP Task.csv__2f0764ccac__2026-05-05T02-44-15-662Z | Kasey Hughes | 175 | True |  | Not started | True  -694.52 0 1 0 0 0 26 | Negative Float Critical 2 0 0 True | 2026-04-17 |  |  |  |
| 357ae9be-8a60-81e1-bf74-c4732c9e6224 | 2607 | Pre Load Validation | PTP | 1.2.4.2.29.2 | 1.2.4.2.29.2 | 2026-09-29 | 2026-09-29 | 2026-04-15 | 0 | 6 | 2605 | 1 | 1 | 357ae9be-8a60-8126-8130-c27f22dfc1d9 | 357ae9be-8a60-8176-a0fd-c38e449f8c7d | -42735 | 0 | As Soon As Possible | Auto Scheduled | AMETEK SAP XXL Project Plan Replan MSP Task.csv | AMETEK SAP XXL Project Plan Replan MSP Task.csv__2f0764ccac__2026-05-05T02-44-15-662Z | Nevin Varkey | 167 | True |  | Not started | True  -42735 0 1 0 0 0 26 | Negative Float Critical 2 0 0  |  |  |  |  |
| 357ae9be-8a60-81e2-809c-df100912a844 | 232 | Verify Role Mapping Complete | Training | 1.4.1.1.1 | 1.4.1.1.1 | 2026-05-01 | 2026-07-31 | 2026-08-03 | 46 | 5 | 216 | 0 | 2 |  | 357ae9be-8a60-81d3-9b0d-f6bfadfdb00a, 357ae9be-8a60-8129-9ac6-e84090f66874 | 71 | 0 | Finish No Earlier Than | Auto Scheduled | AMETEK SAP XXL Project Plan Replan MSP Task.csv | AMETEK SAP XXL Project Plan Replan MSP Task.csv__2f0764ccac__2026-05-05T02-44-15-662Z | Karen Zalnis |  |  |  | In progress | True  71 0 2 2 256 0 29 | Open Start Medium 1 0 0 True | 2026-07-31 |  |  |  |
| 357ae9be-8a60-81e2-8342-c839241aac90 | 854 | Technical Transports / BP Setup | Basis | 1.1.1.5.1.3 | 1.1.1.5.1.3 | 2026-04-28 | 2026-04-28 | 2026-05-12 | 100 | 6 | 3340 | 1 | 1 | 357ae9be-8a60-8172-ba47-ecdb909b1f4a | 357ae9be-8a60-8197-ae77-fb4784875d35 | 0 | 0 | As Soon As Possible | Auto Scheduled | AMETEK SAP XXL Project Plan Replan MSP Task.csv | AMETEK SAP XXL Project Plan Replan MSP Task.csv__2f0764ccac__2026-05-05T02-44-15-662Z | Lokchetan Meghavath |  |  |  | Done | True  0 0 1 0 0 0 18 | Low 0 0 0  |  |  |  |  |
| 357ae9be-8a60-81e2-8a1c-fd0b66a30779 | 4425 | Run ALE Transaction to QS5 from DS4 130 | PTM | 1.2.5.2.45.1 | 1.2.5.2.45.1 | 2026-09-29 | 2026-10-01 | 2026-04-16 | 0 | 6 | 4424 | 1 | 1 | 357ae9be-8a60-8192-b131-f2118b353511 | 357ae9be-8a60-812d-92c7-c949984a9066 | -688.02 | 0 | Finish No Earlier Than | Auto Scheduled | AMETEK SAP XXL Project Plan Replan MSP Task.csv | AMETEK SAP XXL Project Plan Replan MSP Task.csv__2f0764ccac__2026-05-05T02-44-15-662Z | Eric Heisler | 168 | True |  | Not started | True  -688.02 0 1 0 0 0 26 | Negative Float Critical 2 0 0 True | 2026-04-17 |  |  |  |
| 357ae9be-8a60-81e2-9cd5-ce87e1a6aaa0 | 1753 | Post Load Validation | Finance | 1.2.2.2.11.3 | 1.2.2.2.11.3 | 2026-05-22 | 2026-05-25 | 2026-04-15 | 0 | 6 | 1750 | 1 | 0 | 357ae9be-8a60-813c-a514-f4b73a3a715d |  | -38.52 | 0 | Start No Earlier Than | Auto Scheduled | AMETEK SAP XXL Project Plan Replan MSP Task.csv | AMETEK SAP XXL Project Plan Replan MSP Task.csv__2f0764ccac__2026-05-05T02-44-15-662Z | Kasey Hughes | 40 | True |  | Not started | True  -38.52 0 0 0 0 0 20 | Negative Float, Open Finish Critical 3 0 0 True | 2026-04-17 |  |  |  |
| 357ae9be-8a60-81e2-a0b5-ebbf0741e05a | 3149 | Extract File | Data | 1.2.3.2.30.1 | 1.2.3.2.30.1 | 2026-06-11 | 2026-06-11 | 2026-04-16 | 0 | 6 | 3148 | 1 | 1 | 357ae9be-8a60-81aa-a8c5-c061053b4155 | 357ae9be-8a60-81e4-ad85-f3407bb2ec98 | -182.39 | 0 | As Soon As Possible | Auto Scheduled | AMETEK SAP XXL Project Plan Replan MSP Task.csv | AMETEK SAP XXL Project Plan Replan MSP Task.csv__2f0764ccac__2026-05-05T02-44-15-662Z | Jyoti Nain | 56 | True |  | Not started | True  -182.39 0 1 1 430 0 31 | Wrong Dependency, Wrong Successor, Negative Float Critical 8 1 1  |  |  |  |  |
| 357ae9be-8a60-81e2-a260-eb6621be81ab | 773 | Pre Load Validation | Finance | 1.2.1.4.2 | 1.2.1.4.2 | 2026-04-07 | 2026-04-07 | 2026-04-07 | 100 | 5 | 740 | 1 | 1 | 357ae9be-8a60-812c-9462-efeb1a186968 | 357ae9be-8a60-81cd-8c09-e457da07ac98 | 0 | 0 | As Soon As Possible | Auto Scheduled | AMETEK SAP XXL Project Plan Replan MSP Task.csv | AMETEK SAP XXL Project Plan Replan MSP Task.csv__2f0764ccac__2026-05-05T02-44-15-662Z | Kasey Hughes |  |  |  | Done | True  0 0 1 0 0 0 18 | Low 0 0 0  |  |  |  |  |
| 357ae9be-8a60-81e2-a4c7-d24a905c596f | 1177 | Post Load Validation | OTC | 1.2.1.58.2 | 1.2.1.58.2 | 2026-04-17 | 2026-04-17 | 2026-04-15 | 100 | 5 | 954 | 1 | 0 | 357ae9be-8a60-8114-921e-fd9bb7f96ba4 |  | 0 | 0 | As Soon As Possible | Auto Scheduled | AMETEK SAP XXL Project Plan Replan MSP Task.csv | AMETEK SAP XXL Project Plan Replan MSP Task.csv__2f0764ccac__2026-05-05T02-44-15-662Z | James VanRiper |  |  |  | Done | True  0 0 0 0 0 0 12 | Wrong Dependency High 3 1 0  |  |  |  |  |
| 357ae9be-8a60-81e2-a8b0-f5938a03372d | 1138 | Post Load Validation | PTM | 1.2.1.55.6 | 1.2.1.55.6 | 2026-04-17 | 2026-04-17 | 2026-04-17 | 100 | 5 | 715 | 1 | 0 | 357ae9be-8a60-8145-8cfc-ffe1928bbe0d |  | 0 | 0 | As Soon As Possible | Auto Scheduled | AMETEK SAP XXL Project Plan Replan MSP Task.csv | AMETEK SAP XXL Project Plan Replan MSP Task.csv__2f0764ccac__2026-05-05T02-44-15-662Z | Brad Meseck |  |  |  | Done | True  0 0 0 0 0 0 12 | Low 0 0 0  |  |  |  |  |
| 357ae9be-8a60-81e2-acc3-f42d713bfa87 | 1158 | Run ALE Transaction to QS5 from DS4 130 | PTM | 1.2.1.41.1 | 1.2.1.41.1 | 2026-04-15 | 2026-04-16 | 2026-04-16 | 100 | 5 | 941 | 1 | 1 | 357ae9be-8a60-8102-9c7a-df91720f2329 | 357ae9be-8a60-8109-ac2b-f06010902d10 | 0 | 0 | As Soon As Possible | Auto Scheduled | AMETEK SAP XXL Project Plan Replan MSP Task.csv | AMETEK SAP XXL Project Plan Replan MSP Task.csv__2f0764ccac__2026-05-05T02-44-15-662Z | Eric Heisler |  |  |  | Done | True  0 0 1 0 0 0 18 | Wrong Dependency High 3 1 0  |  |  |  |  |
| 357ae9be-8a60-81e2-b5d8-f43a5c435973 | 3264 | PTM_CM50_Material Class | PTM | 1.2.3.2.53 | 1.2.3.2.53 | 2026-06-12 | 2026-06-16 | 2026-04-16 | 0 | 5 | 2959 | 0 | 0 |  |  | -20.85 | 0 | As Soon As Possible | Auto Scheduled | AMETEK SAP XXL Project Plan Replan MSP Task.csv | AMETEK SAP XXL Project Plan Replan MSP Task.csv__2f0764ccac__2026-05-05T02-44-15-662Z | Brad Meseck | 61 | True |  | Not started | True  -20.85 0 0 0 0 0 20 | Negative Float Critical 2 0 0  |  | 3265, 3266, 3267 | True |  |
| 357ae9be-8a60-81e2-bed3-e63bbf984ba6 | 3135 | Load File Staged and Posted "Ready" | PTP | 1.2.3.2.28.1 | 1.2.3.2.28.1 | 2026-06-11 | 2026-06-11 | 2026-04-15 | 0 | 6 | 3134 | 1 | 1 | 357ae9be-8a60-81e4-ad85-f3407bb2ec98 | 357ae9be-8a60-819b-8faa-dccad424e34d | -9256 | 0 | As Soon As Possible | Auto Scheduled | AMETEK SAP XXL Project Plan Replan MSP Task.csv | AMETEK SAP XXL Project Plan Replan MSP Task.csv__2f0764ccac__2026-05-05T02-44-15-662Z | Nevin Varkey | 57 | True |  | Not started | True  -9256 0 1 0 0 0 26 | Wrong Dependency, Negative Float Critical 5 1 0  |  |  |  |  |
| 357ae9be-8a60-81e3-82c8-c2c775229514 | 3284 | GTS - ECCN - Create | (Unassigned) | 1.2.3.2.58 | 1.2.3.2.58 | 2026-06-08 | 2026-06-09 | 2026-04-13 | 0 | 5 | 2959 | 0 | 0 |  |  | -16.06 | 0 | As Soon As Possible | Auto Scheduled | AMETEK SAP XXL Project Plan Replan MSP Task.csv | AMETEK SAP XXL Project Plan Replan MSP Task.csv__2f0764ccac__2026-05-05T02-44-15-662Z | COULD NOT BE DETERMINED | 57 | True |  | Not started | True  -16.06 0 0 0 0 0 20 | Negative Float Critical 2 0 0  |  | 3285, 3286 | True |  |
| 357ae9be-8a60-81e3-82d0-dd54bea173c6 | 2652 | Load | Data | 1.2.4.2.35.5 | 1.2.4.2.35.5 | 2026-10-01 | 2026-10-01 | 2026-04-20 | 0 | 6 | 2647 | 1 | 1 | 357ae9be-8a60-8167-981a-df6d505bf122 | 357ae9be-8a60-8187-a71f-cc08520b9433 | -695.75 | 0 | As Soon As Possible | Auto Scheduled | AMETEK SAP XXL Project Plan Replan MSP Task.csv | AMETEK SAP XXL Project Plan Replan MSP Task.csv__2f0764ccac__2026-05-05T02-44-15-662Z | Jyoti Nain | 164 | True |  | Not started | True  -695.75 0 1 0 0 0 26 | Negative Float Critical 2 0 0  |  |  |  |  |
| 357ae9be-8a60-81e3-8d5b-d5ee169b1253 | 4194 | Manual Configuration Activities in QS5 | (Unassigned) | 1.2.5.2.6 | 1.2.5.2.6 | 2026-09-24 | 2026-10-07 | 2026-04-15 | 0 | 5 | 4162 | 1 | 0 | 357ae9be-8a60-813c-b53e-d758eb3e8aaf |  | -89.13 | 0 | As Soon As Possible | Auto Scheduled | AMETEK SAP XXL Project Plan Replan MSP Task.csv | AMETEK SAP XXL Project Plan Replan MSP Task.csv__2f0764ccac__2026-05-05T02-44-15-662Z | COULD NOT BE DETERMINED | 175 | True |  | Not started | True  -89.13 0 0 0 0 0 20 | Wrong Dependency, Negative Float Critical 5 1 0  |  | 4196, 4198, 4197, 4195 | True |  |
| 357ae9be-8a60-81e3-8de4-e5ca3b591c9d | 4277 | PTP_CM27_Vendor Master | PTP | 1.2.5.2.19 | 1.2.5.2.19 | 2026-09-24 | 2026-10-02 | 2026-04-15 | 0 | 5 | 4162 | 0 | 0 |  |  | -90.75 | 0 | As Soon As Possible | Auto Scheduled | AMETEK SAP XXL Project Plan Replan MSP Task.csv | AMETEK SAP XXL Project Plan Replan MSP Task.csv__2f0764ccac__2026-05-05T02-44-15-662Z | Muniraju Surappachari | 170 | True |  | Not started | True  -90.75 0 0 0 0 0 20 | Negative Float Critical 2 0 0  |  | 4280, 4279, 4283, 4282, 4281, 4278 | True |  |
| 357ae9be-8a60-81e3-8f72-f65baa1143c6 | 4344 | PTP_CM28_Purchase_Info_Record Subcontracting and Consignment | PTP | 1.2.5.2.29 | 1.2.5.2.29 | 2026-09-29 | 2026-09-30 | 2026-04-16 | 0 | 5 | 4162 | 0 | 0 |  |  | -89.03 | 0 | As Soon As Possible | Auto Scheduled | AMETEK SAP XXL Project Plan Replan MSP Task.csv | AMETEK SAP XXL Project Plan Replan MSP Task.csv__2f0764ccac__2026-05-05T02-44-15-662Z | Muniraju Surappachari | 167 | True |  | Not started | True  -89.03 0 0 0 0 0 20 | Negative Float Critical 2 0 0  |  | 4347, 4349, 4348, 4345, 4350, 4346 | True |  |
| 357ae9be-8a60-81e3-9902-f87d6626678d | 655 | Best Practice / Country Validation | Basis | 1.1.1.4.6 | 1.1.1.4.6 | 2026-02-03 | 2026-02-03 | 2026-02-03 | 100 | 5 | 88 | 1 | 0 | 357ae9be-8a60-8199-b596-f4e3100aa72b |  | 0 | 0 | As Soon As Possible | Auto Scheduled | AMETEK SAP XXL Project Plan Replan MSP Task.csv | AMETEK SAP XXL Project Plan Replan MSP Task.csv__2f0764ccac__2026-05-05T02-44-15-662Z | Lokchetan Meghavath |  |  |  | Done | True  0 0 0 0 0 0 12 | Low 0 0 0  |  |  |  |  |
| 357ae9be-8a60-81e3-992f-c01cbcd7f276 | 1021 | Pre Load Validation | PTP;OTC | 1.2.1.25.2 | 1.2.1.25.2 | 2026-04-13 | 2026-04-14 | 2026-04-14 | 100 | 5 | 741 | 1 | 1 | 357ae9be-8a60-8108-8584-eeec48be6efb | 357ae9be-8a60-812c-90c1-fea025db6b85 | 0 | 0 | As Soon As Possible | Auto Scheduled | AMETEK SAP XXL Project Plan Replan MSP Task.csv | AMETEK SAP XXL Project Plan Replan MSP Task.csv__2f0764ccac__2026-05-05T02-44-15-662Z | Nevin Varkey |  |  |  | Done | True  0 0 1 0 0 1 18 | Wrong Dependency High 3 1 0  |  |  |  |  |
| 357ae9be-8a60-81e3-a4a5-f9d10c16769a | 899 | Business Functions Validation | Basis | 1.1.1.7.1.13 | 1.1.1.7.1.13 | 2026-06-16 | 2026-06-16 | 2026-07-08 | 0 | 6 | 3338 | 1 | 0 | 357ae9be-8a60-81eb-8d67-d6df52782048 |  | -36.25 | 0 | Start No Earlier Than | Auto Scheduled | AMETEK SAP XXL Project Plan Replan MSP Task.csv | AMETEK SAP XXL Project Plan Replan MSP Task.csv__2f0764ccac__2026-05-05T02-44-15-662Z | Lokchetan Meghavath |  |  |  | Not started | True  -36.25 0 0 0 0 0 12 | Negative Float, Open Finish Critical 3 0 0 True | 2026-01-05 |  |  |  |
| 357ae9be-8a60-81e3-a5fe-efe30551231a | 2050 | Load | Data | 1.2.2.2.68.5 | 1.2.2.2.68.5 | 2026-05-18 | 2026-05-19 | 2026-04-17 | 0 | 6 | 2045 | 1 | 1 | 357ae9be-8a60-8109-a714-c4f93295c3df | 357ae9be-8a60-8104-a9e1-c0c8b58732fd | -9.52 | 0 | As Soon As Possible | Auto Scheduled | AMETEK SAP XXL Project Plan Replan MSP Task.csv | AMETEK SAP XXL Project Plan Replan MSP Task.csv__2f0764ccac__2026-05-05T02-44-15-662Z | Jyoti Nain | 32 | True | True | Not started | True  -9.52 0 1 0 0 0 26 | Negative Float High 2 0 0  |  |  |  |  |
| 357ae9be-8a60-81e3-b4fa-f1222ef8b771 | 2945 | Inventory | (Unassigned) | 1.2.2.4.1 | 1.2.2.4.1 | 2026-10-08 | 2026-10-09 | 2026-10-09 | 0 | 5 | 2801 | 3 | 5 | 357ae9be-8a60-8132-b9d5-c57d0f14703b, 357ae9be-8a60-8186-82d7-dea6d97c0abb, 357ae9be-8a60-81d2-b413-e8ebd9ac365c | 357ae9be-8a60-81c9-a2dd-f1b3c32bc6de, 357ae9be-8a60-817c-b996-df6f26f27ab2, 357ae9be-8a60-8146-b22d-d23f509a3937, 357ae9be-8a60-8165-aae3-ebf2a676ec29, 357ae9be-8a60-81d2-9c7d-de1e662b63dd | -726 | 0 | As Soon As Possible | Auto Scheduled | AMETEK SAP XXL Project Plan Replan MSP Task.csv | AMETEK SAP XXL Project Plan Replan MSP Task.csv__2f0764ccac__2026-05-05T02-44-15-662Z | COULD NOT BE DETERMINED |  |  |  | Not started | True  -726 0 5 5 1336 0 47 | Wrong Dependency, Wrong Successor, Negative Float Critical 8 1 5  |  |  |  |  |
| 357ae9be-8a60-81e3-bc89-e0aa99f84581 | 2767 | Load | OTC | 1.2.4.2.64.1 | 1.2.4.2.64.1 | 2026-10-02 | 2026-10-02 | 2025-03-13 | 0 | 6 | 2766 | 1 | 1 | 357ae9be-8a60-8133-b814-d3222e250782 | 357ae9be-8a60-81d7-83dd-f92ae69245a3 | -691 | 0 | As Soon As Possible | Auto Scheduled | AMETEK SAP XXL Project Plan Replan MSP Task.csv | AMETEK SAP XXL Project Plan Replan MSP Task.csv__2f0764ccac__2026-05-05T02-44-15-662Z | James VanRiper | 568 | True |  | Not started | True  -691 0 1 0 0 0 26 | Wrong Dependency, Negative Float Critical 5 1 0  |  |  |  |  |
| 357ae9be-8a60-81e3-bcec-f711149bf8bc | 1952 | Pre Load Validation | PTM | 1.2.2.2.46.2 | 1.2.2.2.46.2 | 2026-05-21 | 2026-05-21 | 2026-04-15 | 0 | 6 | 1950 | 1 | 1 | 357ae9be-8a60-8141-aa0a-cd9e937e20c4 | 357ae9be-8a60-8133-a4b7-d8780793bdb3 | -4036 | 0 | As Soon As Possible | Auto Scheduled | AMETEK SAP XXL Project Plan Replan MSP Task.csv | AMETEK SAP XXL Project Plan Replan MSP Task.csv__2f0764ccac__2026-05-05T02-44-15-662Z | Eric Heisler | 36 | True |  | Not started | True  -4036 0 1 0 0 0 26 | Negative Float Critical 2 0 0  |  |  |  |  |
| 357ae9be-8a60-81e3-bd35-e40878ae49c2 | 2623 | Error and Defect Mitigation | PTM | 1.2.4.2.31.4 | 1.2.4.2.31.4 | 2026-10-02 | 2026-10-02 | 2026-04-17 | 0 | 6 | 2619 | 1 | 1 | 357ae9be-8a60-817a-bd23-fe36762be0f9 | 357ae9be-8a60-81d1-94a2-fbf84a6568f7 | -700.38 | 0 | As Soon As Possible | Auto Scheduled | AMETEK SAP XXL Project Plan Replan MSP Task.csv | AMETEK SAP XXL Project Plan Replan MSP Task.csv__2f0764ccac__2026-05-05T02-44-15-662Z | Brad Meseck | 168 | True |  | Not started | True  -700.38 0 1 0 0 0 26 | Negative Float Critical 2 0 0  |  |  |  |  |
| 357ae9be-8a60-81e4-9956-c7e4b2cf7dbe | 1220 | Close Client | Basis | 1.2.1.7.3 | 1.2.1.7.3 | 2026-04-06 | 2026-04-06 | 2026-04-06 | 100 | 5 | 881 | 0 | 0 |  |  | 0 | 0 | As Soon As Possible | Auto Scheduled | AMETEK SAP XXL Project Plan Replan MSP Task.csv | AMETEK SAP XXL Project Plan Replan MSP Task.csv__2f0764ccac__2026-05-05T02-44-15-662Z | Lokchetan Meghavath |  |  |  | Done | True  0 0 0 0 0 0 12 | Low 0 0 0  |  |  |  |  |
| 357ae9be-8a60-81e4-9de4-e6e7c17c4453 | 2505 | Pre Load Validation | OTC | 1.2.4.2.14.2 | 1.2.4.2.14.2 | 2026-09-29 | 2026-09-29 | 2026-04-09 | 0 | 6 | 2503 | 1 | 0 | 357ae9be-8a60-8100-bcdd-c12830fbb159 |  | -40260 | 0 | As Soon As Possible | Auto Scheduled | AMETEK SAP XXL Project Plan Replan MSP Task.csv | AMETEK SAP XXL Project Plan Replan MSP Task.csv__2f0764ccac__2026-05-05T02-44-15-662Z | Ric Haraida | 173 | True |  | Not started | True  -40260 0 0 0 0 0 20 | Negative Float, Open Finish Critical 3 0 0  |  |  |  |  |
| 357ae9be-8a60-81e4-ad42-e59d78d272c0 | 3217 | Post Load Validation | PTM | 1.2.3.2.43.2 | 1.2.3.2.43.2 | 2026-06-12 | 2026-06-12 | 2026-04-17 | 0 | 6 | 3215 | 1 | 1 | 357ae9be-8a60-8147-b023-d81f0f1ee1af | 357ae9be-8a60-8143-a2d3-eb17388481d4 | -160.27 | 0 | As Soon As Possible | Auto Scheduled | AMETEK SAP XXL Project Plan Replan MSP Task.csv | AMETEK SAP XXL Project Plan Replan MSP Task.csv__2f0764ccac__2026-05-05T02-44-15-662Z | Eric Heisler | 56 | True |  | Not started | True  -160.27 0 1 0 0 0 26 | Negative Float Critical 2 0 0  |  |  |  |  |
| 357ae9be-8a60-81e4-ad85-f3407bb2ec98 | 31 | In Draft | (Unassigned) | 1.1.2.9.1.2.1 | 1.1.2.9.1.2.1 | 2025-04-07 | 2025-06-27 | 2025-06-27 | 100 | 7 | 26 | 0 | 0 |  |  | 0 | 0 | Finish No Earlier Than | Auto Scheduled | AMETEK SAP XXL Project Plan Replan MSP Task.csv | AMETEK SAP XXL Project Plan Replan MSP Task.csv__2f0764ccac__2026-05-05T02-44-15-662Z | COULD NOT BE DETERMINED |  |  |  | Done | True  0 0 0 0 0 0 12 | Low 0 0 0 True | 2025-06-27 |  |  |  |
| 357ae9be-8a60-81e4-b73d-c606aa6b3cc5 | 1887 | Post Load Validation | PTM | 1.2.2.2.31.6 | 1.2.2.2.31.6 | 2026-05-26 | 2026-05-26 | 2026-04-20 | 0 | 6 | 1881 | 1 | 1 | 357ae9be-8a60-81c7-9518-f825e8f2772a | 357ae9be-8a60-8125-8b44-feff7c2c8e69 | -62.39 | 0 | As Soon As Possible | Auto Scheduled | AMETEK SAP XXL Project Plan Replan MSP Task.csv | AMETEK SAP XXL Project Plan Replan MSP Task.csv__2f0764ccac__2026-05-05T02-44-15-662Z | Brad Meseck | 36 | True |  | Not started | True  -62.39 0 1 0 0 0 26 | Negative Float Critical 2 0 0  |  |  |  |  |
| 357ae9be-8a60-81e4-b98f-e3a1bf01b4fb | 1714 | Error and Defect Mitigation | Finance | 1.2.2.2.5.4 | 1.2.2.2.5.4 | 2026-05-20 | 2026-05-20 | 2026-04-08 | 0 | 6 | 1710 | 1 | 1 | 357ae9be-8a60-8103-9794-dcd4ba73d36f | 357ae9be-8a60-81fe-ab7c-f673703dc26f | -63.52 | 0 | As Soon As Possible | Auto Scheduled | AMETEK SAP XXL Project Plan Replan MSP Task.csv | AMETEK SAP XXL Project Plan Replan MSP Task.csv__2f0764ccac__2026-05-05T02-44-15-662Z | Kasey Hughes | 42 | True | True | Not started | True  -63.52 0 1 0 0 0 26 | Negative Float Critical 2 0 0  |  |  |  |  |
| 357ae9be-8a60-81e5-814b-f16d9b43c2fe | 2786 | Simulate Load | Data | 1.2.4.2.68.3 | 1.2.4.2.68.3 | 2026-09-24 | 2026-09-24 | 2026-04-16 | 0 | 6 | 2783 | 1 | 1 | 357ae9be-8a60-8186-afb1-ef3bb21635f1 | 357ae9be-8a60-81af-8eaf-f5df41c9049a | -651.5 | 0 | As Soon As Possible | Auto Scheduled | AMETEK SAP XXL Project Plan Replan MSP Task.csv | AMETEK SAP XXL Project Plan Replan MSP Task.csv__2f0764ccac__2026-05-05T02-44-15-662Z | Jyoti Nain | 161 | True |  | Not started | True  -651.5 0 1 0 0 0 26 | Negative Float Critical 2 0 0  |  |  |  |  |
| 357ae9be-8a60-81e5-8162-f2c28b788ce5 | 4168 | Manual File Staged and Posted "Ready" | Finance | 1.2.5.2.2.1 | 1.2.5.2.2.1 | 2026-09-24 | 2026-09-24 | 2026-04-06 | 0 | 6 | 4167 | 1 | 1 | 357ae9be-8a60-81dc-b681-eb8ad24cbc70 | 357ae9be-8a60-8144-a1fe-ebe4c0c5ef15 | -718.52 | 0 | Start No Earlier Than | Auto Scheduled | AMETEK SAP XXL Project Plan Replan MSP Task.csv | AMETEK SAP XXL Project Plan Replan MSP Task.csv__2f0764ccac__2026-05-05T02-44-15-662Z | Kasey Hughes | 171 | True |  | Not started | True  -718.52 0 1 0 0 0 26 | Negative Float Critical 2 0 0 True | 2026-04-06 |  |  |  |
| 357ae9be-8a60-81e5-98db-f48586695e48 | 4411 | Post Load Validation | PTM | 1.2.5.2.40.2 | 1.2.5.2.40.2 | 2026-09-29 | 2026-09-29 | 2026-04-16 | 0 | 6 | 4409 | 1 | 0 | 357ae9be-8a60-81d5-95df-de9e9e253eea |  | -672.27 | 0 | As Soon As Possible | Auto Scheduled | AMETEK SAP XXL Project Plan Replan MSP Task.csv | AMETEK SAP XXL Project Plan Replan MSP Task.csv__2f0764ccac__2026-05-05T02-44-15-662Z | Eric Heisler | 166 | True |  | Not started | True  -672.27 0 0 0 0 0 20 | Negative Float, Open Finish Critical 3 0 0  |  |  |  |  |
| 357ae9be-8a60-81e5-994b-f3a88ec32bb8 | 2052 | ITC2 Mock Data Loads Complete | PMO | 1.2.2.5 | 1.2.2.5 | 2026-10-12 | 2026-10-12 | 2026-04-21 | 0 | 4 | 2809 | 1 | 1 | 357ae9be-8a60-81c9-8f77-ef73e3057ac4 | 357ae9be-8a60-810a-9fa2-cf71f3578f1b | -43560 | 0 | As Soon As Possible | Auto Scheduled | AMETEK SAP XXL Project Plan Replan MSP Task.csv | AMETEK SAP XXL Project Plan Replan MSP Task.csv__2f0764ccac__2026-05-05T02-44-15-662Z | Mark George | 174 | True |  | Not started | True  -43560 0 1 0 0 0 26 | Negative Float Critical 2 0 0  |  |  |  |  |
| 357ae9be-8a60-81e5-9b08-dcad667bad89 | 2718 | Manual File Staged and Posted "Ready" | PTP | 1.2.4.2.51.1 | 1.2.4.2.51.1 | 2026-09-25 | 2026-09-25 | 2026-04-14 | 0 | 6 | 2717 | 1 | 0 | 357ae9be-8a60-8194-8b31-ebdfccfeb50e |  | -39060 | 0 | Start No Earlier Than | Auto Scheduled | AMETEK SAP XXL Project Plan Replan MSP Task.csv | AMETEK SAP XXL Project Plan Replan MSP Task.csv__2f0764ccac__2026-05-05T02-44-15-662Z | Nevin Varkey | 164 | True |  | Not started | True  -39060 0 0 0 0 0 20 | Wrong Dependency, Negative Float, Open Finish Critical 6 1 0 True | 2026-04-17 |  |  |  |
| 357ae9be-8a60-81e5-9b3f-c5ad24e97b87 | 4311 | Pre Load Validation | PTP;OTC | 1.2.5.2.24.2 | 1.2.5.2.24.2 | 2026-09-24 | 2026-09-25 | 2026-04-14 | 0 | 6 | 4309 | 1 | 1 | 357ae9be-8a60-814a-b11f-fa49bd036ce8 | 357ae9be-8a60-81c9-b926-d6f48350f144 | -726.02 | 0 | As Soon As Possible | Auto Scheduled | AMETEK SAP XXL Project Plan Replan MSP Task.csv | AMETEK SAP XXL Project Plan Replan MSP Task.csv__2f0764ccac__2026-05-05T02-44-15-662Z | Nevin Varkey | 164 | True |  | Not started | True  -726.02 0 1 0 0 0 26 | Negative Float Critical 2 0 0  |  |  |  |  |
| 357ae9be-8a60-81e5-9b57-dd6babfdd484 | 4534 | Open AP | (Unassigned) | 1.2.5.4.3 | 1.2.5.4.3 | 2026-10-02 | 2026-10-02 | 2026-10-02 | 0 | 5 | 4531 | 1 | 1 | 357ae9be-8a60-8175-84a0-f6ecf6feb7e8 | 357ae9be-8a60-81e5-a3df-f89f8b3fe98a | -280.77 | 0 | As Soon As Possible | Auto Scheduled | AMETEK SAP XXL Project Plan Replan MSP Task.csv | AMETEK SAP XXL Project Plan Replan MSP Task.csv__2f0764ccac__2026-05-05T02-44-15-662Z | COULD NOT BE DETERMINED |  |  |  | Not started | True  -280.77 0 1 0 0 0 18 | Negative Float Critical 2 0 0  |  |  |  |  |
| 357ae9be-8a60-81e5-9fc0-d1e94d3624fd | 4323 | PTP_CM26_Material_Master - KMAT - Configurable Materials | PTP | 1.2.5.2.26 | 1.2.5.2.26 | 2026-09-25 | 2026-09-29 | 2026-04-15 | 0 | 5 | 4162 | 0 | 2 |  | 357ae9be-8a60-815f-a360-fe130b15678f, 357ae9be-8a60-8145-ae7e-d6e4066a7551 | -90.47 | 0 | As Soon As Possible | Auto Scheduled | AMETEK SAP XXL Project Plan Replan MSP Task.csv | AMETEK SAP XXL Project Plan Replan MSP Task.csv__2f0764ccac__2026-05-05T02-44-15-662Z | Muniraju Surappachari | 167 | True |  | Not started | True  -90.47 0 2 0 0 0 32 | Negative Float Critical 2 0 0  |  | 4326, 4329, 4328, 4325, 4324, 4327 | True |  |
| 357ae9be-8a60-81e5-a3df-f89f8b3fe98a | 4535 | Bank and Cash | (Unassigned) | 1.2.5.4.4 | 1.2.5.4.4 | 2026-10-02 | 2026-10-05 | 2026-10-05 | 0 | 5 | 4531 | 1 | 0 | 357ae9be-8a60-81e5-9b57-dd6babfdd484 |  | -280.77 | 0 | As Soon As Possible | Auto Scheduled | AMETEK SAP XXL Project Plan Replan MSP Task.csv | AMETEK SAP XXL Project Plan Replan MSP Task.csv__2f0764ccac__2026-05-05T02-44-15-662Z | COULD NOT BE DETERMINED |  |  |  | Not started | True  -280.77 0 0 0 0 0 12 | Negative Float, Open Finish Critical 3 0 0  |  |  |  |  |
| 357ae9be-8a60-81e5-ae82-c5cd60df3771 | 831 | Manual Activities Group 3 | Development;PTM;Finance;PMO;Europe IT lead;OTC;TESTING | 1.1.1.4.18.6 | 1.1.1.4.18.6 | 2026-03-25 | 2026-03-25 | 2026-03-25 | 100 | 6 | 647 | 1 | 0 | 357ae9be-8a60-813c-ba12-fb438770d64d |  | 0 | 0 | As Soon As Possible | Auto Scheduled | AMETEK SAP XXL Project Plan Replan MSP Task.csv | AMETEK SAP XXL Project Plan Replan MSP Task.csv__2f0764ccac__2026-05-05T02-44-15-662Z | Bijoykrishna Das |  |  |  | Done | True  0 0 0 0 0 0 12 | Low 0 0 0  |  |  |  |  |
| 357ae9be-8a60-81e6-9517-dc50430e6dc2 | 2566 | Simulate Load | Data | 1.2.4.2.23.3 | 1.2.4.2.23.3 | 2026-09-24 | 2026-09-24 | 2026-04-13 | 0 | 6 | 2563 | 1 | 1 | 357ae9be-8a60-8180-bf92-f7073842d3c6 | 357ae9be-8a60-819e-a720-effa7bff49c2 | -650 | 0 | As Soon As Possible | Auto Scheduled | AMETEK SAP XXL Project Plan Replan MSP Task.csv | AMETEK SAP XXL Project Plan Replan MSP Task.csv__2f0764ccac__2026-05-05T02-44-15-662Z | Jyoti Nain | 164 | True |  | Not started | True  -650 0 1 0 0 0 26 | Negative Float Critical 2 0 0  |  |  |  |  |
| 357ae9be-8a60-81e6-a029-e1635939f13f | 4165 | Load | Finance | 1.2.5.2.1.2 | 1.2.5.2.1.2 | 2026-09-24 | 2026-09-24 | 2026-04-06 | 0 | 6 | 4163 | 1 | 1 | 357ae9be-8a60-81bd-897f-e579420227f1 | 357ae9be-8a60-81dc-b681-eb8ad24cbc70 | -718.52 | 0 | As Soon As Possible | Auto Scheduled | AMETEK SAP XXL Project Plan Replan MSP Task.csv | AMETEK SAP XXL Project Plan Replan MSP Task.csv__2f0764ccac__2026-05-05T02-44-15-662Z | Kasey Hughes | 171 | True |  | Not started | True  -718.52 0 1 0 0 0 26 | Negative Float Critical 2 0 0  |  |  |  |  |
| 357ae9be-8a60-81e6-a99d-c3f6fd22a481 | 1047 | Error and Defect Mitigation | PTP | 1.2.1.29.4 | 1.2.1.29.4 | 2026-04-16 | 2026-04-16 | 2026-04-16 | 100 | 5 | 936 | 1 | 1 | 357ae9be-8a60-813d-9938-fa516e5f46b5 | 357ae9be-8a60-81dc-b77b-ff004ab7e813 | 0 | 0 | As Soon As Possible | Auto Scheduled | AMETEK SAP XXL Project Plan Replan MSP Task.csv | AMETEK SAP XXL Project Plan Replan MSP Task.csv__2f0764ccac__2026-05-05T02-44-15-662Z | Nevin Varkey |  |  |  | Done | True  0 0 1 0 0 0 18 | Low 0 0 0  |  |  |  |  |
| 357ae9be-8a60-81e7-8379-c71bf14618d7 | 653 | Business Functions Validation | Basis | 1.1.1.4.15 | 1.1.1.4.15 | 2026-02-09 | 2026-02-09 | 2026-02-09 | 100 | 5 | 88 | 1 | 0 | 357ae9be-8a60-816b-a234-f41a5d72c961 |  | 0 | 0 | Start No Earlier Than | Auto Scheduled | AMETEK SAP XXL Project Plan Replan MSP Task.csv | AMETEK SAP XXL Project Plan Replan MSP Task.csv__2f0764ccac__2026-05-05T02-44-15-662Z | Lokchetan Meghavath |  |  |  | Done | True  0 0 0 0 0 0 12 | Low 0 0 0 True | 2026-01-05 |  |  |  |
| 357ae9be-8a60-81e7-850d-d75b77df227a | 3047 | Update number range BP02 from Internal to External | OTC | 1.2.3.2.14.8 | 1.2.3.2.14.8 | 2026-06-11 | 2026-06-11 | 2026-04-09 | 0 | 6 | 3039 | 1 | 1 | 357ae9be-8a60-8139-8a01-e6689d0954af | 357ae9be-8a60-814c-9142-d40bd9ab9779 | -8986 | 0 | As Soon As Possible | Auto Scheduled | AMETEK SAP XXL Project Plan Replan MSP Task.csv | AMETEK SAP XXL Project Plan Replan MSP Task.csv__2f0764ccac__2026-05-05T02-44-15-662Z | Ric Haraida | 63 | True |  | Not started | True  -8986 0 1 0 0 0 26 | Negative Float Critical 2 0 0  |  |  |  |  |
| 357ae9be-8a60-81e7-8515-ef804046d8c1 | 2996 | RTR_CM09_Activity_Type | (Unassigned) | 1.2.3.2.7 | 1.2.3.2.7 | 2026-06-11 | 2026-06-15 | 2026-04-09 | 0 | 5 | 2959 | 0 | 0 |  |  | -19.75 | 0 | As Soon As Possible | Auto Scheduled | AMETEK SAP XXL Project Plan Replan MSP Task.csv | AMETEK SAP XXL Project Plan Replan MSP Task.csv__2f0764ccac__2026-05-05T02-44-15-662Z | COULD NOT BE DETERMINED | 67 | True |  | Not started | True  -19.75 0 0 0 0 0 20 | Negative Float Critical 2 0 0  |  | 2998, 3002, 2999, 3000, 2997, 3001 | True |  |
| 357ae9be-8a60-81e7-8ef6-de5f6ef7ada0 | 1150 | Post Load Validation | Finance | 1.2.1.69.6 | 1.2.1.69.6 | 2026-04-20 | 2026-04-21 | 2026-04-17 | 100 | 5 | 754 | 1 | 0 | 357ae9be-8a60-8135-8b8a-edb3e6f48b50 |  | 0 | 0 | As Soon As Possible | Auto Scheduled | AMETEK SAP XXL Project Plan Replan MSP Task.csv | AMETEK SAP XXL Project Plan Replan MSP Task.csv__2f0764ccac__2026-05-05T02-44-15-662Z | Kasey Hughes |  |  |  | Done | True  0 0 0 0 0 0 12 | Low 0 0 0  |  |  |  |  |
| 357ae9be-8a60-81e7-ac87-db57798c7df2 | 4423 | Post Load Validation | PTM | 1.2.5.2.44.2 | 1.2.5.2.44.2 | 2026-09-30 | 2026-10-01 | 2026-04-17 | 0 | 6 | 4421 | 1 | 0 | 357ae9be-8a60-81ef-92b2-e706ea5c2475 |  | -682.27 | 0 | As Soon As Possible | Auto Scheduled | AMETEK SAP XXL Project Plan Replan MSP Task.csv | AMETEK SAP XXL Project Plan Replan MSP Task.csv__2f0764ccac__2026-05-05T02-44-15-662Z | Eric Heisler | 167 | True |  | Not started | True  -682.27 0 0 0 0 0 20 | Negative Float, Open Finish Critical 3 0 0  |  |  |  |  |
| 357ae9be-8a60-81e8-80ab-ee9c0a7bf5ae | 3316 | Error and Defect Mitigation | Finance | 1.2.3.2.67.4 | 1.2.3.2.67.4 | 2026-06-08 | 2026-06-08 | 2026-04-17 | 0 | 6 | 3312 | 1 | 1 | 357ae9be-8a60-81b8-98c5-fe1166163e1b | 357ae9be-8a60-81ff-bca6-fef99fc99288 | -129.02 | 0 | As Soon As Possible | Auto Scheduled | AMETEK SAP XXL Project Plan Replan MSP Task.csv | AMETEK SAP XXL Project Plan Replan MSP Task.csv__2f0764ccac__2026-05-05T02-44-15-662Z | Kasey Hughes | 52 | True |  | Not started | True  -129.02 0 1 0 0 0 26 | Negative Float Critical 2 0 0  |  |  |  |  |
| 357ae9be-8a60-81e8-8736-da2504eb6e63 | 4241 | Post Load Validation | OTC | 1.2.5.2.13.9 | 1.2.5.2.13.9 | 2026-09-30 | 2026-10-01 | 2026-04-10 | 0 | 6 | 4232 | 1 | 0 | 357ae9be-8a60-81df-8be0-c95206558dcf |  | -681.02 | 0 | As Soon As Possible | Auto Scheduled | AMETEK SAP XXL Project Plan Replan MSP Task.csv | AMETEK SAP XXL Project Plan Replan MSP Task.csv__2f0764ccac__2026-05-05T02-44-15-662Z | Ric Haraida | 174 | True |  | Not started | True  -681.02 0 0 0 0 0 20 | Negative Float, Open Finish Critical 3 0 0  |  |  |  |  |
| 357ae9be-8a60-81e8-8787-fe3ecf2e589a | 1829 | Error and Defect Mitigation | PTP;OTC | 1.2.2.2.23.4 | 1.2.2.2.23.4 | 2026-05-18 | 2026-05-18 | 2026-04-13 | 0 | 6 | 1825 | 1 | 1 | 357ae9be-8a60-8154-8e79-d466acaf965d | 357ae9be-8a60-8123-a71e-c776fd34bbdf | -8.02 | 0 | As Soon As Possible | Auto Scheduled | AMETEK SAP XXL Project Plan Replan MSP Task.csv | AMETEK SAP XXL Project Plan Replan MSP Task.csv__2f0764ccac__2026-05-05T02-44-15-662Z | Nevin Varkey | 35 | True | True | Not started | True  -8.02 0 1 0 0 0 26 | Negative Float High 2 0 0  |  |  |  |  |
| 357ae9be-8a60-81e8-8b17-d5e4294e5243 | 3171 | Pre Load Validation | PTM | 1.2.3.2.33.2 | 1.2.3.2.33.2 | 2026-06-12 | 2026-06-12 | 2026-04-16 | 0 | 6 | 3169 | 1 | 1 | 357ae9be-8a60-8197-9653-c90ab86a2f12 | 357ae9be-8a60-8143-81e6-f69d391cf512 | -10426 | 0 | As Soon As Possible | Auto Scheduled | AMETEK SAP XXL Project Plan Replan MSP Task.csv | AMETEK SAP XXL Project Plan Replan MSP Task.csv__2f0764ccac__2026-05-05T02-44-15-662Z | Brad Meseck | 57 | True |  | Not started | True  -10426 0 1 0 0 0 26 | Wrong Dependency, Negative Float Critical 5 1 0  |  |  |  |  |
| 357ae9be-8a60-81e8-9a39-d9c777564c77 | 3152 | Error and Defect Mitigation | PTM | 1.2.3.2.30.4 | 1.2.3.2.30.4 | 2026-06-15 | 2026-06-15 | 2026-04-16 | 0 | 6 | 3148 | 1 | 1 | 357ae9be-8a60-8160-9ddb-fc6e1417f753 | 357ae9be-8a60-8166-8550-d154be0a3717 | -182.39 | 0 | As Soon As Possible | Auto Scheduled | AMETEK SAP XXL Project Plan Replan MSP Task.csv | AMETEK SAP XXL Project Plan Replan MSP Task.csv__2f0764ccac__2026-05-05T02-44-15-662Z | Brad Meseck | 60 | True |  | Not started | True  -182.39 0 1 0 0 0 26 | Negative Float Critical 2 0 0  |  |  |  |  |
| 357ae9be-8a60-81e8-ad39-ce5a06555264 | 859 | Security Manual Tasks | Security | 1.1.1.5.1.8 | 1.1.1.5.1.8 | 2026-05-04 | 2026-05-04 | 2026-05-18 | 0 | 6 | 3340 | 1 | 0 | 357ae9be-8a60-81c4-8995-e807244adc01 |  | -24.5 | 0 | As Soon As Possible | Auto Scheduled | AMETEK SAP XXL Project Plan Replan MSP Task.csv | AMETEK SAP XXL Project Plan Replan MSP Task.csv__2f0764ccac__2026-05-05T02-44-15-662Z | Manjunatha Umesha |  |  |  | Not started | True  -24.5 0 0 0 0 0 12 | Negative Float, Open Finish Critical 3 0 0  |  |  |  | True |
| 357ae9be-8a60-81e8-b90c-f889217e0897 | 1084 | Error and Defect Mitigation | PTM | 1.2.1.34.4 | 1.2.1.34.4 | 2026-04-20 | 2026-04-20 | 2026-04-16 | 100 | 5 | 709 | 1 | 1 | 357ae9be-8a60-81a6-92f6-d908f07a9b29 | 357ae9be-8a60-8195-9610-fceff9f33c65 | 0 | 0 | As Soon As Possible | Auto Scheduled | AMETEK SAP XXL Project Plan Replan MSP Task.csv | AMETEK SAP XXL Project Plan Replan MSP Task.csv__2f0764ccac__2026-05-05T02-44-15-662Z | Brad Meseck |  |  |  | Done | True  0 0 1 0 0 0 18 | Low 0 0 0  |  |  |  |  |
| 357ae9be-8a60-81e8-b9c4-c6b40b9071e7 | 1760 | Close Client | Basis | 1.2.2.2.13.5 | 1.2.2.2.13.5 | 2026-05-21 | 2026-05-21 | 2026-04-13 | 0 | 6 | 1755 | 1 | 0 | 357ae9be-8a60-817a-afe8-e5e3801fb7e8 |  | -1756 | 0 | As Soon As Possible | Auto Scheduled | AMETEK SAP XXL Project Plan Replan MSP Task.csv | AMETEK SAP XXL Project Plan Replan MSP Task.csv__2f0764ccac__2026-05-05T02-44-15-662Z | Lokchetan Meghavath | 38 | True |  | Not started | True  -1756 0 0 0 0 0 20 | Negative Float, Open Finish Critical 3 0 0  |  |  |  |  |
| 357ae9be-8a60-81e8-bd7f-ce720e3f11a0 | 1008 | Error and Defect Mitigation | PTP | 1.2.1.21.4 | 1.2.1.21.4 | 2026-04-16 | 2026-04-16 | 2026-04-13 | 100 | 5 | 692 | 1 | 0 | 357ae9be-8a60-81ba-af14-edd006ddda83 |  | 0 | 0 | As Soon As Possible | Auto Scheduled | AMETEK SAP XXL Project Plan Replan MSP Task.csv | AMETEK SAP XXL Project Plan Replan MSP Task.csv__2f0764ccac__2026-05-05T02-44-15-662Z | Nevin Varkey |  |  |  | Done | True  0 0 0 0 0 0 12 | Wrong Dependency High 3 1 0  |  |  |  |  |
| 357ae9be-8a60-81e9-85ac-e8ad8da41db1 | 4263 | PTP_CM27_Vendor Master - Z001 - External Sales Rep | PTP | 1.2.5.2.17 | 1.2.5.2.17 | 2026-09-30 | 2026-10-06 | 2026-04-13 | 0 | 5 | 4162 | 0 | 0 |  |  | -88.38 | 0 | As Soon As Possible | Auto Scheduled | AMETEK SAP XXL Project Plan Replan MSP Task.csv | AMETEK SAP XXL Project Plan Replan MSP Task.csv__2f0764ccac__2026-05-05T02-44-15-662Z | Muniraju Surappachari | 176 | True |  | Not started | True  -88.38 0 0 0 0 0 20 | Negative Float Critical 2 0 0  |  | 4264, 4266, 4269, 4268, 4267, 4265 | True |  |
| 357ae9be-8a60-81e9-8d3a-c6760459bab9 | 974 | Simulate Load | Data | 1.2.1.16.3 | 1.2.1.16.3 | 2026-04-10 | 2026-04-13 | 2026-04-13 | 100 | 5 | 765 | 2 | 1 | 357ae9be-8a60-8172-95d7-f08cb5837bec, 357ae9be-8a60-813a-8c88-f03f957c1587 | 357ae9be-8a60-81c6-b44c-d3d7597dfd0f | 0 | 0 | Finish No Earlier Than | Auto Scheduled | AMETEK SAP XXL Project Plan Replan MSP Task.csv | AMETEK SAP XXL Project Plan Replan MSP Task.csv__2f0764ccac__2026-05-05T02-44-15-662Z | Jyoti Nain |  |  |  | Done | True  0 0 1 1 3 1 23 | Low 0 0 0 True | 2026-04-13 |  |  |  |
| 357ae9be-8a60-81e9-99c7-f1e44fe2fcd1 | 795 | Load | Data | 1.2.1.4.5 | 1.2.1.4.5 | 2026-04-08 | 2026-04-08 | 2026-04-08 | 100 | 5 | 740 | 1 | 1 | 357ae9be-8a60-811f-9059-fa4c89e88bb7 | 357ae9be-8a60-8122-937d-cf575dce70be | 0 | 0 | As Soon As Possible | Auto Scheduled | AMETEK SAP XXL Project Plan Replan MSP Task.csv | AMETEK SAP XXL Project Plan Replan MSP Task.csv__2f0764ccac__2026-05-05T02-44-15-662Z | Jyoti Nain |  |  |  | Done | True  0 0 1 0 0 0 18 | Low 0 0 0  |  |  |  |  |
| 357ae9be-8a60-81e9-a72f-e5f18eea2652 | 2550 | Load | PTP | 1.2.4.2.20.5 | 1.2.4.2.20.5 | 2026-09-24 | 2026-09-24 | 2026-04-15 | 0 | 6 | 2545 | 1 | 1 | 357ae9be-8a60-8146-adac-e46b743e3b20 | 357ae9be-8a60-8111-96f7-ca3e5e03cb08 | -653.5 | 0 | As Soon As Possible | Auto Scheduled | AMETEK SAP XXL Project Plan Replan MSP Task.csv | AMETEK SAP XXL Project Plan Replan MSP Task.csv__2f0764ccac__2026-05-05T02-44-15-662Z | Nevin Varkey | 162 | True |  | Not started | True  -653.5 0 1 0 0 0 26 | Wrong Dependency, Negative Float Critical 5 1 0  |  |  |  |  |
| 357ae9be-8a60-81e9-a9ee-c15d3e1414ed | 3184 | Load File Staged and Posted "Ready" | PTM | 1.2.3.2.35.1 | 1.2.3.2.35.1 | 2026-06-15 | 2026-06-15 | 2026-04-17 | 0 | 6 | 3183 | 1 | 1 | 357ae9be-8a60-81dc-a9cf-ecc320b995a1 | 357ae9be-8a60-8106-8e95-ef21f3d46477 | -10426 | 0 | As Soon As Possible | Auto Scheduled | AMETEK SAP XXL Project Plan Replan MSP Task.csv | AMETEK SAP XXL Project Plan Replan MSP Task.csv__2f0764ccac__2026-05-05T02-44-15-662Z | Brad Meseck | 59 | True |  | Not started | True  -10426 0 1 0 0 0 26 | Wrong Dependency, Negative Float Critical 5 1 0  |  |  |  |  |
| 357ae9be-8a60-81e9-ba65-e814630a680a | 1020 | Extract File | Data | 1.2.1.25.1 | 1.2.1.25.1 | 2026-04-10 | 2026-04-13 | 2026-04-13 | 100 | 5 | 741 | 1 | 0 | 357ae9be-8a60-81e1-8f9e-dd0d8a504df8 |  | 0 | 0 | As Soon As Possible | Auto Scheduled | AMETEK SAP XXL Project Plan Replan MSP Task.csv | AMETEK SAP XXL Project Plan Replan MSP Task.csv__2f0764ccac__2026-05-05T02-44-15-662Z | Jyoti Nain |  |  |  | Done | True  0 0 0 0 0 1 12 | Wrong Dependency High 3 1 0  |  |  |  |  |
| 357ae9be-8a60-81e9-bd8c-d4a0f2ac70af | 4195 | Open Client | Basis | 1.2.5.2.6.1 | 1.2.5.2.6.1 | 2026-09-24 | 2026-09-24 | 2026-04-06 | 0 | 6 | 4194 | 0 | 0 |  |  | -38521 | 0 | As Soon As Possible | Auto Scheduled | AMETEK SAP XXL Project Plan Replan MSP Task.csv | AMETEK SAP XXL Project Plan Replan MSP Task.csv__2f0764ccac__2026-05-05T02-44-15-662Z | Lokchetan Meghavath | 171 | True |  | Not started | True  -38521 0 0 0 0 0 20 | Negative Float, Open Start, Open Finish Critical 4 0 0  |  |  |  |  |
| 357ae9be-8a60-81ea-8184-c43de0d7343d | 2645 | Load | Data | 1.2.4.2.34.5 | 1.2.4.2.34.5 | 2026-10-01 | 2026-10-01 | 2026-04-20 | 0 | 6 | 2640 | 1 | 1 | 357ae9be-8a60-8130-a708-fc4fae839885 | 357ae9be-8a60-81a7-ae3a-d67a228f07bb | -689.25 | 0 | Finish No Earlier Than | Auto Scheduled | AMETEK SAP XXL Project Plan Replan MSP Task.csv | AMETEK SAP XXL Project Plan Replan MSP Task.csv__2f0764ccac__2026-05-05T02-44-15-662Z | Jyoti Nain | 164 | True |  | Not started | True  -689.25 0 1 0 0 0 26 | Negative Float Critical 2 0 0 True | 2026-04-17 |  |  |  |
| 357ae9be-8a60-81ea-8200-f03bb36f5603 | 1164 | Run ALE Transaction to QS5 from DS4 130 | PTM | 1.2.1.44.1 | 1.2.1.44.1 | 2026-04-16 | 2026-04-16 | 2026-04-16 | 100 | 5 | 944 | 1 | 1 | 357ae9be-8a60-81c0-9714-cbf76c5b0677 | 357ae9be-8a60-8143-a595-c791f457bf85 | 0 | 0 | As Soon As Possible | Auto Scheduled | AMETEK SAP XXL Project Plan Replan MSP Task.csv | AMETEK SAP XXL Project Plan Replan MSP Task.csv__2f0764ccac__2026-05-05T02-44-15-662Z | Eric Heisler |  |  |  | Done | True  0 0 1 0 0 0 18 | Wrong Dependency High 3 1 0  |  |  |  |  |

| id | uid | name | workstream | outlineNumber | wbs | start | finish | baselineFinish | pct | outlineLevel | parentUid | predCount | sucCount | predIds | sucIds | totalSlackDaysRaw | freeSlackDaysRaw | constraintType | taskMode | mspSourceFile | mspImportVersion | assignedTo | slipDays | isSlipped | isDue14 | status | cpm | scheduleQuality | constraintDate | childUids | isSummary |
| --- | --- | --- | --- | --- | --- | --- | --- | --- | --- | --- | --- | --- | --- | --- | --- | --- | --- | --- | --- | --- | --- | --- | --- | --- | --- | --- | --- | --- | --- | --- | --- |
| 357ae9be-8a60-81ea-844f-c9305591ceef | 2683 | Run ALE Transaction to QS5 from DS4 130 | PTM | 1.2.4.2.44.1 | 1.2.4.2.44.1 | 2026-09-30 | 2026-09-30 | 2026-04-17 | 0 | 6 | 2682 | 1 | 1 | 357ae9be-8a60-8168-8076-d13e0d77cd2a | 357ae9be-8a60-817b-afc9-f3ac047438ed | -682.25 | 0 | As Soon As Possible | Auto Scheduled | AMETEK SAP XXL Project Plan Replan MSP Task.csv | AMETEK SAP XXL Project Plan Replan MSP Task.csv__2f0764ccac__2026-05-05T02-44-15-662Z | Eric Heisler | 166 | True |  | Not started | True  -682.25 0 1 0 0 0 26 | Negative Float Critical 2 0 0  |  |  |  |
| 357ae9be-8a60-81ea-85c9-e53b26da28d6 | 1969 | Manual File Staged and Posted "Ready" | OTC | 1.2.2.2.49.1 | 1.2.2.2.49.1 | 2026-05-27 | 2026-05-27 | 2026-04-20 | 0 | 6 | 1968 | 1 | 1 | 357ae9be-8a60-8109-8bba-fbeacfa92210 | 357ae9be-8a60-8123-a8e2-e7ec5d151ff2 | -4036 | 0 | As Soon As Possible | Auto Scheduled | AMETEK SAP XXL Project Plan Replan MSP Task.csv | AMETEK SAP XXL Project Plan Replan MSP Task.csv__2f0764ccac__2026-05-05T02-44-15-662Z | Ric Haraida | 37 | True |  | Not started | True  -4036 0 1 0 0 0 26 | Negative Float Critical 2 0 0  |  |  |  |
| 357ae9be-8a60-81ea-9131-cf0d24af7207 | 2657 | Simulate Load | Data | 1.2.4.2.36.3 | 1.2.4.2.36.3 | 2026-10-02 | 2026-10-02 | 2026-04-20 | 0 | 6 | 2654 | 1 | 1 | 357ae9be-8a60-81dc-a39c-ce06bb1197b8 | 357ae9be-8a60-8180-8a3a-c9263bbfcc43 | -695.75 | 0 | As Soon As Possible | Auto Scheduled | AMETEK SAP XXL Project Plan Replan MSP Task.csv | AMETEK SAP XXL Project Plan Replan MSP Task.csv__2f0764ccac__2026-05-05T02-44-15-662Z | Jyoti Nain | 165 | True |  | Not started | True  -695.75 0 1 0 0 0 26 | Negative Float Critical 2 0 0  |  |  |  |
| 357ae9be-8a60-81ea-9357-e15294fbe023 | 4248 | Post Load Validation | OTC | 1.2.5.2.14.6 | 1.2.5.2.14.6 | 2026-09-30 | 2026-10-01 | 2026-04-10 | 0 | 6 | 4242 | 1 | 0 | 357ae9be-8a60-81d1-8841-f9e0052c8453 |  | -683.02 | 0 | As Soon As Possible | Auto Scheduled | AMETEK SAP XXL Project Plan Replan MSP Task.csv | AMETEK SAP XXL Project Plan Replan MSP Task.csv__2f0764ccac__2026-05-05T02-44-15-662Z | Ric Haraida | 174 | True |  | Not started | True  -683.02 0 0 0 0 0 20 | Negative Float, Open Finish Critical 3 0 0  |  |  |  |
| 357ae9be-8a60-81ea-9d48-d55c33a537fe | 4182 | Pre Load Validation | Finance | 1.2.5.2.4.2 | 1.2.5.2.4.2 | 2026-09-24 | 2026-09-25 | 2026-04-07 | 0 | 6 | 4180 | 1 | 1 | 357ae9be-8a60-81c0-bced-e1838da4f24f | 357ae9be-8a60-81ae-ae39-d6a19719f1a0 | -677.77 | 0 | As Soon As Possible | Auto Scheduled | AMETEK SAP XXL Project Plan Replan MSP Task.csv | AMETEK SAP XXL Project Plan Replan MSP Task.csv__2f0764ccac__2026-05-05T02-44-15-662Z | Kasey Hughes | 171 | True |  | Not started | True  -677.77 0 1 0 0 0 26 | Negative Float Critical 2 0 0  |  |  |  |
| 357ae9be-8a60-81ea-9f38-fa509422ad1c | 3271 | Simulate Load | Data | 1.2.3.2.54.3 | 1.2.3.2.54.3 | 2026-06-12 | 2026-06-12 | 2026-04-16 | 0 | 6 | 3268 | 1 | 1 | 357ae9be-8a60-8105-a7d5-d83259d25803 | 357ae9be-8a60-81b4-b17c-f10012398136 | -159.27 | 0 | As Soon As Possible | Auto Scheduled | AMETEK SAP XXL Project Plan Replan MSP Task.csv | AMETEK SAP XXL Project Plan Replan MSP Task.csv__2f0764ccac__2026-05-05T02-44-15-662Z | Jyoti Nain | 57 | True |  | Not started | True  -159.27 0 1 0 0 0 26 | Negative Float Critical 2 0 0  |  |  |  |
| 357ae9be-8a60-81ea-b0ec-d860c66a4eba | 3077 | Simulate Load | Data | 1.2.3.2.19.3 | 1.2.3.2.19.3 | 2026-06-15 | 2026-06-15 | 2026-04-14 | 0 | 6 | 3074 | 1 | 1 | 357ae9be-8a60-8187-ab82-d47b59e71cef | 357ae9be-8a60-8167-9092-cabc9008cd1c | -169.77 | 0 | As Soon As Possible | Auto Scheduled | AMETEK SAP XXL Project Plan Replan MSP Task.csv | AMETEK SAP XXL Project Plan Replan MSP Task.csv__2f0764ccac__2026-05-05T02-44-15-662Z | Jyoti Nain | 62 | True |  | Not started | True  -169.77 0 1 0 0 0 26 | Negative Float Critical 2 0 0  |  |  |  |
| 357ae9be-8a60-81ea-b877-cebf9c582468 | 4252 | PTP_CM27_Vendor Master as Customer - FLCU01 | PTP | 1.2.5.2.15 | 1.2.5.2.15 | 2026-09-30 | 2026-10-07 | 2026-04-14 | 0 | 5 | 4162 | 0 | 0 |  |  | -89.81 | 0 | As Soon As Possible | Auto Scheduled | AMETEK SAP XXL Project Plan Replan MSP Task.csv | AMETEK SAP XXL Project Plan Replan MSP Task.csv__2f0764ccac__2026-05-05T02-44-15-662Z | Muniraju Surappachari | 176 | True |  | Not started | True  -89.81 0 0 0 0 0 20 | Negative Float Critical 2 0 0  |  | 4255, 4257, 4258, 4256, 4254, 4253 | True |
| 357ae9be-8a60-81ea-b9fa-fc9dde282f69 | 2700 | Load | Data | 1.2.4.2.47.5 | 1.2.4.2.47.5 | 2026-10-06 | 2026-10-07 | 2026-04-17 | 0 | 6 | 2695 | 1 | 2 | 357ae9be-8a60-8137-afc0-f798d63990a8 | 357ae9be-8a60-8125-8286-d7af3f5eeee5, 357ae9be-8a60-8143-bf86-d5f54db32538 | -726 | 0 | As Soon As Possible | Auto Scheduled | AMETEK SAP XXL Project Plan Replan MSP Task.csv | AMETEK SAP XXL Project Plan Replan MSP Task.csv__2f0764ccac__2026-05-05T02-44-15-662Z | Jyoti Nain | 173 | True |  | Not started | True  -726 0 2 2 722 0 37 | Wrong Successor, Negative Float Critical 5 0 2  |  |  |  |
| 357ae9be-8a60-81ea-bd71-c090833600e6 | 1863 | Simulate Load | Data | 1.2.2.2.28.3 | 1.2.2.2.28.3 | 2026-05-21 | 2026-05-21 | 2026-04-16 | 0 | 6 | 1860 | 1 | 1 | 357ae9be-8a60-81b8-a4ff-c5e3efd06614 | 357ae9be-8a60-8108-ae01-ffbbdc191886 | -34.27 | 0 | As Soon As Possible | Auto Scheduled | AMETEK SAP XXL Project Plan Replan MSP Task.csv | AMETEK SAP XXL Project Plan Replan MSP Task.csv__2f0764ccac__2026-05-05T02-44-15-662Z | Jyoti Nain | 35 | True |  | Not started | True  -34.27 0 1 0 0 0 26 | Negative Float Critical 2 0 0  |  |  |  |
| 357ae9be-8a60-81eb-8d67-d6df52782048 | 896 | Validate Fiori | Basis | 1.1.1.7.1.10 | 1.1.1.7.1.10 | 2026-06-16 | 2026-06-16 | 2026-07-07 | 0 | 6 | 3338 | 1 | 4 | 357ae9be-8a60-816c-a116-e1dc875ac858 | 357ae9be-8a60-81fc-a0bb-f489443faf37, 357ae9be-8a60-81e3-a4a5-f9d10c16769a, 357ae9be-8a60-81c1-99bf-ea1e95940603, 357ae9be-8a60-81de-ae15-de842048dbc0 | -36.38 | 0 | As Soon As Possible | Auto Scheduled | AMETEK SAP XXL Project Plan Replan MSP Task.csv | AMETEK SAP XXL Project Plan Replan MSP Task.csv__2f0764ccac__2026-05-05T02-44-15-662Z | Lokchetan Meghavath |  |  |  | Not started | True  -36.38 0 4 0 0 0 36 | Negative Float Critical 2 0 0  |  |  |  |
| 357ae9be-8a60-81eb-97d2-de2821510778 | 1936 | Run ALE Transaction to QS5 from DS4 130 | PTM | 1.2.2.2.41.1 | 1.2.2.2.41.1 | 2026-05-21 | 2026-05-21 | 2026-04-16 | 0 | 6 | 1935 | 2 | 1 | 357ae9be-8a60-811c-a632-c761fdfa4cc5, 357ae9be-8a60-8116-9f13-ebe42c8bf5e2 | 357ae9be-8a60-8154-b471-ee04fef3c024 | -30.27 | 0 | As Soon As Possible | Auto Scheduled | AMETEK SAP XXL Project Plan Replan MSP Task.csv | AMETEK SAP XXL Project Plan Replan MSP Task.csv__2f0764ccac__2026-05-05T02-44-15-662Z | Eric Heisler | 35 | True |  | Not started | True  -30.27 0 1 0 0 2 26 | Wrong Dependency, Negative Float Critical 5 2 0  |  |  |  |
| 357ae9be-8a60-81eb-a17b-db32c78fea8a | 1705 | Pre Load Validation | Finance | 1.2.2.2.4.2 | 1.2.2.2.4.2 | 2026-05-19 | 2026-05-19 | 2026-04-07 | 0 | 6 | 1703 | 1 | 1 | 357ae9be-8a60-81c4-876f-ed398b2fd900 | 357ae9be-8a60-81d7-8686-ec107d5296e5 | -63.52 | 0 | As Soon As Possible | Auto Scheduled | AMETEK SAP XXL Project Plan Replan MSP Task.csv | AMETEK SAP XXL Project Plan Replan MSP Task.csv__2f0764ccac__2026-05-05T02-44-15-662Z | Kasey Hughes | 42 | True | True | Not started | True  -63.52 0 1 0 0 0 26 | Negative Float Critical 2 0 0  |  |  |  |
| 357ae9be-8a60-81eb-a272-dd114ce2c0c2 | 2501 | Load | Data | 1.2.4.2.13.8 | 1.2.4.2.13.8 | 2026-09-30 | 2026-09-30 | 2026-04-09 | 0 | 6 | 2493 | 1 | 1 | 357ae9be-8a60-8125-857b-cdb32ea80070 | 357ae9be-8a60-81ff-aa76-eef4a7d2a4ab | -681 | 0 | As Soon As Possible | Auto Scheduled | AMETEK SAP XXL Project Plan Replan MSP Task.csv | AMETEK SAP XXL Project Plan Replan MSP Task.csv__2f0764ccac__2026-05-05T02-44-15-662Z | Jyoti Nain | 174 | True |  | Not started | True  -681 0 1 0 0 0 26 | Negative Float Critical 2 0 0  |  |  |  |
| 357ae9be-8a60-81eb-ad7a-ec398c361fe5 | 797 | Pre Load Validation | Finance | 1.2.1.11.2 | 1.2.1.11.2 | 2026-04-09 | 2026-04-10 | 2026-04-10 | 100 | 5 | 758 | 1 | 1 | 357ae9be-8a60-817e-a9a1-de2ed273ea35 | 357ae9be-8a60-813c-b9b0-dac44b65adde | 0 | 0 | As Soon As Possible | Auto Scheduled | AMETEK SAP XXL Project Plan Replan MSP Task.csv | AMETEK SAP XXL Project Plan Replan MSP Task.csv__2f0764ccac__2026-05-05T02-44-15-662Z | Kasey Hughes |  |  |  | Done | True  0 0 1 0 0 0 18 | Low 0 0 0  |  |  |  |
| 357ae9be-8a60-81eb-b634-ff1d74677f47 | 2021 | Post Load Validation | OTC | 1.2.2.2.61.2 | 1.2.2.2.61.2 | 2026-05-26 | 2026-05-26 | 2026-04-16 | 0 | 6 | 2019 | 1 | 1 | 357ae9be-8a60-819d-a28d-eefb005070d1 | 357ae9be-8a60-81bf-bd43-c94da4989471 | -70.27 | 0 | As Soon As Possible | Auto Scheduled | AMETEK SAP XXL Project Plan Replan MSP Task.csv | AMETEK SAP XXL Project Plan Replan MSP Task.csv__2f0764ccac__2026-05-05T02-44-15-662Z | James VanRiper | 40 | True |  | Not started | True  -70.27 0 1 1 414 0 31 | Wrong Dependency, Wrong Successor, Negative Float Critical 8 1 1  |  |  |  |
| 357ae9be-8a60-81eb-bdee-f538164fc074 | 814 | Manual File Staged and Posted "Ready" | Finance | 1.2.1.12.1 | 1.2.1.12.1 | 2026-04-15 | 2026-04-15 | 2026-04-14 | 100 | 5 | 761 | 1 | 1 | 357ae9be-8a60-8122-937d-cf575dce70be | 357ae9be-8a60-818c-aa73-e510cfb483fd | 0 | 0 | Finish No Earlier Than | Auto Scheduled | AMETEK SAP XXL Project Plan Replan MSP Task.csv | AMETEK SAP XXL Project Plan Replan MSP Task.csv__2f0764ccac__2026-05-05T02-44-15-662Z | Kasey Hughes |  |  |  | Done | True  0 0 1 0 0 0 18 | Wrong Dependency High 3 1 0 True | 2026-04-14 |  |  |
| 357ae9be-8a60-81ec-845b-ebce47d0a21f | 3125 | Load | Data | 1.2.3.2.26.5 | 1.2.3.2.26.5 | 2026-06-10 | 2026-06-11 | 2026-04-15 | 0 | 6 | 3120 | 1 | 1 | 357ae9be-8a60-81af-9442-ff22eb92697e | 357ae9be-8a60-81a4-8088-c93ce562ab5e | -190.27 | 0 | As Soon As Possible | Auto Scheduled | AMETEK SAP XXL Project Plan Replan MSP Task.csv | AMETEK SAP XXL Project Plan Replan MSP Task.csv__2f0764ccac__2026-05-05T02-44-15-662Z | Jyoti Nain | 57 | True |  | Not started | True  -190.27 0 1 0 0 0 26 | Negative Float Critical 2 0 0  |  |  |  |
| 357ae9be-8a60-81ec-8a8b-c4d81b51fbfb | 1075 | Extract File | Data | 1.2.1.33.1 | 1.2.1.33.1 | 2026-04-16 | 2026-04-16 | 2026-04-16 | 100 | 5 | 707 | 1 | 1 | 357ae9be-8a60-8176-b9f0-d0737a2c422c | 357ae9be-8a60-818c-a935-e82610089ed2 | 0 | 0 | As Soon As Possible | Auto Scheduled | AMETEK SAP XXL Project Plan Replan MSP Task.csv | AMETEK SAP XXL Project Plan Replan MSP Task.csv__2f0764ccac__2026-05-05T02-44-15-662Z | Jyoti Nain |  |  |  | Done | True  0 0 0 0 0 0 14 | Low 0 0 0  |  |  |  |
| 357ae9be-8a60-81ec-8ad9-d9f5e61ffece | 37 | In Draft | (Unassigned) | 1.1.2.9.1.5.1 | 1.1.2.9.1.5.1 | 2025-04-07 | 2025-07-21 | 2025-07-21 | 100 | 7 | 29 | 0 | 0 |  |  | 0 | 0 | Finish No Earlier Than | Auto Scheduled | AMETEK SAP XXL Project Plan Replan MSP Task.csv | AMETEK SAP XXL Project Plan Replan MSP Task.csv__2f0764ccac__2026-05-05T02-44-15-662Z | COULD NOT BE DETERMINED |  |  |  | Done | True  0 0 0 0 0 0 12 | Low 0 0 0 True | 2025-07-21 |  |  |
| 357ae9be-8a60-81ec-9429-c1f9da3e9a09 | 1882 | Extract File | Data | 1.2.2.2.31.1 | 1.2.2.2.31.1 | 2026-05-21 | 2026-05-21 | 2026-04-16 | 0 | 6 | 1881 | 1 | 1 | 357ae9be-8a60-816a-bb31-c440e596cfae | 357ae9be-8a60-8160-bb55-efe4c5e15469 | -53.77 | 0 | As Soon As Possible | Auto Scheduled | AMETEK SAP XXL Project Plan Replan MSP Task.csv | AMETEK SAP XXL Project Plan Replan MSP Task.csv__2f0764ccac__2026-05-05T02-44-15-662Z | Jyoti Nain | 35 | True |  | Not started | True  -53.77 0 1 0 0 0 26 | Wrong Dependency, Negative Float Critical 5 1 0  |  |  |  |
| 357ae9be-8a60-81ec-95c4-cd396a71307a | 1818 | PTP_CM27_BP_Intercompany Supplier | PTP | 1.2.2.2.22 | 1.2.2.2.22 | 2026-05-18 | 2026-05-19 | 2026-04-14 | 0 | 5 | 2800 | 0 | 0 |  |  | -1.44 | 0 | As Soon As Possible | Auto Scheduled | AMETEK SAP XXL Project Plan Replan MSP Task.csv | AMETEK SAP XXL Project Plan Replan MSP Task.csv__2f0764ccac__2026-05-05T02-44-15-662Z | Muniraju Surappachari | 35 | True | True | Not started | True  -1.44 0 0 0 0 0 20 | Negative Float High 2 0 0  |  | 1822, 1821, 1823, 1819, 1824, 1820 | True |
| 357ae9be-8a60-81ec-9cd6-f7198da0b33b | 1912 | Simulate Load | Data | 1.2.2.2.35.3 | 1.2.2.2.35.3 | 2026-05-25 | 2026-05-25 | 2026-04-17 | 0 | 6 | 1909 | 1 | 1 | 357ae9be-8a60-8102-810b-ffb76e852364 | 357ae9be-8a60-81f9-953d-dd531f6faa78 | -53.77 | 0 | As Soon As Possible | Auto Scheduled | AMETEK SAP XXL Project Plan Replan MSP Task.csv | AMETEK SAP XXL Project Plan Replan MSP Task.csv__2f0764ccac__2026-05-05T02-44-15-662Z | Jyoti Nain | 38 | True |  | Not started | True  -53.77 0 1 0 0 0 26 | Negative Float Critical 2 0 0  |  |  |  |
| 357ae9be-8a60-81ec-9fc9-cc08a0c809d8 | 3208 | Post Load Validation | PTM | 1.2.3.2.40.2 | 1.2.3.2.40.2 | 2026-06-11 | 2026-06-12 | 2026-04-16 | 0 | 6 | 3206 | 1 | 0 | 357ae9be-8a60-8119-a6bd-f67663176254 |  | -150.27 | 0 | As Soon As Possible | Auto Scheduled | AMETEK SAP XXL Project Plan Replan MSP Task.csv | AMETEK SAP XXL Project Plan Replan MSP Task.csv__2f0764ccac__2026-05-05T02-44-15-662Z | Eric Heisler | 57 | True |  | Not started | True  -150.27 0 0 0 0 0 20 | Negative Float, Open Finish Critical 3 0 0  |  |  |  |
| 357ae9be-8a60-81ec-b52c-d19359ee27ae | 2983 | Post Load Validation | Finance | 1.2.3.2.4.6 | 1.2.3.2.4.6 | 2026-06-09 | 2026-06-10 | 2026-04-07 | 0 | 6 | 2977 | 1 | 1 | 357ae9be-8a60-81cc-bc23-d33af56cbc0d | 357ae9be-8a60-813b-9104-c416a0c2e2e0 | -183.52 | 0 | As Soon As Possible | Auto Scheduled | AMETEK SAP XXL Project Plan Replan MSP Task.csv | AMETEK SAP XXL Project Plan Replan MSP Task.csv__2f0764ccac__2026-05-05T02-44-15-662Z | Kasey Hughes | 64 | True |  | Not started | True  -183.52 0 0 0 0 0 22 | Wrong Successor, Negative Float Critical 5 0 1  |  |  |  |
| 357ae9be-8a60-81ec-b83f-e3ad72203fbb | 3277 | Post Load Validation | OTC | 1.2.3.2.55.2 | 1.2.3.2.55.2 | 2026-06-15 | 2026-06-15 | 2026-04-16 | 0 | 6 | 3275 | 1 | 1 | 357ae9be-8a60-81b2-9d84-fdcd4fecb5bb | 357ae9be-8a60-81b7-a4bf-f8b21972d7fa | -190.27 | 0 | As Soon As Possible | Auto Scheduled | AMETEK SAP XXL Project Plan Replan MSP Task.csv | AMETEK SAP XXL Project Plan Replan MSP Task.csv__2f0764ccac__2026-05-05T02-44-15-662Z | James VanRiper | 60 | True |  | Not started | True  -190.27 0 1 0 0 0 26 | Negative Float Critical 2 0 0  |  |  |  |
| 357ae9be-8a60-81ed-89b8-edc0eaa6a32e | 246 | Deliver End User Training | Training | 1.4.1.4.2 | 1.4.1.4.2 | 2026-08-31 | 2026-10-16 | 2026-10-16 | 0 | 5 | 242 | 1 | 0 | 357ae9be-8a60-8127-91c7-d678dee33ec0 |  | 16 | 16 | Start No Earlier Than | Auto Scheduled | AMETEK SAP XXL Project Plan Replan MSP Task.csv | AMETEK SAP XXL Project Plan Replan MSP Task.csv__2f0764ccac__2026-05-05T02-44-15-662Z | Karen Zalnis |  |  |  | Not started |   16 16 0 0 0 0 0 | Open Finish Medium 1 0 0 True | 2026-03-09 |  |  |
| 357ae9be-8a60-81ed-8b9c-d26549fc1775 | 3094 | Pre Load Validation | PTP;OTC | 1.2.3.2.22.2 | 1.2.3.2.22.2 | 2026-06-08 | 2026-06-08 | 2026-04-13 | 0 | 6 | 3092 | 1 | 1 | 357ae9be-8a60-8181-95f1-f6b35ac2e7fa | 357ae9be-8a60-81b5-a3d7-c805460f451d | -7891 | 0 | As Soon As Possible | Auto Scheduled | AMETEK SAP XXL Project Plan Replan MSP Task.csv | AMETEK SAP XXL Project Plan Replan MSP Task.csv__2f0764ccac__2026-05-05T02-44-15-662Z | Nevin Varkey | 56 | True |  | Not started | True  -7891 0 1 0 0 0 26 | Negative Float Critical 2 0 0  |  |  |  |
| 357ae9be-8a60-81ed-8d02-e48f989626d4 | 2541 | Simulate Load | Data | 1.2.4.2.19.3 | 1.2.4.2.19.3 | 2026-10-01 | 2026-10-01 | 2026-04-14 | 0 | 6 | 2538 | 1 | 1 | 357ae9be-8a60-813f-8a8a-d80f729c2d5f | 357ae9be-8a60-818d-a593-ffdd9bc07d19 | -691.75 | 0 | Finish No Earlier Than | Auto Scheduled | AMETEK SAP XXL Project Plan Replan MSP Task.csv | AMETEK SAP XXL Project Plan Replan MSP Task.csv__2f0764ccac__2026-05-05T02-44-15-662Z | Jyoti Nain | 170 | True |  | Not started | True  -691.75 0 1 0 0 0 26 | Negative Float Critical 2 0 0 True | 2026-04-10 |  |  |
| 357ae9be-8a60-81ed-8ed2-d1c23b0ddaeb | 1197 | Pre Load Validation | PTM | 1.2.1.36.2 | 1.2.1.36.2 | 2026-04-21 | 2026-04-21 | 2026-04-17 | 100 | 5 | 1194 | 1 | 1 | 357ae9be-8a60-8136-b6ec-d2c1088d60d7 | 357ae9be-8a60-8165-9b87-ed6c66319a47 | 0 | 0 | As Soon As Possible | Auto Scheduled | AMETEK SAP XXL Project Plan Replan MSP Task.csv | AMETEK SAP XXL Project Plan Replan MSP Task.csv__2f0764ccac__2026-05-05T02-44-15-662Z | Brad Meseck |  |  |  | Done | True  0 0 1 0 0 0 18 | Low 0 0 0  |  |  |  |
| 357ae9be-8a60-81ed-9345-d65edf6dcd68 | 1861 | Load File Staged and Posted "Ready" | PTP | 1.2.2.2.28.1 | 1.2.2.2.28.1 | 2026-05-21 | 2026-05-21 | 2026-04-15 | 0 | 6 | 1860 | 1 | 1 | 357ae9be-8a60-811c-a632-c761fdfa4cc5 | 357ae9be-8a60-81b8-a4ff-c5e3efd06614 | -2056 | 0 | As Soon As Possible | Auto Scheduled | AMETEK SAP XXL Project Plan Replan MSP Task.csv | AMETEK SAP XXL Project Plan Replan MSP Task.csv__2f0764ccac__2026-05-05T02-44-15-662Z | Nevin Varkey | 36 | True |  | Not started | True  -2056 0 1 0 0 1 26 | Wrong Dependency, Negative Float Critical 5 1 0  |  |  |  |
| 357ae9be-8a60-81ed-9812-d1a16beef340 | 3129 | Pre Load Validation | PTP | 1.2.3.2.27.2 | 1.2.3.2.27.2 | 2026-06-11 | 2026-06-11 | 2026-04-16 | 0 | 6 | 3127 | 1 | 1 | 357ae9be-8a60-81aa-a8c5-c061053b4155 | 357ae9be-8a60-8100-a0f6-f6136a80f8ad | -151.27 | 0 | As Soon As Possible | Auto Scheduled | AMETEK SAP XXL Project Plan Replan MSP Task.csv | AMETEK SAP XXL Project Plan Replan MSP Task.csv__2f0764ccac__2026-05-05T02-44-15-662Z | Nevin Varkey | 56 | True |  | Not started | True  -151.27 0 1 0 0 0 26 | Wrong Dependency, Negative Float Critical 5 1 0  |  |  |  |
| 357ae9be-8a60-81ed-9a86-d3d5c62ecdc4 | 4396 | Simulate Load | Data | 1.2.5.2.36.3 | 1.2.5.2.36.3 | 2026-10-02 | 2026-10-02 | 2026-04-20 | 0 | 6 | 4393 | 1 | 1 | 357ae9be-8a60-811f-b0a0-c4c959561e94 | 357ae9be-8a60-81fe-b3b2-df12a2529ec8 | -695.77 | 0 | As Soon As Possible | Auto Scheduled | AMETEK SAP XXL Project Plan Replan MSP Task.csv | AMETEK SAP XXL Project Plan Replan MSP Task.csv__2f0764ccac__2026-05-05T02-44-15-662Z | Jyoti Nain | 165 | True |  | Not started | True  -695.77 0 1 0 0 0 26 | Negative Float Critical 2 0 0  |  |  |  |
| 357ae9be-8a60-81ed-a280-e7c35b9e7255 | 1065 | Error and Defect Mitigation | PTM | 1.2.1.32.4 | 1.2.1.32.4 | 2026-04-16 | 2026-04-16 | 2026-04-17 | 100 | 5 | 695 | 1 | 1 | 357ae9be-8a60-81ee-92b9-c3212b736160 | 357ae9be-8a60-814a-a139-f875cd9c5de3 | 0 | 0 | As Soon As Possible | Auto Scheduled | AMETEK SAP XXL Project Plan Replan MSP Task.csv | AMETEK SAP XXL Project Plan Replan MSP Task.csv__2f0764ccac__2026-05-05T02-44-15-662Z | Brad Meseck |  |  |  | Done | True  0 0 1 0 0 0 18 | Low 0 0 0  |  |  |  |
| 357ae9be-8a60-81ed-ac06-d227b4043db5 | 1762 | Error and Defect Mitigation | OTC | 1.2.2.2.13.7 | 1.2.2.2.13.7 | 2026-05-21 | 2026-05-22 | 2026-04-09 | 0 | 6 | 1755 | 1 | 1 | 357ae9be-8a60-8198-987d-fbbb3a10c0bc | 357ae9be-8a60-81cb-b45a-fcdbf16cbf67 | -39.02 | 0 | As Soon As Possible | Auto Scheduled | AMETEK SAP XXL Project Plan Replan MSP Task.csv | AMETEK SAP XXL Project Plan Replan MSP Task.csv__2f0764ccac__2026-05-05T02-44-15-662Z | Ric Haraida | 43 | True |  | Not started | True  -39.02 0 1 0 0 0 26 | Wrong Dependency, Negative Float Critical 5 1 0  |  |  |  |
| 357ae9be-8a60-81ee-803a-ded81e38ad12 | 3210 | Run ALE Transaction to QS5 from DS4 130 | PTM | 1.2.3.2.41.1 | 1.2.3.2.41.1 | 2026-06-11 | 2026-06-11 | 2026-04-16 | 0 | 6 | 3209 | 1 | 1 | 357ae9be-8a60-81e4-ad85-f3407bb2ec98 | 357ae9be-8a60-8189-8d98-ca357cc13cae | -150.27 | 0 | As Soon As Possible | Auto Scheduled | AMETEK SAP XXL Project Plan Replan MSP Task.csv | AMETEK SAP XXL Project Plan Replan MSP Task.csv__2f0764ccac__2026-05-05T02-44-15-662Z | Eric Heisler | 56 | True |  | Not started | True  -150.27 0 1 0 0 0 26 | Wrong Dependency, Negative Float Critical 5 1 0  |  |  |  |
| 357ae9be-8a60-81ee-80ef-f16d7d611c40 | 2746 | Run material interface to GTS | OTC | 1.2.4.2.57.1 | 1.2.4.2.57.1 | 2026-09-24 | 2026-09-25 | 2026-04-15 | 0 | 6 | 2745 | 1 | 1 | 357ae9be-8a60-8111-96f7-ca3e5e03cb08 | 357ae9be-8a60-8125-8286-d7af3f5eeee5 | -653.5 | 0 | As Soon As Possible | Auto Scheduled | AMETEK SAP XXL Project Plan Replan MSP Task.csv | AMETEK SAP XXL Project Plan Replan MSP Task.csv__2f0764ccac__2026-05-05T02-44-15-662Z | James VanRiper | 163 | True |  | Not started | True  -653.5 0 1 1 535 0 31 | Wrong Successor, Negative Float Critical 5 0 1  |  |  |  |
| 357ae9be-8a60-81ee-8501-fc4052ddffe4 | 1077 | Simulate Load | Data | 1.2.1.33.3 | 1.2.1.33.3 | 2026-04-20 | 2026-04-20 | 2026-04-20 | 100 | 5 | 707 | 1 | 1 | 357ae9be-8a60-8165-b39c-f45184c710c2 | 357ae9be-8a60-81ab-9b37-fbadfe9dd7b1 | 0 | 0 | Finish No Earlier Than | Auto Scheduled | AMETEK SAP XXL Project Plan Replan MSP Task.csv | AMETEK SAP XXL Project Plan Replan MSP Task.csv__2f0764ccac__2026-05-05T02-44-15-662Z | Jyoti Nain |  |  |  | Done | True  0 0 1 0 0 0 18 | Low 0 0 0 True | 2026-04-17 |  |  |
| 357ae9be-8a60-81ee-92b9-c3212b736160 | 1064 | Simulate Load | Data | 1.2.1.32.3 | 1.2.1.32.3 | 2026-04-16 | 2026-04-16 | 2026-04-17 | 100 | 5 | 695 | 1 | 1 | 357ae9be-8a60-8191-9731-e98e31822550 | 357ae9be-8a60-81ed-a280-e7c35b9e7255 | 0 | 0 | As Soon As Possible | Auto Scheduled | AMETEK SAP XXL Project Plan Replan MSP Task.csv | AMETEK SAP XXL Project Plan Replan MSP Task.csv__2f0764ccac__2026-05-05T02-44-15-662Z | Jyoti Nain |  |  |  | Done | True  0 0 1 0 0 0 18 | Low 0 0 0  |  |  |  |
| 357ae9be-8a60-81ee-96d4-f7b07820bab9 | 823 | Load File Staged and Posted "Ready" | OTC | 1.2.1.14.1 | 1.2.1.14.1 | 2026-04-08 | 2026-04-08 | 2026-04-08 | 100 | 5 | 763 | 1 | 1 | 357ae9be-8a60-8122-937d-cf575dce70be | 357ae9be-8a60-8134-9bab-efbb98b7b159 | 0 | 0 | As Soon As Possible | Auto Scheduled | AMETEK SAP XXL Project Plan Replan MSP Task.csv | AMETEK SAP XXL Project Plan Replan MSP Task.csv__2f0764ccac__2026-05-05T02-44-15-662Z | Ric Haraida |  |  |  | Done | True  0 0 1 0 0 0 18 | Wrong Dependency High 3 1 0  |  |  |  |
| 357ae9be-8a60-81ee-9dc1-cee50843cace | 4319 | Simulate Load | Data | 1.2.5.2.25.3 | 1.2.5.2.25.3 | 2026-09-28 | 2026-09-28 | 2026-04-14 | 0 | 6 | 4316 | 1 | 1 | 357ae9be-8a60-8171-adbc-d8d313eb21f0 | 357ae9be-8a60-815f-b171-f1b001db5eeb | -667.27 | 0 | As Soon As Possible | Auto Scheduled | AMETEK SAP XXL Project Plan Replan MSP Task.csv | AMETEK SAP XXL Project Plan Replan MSP Task.csv__2f0764ccac__2026-05-05T02-44-15-662Z | Jyoti Nain | 167 | True |  | Not started | True  -667.27 0 1 0 0 0 26 | Negative Float Critical 2 0 0  |  |  |  |
| 357ae9be-8a60-81ee-a24c-e5041559f5a6 | 4253 | Extract File | Data | 1.2.5.2.15.1 | 1.2.5.2.15.1 | 2026-09-30 | 2026-10-01 | 2026-04-10 | 0 | 6 | 4252 | 1 | 1 | 357ae9be-8a60-81d1-8841-f9e0052c8453 | 357ae9be-8a60-819a-b381-c8abad592460 | -718.52 | 0 | As Soon As Possible | Auto Scheduled | AMETEK SAP XXL Project Plan Replan MSP Task.csv | AMETEK SAP XXL Project Plan Replan MSP Task.csv__2f0764ccac__2026-05-05T02-44-15-662Z | Jyoti Nain | 174 | True |  | Not started | True  -718.52 0 1 0 0 0 26 | Negative Float Critical 2 0 0  |  |  |  |
| 357ae9be-8a60-81ee-aa45-c6527542ef83 | 1983 | RTR_CM11_Asset_Master | (Unassigned) | 1.2.2.2.52 | 1.2.2.2.52 | 2026-05-18 | 2026-05-21 | 2026-04-13 | 0 | 5 | 2800 | 0 | 0 |  |  | -3.69 | 0 | As Soon As Possible | Auto Scheduled | AMETEK SAP XXL Project Plan Replan MSP Task.csv | AMETEK SAP XXL Project Plan Replan MSP Task.csv__2f0764ccac__2026-05-05T02-44-15-662Z | COULD NOT BE DETERMINED | 38 | True |  | Not started | True  -3.69 0 0 0 0 0 20 | Negative Float High 2 0 0  |  | 1987, 1989, 1986, 1985, 1988, 1984 | True |
| 357ae9be-8a60-81ee-af4f-e9b0b7287636 | 1973 | Load File Staged and Posted "Ready" | OTC | 1.2.2.2.50.1 | 1.2.2.2.50.1 | 2026-05-28 | 2026-05-28 | 2026-04-20 | 0 | 6 | 1972 | 2 | 1 | 357ae9be-8a60-8101-a382-e8a212fb3518, 357ae9be-8a60-818f-ae13-f76df30b9be9 | 357ae9be-8a60-81a4-89cb-ed55bc4e312b | -4036 | 0 | As Soon As Possible | Auto Scheduled | AMETEK SAP XXL Project Plan Replan MSP Task.csv | AMETEK SAP XXL Project Plan Replan MSP Task.csv__2f0764ccac__2026-05-05T02-44-15-662Z | Ric Haraida | 38 | True |  | Not started | True  -4036 0 1 0 0 0 26 | Wrong Dependency, Negative Float Critical 5 2 0  |  |  |  |
| 357ae9be-8a60-81ee-b936-e69ff93ab7de | 691 | OTC_CM21_CMIR | OTC | 1.2.1.51 | 1.2.1.51 | 2026-04-16 | 2026-04-20 | 2026-04-21 | 100 | 4 | 425 | 0 | 0 |  |  | 0 | 0 | As Soon As Possible | Auto Scheduled | AMETEK SAP XXL Project Plan Replan MSP Task.csv | AMETEK SAP XXL Project Plan Replan MSP Task.csv__2f0764ccac__2026-05-05T02-44-15-662Z | Anitha Jothi |  |  |  | Done | True  0 0 0 0 0 0 12 | Low 0 0 0  |  | 1113, 1114, 1116, 1112, 1117, 1115 | True |
| 357ae9be-8a60-81ef-845e-f52c2b9793d1 | 3256 | Post Load Validation | PTP | 1.2.3.2.51.3 | 1.2.3.2.51.3 | 2026-06-17 | 2026-06-17 | 2026-04-13 | 0 | 6 | 3253 | 1 | 0 | 357ae9be-8a60-814f-b485-f43de43a6228 |  | -177.77 | 0 | As Soon As Possible | Auto Scheduled | AMETEK SAP XXL Project Plan Replan MSP Task.csv | AMETEK SAP XXL Project Plan Replan MSP Task.csv__2f0764ccac__2026-05-05T02-44-15-662Z | Nevin Varkey | 65 | True |  | Not started | True  -177.77 0 0 0 0 0 20 | Wrong Dependency, Negative Float, Open Finish Critical 6 1 0  |  |  |  |
| 357ae9be-8a60-81ef-905d-d7a65cc86da2 | 1199 | Error and Defect Mitigation | PTM | 1.2.1.36.4 | 1.2.1.36.4 | 2026-04-21 | 2026-04-21 | 2026-04-17 | 100 | 5 | 1194 | 1 | 1 | 357ae9be-8a60-8165-9b87-ed6c66319a47 | 357ae9be-8a60-81b8-88ee-f911612fa3a6 | 0 | 0 | As Soon As Possible | Auto Scheduled | AMETEK SAP XXL Project Plan Replan MSP Task.csv | AMETEK SAP XXL Project Plan Replan MSP Task.csv__2f0764ccac__2026-05-05T02-44-15-662Z | Brad Meseck |  |  |  | Done | True  0 0 1 0 0 0 18 | Low 0 0 0  |  |  |  |
| 357ae9be-8a60-81ef-92b2-e706ea5c2475 | 4422 | Run ALE Transaction to QS5 from DS4 130 | PTM | 1.2.5.2.44.1 | 1.2.5.2.44.1 | 2026-09-30 | 2026-09-30 | 2026-04-17 | 0 | 6 | 4421 | 1 | 1 | 357ae9be-8a60-813e-b837-e29c9b646923 | 357ae9be-8a60-81e7-ac87-db57798c7df2 | -682.27 | 0 | As Soon As Possible | Auto Scheduled | AMETEK SAP XXL Project Plan Replan MSP Task.csv | AMETEK SAP XXL Project Plan Replan MSP Task.csv__2f0764ccac__2026-05-05T02-44-15-662Z | Eric Heisler | 166 | True |  | Not started | True  -682.27 0 1 0 0 0 26 | Negative Float Critical 2 0 0  |  |  |  |
| 357ae9be-8a60-81ef-97aa-e46beb713c6d | 1898 | Simulate Load | Data | 1.2.2.2.33.3 | 1.2.2.2.33.3 | 2026-05-22 | 2026-05-22 | 2026-04-16 | 0 | 6 | 1895 | 1 | 1 | 357ae9be-8a60-8120-b798-f9605f51fc3c | 357ae9be-8a60-8196-b3f9-e890f2f1d95d | -53.77 | 0 | As Soon As Possible | Auto Scheduled | AMETEK SAP XXL Project Plan Replan MSP Task.csv | AMETEK SAP XXL Project Plan Replan MSP Task.csv__2f0764ccac__2026-05-05T02-44-15-662Z | Jyoti Nain | 36 | True |  | Not started | True  -53.77 0 1 0 0 0 26 | Negative Float Critical 2 0 0  |  |  |  |
| 357ae9be-8a60-81ef-affc-ea26831ddbcf | 1749 | Post Load Validation | Finance | 1.2.2.2.10.6 | 1.2.2.2.10.6 | 2026-05-20 | 2026-05-20 | 2026-04-10 | 0 | 6 | 1743 | 1 | 0 | 357ae9be-8a60-8137-8f18-efa83c85202d |  | -16.52 | 0 | As Soon As Possible | Auto Scheduled | AMETEK SAP XXL Project Plan Replan MSP Task.csv | AMETEK SAP XXL Project Plan Replan MSP Task.csv__2f0764ccac__2026-05-05T02-44-15-662Z | Kasey Hughes | 40 | True | True | Not started | True  -16.52 0 0 0 0 0 20 | Negative Float, Open Finish Critical 3 0 0  |  |  |  |
| 357ae9be-8a60-81f0-9870-df7773002bb7 | 803 | Pre Load Validation | Finance | 1.2.1.5.2 | 1.2.1.5.2 | 2026-04-06 | 2026-04-07 | 2026-04-07 | 100 | 5 | 759 | 1 | 1 | 357ae9be-8a60-81b1-9755-fd8140e56513 | 357ae9be-8a60-810b-91ed-f3fcb9b602d4 | 0 | 0 | As Soon As Possible | Auto Scheduled | AMETEK SAP XXL Project Plan Replan MSP Task.csv | AMETEK SAP XXL Project Plan Replan MSP Task.csv__2f0764ccac__2026-05-05T02-44-15-662Z | Kasey Hughes |  |  |  | Done | True  0 0 1 0 0 0 18 | Low 0 0 0  |  |  |  |
| 357ae9be-8a60-81f0-9b8f-ecd5c07565b2 | 4292 | Manual File Staged and Posted "Ready" | Finance | 1.2.5.2.21.1 | 1.2.5.2.21.1 | 2026-10-01 | 2026-10-01 | 2026-04-10 | 0 | 6 | 4291 | 1 | 0 | 357ae9be-8a60-81d9-a671-c96fa8e79903 |  | -41101 | 0 | Start No Earlier Than | Auto Scheduled | AMETEK SAP XXL Project Plan Replan MSP Task.csv | AMETEK SAP XXL Project Plan Replan MSP Task.csv__2f0764ccac__2026-05-05T02-44-15-662Z | Kasey Hughes | 174 | True |  | Not started | True  -41101 0 0 0 0 0 20 | Negative Float, Open Finish Critical 3 0 0 True | 2026-04-15 |  |  |
| 357ae9be-8a60-81f0-9cba-ea3ad8066949 | 2754 | GTS - HTS - Create | (Unassigned) | 1.2.4.2.60 | 1.2.4.2.60 | 2026-09-24 | 2026-09-24 | 2026-04-06 | 0 | 5 | 2898 | 0 | 0 |  |  | -80.44 | 0 | As Soon As Possible | Auto Scheduled | AMETEK SAP XXL Project Plan Replan MSP Task.csv | AMETEK SAP XXL Project Plan Replan MSP Task.csv__2f0764ccac__2026-05-05T02-44-15-662Z | COULD NOT BE DETERMINED | 171 | True |  | Not started | True  -80.44 0 0 0 0 0 20 | Negative Float Critical 2 0 0  |  | 2756, 2755 | True |
| 357ae9be-8a60-81f0-a92c-c5b448a63560 | 4327 | Error and Defect Mitigation | PTM | 1.2.5.2.26.4 | 1.2.5.2.26.4 | 2026-09-28 | 2026-09-28 | 2026-04-15 | 0 | 6 | 4323 | 1 | 1 | 357ae9be-8a60-811a-b6e9-c036a459f274 | 357ae9be-8a60-8195-b8de-e5ba8ef7e724 | -726.02 | 0 | As Soon As Possible | Auto Scheduled | AMETEK SAP XXL Project Plan Replan MSP Task.csv | AMETEK SAP XXL Project Plan Replan MSP Task.csv__2f0764ccac__2026-05-05T02-44-15-662Z | Eric Heisler | 166 | True |  | Not started | True  -726.02 0 1 0 0 0 26 | Negative Float Critical 2 0 0  |  |  |  |
| 357ae9be-8a60-81f0-ab65-cf422c7f0541 | 3147 | Post Load Validation | PTP | 1.2.3.2.29.6 | 1.2.3.2.29.6 | 2026-06-12 | 2026-06-12 | 2026-04-16 | 0 | 6 | 3141 | 1 | 0 | 357ae9be-8a60-817b-8265-e02e7dcf908e |  | -154.27 | 0 | As Soon As Possible | Auto Scheduled | AMETEK SAP XXL Project Plan Replan MSP Task.csv | AMETEK SAP XXL Project Plan Replan MSP Task.csv__2f0764ccac__2026-05-05T02-44-15-662Z | Nevin Varkey | 57 | True |  | Not started | True  -154.27 0 0 0 0 0 20 | Negative Float, Open Finish Critical 3 0 0  |  |  |  |
| 357ae9be-8a60-81f0-be29-f141e36af1c4 | 881 | Manual Configuration Activities in QS5 | (Unassigned) | 1.2.1.7 | 1.2.1.7 | 2026-04-06 | 2026-04-15 | 2026-04-15 | 100 | 4 | 425 | 1 | 0 | 357ae9be-8a60-814f-894a-d5693095163e |  | 0 | 0 | As Soon As Possible | Auto Scheduled | AMETEK SAP XXL Project Plan Replan MSP Task.csv | AMETEK SAP XXL Project Plan Replan MSP Task.csv__2f0764ccac__2026-05-05T02-44-15-662Z | COULD NOT BE DETERMINED |  |  |  | Done | True  0 0 0 0 0 1 12 | Low 0 0 0  |  | 883, 882, 1219, 1220 | True |
| 357ae9be-8a60-81f1-8836-f7fdef199fd6 | 1090 | Simulate Load | Data | 1.2.1.35.3 | 1.2.1.35.3 | 2026-04-21 | 2026-04-21 | 2026-04-17 | 100 | 5 | 710 | 1 | 1 | 357ae9be-8a60-8152-9ef7-c98602e36bf6 | 357ae9be-8a60-8151-8baa-f3eee86fd64c | 0 | 0 | As Soon As Possible | Auto Scheduled | AMETEK SAP XXL Project Plan Replan MSP Task.csv | AMETEK SAP XXL Project Plan Replan MSP Task.csv__2f0764ccac__2026-05-05T02-44-15-662Z | Jyoti Nain |  |  |  | Done | True  0 0 1 0 0 0 18 | Low 0 0 0  |  |  |  |
| 357ae9be-8a60-81f1-886c-e0260734ebb6 | 1825 | PTP_CM27_BP_Intercompany Customer | PTP | 1.2.2.2.23 | 1.2.2.2.23 | 2026-05-18 | 2026-05-19 | 2026-04-14 | 0 | 5 | 2800 | 0 | 0 |  |  | -1 | 0 | As Soon As Possible | Auto Scheduled | AMETEK SAP XXL Project Plan Replan MSP Task.csv | AMETEK SAP XXL Project Plan Replan MSP Task.csv__2f0764ccac__2026-05-05T02-44-15-662Z | Muniraju Surappachari | 35 | True | True | Not started | True  -1 0 0 0 0 0 20 | Negative Float High 2 0 0  |  | 1827, 1830, 1831, 1828, 1826, 1829 | True |
| 357ae9be-8a60-81f1-8d72-d090fe9dbc77 | 2781 | Load | Data | 1.2.4.2.67.5 | 1.2.4.2.67.5 | 2026-09-24 | 2026-09-24 | 2026-04-17 | 0 | 6 | 2776 | 1 | 1 | 357ae9be-8a60-815d-b90a-ebfa97225106 | 357ae9be-8a60-8123-bcaf-f47ea361dcf4 | -651 | 0 | As Soon As Possible | Auto Scheduled | AMETEK SAP XXL Project Plan Replan MSP Task.csv | AMETEK SAP XXL Project Plan Replan MSP Task.csv__2f0764ccac__2026-05-05T02-44-15-662Z | Jyoti Nain | 160 | True |  | Not started | True  -651 0 1 0 0 0 26 | Negative Float Critical 2 0 0  |  |  |  |
| 357ae9be-8a60-81f1-a227-f53130a7a359 | 3222 | Run ALE Transaction to QS5 from DS4 130 | PTM | 1.2.3.2.45.1 | 1.2.3.2.45.1 | 2026-06-12 | 2026-06-15 | 2026-04-16 | 0 | 6 | 3221 | 1 | 1 | 357ae9be-8a60-818f-a88e-eec76ded7930 | 357ae9be-8a60-81a2-a442-ee28f6c46151 | -166.02 | 0 | As Soon As Possible | Auto Scheduled | AMETEK SAP XXL Project Plan Replan MSP Task.csv | AMETEK SAP XXL Project Plan Replan MSP Task.csv__2f0764ccac__2026-05-05T02-44-15-662Z | Eric Heisler | 60 | True |  | Not started | True  -166.02 0 1 0 0 0 26 | Wrong Dependency, Negative Float Critical 5 1 0  |  |  |  |
| 357ae9be-8a60-81f1-a28a-c5e7e8fad5bd | 4334 | Error and Defect Mitigation | PTP | 1.2.5.2.27.4 | 1.2.5.2.27.4 | 2026-09-29 | 2026-09-30 | 2026-04-16 | 0 | 6 | 4330 | 1 | 0 | 357ae9be-8a60-8147-8434-c1ad0381f972 |  | -673.27 | 0 | Start No Earlier Than | Auto Scheduled | AMETEK SAP XXL Project Plan Replan MSP Task.csv | AMETEK SAP XXL Project Plan Replan MSP Task.csv__2f0764ccac__2026-05-05T02-44-15-662Z | Nevin Varkey | 167 | True |  | Not started | True  -673.27 0 0 0 0 0 20 | Negative Float, Open Finish Critical 3 0 0 True | 2026-04-17 |  |  |
| 357ae9be-8a60-81f2-8bb8-ed649deb57d8 | 1984 | Load File Staged and Posted "Ready" | Finance | 1.2.2.2.52.1 | 1.2.2.2.52.1 | 2026-05-18 | 2026-05-18 | 2026-04-10 | 0 | 6 | 1983 | 0 | 1 |  | 357ae9be-8a60-8101-a382-e8a212fb3518 | -1771 | 0 | As Soon As Possible | Auto Scheduled | AMETEK SAP XXL Project Plan Replan MSP Task.csv | AMETEK SAP XXL Project Plan Replan MSP Task.csv__2f0764ccac__2026-05-05T02-44-15-662Z | Kasey Hughes | 38 | True | True | Not started | True  -1771 0 1 1 32 0 31 | Wrong Successor, Negative Float, Open Start Critical 6 0 1  |  |  |  |
| 357ae9be-8a60-81f2-8c02-e33f92861d88 | 2445 | Error and Defect Mitigation | Finance | 1.2.4.2.4.4 | 1.2.4.2.4.4 | 2026-09-25 | 2026-09-25 | 2026-04-07 | 0 | 6 | 2441 | 1 | 1 | 357ae9be-8a60-8117-883b-c38f99c7482c | 357ae9be-8a60-81c7-8f3d-d911a4c73c88 | -677.75 | 0 | As Soon As Possible | Auto Scheduled | AMETEK SAP XXL Project Plan Replan MSP Task.csv | AMETEK SAP XXL Project Plan Replan MSP Task.csv__2f0764ccac__2026-05-05T02-44-15-662Z | Kasey Hughes | 171 | True |  | Not started | True  -677.75 0 1 0 0 0 26 | Negative Float Critical 2 0 0  |  |  |  |
| 357ae9be-8a60-81f2-92f1-f3f6eac20fdb | 3165 | Simulate Load | Data | 1.2.3.2.32.3 | 1.2.3.2.32.3 | 2026-06-17 | 2026-06-17 | 2026-04-20 | 0 | 6 | 3162 | 1 | 1 | 357ae9be-8a60-8162-87a7-de28bb7ef31f | 357ae9be-8a60-81a3-a95c-c74dd7ccbc69 | -182.39 | 0 | As Soon As Possible | Auto Scheduled | AMETEK SAP XXL Project Plan Replan MSP Task.csv | AMETEK SAP XXL Project Plan Replan MSP Task.csv__2f0764ccac__2026-05-05T02-44-15-662Z | Jyoti Nain | 58 | True |  | Not started | True  -182.39 0 1 0 0 0 26 | Negative Float Critical 2 0 0  |  |  |  |
| 357ae9be-8a60-81f2-9b4c-cdb1dfa84b63 | 1768 | Simulate Load | Data | 1.2.2.2.14.3 | 1.2.2.2.14.3 | 2026-05-22 | 2026-05-22 | 2026-04-09 | 0 | 6 | 1765 | 1 | 1 | 357ae9be-8a60-81ac-af61-f20e3ac4a88f | 357ae9be-8a60-8112-a484-c6d7bca39266 | -76.52 | 0 | As Soon As Possible | Auto Scheduled | AMETEK SAP XXL Project Plan Replan MSP Task.csv | AMETEK SAP XXL Project Plan Replan MSP Task.csv__2f0764ccac__2026-05-05T02-44-15-662Z | Jyoti Nain | 43 | True |  | Not started | True  -76.52 0 1 0 0 0 26 | Wrong Dependency, Negative Float Critical 5 1 0  |  |  |  |
| 357ae9be-8a60-81f2-a68c-d1ebeffcbbcf | 22 | UAT (DR) | (Unassigned) | 1.3.3.8 | 1.3.3.8 | 2026-08-17 | 2026-10-16 | 2026-09-03 | 0 | 4 | 18 | 0 | 0 |  |  | -5.75 | 0 | As Soon As Possible | Auto Scheduled | AMETEK SAP XXL Project Plan Replan MSP Task.csv | AMETEK SAP XXL Project Plan Replan MSP Task.csv__2f0764ccac__2026-05-05T02-44-15-662Z | COULD NOT BE DETERMINED | 43 | True |  | Not started | True  -5.75 0 0 0 0 0 20 | Negative Float High 2 0 0  |  | 924, 3362, 3361, 925, 926, 927, 930, 928 | True |
| 357ae9be-8a60-81f2-a976-d35078878785 | 1044 | Load File Staged and Posted "Ready" | PTP | 1.2.1.29.1 | 1.2.1.29.1 | 2026-04-15 | 2026-04-15 | 2026-04-15 | 100 | 5 | 936 | 2 | 1 | 357ae9be-8a60-8166-9dbf-e1966cc91c01, 357ae9be-8a60-81ec-8ad9-d9f5e61ffece | 357ae9be-8a60-8105-8688-e90a0baaa353 | 0 | 0 | As Soon As Possible | Auto Scheduled | AMETEK SAP XXL Project Plan Replan MSP Task.csv | AMETEK SAP XXL Project Plan Replan MSP Task.csv__2f0764ccac__2026-05-05T02-44-15-662Z | Nevin Varkey |  |  |  | Done | True  0 0 1 0 0 0 18 | Wrong Dependency High 3 2 0  |  |  |  |
| 357ae9be-8a60-81f2-ace4-d2324c0b7816 | 1222 | Close Client | Basis | 1.1.1.5.3.3 | 1.1.1.5.3.3 | 2026-05-14 | 2026-05-14 | 2026-05-28 | 0 | 6 | 1226 | 1 | 1 | 357ae9be-8a60-8176-baef-ee9da430e290 | 357ae9be-8a60-81be-a0e4-d940959289e5 | -3931 | 0 | As Soon As Possible | Auto Scheduled | AMETEK SAP XXL Project Plan Replan MSP Task.csv | AMETEK SAP XXL Project Plan Replan MSP Task.csv__2f0764ccac__2026-05-05T02-44-15-662Z | Lokchetan Meghavath |  |  | True | Not started | True  -3931 0 1 0 0 0 18 | Negative Float Critical 2 0 0  |  |  |  |
| 357ae9be-8a60-81f3-8c70-e7a393d62f08 | 2592 | Extract File | Data | 1.2.4.2.27.1 | 1.2.4.2.27.1 | 2026-09-29 | 2026-09-29 | 2026-04-15 | 0 | 6 | 2591 | 2 | 2 | 357ae9be-8a60-8194-8b31-ebdfccfeb50e, 357ae9be-8a60-8181-8191-e719cc7d6851 | 357ae9be-8a60-8194-8b31-ebdfccfeb50e, 357ae9be-8a60-8145-abcf-ead9952da254 | -700.38 | 0 | As Soon As Possible | Auto Scheduled | AMETEK SAP XXL Project Plan Replan MSP Task.csv | AMETEK SAP XXL Project Plan Replan MSP Task.csv__2f0764ccac__2026-05-05T02-44-15-662Z | Jyoti Nain | 167 | True |  | Not started | True  -700.38 0 2 2 706 0 37 | Wrong Dependency, Wrong Successor, Negative Float Critical 8 2 2  |  |  |  |
| 357ae9be-8a60-81f3-9241-ea221965459f | 1302 | Release Transports to Client | (Unassigned) | 1.1.1.6.2 | 1.1.1.6.2 | 2026-05-22 | 2026-06-01 | 2026-05-26 | 0 | 5 | 1284 | 1 | 0 | 357ae9be-8a60-8132-b005-eb9f9f5b3f50 |  | -30.19 | 0 | As Soon As Possible | Auto Scheduled | AMETEK SAP XXL Project Plan Replan MSP Task.csv | AMETEK SAP XXL Project Plan Replan MSP Task.csv__2f0764ccac__2026-05-05T02-44-15-662Z | COULD NOT BE DETERMINED | 6 | True |  | Not started | True  -30.19 0 0 0 0 0 20 | Wrong Dependency, Negative Float Critical 5 1 0  |  | 1308, 1310, 1309, 1304, 1305, 1303, 1306, 1307 | True |

| id | uid | name | workstream | outlineNumber | wbs | start | finish | baselineFinish | pct | outlineLevel | parentUid | predCount | sucCount | predIds | sucIds | totalSlackDaysRaw | freeSlackDaysRaw | constraintType | taskMode | mspSourceFile | mspImportVersion | assignedTo | slipDays | isSlipped | isDue14 | status | cpm | scheduleQuality | constraintDate | childUids | isSummary | isOverdueStart |
| --- | --- | --- | --- | --- | --- | --- | --- | --- | --- | --- | --- | --- | --- | --- | --- | --- | --- | --- | --- | --- | --- | --- | --- | --- | --- | --- | --- | --- | --- | --- | --- | --- |
| 357ae9be-8a60-81f3-993e-c6dc004e7a26 | 4229 | Load | Finance | 1.2.5.2.11.2 | 1.2.5.2.11.2 | 2026-09-29 | 2026-10-05 | 2026-04-15 | 0 | 6 | 4227 | 1 | 1 | 357ae9be-8a60-8127-8085-d2f50c3b8da9 | 357ae9be-8a60-8114-bae6-d64076452052 | -704.52 | 0 | Finish No Earlier Than | Auto Scheduled | AMETEK SAP XXL Project Plan Replan MSP Task.csv | AMETEK SAP XXL Project Plan Replan MSP Task.csv__2f0764ccac__2026-05-05T02-44-15-662Z | Kasey Hughes | 173 | True |  | Not started | True  -704.52 0 1 0 0 0 26 | Negative Float Critical 2 0 0 True | 2026-04-21 |  |  |  |
| 357ae9be-8a60-81f3-a3fb-d85aa3f49b30 | 857 | Validate Syniti Connections to QS5 | Data | 1.1.1.5.1.6 | 1.1.1.5.1.6 | 2026-05-01 | 2026-05-01 | 2026-05-15 | 0 | 6 | 3340 | 1 | 1 | 357ae9be-8a60-815f-8946-d0ddc3093181 | 357ae9be-8a60-81c4-8995-e807244adc01 | -25.5 | 0 | As Soon As Possible | Auto Scheduled | AMETEK SAP XXL Project Plan Replan MSP Task.csv | AMETEK SAP XXL Project Plan Replan MSP Task.csv__2f0764ccac__2026-05-05T02-44-15-662Z | Jyoti Nain |  |  |  | Not started | True  -25.5 0 0 0 0 0 14 | Negative Float Critical 2 0 0  |  |  |  | True |
| 357ae9be-8a60-81f3-a4a9-f8a2cf9b64a6 | 2586 | Pre Load Validation | PTM | 1.2.4.2.26.2 | 1.2.4.2.26.2 | 2026-09-28 | 2026-09-28 | 2026-04-14 | 0 | 6 | 2584 | 1 | 1 | 357ae9be-8a60-8118-954c-ebe5e7ddd41b | 357ae9be-8a60-819a-94f5-ff7adfa9d502 | -43560 | 0 | As Soon As Possible | Auto Scheduled | AMETEK SAP XXL Project Plan Replan MSP Task.csv | AMETEK SAP XXL Project Plan Replan MSP Task.csv__2f0764ccac__2026-05-05T02-44-15-662Z | Eric Heisler | 167 | True |  | Not started | True  -43560 0 1 0 0 0 26 | Wrong Dependency, Negative Float Critical 5 1 0  |  |  |  |  |
| 357ae9be-8a60-81f3-a59b-e572863ca563 | 1805 | Load | Data | 1.2.2.2.19.5 | 1.2.2.2.19.5 | 2026-05-18 | 2026-05-18 | 2026-04-14 | 0 | 6 | 1800 | 0 | 1 |  | 357ae9be-8a60-81a6-975b-ed9ff06b79f5 | -70.27 | 0 | As Soon As Possible | Auto Scheduled | AMETEK SAP XXL Project Plan Replan MSP Task.csv | AMETEK SAP XXL Project Plan Replan MSP Task.csv__2f0764ccac__2026-05-05T02-44-15-662Z | Jyoti Nain | 34 | True | True | Not started | True  -70.27 0 1 0 0 0 26 | Negative Float, Open Start Critical 3 0 0  |  |  |  |  |
| 357ae9be-8a60-81f3-af6a-ccceee9fdd1e | 1809 | Pre Load Validation | PTP | 1.2.2.2.20.2 | 1.2.2.2.20.2 | 2026-05-18 | 2026-05-18 | 2026-04-10 | 0 | 6 | 1807 | 1 | 1 | 357ae9be-8a60-816e-af41-c14436fd6ae0 | 357ae9be-8a60-8127-9dd9-eb57ce65bb26 | -11.52 | 0 | As Soon As Possible | Auto Scheduled | AMETEK SAP XXL Project Plan Replan MSP Task.csv | AMETEK SAP XXL Project Plan Replan MSP Task.csv__2f0764ccac__2026-05-05T02-44-15-662Z | Nevin Varkey | 38 | True | True | Not started | True  -11.52 0 1 0 0 0 26 | Wrong Dependency, Negative Float Critical 5 1 0  |  |  |  |  |
| 357ae9be-8a60-81f3-b470-e486cf842928 | 3370 | Client Config / Validation | Basis | 1.1.1.8.1.2 | 1.1.1.8.1.2 | 2026-09-09 | 2026-09-10 | 2026-06-29 | 0 | 6 | 3368 | 1 | 2 | 357ae9be-8a60-817f-a172-cc0cc6717f14 | 357ae9be-8a60-8185-a59f-d11f46aa5b30, 357ae9be-8a60-8161-852c-e5a6205210b3 | -90.75 | 0 | As Soon As Possible | Auto Scheduled | AMETEK SAP XXL Project Plan Replan MSP Task.csv | AMETEK SAP XXL Project Plan Replan MSP Task.csv__2f0764ccac__2026-05-05T02-44-15-662Z | Lokchetan Meghavath | 73 | True |  | Not started | True  -90.75 0 2 2 668 0 37 | Wrong Successor, Negative Float Critical 5 0 2  |  |  |  |  |
| 357ae9be-8a60-81f3-b594-e039011327da | 1999 | Load | Data | 1.2.2.2.54.5 | 1.2.2.2.54.5 | 2026-05-22 | 2026-05-22 | 2026-04-17 | 0 | 6 | 1994 | 1 | 1 | 357ae9be-8a60-8184-b212-ef9d09825651 | 357ae9be-8a60-814a-8fb4-d7577706739d | -39.27 | 0 | As Soon As Possible | Auto Scheduled | AMETEK SAP XXL Project Plan Replan MSP Task.csv | AMETEK SAP XXL Project Plan Replan MSP Task.csv__2f0764ccac__2026-05-05T02-44-15-662Z | Jyoti Nain | 35 | True |  | Not started | True  -39.27 0 1 0 0 0 26 | Negative Float Critical 2 0 0  |  |  |  |  |
| 357ae9be-8a60-81f3-b750-fa4538bed458 | 2972 | Error and Defect Mitigation | Finance | 1.2.3.2.3.4 | 1.2.3.2.3.4 | 2026-06-10 | 2026-06-11 | 2026-04-08 | 0 | 6 | 2968 | 1 | 1 | 357ae9be-8a60-8112-83e8-f7c442de8fb5 | 357ae9be-8a60-81a6-8531-d077972e0ef9 | -196.52 | 0 | As Soon As Possible | Auto Scheduled | AMETEK SAP XXL Project Plan Replan MSP Task.csv | AMETEK SAP XXL Project Plan Replan MSP Task.csv__2f0764ccac__2026-05-05T02-44-15-662Z | Kasey Hughes | 64 | True |  | Not started | True  -196.52 0 1 0 0 0 26 | Negative Float Critical 2 0 0  |  |  |  |  |
| 357ae9be-8a60-81f3-bedb-c2d9f81325ba | 1959 | Pre Load Validation | PTM | 1.2.2.2.47.2 | 1.2.2.2.47.2 | 2026-05-25 | 2026-05-25 | 2026-04-17 | 0 | 6 | 1957 | 1 | 1 | 357ae9be-8a60-816c-bc31-d42762250de7 | 357ae9be-8a60-81d5-b4a5-f5402d74a94e | -4036 | 0 | As Soon As Possible | Auto Scheduled | AMETEK SAP XXL Project Plan Replan MSP Task.csv | AMETEK SAP XXL Project Plan Replan MSP Task.csv__2f0764ccac__2026-05-05T02-44-15-662Z | Eric Heisler | 38 | True |  | Not started | True  -4036 0 1 0 0 0 26 | Negative Float Critical 2 0 0  |  |  |  |  |
| 357ae9be-8a60-81f4-8177-f18d524e6d89 | 4518 | Simulate Load | Data | 1.2.5.2.67.3 | 1.2.5.2.67.3 | 2026-09-24 | 2026-09-24 | 2026-04-16 | 0 | 6 | 4515 | 1 | 1 | 357ae9be-8a60-814a-bcd1-e3c51083fd6a | 357ae9be-8a60-81d8-8d43-f4c1972dec58 | -651.02 | 0 | As Soon As Possible | Auto Scheduled | AMETEK SAP XXL Project Plan Replan MSP Task.csv | AMETEK SAP XXL Project Plan Replan MSP Task.csv__2f0764ccac__2026-05-05T02-44-15-662Z | Jyoti Nain | 161 | True |  | Not started | True  -651.02 0 1 0 0 0 26 | Negative Float Critical 2 0 0  |  |  |  |  |
| 357ae9be-8a60-81f4-85e4-f92b85f773c0 | 706 | GTS - License - Create | (Unassigned) | 1.2.1.63 | 1.2.1.63 | 2026-04-16 | 2026-04-16 | 2026-04-16 | 100 | 4 | 425 | 0 | 0 |  |  | 0 | 0 | As Soon As Possible | Auto Scheduled | AMETEK SAP XXL Project Plan Replan MSP Task.csv | AMETEK SAP XXL Project Plan Replan MSP Task.csv__2f0764ccac__2026-05-05T02-44-15-662Z | COULD NOT BE DETERMINED |  |  |  | Done | True  0 0 0 0 0 0 12 | Low 0 0 0  |  | 1186, 1187 | True |  |
| 357ae9be-8a60-81f4-906e-e1c30acc6349 | 3383 | Release Security roles to Functional Team | Security | 1.1.1.8.1.15 | 1.1.1.8.1.15 | 2026-09-16 | 2026-09-16 | 2026-07-07 | 0 | 6 | 3368 | 1 | 0 | 357ae9be-8a60-813d-ba6d-cbecad728247 |  | -678.52 | 0 | As Soon As Possible | Auto Scheduled | AMETEK SAP XXL Project Plan Replan MSP Task.csv | AMETEK SAP XXL Project Plan Replan MSP Task.csv__2f0764ccac__2026-05-05T02-44-15-662Z | Manjunatha Umesha | 71 | True |  | Not started | True  -678.52 0 0 0 0 0 20 | Wrong Dependency, Negative Float, Open Finish Critical 6 1 0  |  |  |  |  |
| 357ae9be-8a60-81f4-9306-de7147a35343 | 2713 | Simulate Load | Data | 1.2.4.2.50.3 | 1.2.4.2.50.3 | 2026-10-08 | 2026-10-08 | 2026-04-20 | 0 | 6 | 2710 | 1 | 1 | 357ae9be-8a60-812a-9872-cc68c59f780e | 357ae9be-8a60-81de-8f77-c9190b5eb9c1 | -726 | 0 | As Soon As Possible | Auto Scheduled | AMETEK SAP XXL Project Plan Replan MSP Task.csv | AMETEK SAP XXL Project Plan Replan MSP Task.csv__2f0764ccac__2026-05-05T02-44-15-662Z | Jyoti Nain | 171 | True |  | Not started | True  -726 0 1 0 0 0 26 | Negative Float Critical 2 0 0  |  |  |  |  |
| 357ae9be-8a60-81f4-970c-e95b60d4be16 | 4189 | Pre Load Validation | Finance | 1.2.5.2.5.2 | 1.2.5.2.5.2 | 2026-09-28 | 2026-09-28 | 2026-04-08 | 0 | 6 | 4187 | 1 | 1 | 357ae9be-8a60-81b6-9251-fa970d4a5b6e | 357ae9be-8a60-815d-88e3-f0cca531c21d | -665.52 | 0 | As Soon As Possible | Auto Scheduled | AMETEK SAP XXL Project Plan Replan MSP Task.csv | AMETEK SAP XXL Project Plan Replan MSP Task.csv__2f0764ccac__2026-05-05T02-44-15-662Z | Kasey Hughes | 173 | True |  | Not started | True  -665.52 0 1 0 0 0 26 | Negative Float Critical 2 0 0  |  |  |  |  |
| 357ae9be-8a60-81f4-aab5-c9f63036bcec | 1034 | Simulate Load | Data | 1.2.1.27.3 | 1.2.1.27.3 | 2026-04-14 | 2026-04-14 | 2026-04-14 | 100 | 5 | 749 | 1 | 1 | 357ae9be-8a60-81b0-bb0f-c405ccc2c927 | 357ae9be-8a60-8167-921f-f937c2e9cb75 | 0 | 0 | As Soon As Possible | Auto Scheduled | AMETEK SAP XXL Project Plan Replan MSP Task.csv | AMETEK SAP XXL Project Plan Replan MSP Task.csv__2f0764ccac__2026-05-05T02-44-15-662Z | Jyoti Nain |  |  |  | Done | True  0 0 1 0 0 0 18 | Low 0 0 0  |  |  |  |  |
| 357ae9be-8a60-81f4-b537-ca6fa6063037 | 1965 | Manual File Staged and Posted "Ready" | PTM | 1.2.2.2.48.1 | 1.2.2.2.48.1 | 2026-05-27 | 2026-05-27 | 2026-04-17 | 0 | 6 | 1964 | 1 | 1 | 357ae9be-8a60-81ca-abff-e32cc3aac5b4 | 357ae9be-8a60-811a-9ecf-f1007ff9b81d | -4036 | 0 | As Soon As Possible | Auto Scheduled | AMETEK SAP XXL Project Plan Replan MSP Task.csv | AMETEK SAP XXL Project Plan Replan MSP Task.csv__2f0764ccac__2026-05-05T02-44-15-662Z | Eric Heisler | 40 | True |  | Not started | True  -4036 0 1 0 0 0 26 | Wrong Dependency, Negative Float Critical 5 1 0  |  |  |  |  |
| 357ae9be-8a60-81f4-b816-cd1f4c47f7f1 | 4160 | PROD Data Load Tasks P? | Data | 1.2.5 | 1.2.5 | 2026-09-24 | 2026-10-08 | 2026-04-21 | 0 | 3 | 682 | 1 | 0 | 357ae9be-8a60-8147-a65f-ce9d9fe9d77f |  | -90.75 | 0 | As Soon As Possible | Auto Scheduled | AMETEK SAP XXL Project Plan Replan MSP Task.csv | AMETEK SAP XXL Project Plan Replan MSP Task.csv__2f0764ccac__2026-05-05T02-44-15-662Z | Jyoti Nain | 170 | True |  | Not started | True  -90.75 0 0 0 0 0 20 | Wrong Dependency, Negative Float Critical 5 1 0  |  | 4162, 4540, 4531, 4530, 4161 | True |  |
| 357ae9be-8a60-81f4-bd59-ce26678bf808 | 4244 | Pre Load Validation | OTC | 1.2.5.2.14.2 | 1.2.5.2.14.2 | 2026-09-29 | 2026-09-29 | 2026-04-09 | 0 | 6 | 4242 | 1 | 0 | 357ae9be-8a60-813e-814f-eba85c5f881c |  | -40261 | 0 | As Soon As Possible | Auto Scheduled | AMETEK SAP XXL Project Plan Replan MSP Task.csv | AMETEK SAP XXL Project Plan Replan MSP Task.csv__2f0764ccac__2026-05-05T02-44-15-662Z | Ric Haraida | 173 | True |  | Not started | True  -40261 0 0 0 0 0 20 | Negative Float, Open Finish Critical 3 0 0  |  |  |  |  |
| 357ae9be-8a60-81f5-83b7-cf3dc192f6d2 | 2479 | Load | Data | 1.2.4.2.9.5 | 1.2.4.2.9.5 | 2026-09-24 | 2026-09-25 | 2026-04-09 | 0 | 6 | 2474 | 1 | 2 | 357ae9be-8a60-81d2-9961-cea0bf8d4c47 | 357ae9be-8a60-8145-9194-de4910f8b1a0, 357ae9be-8a60-81b1-9755-fd8140e56513 | -690.5 | 0 | Finish No Earlier Than | Auto Scheduled | AMETEK SAP XXL Project Plan Replan MSP Task.csv | AMETEK SAP XXL Project Plan Replan MSP Task.csv__2f0764ccac__2026-05-05T02-44-15-662Z | Jyoti Nain | 169 | True |  | Not started | True  -690.5 0 2 2 708 0 37 | Wrong Successor, Negative Float Critical 5 0 2 True | 2026-04-15 |  |  |  |
| 357ae9be-8a60-81f5-9349-f183da999080 | 248 | GRC Security Utility | Security | 1.1.2 | 1.1.2 | 2025-02-17 | 2026-10-22 | 2026-04-06 | 88 | 3 | 2 | 0 | 0 |  |  | 12 | 12 | As Soon As Possible | Auto Scheduled | AMETEK SAP XXL Project Plan Replan MSP Task.csv | AMETEK SAP XXL Project Plan Replan MSP Task.csv__2f0764ccac__2026-05-05T02-44-15-662Z | Manjunatha Umesha | 199 | True |  | In progress |   12 12 0 0 0 0 8 | Low 0 0 0  |  | 24, 294, 299, 271, 55, 274, 264, 253, 267, 278 | True |  |
| 357ae9be-8a60-81f5-96e8-ce622850625c | 3084 | Simulate Load/ Not Needed | PTP | 1.2.3.2.20.3 | 1.2.3.2.20.3 | 2026-06-08 | 2026-06-08 | 2026-04-10 | 0 | 6 | 3081 | 1 | 2 | 357ae9be-8a60-81f8-a2eb-edcb18732e06 | 357ae9be-8a60-8172-ba47-ecdb909b1f4a, 357ae9be-8a60-813e-89b9-f1c9b1382b41 | -131.52 | 0 | As Soon As Possible | Auto Scheduled | AMETEK SAP XXL Project Plan Replan MSP Task.csv | AMETEK SAP XXL Project Plan Replan MSP Task.csv__2f0764ccac__2026-05-05T02-44-15-662Z | Nevin Varkey | 59 | True |  | Not started | True  -131.52 0 2 2 438 0 37 | Wrong Successor, Negative Float Critical 5 0 2  |  |  |  |  |
| 357ae9be-8a60-81f5-98dc-e8ca7566ce5e | 2596 | Load | Data | 1.2.4.2.27.5 | 1.2.4.2.27.5 | 2026-09-24 | 2026-09-24 | 2026-04-15 | 0 | 6 | 2591 | 1 | 1 | 357ae9be-8a60-814e-a320-ec1ac9bb1c59 | 357ae9be-8a60-81ff-9c79-e51241dafa8d | -647.5 | 0 | Start No Earlier Than | Auto Scheduled | AMETEK SAP XXL Project Plan Replan MSP Task.csv | AMETEK SAP XXL Project Plan Replan MSP Task.csv__2f0764ccac__2026-05-05T02-44-15-662Z | Jyoti Nain | 162 | True |  | Not started | True  -647.5 0 1 0 0 0 26 | Wrong Dependency, Negative Float Critical 5 1 0 True | 2026-04-17 |  |  |  |
| 357ae9be-8a60-81f5-9a42-e4f0a47e1507 | 672 | Fiori App Activation | Development | 1.1.1.4.13 | 1.1.1.4.13 | 2026-02-09 | 2026-02-09 | 2026-02-09 | 100 | 5 | 88 | 1 | 0 | 357ae9be-8a60-816b-a234-f41a5d72c961 |  | 0 | 0 | As Soon As Possible | Auto Scheduled | AMETEK SAP XXL Project Plan Replan MSP Task.csv | AMETEK SAP XXL Project Plan Replan MSP Task.csv__2f0764ccac__2026-05-05T02-44-15-662Z | Bijoykrishna Das |  |  |  | Done | True  0 0 0 0 0 0 12 | Low 0 0 0  |  |  |  |  |
| 357ae9be-8a60-81f5-9ed1-d7da670598d0 | 4526 | Error and Defect Mitigation | Finance | 1.2.5.2.68.4 | 1.2.5.2.68.4 | 2026-09-24 | 2026-09-24 | 2026-04-17 | 0 | 6 | 4522 | 1 | 1 | 357ae9be-8a60-8130-accb-cf794d8250fb | 357ae9be-8a60-81a7-9cdc-c03fa59eac86 | -651.52 | 0 | As Soon As Possible | Auto Scheduled | AMETEK SAP XXL Project Plan Replan MSP Task.csv | AMETEK SAP XXL Project Plan Replan MSP Task.csv__2f0764ccac__2026-05-05T02-44-15-662Z | Kasey Hughes | 160 | True |  | Not started | True  -651.52 0 1 0 0 0 26 | Negative Float Critical 2 0 0  |  |  |  |  |
| 357ae9be-8a60-81f5-a650-eaae7630c55c | 3028 | OTC_CM19_Customer_Master - Bill-To | OTC | 1.2.3.2.12 | 1.2.3.2.12 | 2026-06-08 | 2026-06-08 | 2025-04-16 | 0 | 5 | 2959 | 0 | 0 |  |  | -121.52 | 0 | As Soon As Possible | Auto Scheduled | AMETEK SAP XXL Project Plan Replan MSP Task.csv | AMETEK SAP XXL Project Plan Replan MSP Task.csv__2f0764ccac__2026-05-05T02-44-15-662Z | Anitha Jothi | 418 | True |  | Not started | True  -121.52 0 0 0 0 0 20 | Negative Float, Open Start, Open Finish Critical 4 0 0  |  |  |  |  |
| 357ae9be-8a60-81f5-b601-cdd7c2772c27 | 694 | PTM_CM31_BOM Conversion | PTM | 1.2.1.31 | 1.2.1.31 | 2026-04-15 | 2026-04-17 | 2026-04-17 | 100 | 4 | 425 | 0 | 0 |  |  | 0 | 0 | As Soon As Possible | Auto Scheduled | AMETEK SAP XXL Project Plan Replan MSP Task.csv | AMETEK SAP XXL Project Plan Replan MSP Task.csv__2f0764ccac__2026-05-05T02-44-15-662Z | Brad Meseck |  |  |  | Done | True  0 0 0 0 0 0 12 | Low 0 0 0  |  | 1061, 1060, 1056, 1059, 1058, 1057 | True |  |
| 357ae9be-8a60-81f5-bd58-cd925c50c7af | 4361 | Simulate Load | Data | 1.2.5.2.31.3 | 1.2.5.2.31.3 | 2026-10-02 | 2026-10-02 | 2026-04-17 | 0 | 6 | 4358 | 1 | 1 | 357ae9be-8a60-8144-ae5c-e9a73c0becf6 | 357ae9be-8a60-8178-893d-d8eafd27c514 | -700.39 | 0 | As Soon As Possible | Auto Scheduled | AMETEK SAP XXL Project Plan Replan MSP Task.csv | AMETEK SAP XXL Project Plan Replan MSP Task.csv__2f0764ccac__2026-05-05T02-44-15-662Z | Jyoti Nain | 168 | True |  | Not started | True  -700.39 0 1 0 0 0 26 | Negative Float Critical 2 0 0  |  |  |  |  |
| 357ae9be-8a60-81f6-81ad-c1ff46855c97 | 686 | ITC-1 Team Testing | TESTING | 1.3.3.5.4 | 1.3.3.5.4 | 2026-04-27 | 2026-05-18 | 2026-05-15 | 25 | 5 | 19 | 1 | 1 | 357ae9be-8a60-8110-a79f-c1411b7deee6 | 357ae9be-8a60-8168-8aa8-e9b4122475fc | 125.66 | 3 | Start No Earlier Than | Auto Scheduled | AMETEK SAP XXL Project Plan Replan MSP Task.csv | AMETEK SAP XXL Project Plan Replan MSP Task.csv__2f0764ccac__2026-05-05T02-44-15-662Z | Kishore Kakarla | 3 | True | True | In progress |   125.66 3 1 1 12 0 19 | Low 0 0 0 True | 2026-04-27 |  |  |  |
| 357ae9be-8a60-81f6-8575-df565710e8fa | 1901 | Post Load Validation | PTM | 1.2.2.2.33.6 | 1.2.2.2.33.6 | 2026-05-22 | 2026-05-25 | 2026-04-17 | 0 | 6 | 1895 | 1 | 1 | 357ae9be-8a60-81a2-986f-d435a4b2224b | 357ae9be-8a60-81de-a5fb-e7ecf7da5267 | -53.77 | 0 | As Soon As Possible | Auto Scheduled | AMETEK SAP XXL Project Plan Replan MSP Task.csv | AMETEK SAP XXL Project Plan Replan MSP Task.csv__2f0764ccac__2026-05-05T02-44-15-662Z | Brad Meseck | 38 | True |  | Not started | True  -53.77 0 1 0 0 0 26 | Negative Float Critical 2 0 0  |  |  |  |  |
| 357ae9be-8a60-81f6-871b-ea524cbb2802 | 4378 | Post Load Validation | PTM | 1.2.5.2.33.6 | 1.2.5.2.33.6 | 2026-09-30 | 2026-09-30 | 2026-04-17 | 0 | 6 | 4372 | 1 | 1 | 357ae9be-8a60-81bd-bb6b-f2832b045154 | 357ae9be-8a60-8127-aeaa-d9f2f6a8b729 | -695.77 | 0 | Finish No Earlier Than | Auto Scheduled | AMETEK SAP XXL Project Plan Replan MSP Task.csv | AMETEK SAP XXL Project Plan Replan MSP Task.csv__2f0764ccac__2026-05-05T02-44-15-662Z | Brad Meseck | 166 | True |  | Not started | True  -695.77 0 1 0 0 0 26 | Negative Float Critical 2 0 0 True | 2026-04-17 |  |  |  |
| 357ae9be-8a60-81f6-8b16-c7e49f54caee | 916 | Test Kickoff | PMO | 1.3.3.7.6 | 1.3.3.7.6 | 2026-07-13 | 2026-07-13 | 2026-06-18 | 0 | 5 | 915 | 1 | 1 | 357ae9be-8a60-8116-9f13-ebe42c8bf5e2 | 357ae9be-8a60-81ac-a587-fbf566c37062 | 0 | 0 | Must Start On | Auto Scheduled | AMETEK SAP XXL Project Plan Replan MSP Task.csv | AMETEK SAP XXL Project Plan Replan MSP Task.csv__2f0764ccac__2026-05-05T02-44-15-662Z | Renee DiTullio | 25 | True |  | Not started | True  0 0 1 0 0 0 26 | Low 0 0 0 True | 2026-07-13 |  |  |  |
| 357ae9be-8a60-81f6-8f97-f94fe9c2fec3 | 3007 | Error and Defect Mitigation | Finance | 1.2.3.2.8.4 | 1.2.3.2.8.4 | 2026-06-10 | 2026-06-10 | 2026-04-08 | 0 | 6 | 3003 | 1 | 1 | 357ae9be-8a60-81e0-871e-f8ac12899265 | 357ae9be-8a60-8195-8916-fae3d3285352 | -140.52 | 0 | As Soon As Possible | Auto Scheduled | AMETEK SAP XXL Project Plan Replan MSP Task.csv | AMETEK SAP XXL Project Plan Replan MSP Task.csv__2f0764ccac__2026-05-05T02-44-15-662Z | Kasey Hughes | 63 | True |  | Not started | True  -140.52 0 1 0 0 0 26 | Negative Float Critical 2 0 0  |  |  |  |  |
| 357ae9be-8a60-81f6-9c81-e66f9259c48b | 1016 | Simulate Load | Data | 1.2.1.23.3 | 1.2.1.23.3 | 2026-04-13 | 2026-04-13 | 2026-04-13 | 100 | 5 | 693 | 1 | 1 | 357ae9be-8a60-8133-9fdd-cd69dde169e0 | 357ae9be-8a60-8120-b1ac-f250f97ee2c5 | 0 | 0 | As Soon As Possible | Auto Scheduled | AMETEK SAP XXL Project Plan Replan MSP Task.csv | AMETEK SAP XXL Project Plan Replan MSP Task.csv__2f0764ccac__2026-05-05T02-44-15-662Z | Jyoti Nain |  |  |  | Done | True  0 0 1 0 0 0 18 | Low 0 0 0  |  |  |  |  |
| 357ae9be-8a60-81f6-a633-f76d7c10f2f7 | 659 | Import Group 2 - Core Transports | Development;PTM;Finance;PMO;Europe IT lead;OTC;TESTING | 1.1.1.4.18.3 | 1.1.1.4.18.3 | 2026-03-23 | 2026-03-23 | 2026-03-23 | 100 | 6 | 647 | 1 | 1 | 357ae9be-8a60-81fa-a63e-c9fa1c6121d9 | 357ae9be-8a60-8112-b607-cc3c84e6c5d3 | 0 | 0 | As Soon As Possible | Auto Scheduled | AMETEK SAP XXL Project Plan Replan MSP Task.csv | AMETEK SAP XXL Project Plan Replan MSP Task.csv__2f0764ccac__2026-05-05T02-44-15-662Z | Bijoykrishna Das |  |  |  | Done | True  0 0 1 0 0 0 18 | Low 0 0 0  |  |  |  |  |
| 357ae9be-8a60-81f6-a99c-f647a867cb3c | 1013 | Post Load Validation | Finance | 1.2.1.22.3 | 1.2.1.22.3 | 2026-04-16 | 2026-04-16 | 2026-04-13 | 100 | 5 | 935 | 1 | 0 | 357ae9be-8a60-81a4-858e-d0c6b36dc00a |  | 0 | 0 | As Soon As Possible | Auto Scheduled | AMETEK SAP XXL Project Plan Replan MSP Task.csv | AMETEK SAP XXL Project Plan Replan MSP Task.csv__2f0764ccac__2026-05-05T02-44-15-662Z | Kasey Hughes |  |  |  | Done | True  0 0 0 0 0 0 12 | Low 0 0 0  |  |  |  |  |
| 357ae9be-8a60-81f6-ac26-f1d4a2895e33 | 3111 | Load | Data | 1.2.3.2.24.5 | 1.2.3.2.24.5 | 2026-06-10 | 2026-06-10 | 2026-04-15 | 0 | 6 | 3106 | 1 | 0 | 357ae9be-8a60-8124-8b73-eaed9492d54a |  | -190.27 | 0 | As Soon As Possible | Auto Scheduled | AMETEK SAP XXL Project Plan Replan MSP Task.csv | AMETEK SAP XXL Project Plan Replan MSP Task.csv__2f0764ccac__2026-05-05T02-44-15-662Z | Jyoti Nain | 56 | True |  | Not started | True  -190.27 0 0 0 0 0 20 | Negative Float, Open Finish Critical 3 0 0  |  |  |  |  |
| 357ae9be-8a60-81f6-b251-d736ecd10e24 | 2523 | Post Load Validation | OTC | 1.2.4.2.16.3 | 1.2.4.2.16.3 | 2026-10-01 | 2026-10-01 | 2026-04-10 | 0 | 6 | 2520 | 1 | 0 | 357ae9be-8a60-81d6-b169-caa7eea2e49c |  | -685.5 | 0 | As Soon As Possible | Auto Scheduled | AMETEK SAP XXL Project Plan Replan MSP Task.csv | AMETEK SAP XXL Project Plan Replan MSP Task.csv__2f0764ccac__2026-05-05T02-44-15-662Z | Ric Haraida | 174 | True |  | Not started | True  -685.5 0 0 0 0 0 20 | Negative Float, Open Finish Critical 3 0 0  |  |  |  |  |
| 357ae9be-8a60-81f6-bbfa-f274efb3008b | 2443 | Pre Load Validation | Finance | 1.2.4.2.4.2 | 1.2.4.2.4.2 | 2026-09-24 | 2026-09-25 | 2026-04-07 | 0 | 6 | 2441 | 1 | 1 | 357ae9be-8a60-813b-87b2-e90e33a3d943 | 357ae9be-8a60-8117-883b-c38f99c7482c | -677.75 | 0 | As Soon As Possible | Auto Scheduled | AMETEK SAP XXL Project Plan Replan MSP Task.csv | AMETEK SAP XXL Project Plan Replan MSP Task.csv__2f0764ccac__2026-05-05T02-44-15-662Z | Kasey Hughes | 171 | True |  | Not started | True  -677.75 0 1 0 0 0 26 | Negative Float Critical 2 0 0  |  |  |  |  |
| 357ae9be-8a60-81f7-83df-efbc214a3b7e | 1096 | Simulate Load | Data | 1.2.1.47.3 | 1.2.1.47.3 | 2026-04-15 | 2026-04-20 | 2026-04-16 | 100 | 5 | 713 | 1 | 1 | 357ae9be-8a60-8151-84ee-c4d69568dbe7 | 357ae9be-8a60-811f-9664-ebb83cae0e11 | 0 | 0 | Finish No Earlier Than | Auto Scheduled | AMETEK SAP XXL Project Plan Replan MSP Task.csv | AMETEK SAP XXL Project Plan Replan MSP Task.csv__2f0764ccac__2026-05-05T02-44-15-662Z | Jyoti Nain |  |  |  | Done | True  0 0 1 0 0 0 18 | Low 0 0 0 True | 2026-04-20 |  |  |  |
| 357ae9be-8a60-81f7-8e1f-e0cd03bcbdec | 4322 | Post Load Validation | PTP;OTC | 1.2.5.2.25.6 | 1.2.5.2.25.6 | 2026-09-28 | 2026-09-29 | 2026-04-15 | 0 | 6 | 4316 | 1 | 0 | 357ae9be-8a60-81ba-96b1-c0533b227b88 |  | -667.27 | 0 | As Soon As Possible | Auto Scheduled | AMETEK SAP XXL Project Plan Replan MSP Task.csv | AMETEK SAP XXL Project Plan Replan MSP Task.csv__2f0764ccac__2026-05-05T02-44-15-662Z | Nevin Varkey | 167 | True |  | Not started | True  -667.27 0 0 0 0 0 20 | Negative Float, Open Finish Critical 3 0 0  |  |  |  |  |
| 357ae9be-8a60-81f7-a3a2-c0a57a6213fd | 1209 | Initialize Embargo situation | (Unassigned) | 1.2.1.66 | 1.2.1.66 | 2026-04-13 | 2026-04-14 | 2026-04-14 | 100 | 4 | 425 | 0 | 0 |  |  | 0 | 0 | As Soon As Possible | Auto Scheduled | AMETEK SAP XXL Project Plan Replan MSP Task.csv | AMETEK SAP XXL Project Plan Replan MSP Task.csv__2f0764ccac__2026-05-05T02-44-15-662Z | COULD NOT BE DETERMINED |  |  |  | Done | True  0 0 0 0 0 0 12 | Low 0 0 0  |  | 1211, 1210, 1212 | True |  |
| 357ae9be-8a60-81f7-b4c2-d7a24083eb7c | 2006 | Post Load Validation | OTC | 1.2.2.2.56.2 | 1.2.2.2.56.2 | 2026-05-18 | 2026-05-18 | 2026-04-10 | 0 | 6 | 2004 | 1 | 0 | 357ae9be-8a60-8124-b471-ee89ea2c4094 |  | -1.52 | 0 | As Soon As Possible | Auto Scheduled | AMETEK SAP XXL Project Plan Replan MSP Task.csv | AMETEK SAP XXL Project Plan Replan MSP Task.csv__2f0764ccac__2026-05-05T02-44-15-662Z | James VanRiper | 38 | True | True | Not started | True  -1.52 0 0 0 0 0 20 | Negative Float, Open Finish High 3 0 0  |  |  |  |  |
| 357ae9be-8a60-81f7-b66d-da9bf53a4502 | 1 | AMETEK Release-1, 3-Deployment Plan | (Unassigned) | 1 | 1 | 2025-02-17 | 2026-11-09 | 2026-10-16 | 50 | 1 |  | 0 | 0 |  |  | 0 | 0 | As Soon As Possible | Auto Scheduled | AMETEK SAP XXL Project Plan Replan MSP Task.csv | AMETEK SAP XXL Project Plan Replan MSP Task.csv__2f0764ccac__2026-05-05T02-44-15-662Z | COULD NOT BE DETERMINED | 24 | True |  | In progress | True  0 0 0 0 0 0 20 | Low 0 0 0  |  | 682, 683, 2, 681 | True |  |
| 357ae9be-8a60-81f8-8d62-df8f9aab4f1a | 4237 | Close Client | Basis | 1.2.5.2.13.5 | 1.2.5.2.13.5 | 2026-09-29 | 2026-09-29 | 2026-04-13 | 0 | 6 | 4232 | 1 | 0 | 357ae9be-8a60-811b-bd41-d63decbf8341 |  | -40276 | 0 | As Soon As Possible | Auto Scheduled | AMETEK SAP XXL Project Plan Replan MSP Task.csv | AMETEK SAP XXL Project Plan Replan MSP Task.csv__2f0764ccac__2026-05-05T02-44-15-662Z | Lokchetan Meghavath | 169 | True |  | Not started | True  -40276 0 0 0 0 0 20 | Negative Float, Open Finish Critical 3 0 0  |  |  |  |  |
| 357ae9be-8a60-81f8-9a0b-c1c43b21d9d6 | 3263 | Post Load Validation | Finance | 1.2.3.2.52.6 | 1.2.3.2.52.6 | 2026-06-11 | 2026-06-11 | 2026-04-13 | 0 | 6 | 3257 | 1 | 0 | 357ae9be-8a60-8145-8155-f11cf3d89c7e |  | -149.52 | 0 | As Soon As Possible | Auto Scheduled | AMETEK SAP XXL Project Plan Replan MSP Task.csv | AMETEK SAP XXL Project Plan Replan MSP Task.csv__2f0764ccac__2026-05-05T02-44-15-662Z | Kasey Hughes | 59 | True |  | Not started | True  -149.52 0 0 0 0 0 20 | Negative Float, Open Finish Critical 3 0 0  |  |  |  |  |
| 357ae9be-8a60-81f8-a2eb-edcb18732e06 | 3083 | Pre Load Validation | PTP | 1.2.3.2.20.2 | 1.2.3.2.20.2 | 2026-06-08 | 2026-06-08 | 2026-04-10 | 0 | 6 | 3081 | 1 | 1 | 357ae9be-8a60-81c1-9add-ec09fa3dbaac | 357ae9be-8a60-81f5-96e8-ce622850625c | -131.52 | 0 | As Soon As Possible | Auto Scheduled | AMETEK SAP XXL Project Plan Replan MSP Task.csv | AMETEK SAP XXL Project Plan Replan MSP Task.csv__2f0764ccac__2026-05-05T02-44-15-662Z | Nevin Varkey | 59 | True |  | Not started | True  -131.52 0 1 0 0 0 26 | Wrong Dependency, Negative Float Critical 5 1 0  |  |  |  |  |
| 357ae9be-8a60-81f8-b36c-f19067de58f3 | 1307 | Import Group 3 - prior to transactions | Development;PTM;Finance;PMO;Europe IT lead;OTC;TESTING | 1.1.1.6.2.5 | 1.1.1.6.2.5 | 2026-05-28 | 2026-05-28 | 2026-05-25 | 0 | 6 | 1302 | 1 | 1 | 357ae9be-8a60-81ac-b9ff-c4fc81e94b10 | 357ae9be-8a60-8123-922a-c49fc5877537 | -241.52 | 0 | As Soon As Possible | Auto Scheduled | AMETEK SAP XXL Project Plan Replan MSP Task.csv | AMETEK SAP XXL Project Plan Replan MSP Task.csv__2f0764ccac__2026-05-05T02-44-15-662Z | Bijoykrishna Das | 3 | True |  | Not started | True  -241.52 0 1 0 0 0 26 | Negative Float Critical 2 0 0  |  |  |  |  |
| 357ae9be-8a60-81f9-8103-c2590b210309 | 781 | Post Load Validation | Finance | 1.2.1.2.3 | 1.2.1.2.3 | 2026-04-06 | 2026-04-06 | 2026-04-06 | 100 | 5 | 755 | 1 | 2 | 357ae9be-8a60-815c-bf67-c4833f09610a | 357ae9be-8a60-813d-a1c6-f96b9af3ecb2, 357ae9be-8a60-81b1-9755-fd8140e56513 | 0 | 0 | As Soon As Possible | Auto Scheduled | AMETEK SAP XXL Project Plan Replan MSP Task.csv | AMETEK SAP XXL Project Plan Replan MSP Task.csv__2f0764ccac__2026-05-05T02-44-15-662Z | Kasey Hughes |  |  |  | Done | True  0 0 2 0 0 0 24 | Low 0 0 0  |  |  |  |  |
| 357ae9be-8a60-81f9-8384-f06ee02fdf2b | 2595 | Error and Defect Mitigation | PTP | 1.2.4.2.27.4 | 1.2.4.2.27.4 | 2026-09-29 | 2026-09-30 | 2026-04-16 | 0 | 6 | 2591 | 1 | 0 | 357ae9be-8a60-8155-b7da-f275e94eaaf6 |  | -673.25 | 0 | Start No Earlier Than | Auto Scheduled | AMETEK SAP XXL Project Plan Replan MSP Task.csv | AMETEK SAP XXL Project Plan Replan MSP Task.csv__2f0764ccac__2026-05-05T02-44-15-662Z | Nevin Varkey | 167 | True |  | Not started | True  -673.25 0 0 0 0 0 20 | Negative Float, Open Finish Critical 3 0 0 True | 2026-04-17 |  |  |  |
| 357ae9be-8a60-81f9-86e0-d06eb0ca7bf1 | 1685 | PMO Authorization to Start Data Loads | PMO | 1.2.2.1 | 1.2.2.1 | 2026-05-18 | 2026-05-18 | 2026-04-06 | 0 | 4 | 2809 | 1 | 1 | 357ae9be-8a60-81c3-9973-ef10b7cbd6bd | 357ae9be-8a60-813b-ab10-e002cd1bd2ce | 0 | 0 | Must Start On | Auto Scheduled | AMETEK SAP XXL Project Plan Replan MSP Task.csv | AMETEK SAP XXL Project Plan Replan MSP Task.csv__2f0764ccac__2026-05-05T02-44-15-662Z | Mark George | 42 | True | True | Not started | True  0 0 1 0 0 0 26 | Low 0 0 0 True | 2026-05-18 |  |  |  |
| 357ae9be-8a60-81f9-8a2b-d925c8573245 | 969 | Load | Data | 1.2.1.9.5 | 1.2.1.9.5 | 2026-04-08 | 2026-04-08 | 2026-04-08 | 100 | 5 | 753 | 1 | 1 | 357ae9be-8a60-81ab-a0d4-c25a557ebff9 | 357ae9be-8a60-8164-8e79-d4d1629bb100 | 0 | 0 | As Soon As Possible | Auto Scheduled | AMETEK SAP XXL Project Plan Replan MSP Task.csv | AMETEK SAP XXL Project Plan Replan MSP Task.csv__2f0764ccac__2026-05-05T02-44-15-662Z | Jyoti Nain |  |  |  | Done | True  0 0 1 0 0 0 18 | Low 0 0 0  |  |  |  |  |
| 357ae9be-8a60-81f9-8aa5-e7a991d83437 | 2987 | Simulate Load | Data | 1.2.3.2.5.3 | 1.2.3.2.5.3 | 2026-06-10 | 2026-06-10 | 2026-04-08 | 0 | 6 | 2984 | 1 | 1 | 357ae9be-8a60-817e-b450-f3d1d5c324bf | 357ae9be-8a60-813d-8409-e017c2722552 | -183.52 | 0 | As Soon As Possible | Auto Scheduled | AMETEK SAP XXL Project Plan Replan MSP Task.csv | AMETEK SAP XXL Project Plan Replan MSP Task.csv__2f0764ccac__2026-05-05T02-44-15-662Z | Jyoti Nain | 63 | True |  | Not started | True  -183.52 0 1 0 0 0 26 | Negative Float Critical 2 0 0  |  |  |  |  |
| 357ae9be-8a60-81f9-8d94-c13a763aa984 | 1975 | Simulate Load | Data | 1.2.2.2.50.3 | 1.2.2.2.50.3 | 2026-05-28 | 2026-05-28 | 2026-04-20 | 0 | 6 | 1972 | 1 | 1 | 357ae9be-8a60-81a4-89cb-ed55bc4e312b | 357ae9be-8a60-813a-a3fc-f5e1e3acf49c | -67.27 | 0 | As Soon As Possible | Auto Scheduled | AMETEK SAP XXL Project Plan Replan MSP Task.csv | AMETEK SAP XXL Project Plan Replan MSP Task.csv__2f0764ccac__2026-05-05T02-44-15-662Z | Jyoti Nain | 38 | True |  | Not started | True  -67.27 0 1 0 0 0 26 | Negative Float Critical 2 0 0  |  |  |  |  |
| 357ae9be-8a60-81f9-953d-dd531f6faa78 | 1913 | Error and Defect Mitigation | PTM | 1.2.2.2.35.4 | 1.2.2.2.35.4 | 2026-05-25 | 2026-05-25 | 2026-04-17 | 0 | 6 | 1909 | 1 | 1 | 357ae9be-8a60-81ec-9cd6-f7198da0b33b | 357ae9be-8a60-81c9-988b-f4691c53f9f9 | -53.77 | 0 | As Soon As Possible | Auto Scheduled | AMETEK SAP XXL Project Plan Replan MSP Task.csv | AMETEK SAP XXL Project Plan Replan MSP Task.csv__2f0764ccac__2026-05-05T02-44-15-662Z | Brad Meseck | 38 | True |  | Not started | True  -53.77 0 1 0 0 0 26 | Negative Float Critical 2 0 0  |  |  |  |  |
| 357ae9be-8a60-81f9-a337-f8720992fc33 | 3393 | Data Project Create | Data | 1.1.1.8.3 | 1.1.1.8.3 | 2026-09-23 | 2026-09-24 | 2026-07-16 | 0 | 5 | 3367 | 0 | 1 |  | 357ae9be-8a60-8134-909f-c2e38ff9f4ad | -90.75 | 0 | As Soon As Possible | Auto Scheduled | AMETEK SAP XXL Project Plan Replan MSP Task.csv | AMETEK SAP XXL Project Plan Replan MSP Task.csv__2f0764ccac__2026-05-05T02-44-15-662Z | Jyoti Nain | 70 | True |  | Not started | True  -90.75 0 1 0 0 0 26 | Negative Float Critical 2 0 0  |  | 3395, 3394, 3396 | True |  |
| 357ae9be-8a60-81f9-a360-cce969d92988 | 3199 | Post Load Validation | PTM | 1.2.3.2.37.2 | 1.2.3.2.37.2 | 2026-06-08 | 2026-06-08 | 2026-04-06 | 0 | 6 | 3197 | 1 | 1 | 357ae9be-8a60-815a-b4d0-c1f113e1e22d | 357ae9be-8a60-814e-9a90-d4981b5ecfd9 | -139.52 | 0 | As Soon As Possible | Auto Scheduled | AMETEK SAP XXL Project Plan Replan MSP Task.csv | AMETEK SAP XXL Project Plan Replan MSP Task.csv__2f0764ccac__2026-05-05T02-44-15-662Z | Eric Heisler | 63 | True |  | Not started | True  -139.52 0 1 0 0 0 26 | Negative Float Critical 2 0 0  |  |  |  |  |
| 357ae9be-8a60-81f9-b3a5-f192f3a6a682 | 3218 | VC_Variant Tables Content | (Unassigned) | 1.2.3.2.44 | 1.2.3.2.44 | 2026-06-12 | 2026-06-15 | 2026-04-17 | 0 | 5 | 2959 | 0 | 0 |  |  | -20.03 | 0 | As Soon As Possible | Auto Scheduled | AMETEK SAP XXL Project Plan Replan MSP Task.csv | AMETEK SAP XXL Project Plan Replan MSP Task.csv__2f0764ccac__2026-05-05T02-44-15-662Z | COULD NOT BE DETERMINED | 59 | True |  | Not started | True  -20.03 0 0 0 0 0 20 | Negative Float Critical 2 0 0  |  | 3219, 3220 | True |  |
| 357ae9be-8a60-81fa-8ec9-db942f0f541a | 3088 | RTR_****_Credit Hierarchy | (Unassigned) | 1.2.3.2.21 | 1.2.3.2.21 | 2026-06-15 | 2026-06-17 | 2026-04-13 | 0 | 5 | 2959 | 0 | 0 |  |  | -22.22 | 0 | As Soon As Possible | Auto Scheduled | AMETEK SAP XXL Project Plan Replan MSP Task.csv | AMETEK SAP XXL Project Plan Replan MSP Task.csv__2f0764ccac__2026-05-05T02-44-15-662Z | COULD NOT BE DETERMINED | 65 | True |  | Not started | True  -22.22 0 0 0 0 0 20 | Negative Float Critical 2 0 0  |  | 3089, 3091, 3090 | True |  |
| 357ae9be-8a60-81fa-920c-c1088950f221 | 765 | PTP_CM27_Vendor Master as Customer - FLCU01 | PTP | 1.2.1.16 | 1.2.1.16 | 2026-04-10 | 2026-04-14 | 2026-04-14 | 100 | 4 | 425 | 1 | 1 | 357ae9be-8a60-8181-8191-e719cc7d6851 | 357ae9be-8a60-81b7-901c-ca232f355464 | 0 | 0 | As Soon As Possible | Auto Scheduled | AMETEK SAP XXL Project Plan Replan MSP Task.csv | AMETEK SAP XXL Project Plan Replan MSP Task.csv__2f0764ccac__2026-05-05T02-44-15-662Z | Muniraju Surappachari |  |  |  | Done | True  0 0 1 1 4 0 23 | Low 0 0 0  |  | 977, 976, 973, 975, 972, 974 | True |  |
| 357ae9be-8a60-81fa-96a4-ee57b14748ce | 2600 | Pre Load Validation | PTP | 1.2.4.2.28.2 | 1.2.4.2.28.2 | 2026-09-29 | 2026-09-29 | 2026-04-15 | 0 | 6 | 2598 | 1 | 1 | 357ae9be-8a60-810f-a1db-f3b19f043b05 | 357ae9be-8a60-810f-981e-c3499217565c | -40575 | 0 | As Soon As Possible | Auto Scheduled | AMETEK SAP XXL Project Plan Replan MSP Task.csv | AMETEK SAP XXL Project Plan Replan MSP Task.csv__2f0764ccac__2026-05-05T02-44-15-662Z | Nevin Varkey | 167 | True |  | Not started | True  -40575 0 1 0 0 0 26 | Negative Float Critical 2 0 0  |  |  |  |  |
| 357ae9be-8a60-81fa-9fef-faa33a44f8d6 | 2019 | GTS - HTS - Assign | (Unassigned) | 1.2.2.2.61 | 1.2.2.2.61 | 2026-05-26 | 2026-05-26 | 2026-04-16 | 0 | 5 | 2800 | 0 | 0 |  |  | -8.78 | 0 | As Soon As Possible | Auto Scheduled | AMETEK SAP XXL Project Plan Replan MSP Task.csv | AMETEK SAP XXL Project Plan Replan MSP Task.csv__2f0764ccac__2026-05-05T02-44-15-662Z | COULD NOT BE DETERMINED | 40 | True |  | Not started | True  -8.78 0 0 0 0 0 20 | Negative Float High 2 0 0  |  | 2020, 2021 | True |  |
| 357ae9be-8a60-81fa-a274-ccaa559efa82 | 2670 | VC_Classification (Class Type 200) | (Unassigned) | 1.2.4.2.40 | 1.2.4.2.40 | 2026-09-29 | 2026-09-29 | 2026-04-16 | 0 | 5 | 2898 | 0 | 0 |  |  | -84.03 | 0 | As Soon As Possible | Auto Scheduled | AMETEK SAP XXL Project Plan Replan MSP Task.csv | AMETEK SAP XXL Project Plan Replan MSP Task.csv__2f0764ccac__2026-05-05T02-44-15-662Z | COULD NOT BE DETERMINED | 166 | True |  | Not started | True  -84.03 0 0 0 0 0 20 | Negative Float Critical 2 0 0  |  | 2671, 2672 | True |  |
| 357ae9be-8a60-81fa-a63e-c9fa1c6121d9 | 658 | Manual activities group 1 | Development;PTM;Finance;PMO;Europe IT lead;OTC;TESTING | 1.1.1.4.18.2 | 1.1.1.4.18.2 | 2026-03-19 | 2026-03-23 | 2026-03-23 | 100 | 6 | 647 | 1 | 1 | 357ae9be-8a60-814d-af84-c39761f10563 | 357ae9be-8a60-81f6-a633-f76d7c10f2f7 | 0 | 0 | Finish No Earlier Than | Auto Scheduled | AMETEK SAP XXL Project Plan Replan MSP Task.csv | AMETEK SAP XXL Project Plan Replan MSP Task.csv__2f0764ccac__2026-05-05T02-44-15-662Z | Bijoykrishna Das |  |  |  | Done | True  0 0 1 0 0 0 18 | Low 0 0 0 True | 2026-02-11 |  |  |  |
| 357ae9be-8a60-81fa-ad59-c999a2973d64 | 1813 | Post Load Validation | PTP | 1.2.2.2.20.6 | 1.2.2.2.20.6 | 2026-05-18 | 2026-05-19 | 2026-04-15 | 0 | 6 | 1807 | 1 | 1 | 357ae9be-8a60-81ad-9f64-df16df8ab136 | 357ae9be-8a60-8102-a957-c18983a4a1c0 | -11.52 | 0 | As Soon As Possible | Auto Scheduled | AMETEK SAP XXL Project Plan Replan MSP Task.csv | AMETEK SAP XXL Project Plan Replan MSP Task.csv__2f0764ccac__2026-05-05T02-44-15-662Z | Nevin Varkey | 34 | True | True | Not started | True  -11.52 0 1 0 0 0 26 | Negative Float Critical 2 0 0  |  |  |  |  |
| 357ae9be-8a60-81fb-85ba-d3e269a571b6 | 3193 | Simulate Load | Data | 1.2.3.2.36.3 | 1.2.3.2.36.3 | 2026-06-16 | 2026-06-16 | 2026-04-20 | 0 | 6 | 3190 | 1 | 1 | 357ae9be-8a60-8136-974a-f4fd1d7e108b | 357ae9be-8a60-81d5-92e3-d8d46c12c321 | -173.77 | 0 | As Soon As Possible | Auto Scheduled | AMETEK SAP XXL Project Plan Replan MSP Task.csv | AMETEK SAP XXL Project Plan Replan MSP Task.csv__2f0764ccac__2026-05-05T02-44-15-662Z | Jyoti Nain | 57 | True |  | Not started | True  -173.77 0 1 0 0 0 26 | Negative Float Critical 2 0 0  |  |  |  |  |
| 357ae9be-8a60-81fb-9d83-c3b3663415f0 | 2755 | Load Descartes XML File | OTC | 1.2.4.2.60.1 | 1.2.4.2.60.1 | 2026-09-24 | 2026-09-24 | 2026-04-06 | 0 | 6 | 2754 | 1 | 1 | 357ae9be-8a60-8107-ad19-eb3f9a8b23bc | 357ae9be-8a60-81d5-9a2c-e05c6204ee7d | -643.5 | 0 | As Soon As Possible | Auto Scheduled | AMETEK SAP XXL Project Plan Replan MSP Task.csv | AMETEK SAP XXL Project Plan Replan MSP Task.csv__2f0764ccac__2026-05-05T02-44-15-662Z | James VanRiper | 171 | True |  | Not started | True  -643.5 0 1 0 0 0 26 | Wrong Dependency, Negative Float Critical 5 1 0  |  |  |  |  |
| 357ae9be-8a60-81fb-a42d-d36966b2e8cf | 259 | Post installation Steps | (Unassigned) | 1.1.2.2.3 | 1.1.2.2.3 | 2026-02-25 | 2026-03-03 | 2026-03-03 | 100 | 5 | 253 | 1 | 1 | 357ae9be-8a60-81c5-84f1-c75ccee56860 | 357ae9be-8a60-81c1-beec-f015ac57e0ef | 0 | 0 | As Soon As Possible | Auto Scheduled | AMETEK SAP XXL Project Plan Replan MSP Task.csv | AMETEK SAP XXL Project Plan Replan MSP Task.csv__2f0764ccac__2026-05-05T02-44-15-662Z | COULD NOT BE DETERMINED |  |  |  | Done | True  0 0 1 0 0 0 18 | Low 0 0 0  |  |  |  |  |
| 357ae9be-8a60-81fb-b26a-f7671d989007 | 2763 | Commodity Code/Tarif | (Unassigned) | 1.2.4.2.63 | 1.2.4.2.63 | 2026-10-02 | 2026-10-06 | 2026-04-16 | 0 | 5 | 2898 | 0 | 0 |  |  | -89.03 | 0 | As Soon As Possible | Auto Scheduled | AMETEK SAP XXL Project Plan Replan MSP Task.csv | AMETEK SAP XXL Project Plan Replan MSP Task.csv__2f0764ccac__2026-05-05T02-44-15-662Z | COULD NOT BE DETERMINED | 173 | True |  | Not started | True  -89.03 0 0 0 0 0 20 | Negative Float Critical 2 0 0  |  | 2765, 2764 | True |  |
| 357ae9be-8a60-81fb-b27e-eb462bf557cd | 4343 | Post Load Validation | PTP | 1.2.5.2.28.6 | 1.2.5.2.28.6 | 2026-09-30 | 2026-09-30 | 2026-04-16 | 0 | 6 | 4337 | 1 | 0 | 357ae9be-8a60-816e-860f-ec09e9d611a3 |  | -676.27 | 0 | As Soon As Possible | Auto Scheduled | AMETEK SAP XXL Project Plan Replan MSP Task.csv | AMETEK SAP XXL Project Plan Replan MSP Task.csv__2f0764ccac__2026-05-05T02-44-15-662Z | Nevin Varkey | 167 | True |  | Not started | True  -676.27 0 0 0 0 0 20 | Negative Float, Open Finish Critical 3 0 0  |  |  |  |  |
| 357ae9be-8a60-81fb-b292-fa6330c3db5c | 4340 | Simulate Load | Data | 1.2.5.2.28.3 | 1.2.5.2.28.3 | 2026-09-29 | 2026-09-29 | 2026-04-16 | 0 | 6 | 4337 | 1 | 1 | 357ae9be-8a60-8188-b7bc-c33b3ce957d1 | 357ae9be-8a60-817a-9851-f38ed06724af | -676.27 | 0 | As Soon As Possible | Auto Scheduled | AMETEK SAP XXL Project Plan Replan MSP Task.csv | AMETEK SAP XXL Project Plan Replan MSP Task.csv__2f0764ccac__2026-05-05T02-44-15-662Z | Jyoti Nain | 166 | True |  | Not started | True  -676.27 0 1 0 0 0 26 | Negative Float Critical 2 0 0  |  |  |  |  |

| id | uid | name | workstream | outlineNumber | wbs | start | finish | baselineFinish | pct | outlineLevel | parentUid | predCount | sucCount | predIds | sucIds | totalSlackDaysRaw | freeSlackDaysRaw | constraintType | taskMode | mspSourceFile | mspImportVersion | assignedTo | slipDays | isSlipped | isDue14 | status | cpm | scheduleQuality | constraintDate | childUids | isSummary | isOverdueStart |
| --- | --- | --- | --- | --- | --- | --- | --- | --- | --- | --- | --- | --- | --- | --- | --- | --- | --- | --- | --- | --- | --- | --- | --- | --- | --- | --- | --- | --- | --- | --- | --- | --- |
| 357ae9be-8a60-81fb-b3d8-e47c1b16de01 | 297 | Production deployment | (Unassigned) | 1.1.2.8.1 | 1.1.2.8.1 | 2026-10-01 | 2026-10-09 | 2026-01-09 | 0 | 5 | 294 | 1 | 1 | 357ae9be-8a60-8147-a65f-ce9d9fe9d77f | 357ae9be-8a60-8120-9cf3-d64d180cb302 | 0 | 0 | Must Start On | Auto Scheduled | AMETEK SAP XXL Project Plan Replan MSP Task.csv | AMETEK SAP XXL Project Plan Replan MSP Task.csv__2f0764ccac__2026-05-05T02-44-15-662Z | COULD NOT BE DETERMINED | 273 | True |  | Not started | True  0 0 1 1 8 0 31 | Wrong Dependency High 3 1 0 True | 2026-10-01 |  |  |  |
| 357ae9be-8a60-81fb-b60e-f18d3b2acf28 | 3312 | RTR_CM17_Project Definition / Builder | (Unassigned) | 1.2.3.2.67 | 1.2.3.2.67 | 2026-06-08 | 2026-06-09 | 2026-04-17 | 0 | 5 | 2959 | 0 | 0 |  |  | -16.19 | 0 | As Soon As Possible | Auto Scheduled | AMETEK SAP XXL Project Plan Replan MSP Task.csv | AMETEK SAP XXL Project Plan Replan MSP Task.csv__2f0764ccac__2026-05-05T02-44-15-662Z | COULD NOT BE DETERMINED | 53 | True |  | Not started | True  -16.19 0 0 0 0 0 20 | Negative Float Critical 2 0 0  |  | 3314, 3318, 3313, 3315, 3316, 3317 | True |  |
| 357ae9be-8a60-81fc-835d-ca14be42748f | 279 | Unit testing | TESTING | 1.1.2.7.1 | 1.1.2.7.1 | 2026-05-01 | 2026-05-13 | 2025-11-20 | 0 | 5 | 278 | 0 | 1 |  | 357ae9be-8a60-814e-9f6e-fefe7043b512 | 68 | 0 | Start No Earlier Than | Auto Scheduled | AMETEK SAP XXL Project Plan Replan MSP Task.csv | AMETEK SAP XXL Project Plan Replan MSP Task.csv__2f0764ccac__2026-05-05T02-44-15-662Z | Kishore Kakarla | 174 | True | True | Not started | True  68 0 1 0 0 0 26 | Open Start Medium 1 0 0 True | 2026-04-30 |  |  | True |
| 357ae9be-8a60-81fc-8ed1-c15af66a0e09 | 4179 | Post GL Extention Validation | (Unassigned) | 1.2.5.2.3.8 | 1.2.5.2.3.8 | 2026-09-29 | 2026-09-30 | 2026-04-09 | 0 | 6 | 4171 | 1 | 2 | 357ae9be-8a60-818a-8e36-d0becaf94836 | 357ae9be-8a60-815f-9331-ea71dfc6716a, 357ae9be-8a60-819c-9c43-d9d355b60ec5 | -718.52 | 0 | As Soon As Possible | Auto Scheduled | AMETEK SAP XXL Project Plan Replan MSP Task.csv | AMETEK SAP XXL Project Plan Replan MSP Task.csv__2f0764ccac__2026-05-05T02-44-15-662Z | COULD NOT BE DETERMINED | 174 | True |  | Not started | True  -718.52 0 2 0 0 0 32 | Negative Float Critical 2 0 0  |  |  |  |  |
| 357ae9be-8a60-81fc-9189-c3fcec4adf77 | 3159 | Error and Defect Mitigation | PTM | 1.2.3.2.31.4 | 1.2.3.2.31.4 | 2026-06-16 | 2026-06-16 | 2026-04-17 | 0 | 6 | 3155 | 1 | 1 | 357ae9be-8a60-8121-b120-c64de69a52ea | 357ae9be-8a60-813b-a188-e0ffa4fd5979 | -182.39 | 0 | As Soon As Possible | Auto Scheduled | AMETEK SAP XXL Project Plan Replan MSP Task.csv | AMETEK SAP XXL Project Plan Replan MSP Task.csv__2f0764ccac__2026-05-05T02-44-15-662Z | Brad Meseck | 60 | True |  | Not started | True  -182.39 0 1 0 0 0 26 | Negative Float Critical 2 0 0  |  |  |  |  |
| 357ae9be-8a60-81fc-9268-d7f795d0883f | 1023 | Error and Defect Mitigation | PTP | 1.2.1.25.4 | 1.2.1.25.4 | 2026-04-14 | 2026-04-14 | 2026-04-14 | 100 | 5 | 741 | 1 | 1 | 357ae9be-8a60-812c-90c1-fea025db6b85 | 357ae9be-8a60-81c6-9147-c12703a93283 | 0 | 0 | As Soon As Possible | Auto Scheduled | AMETEK SAP XXL Project Plan Replan MSP Task.csv | AMETEK SAP XXL Project Plan Replan MSP Task.csv__2f0764ccac__2026-05-05T02-44-15-662Z | Nevin Varkey |  |  |  | Done | True  0 0 1 0 0 0 18 | Low 0 0 0  |  |  |  |  |
| 357ae9be-8a60-81fc-928e-d443bbc5cf56 | 3372 | Best Practice / Country Validation | Basis | 1.1.1.8.1.4 | 1.1.1.8.1.4 | 2026-09-11 | 2026-09-11 | 2026-07-01 | 0 | 6 | 3368 | 1 | 1 | 357ae9be-8a60-81f3-b470-e486cf842928 | 357ae9be-8a60-8185-a59f-d11f46aa5b30 | -90.75 | 0 | As Soon As Possible | Auto Scheduled | AMETEK SAP XXL Project Plan Replan MSP Task.csv | AMETEK SAP XXL Project Plan Replan MSP Task.csv__2f0764ccac__2026-05-05T02-44-15-662Z | Lokchetan Meghavath | 72 | True |  | Not started | True  -90.75 0 1 1 521 0 31 | Wrong Dependency, Wrong Successor, Negative Float Critical 8 1 1  |  |  |  |  |
| 357ae9be-8a60-81fc-9456-f7a5ad21ab95 | 4262 | Post Load Validation | OTC | 1.2.5.2.16.3 | 1.2.5.2.16.3 | 2026-10-01 | 2026-10-01 | 2026-04-10 | 0 | 6 | 4259 | 1 | 0 | 357ae9be-8a60-8140-9e72-c35892cb42f3 |  | -685.52 | 0 | As Soon As Possible | Auto Scheduled | AMETEK SAP XXL Project Plan Replan MSP Task.csv | AMETEK SAP XXL Project Plan Replan MSP Task.csv__2f0764ccac__2026-05-05T02-44-15-662Z | Ric Haraida | 174 | True |  | Not started | True  -685.52 0 0 0 0 0 20 | Negative Float, Open Finish Critical 3 0 0  |  |  |  |  |
| 357ae9be-8a60-81fc-95bf-db86898d7f09 | 2775 | Post Load Validation | OTC | 1.2.4.2.66.2 | 1.2.4.2.66.2 | 2026-10-02 | 2026-10-02 | 2026-04-16 | 0 | 6 | 2773 | 1 | 0 | 357ae9be-8a60-81fe-9628-d08b0cd1c264 |  | -692 | 0 | As Soon As Possible | Auto Scheduled | AMETEK SAP XXL Project Plan Replan MSP Task.csv | AMETEK SAP XXL Project Plan Replan MSP Task.csv__2f0764ccac__2026-05-05T02-44-15-662Z | James VanRiper | 169 | True |  | Not started | True  -692 0 0 0 0 0 20 | Wrong Dependency, Negative Float, Open Finish Critical 6 1 0  |  |  |  |  |
| 357ae9be-8a60-81fc-9ee0-ea551c5d3fda | 3001 | Load | Data | 1.2.3.2.7.5 | 1.2.3.2.7.5 | 2026-06-12 | 2026-06-12 | 2026-04-09 | 0 | 6 | 2996 | 1 | 1 | 357ae9be-8a60-81ba-a6d8-f4fea5b8e4c0 | 357ae9be-8a60-816d-9625-f98f39902f87 | -158.02 | 0 | As Soon As Possible | Auto Scheduled | AMETEK SAP XXL Project Plan Replan MSP Task.csv | AMETEK SAP XXL Project Plan Replan MSP Task.csv__2f0764ccac__2026-05-05T02-44-15-662Z | Jyoti Nain | 64 | True |  | Not started | True  -158.02 0 1 0 0 0 26 | Negative Float Critical 2 0 0  |  |  |  |  |
| 357ae9be-8a60-81fc-a02e-c093e32b9d06 | 3121 | Load File Staged and Posted "Ready" | PTM | 1.2.3.2.26.1 | 1.2.3.2.26.1 | 2026-06-10 | 2026-06-10 | 2026-04-07 | 0 | 6 | 3120 | 1 | 0 | 357ae9be-8a60-81ec-b52c-d19359ee27ae |  | -9346 | 0 | As Soon As Possible | Auto Scheduled | AMETEK SAP XXL Project Plan Replan MSP Task.csv | AMETEK SAP XXL Project Plan Replan MSP Task.csv__2f0764ccac__2026-05-05T02-44-15-662Z | Eric Heisler | 64 | True |  | Not started | True  -9346 0 0 0 0 0 20 | Wrong Dependency, Negative Float, Open Finish Critical 6 1 0  |  |  |  |  |
| 357ae9be-8a60-81fc-a0bb-f489443faf37 | 898 | Download Transport List | Basis | 1.1.1.7.1.12 | 1.1.1.7.1.12 | 2026-06-17 | 2026-06-17 | 2026-07-07 | 0 | 6 | 3338 | 1 | 0 | 357ae9be-8a60-81eb-8d67-d6df52782048 |  | -291.02 | 0 | As Soon As Possible | Auto Scheduled | AMETEK SAP XXL Project Plan Replan MSP Task.csv | AMETEK SAP XXL Project Plan Replan MSP Task.csv__2f0764ccac__2026-05-05T02-44-15-662Z | Lokchetan Meghavath |  |  |  | Not started | True  -291.02 0 0 0 0 0 12 | Negative Float, Open Finish Critical 3 0 0  |  |  |  |  |
| 357ae9be-8a60-81fc-a289-cab796f302c2 | 4265 | Pre Load Validation | PTP | 1.2.5.2.17.2 | 1.2.5.2.17.2 | 2026-10-01 | 2026-10-01 | 2026-04-10 | 0 | 6 | 4263 | 1 | 1 | 357ae9be-8a60-8105-92af-c01eef9c0556 | 357ae9be-8a60-8126-92e0-ff77e9612194 | -707.02 | 0 | As Soon As Possible | Auto Scheduled | AMETEK SAP XXL Project Plan Replan MSP Task.csv | AMETEK SAP XXL Project Plan Replan MSP Task.csv__2f0764ccac__2026-05-05T02-44-15-662Z | Nevin Varkey | 174 | True |  | Not started | True  -707.02 0 1 0 0 0 26 | Negative Float Critical 2 0 0  |  |  |  |  |
| 357ae9be-8a60-81fc-a9eb-f67875aa9a5c | 4330 | PTP_CM28_Purchase_Info_Records | PTP | 1.2.5.2.27 | 1.2.5.2.27 | 2026-09-24 | 2026-09-30 | 2026-04-16 | 0 | 5 | 4162 | 0 | 0 |  |  | -84.71 | 0 | As Soon As Possible | Auto Scheduled | AMETEK SAP XXL Project Plan Replan MSP Task.csv | AMETEK SAP XXL Project Plan Replan MSP Task.csv__2f0764ccac__2026-05-05T02-44-15-662Z | Muniraju Surappachari | 167 | True |  | Not started | True  -84.71 0 0 0 0 0 20 | Negative Float Critical 2 0 0  |  | 4331, 4336, 4332, 4335, 4333, 4334 | True |  |
| 357ae9be-8a60-81fc-b3b8-d77df443c86e | 2682 | VC_Variant Tables Content | (Unassigned) | 1.2.4.2.44 | 1.2.4.2.44 | 2026-09-30 | 2026-10-01 | 2026-04-17 | 0 | 5 | 2898 | 0 | 0 |  |  | -85.28 | 0 | As Soon As Possible | Auto Scheduled | AMETEK SAP XXL Project Plan Replan MSP Task.csv | AMETEK SAP XXL Project Plan Replan MSP Task.csv__2f0764ccac__2026-05-05T02-44-15-662Z | COULD NOT BE DETERMINED | 167 | True |  | Not started | True  -85.28 0 0 0 0 0 20 | Negative Float Critical 2 0 0  |  | 2684, 2683 | True |  |
| 357ae9be-8a60-81fc-b415-d56b1db04f11 | 4225 | Load | Data | 1.2.5.2.10.5 | 1.2.5.2.10.5 | 2026-09-25 | 2026-09-25 | 2026-04-10 | 0 | 6 | 4220 | 1 | 1 | 357ae9be-8a60-8105-aab0-da7c089be7c3 | 357ae9be-8a60-8136-ac67-d9702d5fb636 | -658.52 | 0 | As Soon As Possible | Auto Scheduled | AMETEK SAP XXL Project Plan Replan MSP Task.csv | AMETEK SAP XXL Project Plan Replan MSP Task.csv__2f0764ccac__2026-05-05T02-44-15-662Z | Jyoti Nain | 168 | True |  | Not started | True  -658.52 0 1 0 0 0 26 | Negative Float Critical 2 0 0  |  |  |  |  |
| 357ae9be-8a60-81fc-ba8e-ca3b3e7ca5c1 | 78 | Specs Assigned to Developer | (Unassigned) | 1.1.2.10.3.2 | 1.1.2.10.3.2 | 2025-03-13 | 2025-03-13 | 2025-03-13 | 100 | 6 | 65 | 0 | 0 |  |  | 0 | 0 | As Soon As Possible | Auto Scheduled | AMETEK SAP XXL Project Plan Replan MSP Task.csv | AMETEK SAP XXL Project Plan Replan MSP Task.csv__2f0764ccac__2026-05-05T02-44-15-662Z | COULD NOT BE DETERMINED |  |  |  | Done | True  0 0 0 0 0 0 12 | Low 0 0 0  |  |  |  |  |
| 357ae9be-8a60-81fc-bc9e-dddf2a7ce0ac | 2650 | Simulate Load | Data | 1.2.4.2.35.3 | 1.2.4.2.35.3 | 2026-10-01 | 2026-10-01 | 2026-04-17 | 0 | 6 | 2647 | 1 | 1 | 357ae9be-8a60-81e0-af18-cfb648393790 | 357ae9be-8a60-8167-981a-df6d505bf122 | -695.75 | 0 | As Soon As Possible | Auto Scheduled | AMETEK SAP XXL Project Plan Replan MSP Task.csv | AMETEK SAP XXL Project Plan Replan MSP Task.csv__2f0764ccac__2026-05-05T02-44-15-662Z | Jyoti Nain | 167 | True |  | Not started | True  -695.75 0 1 0 0 0 26 | Negative Float Critical 2 0 0  |  |  |  |  |
| 357ae9be-8a60-81fc-bd71-e60bc3788633 | 286 | Risk analysis on existing roles | (Unassigned) | 1.1.2.4.9 | 1.1.2.4.9 | 2026-05-01 | 2026-05-07 | 2025-11-26 | 0 | 5 | 267 | 1 | 2 | 357ae9be-8a60-8127-bea0-fdf89dd970dd | 357ae9be-8a60-81ab-a55b-d8cdc46604ce, 357ae9be-8a60-8118-b7e7-f0da0167facd | 122 | 0 | Start No Earlier Than | Auto Scheduled | AMETEK SAP XXL Project Plan Replan MSP Task.csv | AMETEK SAP XXL Project Plan Replan MSP Task.csv__2f0764ccac__2026-05-05T02-44-15-662Z | COULD NOT BE DETERMINED | 162 | True | True | Not started | True  122 0 2 0 0 0 32 | Low 0 0 0 True | 2026-04-30 |  |  | True |
| 357ae9be-8a60-81fc-bdd5-e6f450977f84 | 1941 | VC_Variant Tables | (Unassigned) | 1.2.2.2.43 | 1.2.2.2.43 | 2026-05-22 | 2026-05-22 | 2026-04-17 | 0 | 5 | 2800 | 0 | 0 |  |  | -5.03 | 0 | As Soon As Possible | Auto Scheduled | AMETEK SAP XXL Project Plan Replan MSP Task.csv | AMETEK SAP XXL Project Plan Replan MSP Task.csv__2f0764ccac__2026-05-05T02-44-15-662Z | COULD NOT BE DETERMINED | 35 | True |  | Not started | True  -5.03 0 0 0 0 0 20 | Negative Float High 2 0 0  |  | 1942, 1943 | True |  |
| 357ae9be-8a60-81fd-8576-ee3e5ffd6888 | 4539 | Open Production Orders(Manual) | (Unassigned) | 1.2.5.4.8 | 1.2.5.4.8 | 2026-10-01 | 2026-10-02 | 2026-10-02 | 0 | 5 | 4531 | 1 | 0 | 357ae9be-8a60-816c-a955-f517ebe8c18c |  | -34.6 | 0 | As Soon As Possible | Auto Scheduled | AMETEK SAP XXL Project Plan Replan MSP Task.csv | AMETEK SAP XXL Project Plan Replan MSP Task.csv__2f0764ccac__2026-05-05T02-44-15-662Z | COULD NOT BE DETERMINED |  |  |  | Not started | True  -34.6 0 0 0 0 0 12 | Negative Float, Open Finish Critical 3 0 0  |  |  |  |  |
| 357ae9be-8a60-81fd-8c12-e1cbb8e610f7 | 3378 | Validate Fiori | Basis | 1.1.1.8.1.10 | 1.1.1.8.1.10 | 2026-09-15 | 2026-09-15 | 2026-07-07 | 0 | 6 | 3368 | 1 | 4 | 357ae9be-8a60-814e-aea0-f8877dab9901 | 357ae9be-8a60-8132-8e66-fac9ccaa544a, 357ae9be-8a60-8119-bb23-c85364ea892e, 357ae9be-8a60-8139-836a-d64a8ea95842, 357ae9be-8a60-813d-ba6d-cbecad728247 | -90.75 | 0 | As Soon As Possible | Auto Scheduled | AMETEK SAP XXL Project Plan Replan MSP Task.csv | AMETEK SAP XXL Project Plan Replan MSP Task.csv__2f0764ccac__2026-05-05T02-44-15-662Z | Lokchetan Meghavath | 70 | True |  | Not started | True  -90.75 0 4 0 0 0 44 | Negative Float Critical 2 0 0  |  |  |  |  |
| 357ae9be-8a60-81fd-96bc-d09780c2913c | 2704 | Load | PTM | 1.2.4.2.48.2 | 1.2.4.2.48.2 | 2026-10-07 | 2026-10-07 | 2026-04-17 | 0 | 6 | 2702 | 1 | 1 | 357ae9be-8a60-81d7-b934-fade5b4e2af9 | 357ae9be-8a60-81b4-9a08-caf58c9aff37 | -726 | 0 | As Soon As Possible | Auto Scheduled | AMETEK SAP XXL Project Plan Replan MSP Task.csv | AMETEK SAP XXL Project Plan Replan MSP Task.csv__2f0764ccac__2026-05-05T02-44-15-662Z | Eric Heisler | 173 | True |  | Not started | True  -726 0 1 0 0 0 26 | Negative Float Critical 2 0 0  |  |  |  |  |
| 357ae9be-8a60-81fd-aa99-de5b79400379 | 1820 | Pre Load Validation | PTP;OTC | 1.2.2.2.22.2 | 1.2.2.2.22.2 | 2026-05-18 | 2026-05-18 | 2026-04-13 | 0 | 6 | 1818 | 1 | 1 | 357ae9be-8a60-81d7-96d6-f6f608a1e8f5 | 357ae9be-8a60-814c-abc1-e95862a80c5b | -691 | 0 | As Soon As Possible | Auto Scheduled | AMETEK SAP XXL Project Plan Replan MSP Task.csv | AMETEK SAP XXL Project Plan Replan MSP Task.csv__2f0764ccac__2026-05-05T02-44-15-662Z | Nevin Varkey | 35 | True | True | Not started | True  -691 0 1 0 0 0 26 | Negative Float Critical 2 0 0  |  |  |  |  |
| 357ae9be-8a60-81fd-abcd-e8f630061abb | 3202 | Post Load Validation | PTM | 1.2.3.2.38.2 | 1.2.3.2.38.2 | 2026-06-09 | 2026-06-09 | 2026-04-07 | 0 | 6 | 3200 | 1 | 1 | 357ae9be-8a60-814e-9a90-d4981b5ecfd9 | 357ae9be-8a60-8125-b8c1-f8ca2404d996 | -139.52 | 0 | As Soon As Possible | Auto Scheduled | AMETEK SAP XXL Project Plan Replan MSP Task.csv | AMETEK SAP XXL Project Plan Replan MSP Task.csv__2f0764ccac__2026-05-05T02-44-15-662Z | Eric Heisler | 63 | True |  | Not started | True  -139.52 0 1 0 0 0 26 | Negative Float Critical 2 0 0  |  |  |  |  |
| 357ae9be-8a60-81fe-8223-d8b03bbc9a83 | 1289 | Technical Transports / BP Setup | Basis | 1.1.1.6.1.3 | 1.1.1.6.1.3 | 2026-05-22 | 2026-05-22 | 2026-05-12 | 0 | 6 | 3339 | 1 | 1 | 357ae9be-8a60-818f-80a6-d8c478ba9f00 | 357ae9be-8a60-8167-abda-dafd8e1538ba | 7 | 0 | As Soon As Possible | Auto Scheduled | AMETEK SAP XXL Project Plan Replan MSP Task.csv | AMETEK SAP XXL Project Plan Replan MSP Task.csv__2f0764ccac__2026-05-05T02-44-15-662Z | Lokchetan Meghavath | 10 | True |  | Not started | True  7 0 0 0 0 0 22 | Low 0 0 0  |  |  |  |  |
| 357ae9be-8a60-81fe-9628-d08b0cd1c264 | 2774 | Load Descartes XML File | OTC | 1.2.4.2.66.1 | 1.2.4.2.66.1 | 2026-10-02 | 2026-10-02 | 2026-04-16 | 0 | 6 | 2773 | 1 | 2 | 357ae9be-8a60-819f-bed0-e0aa659e199c | 357ae9be-8a60-8125-8286-d7af3f5eeee5, 357ae9be-8a60-811f-9059-fa4c89e88bb7 | -693 | 0 | As Soon As Possible | Auto Scheduled | AMETEK SAP XXL Project Plan Replan MSP Task.csv | AMETEK SAP XXL Project Plan Replan MSP Task.csv__2f0764ccac__2026-05-05T02-44-15-662Z | James VanRiper | 169 | True |  | Not started | True  -693 0 2 2 719 0 37 | Wrong Dependency, Wrong Successor, Negative Float Critical 8 1 2  |  |  |  |  |
| 357ae9be-8a60-81fe-9a3f-c1794f1eca76 | 2736 | Error and Defect Mitigation | PTM | 1.2.4.2.54.4 | 1.2.4.2.54.4 | 2026-09-30 | 2026-09-30 | 2026-04-16 | 0 | 6 | 2732 | 1 | 1 | 357ae9be-8a60-8127-9f5c-fde14254ebe8 | 357ae9be-8a60-81de-8316-c0cf679237ed | -681.25 | 0 | As Soon As Possible | Auto Scheduled | AMETEK SAP XXL Project Plan Replan MSP Task.csv | AMETEK SAP XXL Project Plan Replan MSP Task.csv__2f0764ccac__2026-05-05T02-44-15-662Z | Brad Meseck | 167 | True |  | Not started | True  -681.25 0 1 0 0 0 26 | Negative Float Critical 2 0 0  |  |  |  |  |
| 357ae9be-8a60-81fe-a12f-fc1f08198af5 | 1153 | Post Load Validation | PTM | 1.2.1.38.2 | 1.2.1.38.2 | 2026-04-06 | 2026-04-06 | 2026-04-06 | 100 | 5 | 938 | 1 | 1 | 357ae9be-8a60-819d-9098-e0c91ad4181b | 357ae9be-8a60-813e-bc0e-d226d1e7dae0 | 0 | 0 | As Soon As Possible | Auto Scheduled | AMETEK SAP XXL Project Plan Replan MSP Task.csv | AMETEK SAP XXL Project Plan Replan MSP Task.csv__2f0764ccac__2026-05-05T02-44-15-662Z | Eric Heisler |  |  |  | Done | True  0 0 1 0 0 0 18 | Low 0 0 0  |  |  |  |  |
| 357ae9be-8a60-81fe-ab7c-f673703dc26f | 1715 | Load | Data | 1.2.2.2.5.5 | 1.2.2.2.5.5 | 2026-05-20 | 2026-05-20 | 2026-04-08 | 0 | 6 | 1710 | 1 | 1 | 357ae9be-8a60-81e4-b98f-e3a1bf01b4fb | 357ae9be-8a60-8137-8fd2-d564eb87810d | -63.52 | 0 | As Soon As Possible | Auto Scheduled | AMETEK SAP XXL Project Plan Replan MSP Task.csv | AMETEK SAP XXL Project Plan Replan MSP Task.csv__2f0764ccac__2026-05-05T02-44-15-662Z | Jyoti Nain | 42 | True | True | Not started | True  -63.52 0 1 0 0 0 26 | Negative Float Critical 2 0 0  |  |  |  |  |
| 357ae9be-8a60-81fe-ae55-da6b244c99c4 | 3020 | Simulate Load | Data | 1.2.3.2.10.3 | 1.2.3.2.10.3 | 2026-06-09 | 2026-06-09 | 2026-04-10 | 0 | 6 | 3017 | 1 | 1 | 357ae9be-8a60-81a4-af78-ce2da00cbf7e | 357ae9be-8a60-8120-be2d-c8bd4d10c30b | -136.52 | 0 | As Soon As Possible | Auto Scheduled | AMETEK SAP XXL Project Plan Replan MSP Task.csv | AMETEK SAP XXL Project Plan Replan MSP Task.csv__2f0764ccac__2026-05-05T02-44-15-662Z | Jyoti Nain | 60 | True |  | Not started | True  -136.52 0 1 0 0 0 26 | Negative Float Critical 2 0 0  |  |  |  |  |
| 357ae9be-8a60-81fe-b3b2-df12a2529ec8 | 4397 | Error and Defect Mitigation | PTM | 1.2.5.2.36.4 | 1.2.5.2.36.4 | 2026-10-02 | 2026-10-02 | 2026-04-21 | 0 | 6 | 4393 | 1 | 1 | 357ae9be-8a60-81ed-9a86-d3d5c62ecdc4 | 357ae9be-8a60-819d-a9e7-daf56e137743 | -695.77 | 0 | As Soon As Possible | Auto Scheduled | AMETEK SAP XXL Project Plan Replan MSP Task.csv | AMETEK SAP XXL Project Plan Replan MSP Task.csv__2f0764ccac__2026-05-05T02-44-15-662Z | Brad Meseck | 164 | True |  | Not started | True  -695.77 0 1 0 0 0 26 | Negative Float Critical 2 0 0  |  |  |  |  |
| 357ae9be-8a60-81fe-ba52-d2c57e488aa6 | 1832 | PTP_CM26_Material_Master - All Types | PTP | 1.2.2.2.24 | 1.2.2.2.24 | 2026-05-18 | 2026-05-20 | 2026-04-15 | 0 | 5 | 2800 | 0 | 0 |  |  | -8.53 | 0 | As Soon As Possible | Auto Scheduled | AMETEK SAP XXL Project Plan Replan MSP Task.csv | AMETEK SAP XXL Project Plan Replan MSP Task.csv__2f0764ccac__2026-05-05T02-44-15-662Z | Muniraju Surappachari | 35 | True | True | Not started | True  -8.53 0 0 0 0 0 20 | Negative Float High 2 0 0  |  | 1835, 1836, 1837, 1834, 1838, 1833 | True |  |
| 357ae9be-8a60-81fe-bfbe-ec01d510a63e | 2584 | PTP_CM26_Material_Master - KMAT - Configurable Materials | PTP | 1.2.4.2.26 | 1.2.4.2.26 | 2026-09-25 | 2026-09-29 | 2026-04-15 | 0 | 5 | 2898 | 0 | 2 |  | 357ae9be-8a60-81bf-bd43-c94da4989471, 357ae9be-8a60-813e-a770-caf64bc994c6 | -90.47 | 0 | As Soon As Possible | Auto Scheduled | AMETEK SAP XXL Project Plan Replan MSP Task.csv | AMETEK SAP XXL Project Plan Replan MSP Task.csv__2f0764ccac__2026-05-05T02-44-15-662Z | Muniraju Surappachari | 167 | True |  | Not started | True  -90.47 0 2 2 776 0 37 | Wrong Successor, Negative Float Critical 5 0 2  |  | 2589, 2587, 2585, 2588, 2590, 2586 | True |  |
| 357ae9be-8a60-81ff-8013-e5ebd725cb91 | 904 | Manual activities group 1 | Development;PTM;Finance;PMO;Europe IT lead;OTC;TESTING | 1.1.1.7.2.2 | 1.1.1.7.2.2 | 2026-06-18 | 2026-06-22 | 2026-07-10 | 0 | 6 | 902 | 1 | 1 | 357ae9be-8a60-8120-a46c-e69bf21bab1f | 357ae9be-8a60-81df-b41c-f9fce2a3839b | -298.02 | 0 | As Soon As Possible | Auto Scheduled | AMETEK SAP XXL Project Plan Replan MSP Task.csv | AMETEK SAP XXL Project Plan Replan MSP Task.csv__2f0764ccac__2026-05-05T02-44-15-662Z | Bijoykrishna Das |  |  |  | Not started | True  -298.02 0 1 0 0 0 18 | Negative Float Critical 2 0 0  |  |  |  |  |
| 357ae9be-8a60-81ff-8fa4-da3fbefd464f | 2436 | Error and Defect Mitigation | Finance | 1.2.4.2.3.4 | 1.2.4.2.3.4 | 2026-09-28 | 2026-09-29 | 2026-04-08 | 0 | 6 | 2432 | 1 | 1 | 357ae9be-8a60-8100-9743-e21288c70c43 | 357ae9be-8a60-8181-a930-d0c84b2ad2a4 | -718.5 | 0 | As Soon As Possible | Auto Scheduled | AMETEK SAP XXL Project Plan Replan MSP Task.csv | AMETEK SAP XXL Project Plan Replan MSP Task.csv__2f0764ccac__2026-05-05T02-44-15-662Z | Kasey Hughes | 174 | True |  | Not started | True  -718.5 0 1 0 0 0 26 | Negative Float Critical 2 0 0  |  |  |  |  |
| 357ae9be-8a60-81ff-9287-f5c8b548cdd7 | 3131 | Error and Defect Mitigation | PTP | 1.2.3.2.27.4 | 1.2.3.2.27.4 | 2026-06-11 | 2026-06-12 | 2026-04-16 | 0 | 6 | 3127 | 1 | 0 | 357ae9be-8a60-8100-a0f6-f6136a80f8ad |  | -151.27 | 0 | As Soon As Possible | Auto Scheduled | AMETEK SAP XXL Project Plan Replan MSP Task.csv | AMETEK SAP XXL Project Plan Replan MSP Task.csv__2f0764ccac__2026-05-05T02-44-15-662Z | Nevin Varkey | 57 | True |  | Not started | True  -151.27 0 0 0 0 0 20 | Negative Float, Open Finish Critical 3 0 0  |  |  |  |  |
| 357ae9be-8a60-81ff-99e2-f4a04f83b604 | 790 | Pre Load Validation | Finance | 1.2.1.10.2 | 1.2.1.10.2 | 2026-04-14 | 2026-04-14 | 2026-04-09 | 100 | 5 | 757 | 1 | 0 | 357ae9be-8a60-8113-88bc-ec2b10b68227 |  | 0 | 0 | As Soon As Possible | Auto Scheduled | AMETEK SAP XXL Project Plan Replan MSP Task.csv | AMETEK SAP XXL Project Plan Replan MSP Task.csv__2f0764ccac__2026-05-05T02-44-15-662Z | Kasey Hughes |  |  |  | Done | True  0 0 0 0 0 0 12 | Low 0 0 0  |  |  |  |  |
| 357ae9be-8a60-81ff-9c79-e51241dafa8d | 2597 | Post Load Validation | PTP | 1.2.4.2.27.6 | 1.2.4.2.27.6 | 2026-09-24 | 2026-09-24 | 2026-04-15 | 0 | 6 | 2591 | 1 | 0 | 357ae9be-8a60-81f5-98dc-e8ca7566ce5e |  | -647.5 | 0 | Start No Earlier Than | Auto Scheduled | AMETEK SAP XXL Project Plan Replan MSP Task.csv | AMETEK SAP XXL Project Plan Replan MSP Task.csv__2f0764ccac__2026-05-05T02-44-15-662Z | Nevin Varkey | 162 | True |  | Not started | True  -647.5 0 0 0 0 0 20 | Negative Float, Open Finish Critical 3 0 0 True | 2026-04-17 |  |  |  |
| 357ae9be-8a60-81ff-9d6d-fc6c645ffe4d | 273 | Role Upload to SAP GRC | (Unassigned) | 1.1.2.5.2 | 1.1.2.5.2 | 2026-05-15 | 2026-05-21 | 2025-12-10 | 0 | 5 | 271 | 1 | 0 | 357ae9be-8a60-8118-b7e7-f0da0167facd |  | 122 | 122 | Start No Earlier Than | Auto Scheduled | AMETEK SAP XXL Project Plan Replan MSP Task.csv | AMETEK SAP XXL Project Plan Replan MSP Task.csv__2f0764ccac__2026-05-05T02-44-15-662Z | COULD NOT BE DETERMINED | 162 | True |  | Not started |   122 122 0 0 0 0 8 | Open Finish Medium 1 0 0 True | 2026-04-30 |  |  |  |
| 357ae9be-8a60-81ff-a4e5-c4ad996ac6aa | 4290 | Post Load Validation | PTP | 1.2.5.2.20.6 | 1.2.5.2.20.6 | 2026-09-24 | 2026-09-24 | 2026-04-15 | 0 | 6 | 4284 | 1 | 1 | 357ae9be-8a60-81c0-89e6-e3edb5b5cedf | 357ae9be-8a60-8110-9112-e95f30836724 | -653.52 | 0 | As Soon As Possible | Auto Scheduled | AMETEK SAP XXL Project Plan Replan MSP Task.csv | AMETEK SAP XXL Project Plan Replan MSP Task.csv__2f0764ccac__2026-05-05T02-44-15-662Z | Nevin Varkey | 162 | True |  | Not started | True  -653.52 0 1 0 0 0 26 | Negative Float Critical 2 0 0  |  |  |  |  |
| 357ae9be-8a60-81ff-a9cd-f43027fb7257 | 1115 | Error and Defect Mitigation | OTC | 1.2.1.51.4 | 1.2.1.51.4 | 2026-04-16 | 2026-04-16 | 2026-04-21 | 100 | 5 | 691 | 1 | 1 | 357ae9be-8a60-8116-9560-c8818dccd3aa | 357ae9be-8a60-818d-a0ad-fd2514efcf2f | 0 | 0 | As Soon As Possible | Auto Scheduled | AMETEK SAP XXL Project Plan Replan MSP Task.csv | AMETEK SAP XXL Project Plan Replan MSP Task.csv__2f0764ccac__2026-05-05T02-44-15-662Z | Ric Haraida |  |  |  | Done | True  0 0 1 0 0 0 18 | Low 0 0 0  |  |  |  |  |
| 357ae9be-8a60-81ff-aa76-eef4a7d2a4ab | 2502 | Post Load Validation | OTC | 1.2.4.2.13.9 | 1.2.4.2.13.9 | 2026-09-30 | 2026-09-30 | 2026-04-10 | 0 | 6 | 2493 | 1 | 0 | 357ae9be-8a60-81eb-a272-dd114ce2c0c2 |  | -681 | 0 | As Soon As Possible | Auto Scheduled | AMETEK SAP XXL Project Plan Replan MSP Task.csv | AMETEK SAP XXL Project Plan Replan MSP Task.csv__2f0764ccac__2026-05-05T02-44-15-662Z | Ric Haraida | 173 | True |  | Not started | True  -681 0 0 0 0 0 20 | Negative Float, Open Finish Critical 3 0 0  |  |  |  |  |
| 357ae9be-8a60-81ff-aaec-f33c2191ccce | 997 | Load | Data | 1.2.1.19.5 | 1.2.1.19.5 | 2026-04-17 | 2026-04-17 | 2026-04-10 | 100 | 5 | 768 | 1 | 1 | 357ae9be-8a60-81b3-a430-ceaf2ab631ad | 357ae9be-8a60-813c-92e4-e6e886f188f2 | 0 | 0 | As Soon As Possible | Auto Scheduled | AMETEK SAP XXL Project Plan Replan MSP Task.csv | AMETEK SAP XXL Project Plan Replan MSP Task.csv__2f0764ccac__2026-05-05T02-44-15-662Z | Jyoti Nain |  |  |  | Done | True  0 0 1 0 0 0 18 | Wrong Dependency High 3 1 0  |  |  |  |  |
| 357ae9be-8a60-81ff-ab2f-d1e89ba12c5b | 2034 | Post Load Validation | OTC | 1.2.2.2.65.3 | 1.2.2.2.65.3 | 2026-05-19 | 2026-05-19 | 2026-04-14 | 0 | 6 | 2031 | 1 | 0 | 357ae9be-8a60-8106-803e-e6f54de69a42 |  | -11.52 | 0 | As Soon As Possible | Auto Scheduled | AMETEK SAP XXL Project Plan Replan MSP Task.csv | AMETEK SAP XXL Project Plan Replan MSP Task.csv__2f0764ccac__2026-05-05T02-44-15-662Z | James VanRiper | 35 | True | True | Not started | True  -11.52 0 0 0 0 0 20 | Negative Float, Open Finish Critical 3 0 0  |  |  |  |  |
| 357ae9be-8a60-81ff-afc9-fb1baeeea8b9 | 1227 | Data Project Create | Data | 1.1.1.7.3 | 1.1.1.7.3 | 2026-06-25 | 2026-06-26 | 2026-07-16 | 0 | 5 | 884 | 0 | 0 |  |  | -26.75 | 0 | As Soon As Possible | Auto Scheduled | AMETEK SAP XXL Project Plan Replan MSP Task.csv | AMETEK SAP XXL Project Plan Replan MSP Task.csv__2f0764ccac__2026-05-05T02-44-15-662Z | Jyoti Nain |  |  |  | Not started | True  -26.75 0 0 0 0 0 12 | Negative Float Critical 2 0 0  |  | 1230, 1228, 1229 | True |  |
| 357ae9be-8a60-81ff-b288-f5be1e35aae6 | 766 | PTP_CM27_Vendor Master - Z001 - External Sales Rep | PTP | 1.2.1.18 | 1.2.1.18 | 2026-04-10 | 2026-04-15 | 2026-04-13 | 100 | 4 | 425 | 1 | 1 | 357ae9be-8a60-81b7-901c-ca232f355464 | 357ae9be-8a60-819f-823c-d89a761bc010 | 0 | 0 | As Soon As Possible | Auto Scheduled | AMETEK SAP XXL Project Plan Replan MSP Task.csv | AMETEK SAP XXL Project Plan Replan MSP Task.csv__2f0764ccac__2026-05-05T02-44-15-662Z | Muniraju Surappachari |  |  |  | Done | True  0 0 1 1 5 1 23 | Low 0 0 0  |  | 992, 991, 989, 987, 988, 990 | True |  |
| 357ae9be-8a60-81ff-bb44-db7f5846c790 | 1014 | Load File Staged and Posted "Ready" | PTP;OTC | 1.2.1.23.1 | 1.2.1.23.1 | 2026-04-13 | 2026-04-13 | 2026-04-13 | 100 | 5 | 693 | 1 | 1 | 357ae9be-8a60-8108-8584-eeec48be6efb | 357ae9be-8a60-8133-9fdd-cd69dde169e0 | 0 | 0 | As Soon As Possible | Auto Scheduled | AMETEK SAP XXL Project Plan Replan MSP Task.csv | AMETEK SAP XXL Project Plan Replan MSP Task.csv__2f0764ccac__2026-05-05T02-44-15-662Z | Nevin Varkey |  |  |  | Done | True  0 0 1 0 0 1 18 | Wrong Dependency High 3 1 0  |  |  |  |  |
| 357ae9be-8a60-81ff-bca6-fef99fc99288 | 3317 | Load | Data | 1.2.3.2.67.5 | 1.2.3.2.67.5 | 2026-06-08 | 2026-06-09 | 2026-04-17 | 0 | 6 | 3312 | 1 | 1 | 357ae9be-8a60-81e8-80ab-ee9c0a7bf5ae | 357ae9be-8a60-8193-b45d-e6a658135a7e | -129.02 | 0 | As Soon As Possible | Auto Scheduled | AMETEK SAP XXL Project Plan Replan MSP Task.csv | AMETEK SAP XXL Project Plan Replan MSP Task.csv__2f0764ccac__2026-05-05T02-44-15-662Z | Jyoti Nain | 53 | True |  | Not started | True  -129.02 0 1 0 0 0 26 | Negative Float Critical 2 0 0  |  |  |  |  |

Links (rank, riskIssueId, type, sourceCategory, aiCategory, severity, status, workstream, owner, taskId, taskName, summaryName, attentionLane, milestoneName, milestoneDate, predCount, sucCount, cpmCritical, cpmNearCritical, cpmDriverScore, cpmFreeSlackDays, cpmTotalSlackDays, cpmOverlapLinks, scheduleQualityTags, scheduleQualitySeverity, scheduleQualityScore, resourceCollisionCount, resourceCollisionPeers, impactChain, impactedTesting, impactedLoads, linkedTaskCount, issue, impact, action1, action2, action3):
- 
- 
- 
- 
- 
- 
- 
- 
- 
- 
- 
- 
- 
