| uid | wbs | outlineNumber | outlineLevel | name | start | finish | baselineStart | baselineFinish | percentComplete | durationDays | constraintType | status | totalSlackRaw | freeSlackRaw | resourceNames | summary | criticalFlag | active | flag20 | summaryName | businessValidationOwner | workstream | successors | cpm | predecessors | drivers | milestone |
| --- | --- | --- | --- | --- | --- | --- | --- | --- | --- | --- | --- | --- | --- | --- | --- | --- | --- | --- | --- | --- | --- | --- | --- | --- | --- | --- | --- |
| 1 | 1 | 1 | 1 | AMETEK Release-1, 3-Deployment Plan | 2025-02-17 | 2026-11-09 | 2025-02-17 | 2026-10-16 | 50 | 451 | As Soon As Possible | On Schedule | 0d? | 0d? | COULD NOT BE DETERMINED | True | True | True | True |  |  |  |  |  |  |  |  |
| 2 | 1.1 | 1.1 | 2 | System Readiness | 2025-02-17 | 2026-10-22 | 2025-02-17 | 2026-07-16 | 82 | 439 | As Soon As Possible | Late | 12d? | 12d? | COULD NOT BE DETERMINED | True |  | True | True | AMETEK Release-1, 3-Deployment Plan |  |  |  |  |  |  |  |
| 5 | 1.1.1 | 1.1.1 | 3 | Environment Schedule | 2025-03-13 | 2026-09-29 | 2025-03-13 | 2026-07-16 | 21 | 404 | As Soon As Possible | Late | 29d? | 29d? | COULD NOT BE DETERMINED | True |  | True | True | System Readiness |  |  |  |  |  |  |  |
| 85 | 1.1.1.1 | 1.1.1.1 | 4 | DS4-100 Config / Development Client | 2025-05-07 | 2025-05-07 | 2025-05-07 | 2025-05-07 | 100 | 0.75 | As Soon As Possible | Complete | 0d | 0d | Bijoykrishna Das; Manas Prasanna Das; Punith Ravi; Purnachandrarao.V; Sreevalli Vasireddy; Siddharth Singh; Naveen Kanaparthi; Venkateshsai CH; Kumar Gaurav; Praveenkumar K | True |  | True | True | Environment Schedule | Bijoykrishna Das | Development |  |  |  |  |  |
| 100 | 1.1.1.1.1 | 1.1.1.1.1 | 5 | Copy DS4-100 to DS4-110 Dev | 2025-05-07 | 2025-05-07 | 2025-05-07 | 2025-05-07 | 100 | 0.75 | Finish No Earlier Than | Complete | 0h | 0h | COULD NOT BE DETERMINED |  |  | True |  | DS4-100 Config / Development Client |  |  | 107, 106 | 0 0.75 302.25 303 302.25  |  |  |  |
| 86 | 1.1.1.2 | 1.1.1.2 | 4 | DS4-110 Unit Test Client | 2025-05-08 | 2025-05-08 | 2025-05-08 | 2025-05-08 | 100 | 0.5 | As Soon As Possible | Complete | 0d | 0d | COULD NOT BE DETERMINED | True |  | True | True | Environment Schedule | Kishore Kakarla |  |  |  |  |  |  |
| 106 | 1.1.1.2.1 | 1.1.1.2.1 | 5 | List of functional users | 2025-05-08 | 2025-05-08 | 2025-05-08 | 2025-05-08 | 100 | 0.25 | As Soon As Possible | Complete | 0h | 0h | COULD NOT BE DETERMINED |  |  | True |  | DS4-110 Unit Test Client |  |  | 101 | 0.75 1 303 303.25 302.25  | 100 | 100 0.75 Copy DS4-100 to DS4-110 Dev |  |
| 101 | 1.1.1.2.2 | 1.1.1.2.2 | 5 | Security Role for Functional Team | 2025-05-08 | 2025-05-08 | 2025-05-08 | 2025-05-08 | 100 | 0.25 | As Soon As Possible | Complete | 0h | 0h | Manjunatha Umesha; Sajith Ravindran; Salam Omer; Sandeep Katika |  |  | True |  | DS4-110 Unit Test Client | Manjunatha Umesha | Security |  | 1 1.25 303.25 303.5 302.25  | 106 | 106 1 List of functional users |  |
| 87 | 1.1.1.3 | 1.1.1.3 | 4 | DS4-120 Data Dev Client | 2025-05-08 | 2025-05-08 | 2025-05-08 | 2025-05-08 | 100 | 0.5 | As Soon As Possible | Complete | 0d | 0d | Jyoti Nain; Manoj Patel; Michelle Connnors; Roy John; Shiva Janga; Vishal Pujari; (Curtis) Todd Breithaupt; Jerry Ramos | True |  | True | True | Environment Schedule | Manoj Patel | Data |  |  |  |  |  |
| 107 | 1.1.1.3.1 | 1.1.1.3.1 | 5 | List of functional users | 2025-05-08 | 2025-05-08 | 2025-05-08 | 2025-05-08 | 100 | 0.25 | As Soon As Possible | Complete | 0h | 0h | COULD NOT BE DETERMINED |  |  | True |  | DS4-120 Data Dev Client |  |  | 104 | 0.75 1 303.44 303.69 302.69  | 100 | 100 0.75 Copy DS4-100 to DS4-110 Dev |  |
| 104 | 1.1.1.3.2 | 1.1.1.3.2 | 5 | Security Role for Data Team | 2025-05-08 | 2025-05-08 | 2025-05-08 | 2025-05-08 | 100 | 0.25 | As Soon As Possible | Complete | 0h | 0h | Manjunatha Umesha; Sajith Ravindran; Salam Omer; Sandeep Katika |  |  | True |  | DS4-120 Data Dev Client | Manjunatha Umesha | Security |  | 1 1.25 303.69 303.94 302.69  | 107 | 107 1 List of functional users |  |
| 88 | 1.1.1.4 | 1.1.1.4 | 4 | QS5 ITC-1 Refresh | 2025-03-13 | 2026-04-06 | 2025-03-13 | 2026-04-06 | 100 | 277.5 | As Soon As Possible | Complete | 0d? | 0d? | COULD NOT BE DETERMINED | True |  | True | True | Environment Schedule |  |  |  |  |  |  |  |
| 830 | 1.1.1.4.1 | 1.1.1.4.1 | 5 | Change Request to NS2 | 2025-03-13 | 2025-03-13 | 2025-03-13 | 2025-03-13 | 100 | 0.125 | As Soon As Possible | Complete | 0h | 0h | Basis |  |  | True |  | QS5 ITC-1 Refresh |  | Basis |  | 0 0.13 303.81 303.94 303.81  |  |  |  |
| 671 | 1.1.1.4.10 | 1.1.1.4.10 | 5 | Security Manual Tasks | 2026-02-05 | 2026-02-06 | 2026-02-05 | 2026-02-06 | 100 | 1 | As Soon As Possible | Complete | 0d | 0d | Security |  |  | True |  | QS5 ITC-1 Refresh | Manjunatha Umesha | Security |  | 1.5 2.5 303 304 301.5  | 642 | 642 1.5 Security Transports |  |
| 643 | 1.1.1.4.11 | 1.1.1.4.11 | 5 | Manual Technical Tasks | 2026-02-05 | 2026-02-06 | 2026-02-05 | 2026-02-06 | 100 | 1 | As Soon As Possible | Complete | 0d | 0d | Basis |  |  | True |  | QS5 ITC-1 Refresh |  | Basis | 644 | 1.5 2.5 297 298 295.5  | 642 | 642 1.5 Security Transports |  |
| 644 | 1.1.1.4.12 | 1.1.1.4.12 | 5 | Validate Fiori | 2026-02-06 | 2026-02-06 | 2026-02-06 | 2026-02-06 | 100 | 0.5 | As Soon As Possible | Complete | 0h | 0h | Basis |  |  | True |  | QS5 ITC-1 Refresh |  | Basis | 645, 653, 672 | 2.5 3 298 298.5 295.5  | 643 | 643 2.5 Manual Technical Tasks |  |
| 672 | 1.1.1.4.13 | 1.1.1.4.13 | 5 | Fiori App Activation | 2026-02-09 | 2026-02-09 | 2026-02-09 | 2026-02-09 | 100 | 0.75 | As Soon As Possible | Complete | 0h | 0h | Dev Team |  |  | True |  | QS5 ITC-1 Refresh | Brian Wagner | Development |  | 3 3.75 303.25 304 300.25  | 644 | 644 3 Validate Fiori |  |
| 645 | 1.1.1.4.14 | 1.1.1.4.14 | 5 | Download Transport List | 2026-02-09 | 2026-02-09 | 2026-02-09 | 2026-02-09 | 100 | 0.125 | As Soon As Possible | Complete | 0h | 0h | Basis |  |  | True |  | QS5 ITC-1 Refresh |  | Basis | 646 | 3 3.13 298.5 298.63 295.5  | 644 | 644 3 Validate Fiori |  |
| 653 | 1.1.1.4.15 | 1.1.1.4.15 | 5 | Business Functions Validation | 2026-02-09 | 2026-02-09 | 2026-02-09 | 2026-02-09 | 100 | 1 | Start No Earlier Than | Complete | 0d | 0d | Basis |  |  | True |  | QS5 ITC-1 Refresh |  | Basis |  | 3 4 303 304 300  | 644 | 644 3 Validate Fiori |  |
| 646 | 1.1.1.4.16 | 1.1.1.4.16 | 5 | Functional Leads Validation of Transport List | 2026-02-09 | 2026-02-09 | 2026-02-09 | 2026-02-09 | 100 | 0.125 | As Soon As Possible | Complete | 0h | 0h | Functional Leads |  |  | True |  | QS5 ITC-1 Refresh |  | Development | 657, 673 | 3.13 3.25 298.63 298.75 295.5  | 645 | 645 3.125 Download Transport List |  |
| 673 | 1.1.1.4.17 | 1.1.1.4.17 | 5 | Release Security roles to Functional Team | 2026-02-09 | 2026-02-09 | 2026-02-09 | 2026-02-09 | 100 | 0.125 | As Soon As Possible | Complete | 0h | 0h | Security |  |  | True |  | QS5 ITC-1 Refresh | Manjunatha Umesha | Security |  | 3.25 3.38 303.88 304 300.63  | 646 | 646 3.25 Functional Leads Validation of Transport List |  |
| 647 | 1.1.1.4.18 | 1.1.1.4.18 | 5 | Release Transports to Client | 2026-02-09 | 2026-03-25 | 2026-02-09 | 2026-03-25 | 100 | 32.75 | As Soon As Possible | Complete | 0d | 0d | COULD NOT BE DETERMINED | True |  | True |  | QS5 ITC-1 Refresh |  |  |  |  |  |  |  |
| 657 | 1.1.1.4.18.1 | 1.1.1.4.18.1 | 6 | Import Group 1 - Ent Structure | 2026-02-09 | 2026-02-09 | 2026-02-09 | 2026-02-09 | 100 | 0.25 | As Soon As Possible | Complete | 0h | 0h | Functional Leads |  |  | True |  | Release Transports to Client |  | Development | 658 | 3.25 3.5 298.75 299 295.5  | 646 | 646 3.25 Functional Leads Validation of Transport List |  |
| 658 | 1.1.1.4.18.2 | 1.1.1.4.18.2 | 6 | Manual activities group 1 | 2026-03-19 | 2026-03-23 | 2026-03-19 | 2026-03-23 | 100 | 2.5 | Finish No Earlier Than | Complete | 0h | 0h | Functional Leads |  |  | True |  | Release Transports to Client |  | Development | 659 | 3.5 6 299 301.5 295.5  | 657 | 657 3.5 Import Group 1 - Ent Structure |  |
| 659 | 1.1.1.4.18.3 | 1.1.1.4.18.3 | 6 | Import Group 2 - Core Transports | 2026-03-23 | 2026-03-23 | 2026-03-23 | 2026-03-23 | 100 | 0.25 | As Soon As Possible | Complete | 0h | 0h | Functional Leads |  |  | True |  | Release Transports to Client |  | Development | 660 | 6 6.25 301.5 301.75 295.5  | 658 | 658 6 Manual activities group 1 |  |
| 660 | 1.1.1.4.18.4 | 1.1.1.4.18.4 | 6 | Manual activities group 2 | 2026-03-23 | 2026-03-24 | 2026-03-23 | 2026-03-24 | 100 | 1 | As Soon As Possible | Complete | 0d | 0d | Functional Leads |  |  | True |  | Release Transports to Client |  | Development | 661 | 6.25 7.25 301.75 302.75 295.5  | 659 | 659 6.25 Import Group 2 - Core Transports |  |
| 661 | 1.1.1.4.18.5 | 1.1.1.4.18.5 | 6 | Import Group 3 - prior to transactions | 2026-03-24 | 2026-03-24 | 2026-03-24 | 2026-03-24 | 100 | 0.25 | As Soon As Possible | Complete | 0h | 0h | Functional Leads |  |  | True |  | Release Transports to Client |  | Development | 831 | 7.25 7.5 302.75 303 295.5  | 660 | 660 7.25 Manual activities group 2 |  |
| 831 | 1.1.1.4.18.6 | 1.1.1.4.18.6 | 6 | Manual Activities Group 3 | 2026-03-25 | 2026-03-25 | 2026-03-25 | 2026-03-25 | 100 | 1 | As Soon As Possible | Complete | 0d | 0d | Functional Leads |  |  | True |  | Release Transports to Client |  | Development |  | 7.5 8.5 303 304 295.5  | 661 | 661 7.5 Import Group 3 - prior to transactions |  |
| 662 | 1.1.1.4.19 | 1.1.1.4.19 | 5 | Import Group 4 - workbench / dev work | 2026-04-03 | 2026-04-03 | 2026-04-03 | 2026-04-03 | 100 | 0.25 | Start No Earlier Than | Complete | 0h | 0h | Dev Team |  |  | True |  | QS5 ITC-1 Refresh |  | Development | 663 | 0 0.25 288.13 288.38 288.13  |  |  |  |
| 669 | 1.1.1.4.2 | 1.1.1.4.2 | 5 | Dev Environment Release from SAP | 2026-01-08 | 2026-01-08 | 2026-01-08 | 2026-01-08 | 100 | 0 | Start No Earlier Than | Complete | 0d | 0d | NS2 |  |  | True |  | QS5 ITC-1 Refresh | Brian Wagner |  | 670 | 0 0 301.88 301.88 301.88  |  |  | True |
| 663 | 1.1.1.4.20 | 1.1.1.4.20 | 5 | Import Group 5 - Config to support dev workbench | 2026-04-03 | 2026-04-03 | 2026-04-03 | 2026-04-03 | 100 | 0.25 | As Soon As Possible | Complete | 0h | 0h | Dev Team |  |  | True |  | QS5 ITC-1 Refresh |  | Development | 833 | 0.25 0.5 288.38 288.63 288.13  | 662 | 662 0.25 Import Group 4 - workbench / dev work |  |
| 833 | 1.1.1.4.21 | 1.1.1.4.21 | 5 | Create Migration Data Project in DMC | 2026-04-03 | 2026-04-06 | 2026-04-03 | 2026-04-06 | 100 | 1 | As Soon As Possible | Complete | 0d | 0d | Data Migration Team |  |  | True |  | QS5 ITC-1 Refresh | Manoj Patel | Data | 652 | 0.5 1.5 288.63 289.63 288.13  | 663 | 663 0.5 Import Group 5 - Config to support dev workbench |  |
| 652 | 1.1.1.4.22 | 1.1.1.4.22 | 5 | Environment Ready for Build | 2026-04-06 | 2026-04-06 | 2026-04-06 | 2026-04-06 | 100 | 0 | As Soon As Possible | Complete | 0d | 0d | PMO |  |  | True |  | QS5 ITC-1 Refresh |  | PMO | 245, 585, 333, 404, 194 | 1.5 1.5 289.63 289.63 288.13  | 833 | 833 1.5 Create Migration Data Project in DMC | True |
| 670 | 1.1.1.4.3 | 1.1.1.4.3 | 5 | Release Setup ID's and Access | 2026-01-08 | 2026-01-08 | 2026-01-08 | 2026-01-08 | 100 | 0.125 | As Soon As Possible | Complete | 0h | 0h | Security |  |  | True |  | QS5 ITC-1 Refresh |  | Security | 654 | 0 0.13 301.88 302 301.88  | 669 | 669 0 Dev Environment Release from SAP |  |
| 654 | 1.1.1.4.4 | 1.1.1.4.4 | 5 | Client Config / Validation | 2026-02-02 | 2026-02-02 | 2026-02-02 | 2026-02-02 | 100 | 1 | As Soon As Possible | Complete | 0d | 0d | Basis |  |  | True |  | QS5 ITC-1 Refresh |  | Basis | 655 | 0.13 1.13 302 303 301.88  | 670 | 670 0.125 Release Setup ID's and Access |  |
| 640 | 1.1.1.4.5 | 1.1.1.4.5 | 5 | Technical Transports / BP Setup | 2026-02-04 | 2026-02-04 | 2026-02-04 | 2026-02-04 | 100 | 1 | As Soon As Possible | Complete | 0d | 0d | Basis |  |  | True |  | QS5 ITC-1 Refresh |  | Basis | 641, 642, 674 | 0 1 295.5 296.5 295.5  |  |  |  |
| 655 | 1.1.1.4.6 | 1.1.1.4.6 | 5 | Best Practice / Country Validation | 2026-02-03 | 2026-02-03 | 2026-02-03 | 2026-02-03 | 100 | 1 | As Soon As Possible | Complete | 0d? | 0d? | Basis |  |  | True |  | QS5 ITC-1 Refresh |  | Basis |  | 1.13 2.13 303 304 301.88  | 654 | 654 1.125 Client Config / Validation |  |
| 641 | 1.1.1.4.7 | 1.1.1.4.7 | 5 | Connect Systems and Validate | 2026-02-05 | 2026-02-05 | 2026-02-05 | 2026-02-05 | 100 | 1 | As Soon As Possible | Complete | 0d | 0d | Basis |  |  | True |  | QS5 ITC-1 Refresh |  | Basis |  | 1 2 303 304 302  | 640 | 640 1 Technical Transports / BP Setup |  |
| 674 | 1.1.1.4.8 | 1.1.1.4.8 | 5 | Validate Syniti Connections to QS5 | 2026-02-05 | 2026-02-05 | 2026-02-05 | 2026-02-05 | 100 | 1 | As Soon As Possible | Complete | 0d | 0d | Data |  |  | True |  | QS5 ITC-1 Refresh |  | Data |  | 1 2 298 299 297  | 640 | 640 1 Technical Transports / BP Setup |  |
| 642 | 1.1.1.4.9 | 1.1.1.4.9 | 5 | Security Transports | 2026-02-05 | 2026-02-05 | 2026-02-05 | 2026-02-05 | 100 | 0.5 | As Soon As Possible | Complete | 0h | 0h | Security |  |  | True |  | QS5 ITC-1 Refresh | Manjunatha Umesha | Security | 643, 671 | 1 1.5 296.5 297 295.5  | 640 | 640 1 Technical Transports / BP Setup |  |
| 849 | 1.1.1.5 | 1.1.1.5 | 4 | QS4 ITC-2 Refresh | 2026-04-27 | 2026-05-14 | 2026-05-01 | 2026-07-16 | 31 | 13.88 | Start No Earlier Than | Late | -8.19d | 0d | COULD NOT BE DETERMINED | True | True | True | True | Environment Schedule |  |  | 28, 91, 685 |  |  |  |  |
| 3340 | 1.1.1.5.1 | 1.1.1.5.1 | 5 | System Setup | 2026-04-27 | 2026-05-05 | 2026-04-27 | 2026-05-05 | 49 | 7 | As Soon As Possible | Late | -3d | 0d | COULD NOT BE DETERMINED | True | True | True | True | QS4 ITC-2 Refresh |  |  | 867 |  | 652 |  |  |
| 850 | 1.1.1.5.1.1 | 1.1.1.5.1.1 | 6 | Dev Refresh Basis(Workinig with NS2) | 2026-04-27 | 2026-04-28 | 2026-05-01 | 2026-05-01 | 100 | 2 | Start No Earlier Than | Complete | 0d | 0d | Basis |  |  | True |  | System Setup | Lokchetan Meghavath | Basis |  | 0 2 302 304 302  |  |  |  |
| 861 | 1.1.1.5.1.10 | 1.1.1.5.1.10 | 6 | Validate Fiori | 2026-05-05 | 2026-05-05 | 2026-05-18 | 2026-05-19 | 0 | 0.5 | As Soon As Possible | Future Task | -204.02h | 0h | Basis |  | True | True |  | System Setup |  | Basis | 863, 864, 862 | 8 8.5 296.13 296.63 288.13  | 860 | 860 8 Manual Technical Tasks |  |
| 862 | 1.1.1.5.1.11 | 1.1.1.5.1.11 | 6 | Fiori App Activation | 2026-05-05 | 2026-05-05 | 2026-05-19 | 2026-05-19 | 0 | 0.75 | As Soon As Possible | Future Task | -202.02h | 0h | Dev Team |  | True | True |  | System Setup | Brian Wagner | Development |  | 8.5 9.25 303.25 304 294.75  | 861 | 861 8.5 Validate Fiori |  |
| 863 | 1.1.1.5.1.12 | 1.1.1.5.1.12 | 6 | Download Transport List | 2026-05-05 | 2026-05-05 | 2026-05-19 | 2026-05-19 | 0 | 0.125 | As Soon As Possible | Future Task | -203.02h | 0h | Basis |  | True | True |  | System Setup |  | Basis | 865 | 8.5 8.63 296.63 296.75 288.13  | 861 | 861 8.5 Validate Fiori |  |
| 864 | 1.1.1.5.1.13 | 1.1.1.5.1.13 | 6 | Business Functions Validation | 2026-05-05 | 2026-05-05 | 2026-05-19 | 2026-05-20 | 0 | 1 | As Soon As Possible | Future Task | -204.02h | 0h | Basis |  | True | True |  | System Setup |  | Basis |  | 8.5 9.5 303 304 294.5  | 861 | 861 8.5 Validate Fiori |  |
| 865 | 1.1.1.5.1.14 | 1.1.1.5.1.14 | 6 | Functional Leads Validation of Transport List | 2026-05-05 | 2026-05-05 | 2026-05-19 | 2026-05-19 | 0 | 0.125 | As Soon As Possible | Future Task | -203.02h | 0h | Functional Leads |  | True | True |  | System Setup |  | Development | 868, 866 | 8.63 8.75 296.75 296.88 288.13  | 863 | 863 8.625 Download Transport List |  |
| 866 | 1.1.1.5.1.15 | 1.1.1.5.1.15 | 6 | Release Security roles to Functional Team | 2026-05-05 | 2026-05-05 | 2026-05-19 | 2026-05-19 | 0 | 0.125 | As Soon As Possible | Future Task | -203.02h | 0h | Security |  | True | True |  | System Setup | Manjunatha Umesha | Security |  | 8.75 8.88 303.88 304 295.13  | 865 | 865 8.75 Functional Leads Validation of Transport List |  |
| 853 | 1.1.1.5.1.2 | 1.1.1.5.1.2 | 6 | Client Config / Validation | 2026-04-27 | 2026-04-27 | 2026-05-08 | 2026-05-11 | 100 | 1 | As Soon As Possible | Complete | 0d | 0d | Basis |  |  | True |  | System Setup |  | Basis | 854 | 1.5 2.5 289.63 290.63 288.13  | 652 | 652 1.5 Environment Ready for Build |  |
| 854 | 1.1.1.5.1.3 | 1.1.1.5.1.3 | 6 | Technical Transports / BP Setup | 2026-04-28 | 2026-04-28 | 2026-05-11 | 2026-05-12 | 100 | 1 | As Soon As Possible | Complete | 0d | 0d | Basis |  |  | True |  | System Setup |  | Basis | 855 | 2.5 3.5 290.63 291.63 288.13  | 853 | 853 2.5 Client Config / Validation |  |
| 855 | 1.1.1.5.1.4 | 1.1.1.5.1.4 | 6 | Best Practice / Country Validation | 2026-04-29 | 2026-04-29 | 2026-05-12 | 2026-05-13 | 100 | 1 | As Soon As Possible | Complete | 0d | 0d | Basis |  |  | True |  | System Setup |  | Basis | 856 | 3.5 4.5 291.63 292.63 288.13  | 854 | 854 3.5 Technical Transports / BP Setup |  |
| 856 | 1.1.1.5.1.5 | 1.1.1.5.1.5 | 6 | Connect Systems and Validate | 2026-04-30 | 2026-04-30 | 2026-05-13 | 2026-05-14 | 100 | 1 | As Soon As Possible | Complete | 0d | 0d | Basis |  |  | True |  | System Setup |  | Basis | 857 | 4.5 5.5 292.63 293.63 288.13  | 855 | 855 4.5 Best Practice / Country Validation |  |
| 857 | 1.1.1.5.1.6 | 1.1.1.5.1.6 | 6 | Validate Syniti Connections to QS5 | 2026-05-01 | 2026-05-01 | 2026-05-14 | 2026-05-15 | 0 | 1 | As Soon As Possible | Late | -25.5d | 0d | Data |  | True | True |  | System Setup |  | Data | 858 | 5.5 6.5 293.63 294.63 288.13  | 856 | 856 5.5 Connect Systems and Validate |  |
| 858 | 1.1.1.5.1.7 | 1.1.1.5.1.7 | 6 | Security Transports | 2026-05-04 | 2026-05-04 | 2026-05-15 | 2026-05-15 | 0 | 0.5 | As Soon As Possible | On Schedule | -204.02h | 0h | Security |  | True | True |  | System Setup | Manjunatha Umesha | Security | 860, 859 | 6.5 7 294.63 295.13 288.13  | 857 | 857 6.5 Validate Syniti Connections to QS5 |  |
| 859 | 1.1.1.5.1.8 | 1.1.1.5.1.8 | 6 | Security Manual Tasks | 2026-05-04 | 2026-05-04 | 2026-05-15 | 2026-05-18 | 0 | 1 | As Soon As Possible | On Schedule | -24.5d | 0d | Security |  | True | True |  | System Setup | Manjunatha Umesha | Security |  | 7 8 303 304 296  | 858 | 858 7 Security Transports |  |
| 860 | 1.1.1.5.1.9 | 1.1.1.5.1.9 | 6 | Manual Technical Tasks | 2026-05-04 | 2026-05-04 | 2026-05-15 | 2026-05-18 | 0 | 1 | As Soon As Possible | On Schedule | -25.5d | 0d | Basis |  | True | True |  | System Setup |  | Basis | 861 | 7 8 295.13 296.13 288.13  | 858 | 858 7 Security Transports |  |
| 867 | 1.1.1.5.2 | 1.1.1.5.2 | 5 | Release Transports to Client | 2026-05-06 | 2026-05-14 | 2026-05-19 | 2026-05-26 | 0 | 6.31 | As Soon As Possible | Future Task | -25.5d | 0d | COULD NOT BE DETERMINED | True | True | True | True | QS4 ITC-2 Refresh |  |  | 3339 |  | 3340 |  |  |
| 868 | 1.1.1.5.2.1 | 1.1.1.5.2.1 | 6 | Import Group 1 - Ent Structure | 2026-05-06 | 2026-05-06 | 2026-05-19 | 2026-05-19 | 0 | 0.25 | As Soon As Possible | Future Task | -204.02h | 0h | Functional Leads |  | True | True |  | Release Transports to Client |  | Development | 869 | 8.75 9 296.88 297.13 288.13  | 865 | 865 8.75 Functional Leads Validation of Transport List |  |
| 869 | 1.1.1.5.2.2 | 1.1.1.5.2.2 | 6 | Manual activities group 1 | 2026-05-06 | 2026-05-08 | 2026-05-19 | 2026-05-22 | 0 | 2.5 | As Soon As Possible | Future Task | -204.02h | 0h | Functional Leads |  | True | True |  | Release Transports to Client |  | Development | 870 | 9 11.5 297.13 299.63 288.13  | 868 | 868 9 Import Group 1 - Ent Structure |  |
| 870 | 1.1.1.5.2.3 | 1.1.1.5.2.3 | 6 | Import Group 2 - Core Transports | 2026-05-08 | 2026-05-08 | 2026-05-22 | 2026-05-22 | 0 | 0.25 | As Soon As Possible | Future Task | -204.02h | 0h | Functional Leads |  | True | True |  | Release Transports to Client |  | Development | 871 | 11.5 11.75 299.63 299.88 288.13  | 869 | 869 11.5 Manual activities group 1 |  |
| 871 | 1.1.1.5.2.4 | 1.1.1.5.2.4 | 6 | Manual activities group 2 | 2026-05-11 | 2026-05-11 | 2026-05-22 | 2026-05-25 | 0 | 1 | As Soon As Possible | Future Task | -25.5d | 0d | Functional Leads |  | True | True |  | Release Transports to Client |  | Development | 872 | 11.75 12.75 299.88 300.88 288.13  | 870 | 870 11.75 Import Group 2 - Core Transports |  |
| 872 | 1.1.1.5.2.5 | 1.1.1.5.2.5 | 6 | Import Group 3 - prior to transactions | 2026-05-12 | 2026-05-12 | 2026-05-25 | 2026-05-25 | 0 | 0.25 | As Soon As Possible | Future Task | -204.02h | 0h | Functional Leads |  | True | True |  | Release Transports to Client |  | Development | 873 | 12.75 13 300.88 301.13 288.13  | 871 | 871 12.75 Manual activities group 2 |  |
| 873 | 1.1.1.5.2.6 | 1.1.1.5.2.6 | 6 | Manual Activities Group 3 | 2026-05-12 | 2026-05-13 | 2026-05-25 | 2026-05-26 | 0 | 1 | As Soon As Possible | Future Task | -25.5d | 0d | Functional Leads |  | True | True |  | Release Transports to Client |  | Development | 874 | 13 14 301.13 302.13 288.13  | 872 | 872 13 Import Group 3 - prior to transactions |  |
| 874 | 1.1.1.5.2.7 | 1.1.1.5.2.7 | 6 | Import Group 4 - workbench / dev work | 2026-05-13 | 2026-05-13 | 2026-05-26 | 2026-05-26 | 0 | 0.25 | As Soon As Possible | Future Task | -204.02h | 0h | Dev Team |  | True | True |  | Release Transports to Client |  | Development | 875 | 14 14.25 302.13 302.38 288.13  | 873 | 873 14 Manual Activities Group 3 |  |
| 875 | 1.1.1.5.2.8 | 1.1.1.5.2.8 | 6 | Import Group 5 - Config to support dev workbench | 2026-05-13 | 2026-05-14 | 2026-05-27 | 2026-05-28 | 0 | 1.0625 | As Soon As Possible | Future Task | -204.02h | 0h | Dev Team |  | True | True |  | Release Transports to Client |  | Development | 1221 | 14.25 15.31 302.38 303.44 288.13  | 874 | 874 14.25 Import Group 4 - workbench / dev work |  |
| 1226 | 1.1.1.5.3 | 1.1.1.5.3 | 5 | Data Project Create | 2026-05-14 | 2026-05-14 | 2026-05-27 | 2026-05-28 | 0 | 0.56 | As Soon As Possible | Future Task | -8.19d | 0d | Jyoti Nain; Manoj Patel; Michelle Connnors; Roy John; Shiva Janga; Vishal Pujari; (Curtis) Todd Breithaupt; Jerry Ramos | True | True | True | True | QS4 ITC-2 Refresh | Manoj Patel | Data |  |  |  |  |  |
| 1221 | 1.1.1.5.3.1 | 1.1.1.5.3.1 | 6 | Open Client | 2026-05-14 | 2026-05-14 | 2026-05-27 | 2026-05-27 | 0 | 0.03125 | As Soon As Possible | Future Task | -3931m | 0m | Basis |  | True | True |  | Data Project Create |  | Basis | 876 | 15.31 15.34 303.44 303.47 288.13  | 875 | 875 15.3125 Import Group 5 - Config to support dev workbench |  |
| 876 | 1.1.1.5.3.2 | 1.1.1.5.3.2 | 6 | Create Migration Data Project in DMC | 2026-05-14 | 2026-05-14 | 2026-05-27 | 2026-05-28 | 0 | 0.5 | As Soon As Possible | Future Task | -65.52h | 0h | Data Migration Team |  | True | True |  | Data Project Create | Manoj Patel | Data | 1222 | 15.34 15.84 303.47 303.97 288.13  | 1221 | 1221 15.34375 Open Client |  |
| 1222 | 1.1.1.5.3.3 | 1.1.1.5.3.3 | 6 | Close Client | 2026-05-14 | 2026-05-14 | 2026-05-28 | 2026-05-28 | 0 | 0.03125 | As Soon As Possible | Future Task | -3931m | 0m | Basis |  | True | True |  | Data Project Create |  | Basis | 877 | 15.84 15.88 303.97 304 288.13  | 876 | 876 15.84375 Create Migration Data Project in DMC |  |

| uid | wbs | outlineNumber | outlineLevel | name | start | finish | baselineStart | baselineFinish | percentComplete | durationDays | constraintType | status | totalSlackRaw | freeSlackRaw | resourceNames | summary | criticalFlag | active | flag20 | summaryName | businessValidationOwner | workstream | successors | cpm | predecessors | drivers | milestone |
| --- | --- | --- | --- | --- | --- | --- | --- | --- | --- | --- | --- | --- | --- | --- | --- | --- | --- | --- | --- | --- | --- | --- | --- | --- | --- | --- | --- |
| 877 | 1.1.1.5.4 | 1.1.1.5.4 | 5 | Environment Ready for Test | 2026-05-14 | 2026-05-14 | 2026-07-16 | 2026-07-16 | 0 | 0 | As Soon As Possible | Future Task | -3931m | 0m | PMO |  | True | True | True | QS4 ITC-2 Refresh | Kishore Kakarla | PMO |  | 15.88 15.88 304 304 288.13  | 1222 | 1222 15.875 Close Client | True |
| 1284 | 1.1.1.6 | 1.1.1.6 | 4 | QS5 ITC-3 Refresh | 2026-05-18 | 2026-06-01 | 2026-05-01 | 2026-07-16 | 0 | 10.44 | As Soon As Possible | Future Task | -27.19d | 0d | COULD NOT BE DETERMINED | True | True | True | True | Environment Schedule |  |  | 2054 |  |  |  |  |
| 3339 | 1.1.1.6.1 | 1.1.1.6.1 | 5 | System Setup | 2026-05-18 | 2026-05-27 | 2026-05-18 | 2026-05-27 | 0 | 8 | As Soon As Possible | Future Task | -27.19d | 0d | COULD NOT BE DETERMINED | True | True | True | True | QS5 ITC-3 Refresh |  |  |  |  | 867 |  |  |
| 1285 | 1.1.1.6.1.1 | 1.1.1.6.1.1 | 6 | System Refresh Basis(Workinig with NS2) | 2026-05-18 | 2026-05-20 | 2026-05-01 | 2026-05-01 | 0 | 3 | Must Start On | Future Task | 0d | 0d | Basis |  | True | True |  | System Setup | Lokchetan Meghavath | Basis | 1288 | 0 3 290.44 293.44 290.44  |  |  |  |
| 1296 | 1.1.1.6.1.10 | 1.1.1.6.1.10 | 6 | Validate Fiori | 2026-05-22 | 2026-05-22 | 2026-05-18 | 2026-05-19 | 0 | 0.5 | As Soon As Possible | Future Task | -241.52h | 0h | Basis |  | True | True |  | System Setup |  | Basis | 1297 | 5.5 6 295.94 296.44 290.44  | 1295 | 1295 5.5 Manual Technical Tasks |  |
| 1297 | 1.1.1.6.1.11 | 1.1.1.6.1.11 | 6 | Fiori App Activation | 2026-05-22 | 2026-05-22 | 2026-05-19 | 2026-05-19 | 0 | 0.75 | As Soon As Possible | Future Task | -241.52h | 0h | Dev Team |  | True | True |  | System Setup | Brian Wagner | Development | 1298 | 6 6.75 296.44 297.19 290.44  | 1296 | 1296 6 Validate Fiori |  |
| 1298 | 1.1.1.6.1.12 | 1.1.1.6.1.12 | 6 | Download Transport List | 2026-05-22 | 2026-05-22 | 2026-05-19 | 2026-05-19 | 0 | 0.125 | As Soon As Possible | Future Task | -241.52h | 0h | Basis |  | True | True |  | System Setup |  | Basis | 1299, 1300 | 6.75 6.88 297.19 297.31 290.44  | 1297 | 1297 6.75 Fiori App Activation |  |
| 1299 | 1.1.1.6.1.13 | 1.1.1.6.1.13 | 6 | Business Functions Validation | 2026-05-22 | 2026-05-22 | 2026-05-19 | 2026-05-20 | 0 | 1 | Start No Earlier Than | Future Task | 79h | 0h | Basis |  |  | True |  | System Setup |  | Basis | 1301 | 6.88 7.88 302.88 303.88 296  | 1298 | 1298 6.875 Download Transport List |  |
| 1300 | 1.1.1.6.1.14 | 1.1.1.6.1.14 | 6 | Functional Leads Validation of Transport | 2026-05-22 | 2026-05-22 | 2026-05-19 | 2026-05-19 | 0 | 0.125 | As Soon As Possible | Future Task | -241.52h | 0h | Functional Leads |  | True | True |  | System Setup |  | Development | 13, 31, 302 | 6.88 7 297.31 297.44 290.44  | 1298 | 1298 6.875 Download Transport List |  |
| 1301 | 1.1.1.6.1.15 | 1.1.1.6.1.15 | 6 | Release Security roles to Functional Team | 2026-05-25 | 2026-05-25 | 2026-05-19 | 2026-05-19 | 0 | 0.125 | As Soon As Possible | Future Task | 79h | 79h | Security |  |  | True |  | System Setup | Manjunatha Umesha | Security |  | 7.88 8 303.88 304 296  | 1299 | 1299 7.875 Business Functions Validation |  |
| 1288 | 1.1.1.6.1.2 | 1.1.1.6.1.2 | 6 | Client Config / Validation | 2026-05-21 | 2026-05-21 | 2026-05-08 | 2026-05-11 | 0 | 1 | As Soon As Possible | Future Task | -30.19d | 0d | Basis |  | True | True |  | System Setup |  | Basis | 1289, 1293 | 3 4 293.44 294.44 290.44  | 1285 | 1285 3 System Refresh Basis(Workinig with NS2) |  |
| 1289 | 1.1.1.6.1.3 | 1.1.1.6.1.3 | 6 | Technical Transports / BP Setup | 2026-05-22 | 2026-05-22 | 2026-05-11 | 2026-05-12 | 0 | 1 | As Soon As Possible | Future Task | 7d | 0d | Basis |  |  | True |  | System Setup |  | Basis | 1290 | 4 5 300 301 296  | 1288 | 1288 4 Client Config / Validation |  |
| 1290 | 1.1.1.6.1.4 | 1.1.1.6.1.4 | 6 | Best Practice / Country Validation | 2026-05-25 | 2026-05-25 | 2026-05-12 | 2026-05-13 | 0 | 1 | As Soon As Possible | Future Task | 7d | 0d | Basis |  |  | True |  | System Setup |  | Basis | 1291 | 5 6 301 302 296  | 1289 | 1289 5 Technical Transports / BP Setup |  |
| 1291 | 1.1.1.6.1.5 | 1.1.1.6.1.5 | 6 | Connect Systems and Validate | 2026-05-26 | 2026-05-26 | 2026-05-13 | 2026-05-14 | 0 | 1 | As Soon As Possible | Future Task | 7d | 0d | Basis |  |  | True |  | System Setup |  | Basis | 1292 | 6 7 302 303 296  | 1290 | 1290 6 Best Practice / Country Validation |  |
| 1292 | 1.1.1.6.1.6 | 1.1.1.6.1.6 | 6 | Validate Syniti Connections to QS5 | 2026-05-27 | 2026-05-27 | 2026-05-14 | 2026-05-15 | 0 | 1 | As Soon As Possible | Future Task | 7d | 7d | Data |  |  | True |  | System Setup |  | Data |  | 7 8 303 304 296  | 1291 | 1291 7 Connect Systems and Validate |  |
| 1293 | 1.1.1.6.1.7 | 1.1.1.6.1.7 | 6 | Security Transports | 2026-05-21 | 2026-05-21 | 2026-05-15 | 2026-05-15 | 0 | 0.5 | As Soon As Possible | Future Task | -241.52h | 0h | Security |  | True | True |  | System Setup | Manjunatha Umesha | Security | 1294, 1295 | 4 4.5 294.44 294.94 290.44  | 1288 | 1288 4 Client Config / Validation |  |
| 1294 | 1.1.1.6.1.8 | 1.1.1.6.1.8 | 6 | Security Manual Tasks | 2026-05-21 | 2026-05-22 | 2026-05-15 | 2026-05-18 | 0 | 1 | As Soon As Possible | Future Task | 10.5d | 10.5d | Security |  |  | True |  | System Setup | Manjunatha Umesha | Security |  | 4.5 5.5 303 304 298.5  | 1293 | 1293 4.5 Security Transports |  |
| 1295 | 1.1.1.6.1.9 | 1.1.1.6.1.9 | 6 | Manual Technical Tasks | 2026-05-21 | 2026-05-21 | 2026-05-15 | 2026-05-18 | 0 | 1 | As Soon As Possible | Future Task | -30.19d | 0d | Basis |  | True | True |  | System Setup |  | Basis | 1296 | 4.5 5.5 294.94 295.94 290.44  | 1293 | 1293 4.5 Security Transports |  |
| 1302 | 1.1.1.6.2 | 1.1.1.6.2 | 5 | Release Transports to Client | 2026-05-22 | 2026-06-01 | 2026-05-19 | 2026-05-26 | 0 | 6.31 | As Soon As Possible | Future Task | -30.19d | 0d | COULD NOT BE DETERMINED | True | True | True | True | QS5 ITC-3 Refresh |  |  |  |  | 1300 |  |  |
| 1303 | 1.1.1.6.2.1 | 1.1.1.6.2.1 | 6 | Import Group 1 - Ent Structure | 2026-05-22 | 2026-05-22 | 2026-05-19 | 2026-05-19 | 0 | 0.25 | As Soon As Possible | Future Task | -241.52h | 0h | Functional Leads |  | True | True |  | Release Transports to Client |  | Development | 1304 | 7 7.25 297.44 297.69 290.44  | 1300 | 1300 7 Functional Leads Validation of Transport |  |
| 1304 | 1.1.1.6.2.2 | 1.1.1.6.2.2 | 6 | Manual activities group 1 | 2026-05-22 | 2026-05-26 | 2026-05-19 | 2026-05-22 | 0 | 2.5 | Finish No Earlier Than | Future Task | -241.52h | 0h | Functional Leads |  | True | True |  | Release Transports to Client |  | Development | 1305 | 7.25 9.75 297.69 300.19 290.44  | 1303 | 1303 7.25 Import Group 1 - Ent Structure |  |
| 1305 | 1.1.1.6.2.3 | 1.1.1.6.2.3 | 6 | Import Group 2 - Core Transports | 2026-05-26 | 2026-05-27 | 2026-05-22 | 2026-05-22 | 0 | 0.25 | As Soon As Possible | Future Task | -241.52h | 0h | Functional Leads |  | True | True |  | Release Transports to Client |  | Development | 1306 | 9.75 10 300.19 300.44 290.44  | 1304 | 1304 9.75 Manual activities group 1 |  |
| 1306 | 1.1.1.6.2.4 | 1.1.1.6.2.4 | 6 | Manual activities group 2 | 2026-05-27 | 2026-05-28 | 2026-05-22 | 2026-05-25 | 0 | 1 | As Soon As Possible | Future Task | -30.19d | 0d | Functional Leads |  | True | True |  | Release Transports to Client |  | Development | 1307 | 10 11 300.44 301.44 290.44  | 1305 | 1305 10 Import Group 2 - Core Transports |  |
| 1307 | 1.1.1.6.2.5 | 1.1.1.6.2.5 | 6 | Import Group 3 - prior to transactions | 2026-05-28 | 2026-05-28 | 2026-05-25 | 2026-05-25 | 0 | 0.25 | As Soon As Possible | Future Task | -241.52h | 0h | Functional Leads |  | True | True |  | Release Transports to Client |  | Development | 1308 | 11 11.25 301.44 301.69 290.44  | 1306 | 1306 11 Manual activities group 2 |  |
| 1308 | 1.1.1.6.2.6 | 1.1.1.6.2.6 | 6 | Manual Activities Group 3 | 2026-05-28 | 2026-05-29 | 2026-05-25 | 2026-05-26 | 0 | 1 | As Soon As Possible | Future Task | -30.19d | 0d | Functional Leads |  | True | True |  | Release Transports to Client |  | Development | 130, 913, 111, 312 | 11.25 12.25 301.69 302.69 290.44  | 1307 | 1307 11.25 Import Group 3 - prior to transactions |  |
| 1309 | 1.1.1.6.2.7 | 1.1.1.6.2.7 | 6 | Import Group 4 - workbench / dev work | 2026-05-29 | 2026-05-29 | 2026-05-26 | 2026-05-26 | 0 | 0.25 | As Soon As Possible | Future Task | 36.5h | 0h | Dev Team |  |  | True |  | Release Transports to Client |  | Development | 1310 | 12.25 12.5 302.69 302.94 290.44  | 1308 | 1308 12.25 Manual Activities Group 3 |  |
| 1310 | 1.1.1.6.2.8 | 1.1.1.6.2.8 | 6 | Import Group 5 - Config to support dev workbench | 2026-05-29 | 2026-06-01 | 2026-05-27 | 2026-05-28 | 0 | 1.0625 | As Soon As Possible | Future Task | 36.5h | 36.5h | Dev Team |  |  | True |  | Release Transports to Client |  | Development |  | 12.5 13.56 302.94 304 290.44  | 1309 | 1309 12.5 Import Group 4 - workbench / dev work |  |
| 1311 | 1.1.1.6.3 | 1.1.1.6.3 | 5 | Data Project Create | 2026-05-29 | 2026-05-29 | 2026-05-27 | 2026-05-28 | 0 | 0.56 | As Soon As Possible | Future Task | -30.19d | 0d | Jyoti Nain; Manoj Patel; Michelle Connnors; Roy John; Shiva Janga; Vishal Pujari; (Curtis) Todd Breithaupt; Jerry Ramos | True | True | True | True | QS5 ITC-3 Refresh | Manoj Patel | Data |  |  | 1308 |  |  |
| 1312 | 1.1.1.6.3.1 | 1.1.1.6.3.1 | 6 | Open Client | 2026-05-29 | 2026-05-29 | 2026-05-27 | 2026-05-27 | 0 | 0.03125 | As Soon As Possible | Future Task | -14491m | 0m | Basis |  | True | True |  | Data Project Create |  | Basis | 1313 | 12.25 12.28 303.44 303.47 291.19  | 1308 | 1308 12.25 Manual Activities Group 3 |  |
| 1313 | 1.1.1.6.3.2 | 1.1.1.6.3.2 | 6 | Create Migration Data Project in DMC | 2026-05-29 | 2026-05-29 | 2026-05-27 | 2026-05-28 | 0 | 0.5 | As Soon As Possible | Future Task | -241.52h | 0h | Data Migration Team |  | True | True |  | Data Project Create | Manoj Patel | Data | 1314 | 12.28 12.78 303.47 303.97 291.19  | 1312 | 1312 12.28125 Open Client |  |
| 1314 | 1.1.1.6.3.3 | 1.1.1.6.3.3 | 6 | Close Client | 2026-05-29 | 2026-05-29 | 2026-05-28 | 2026-05-28 | 0 | 0.03125 | As Soon As Possible | Future Task | -14491m | 0m | Basis |  | True | True |  | Data Project Create |  | Basis | 1315 | 12.78 12.81 303.97 304 291.19  | 1313 | 1313 12.78125 Create Migration Data Project in DMC |  |
| 1315 | 1.1.1.6.4 | 1.1.1.6.4 | 5 | Environment Ready for Test | 2026-05-29 | 2026-05-29 | 2026-07-16 | 2026-07-16 | 0 | 0 | As Soon As Possible | Future Task | -14491m | 0m | PMO |  | True | True | True | QS5 ITC-3 Refresh | Kishore Kakarla | PMO | 3338 | 12.81 12.81 304 304 291.19  | 1314 | 1314 12.8125 Close Client | True |
| 884 | 1.1.1.7 | 1.1.1.7 | 4 | QS4 UAT Refresh | 2026-06-08 | 2026-06-26 | 2025-03-13 | 2026-07-16 | 0 | 14.06 | As Soon As Possible | Future Task | -35.25d | 0d | COULD NOT BE DETERMINED | True | True | True | True | Environment Schedule | Kishore Kakarla |  | 24, 222, 423 |  |  |  |  |
| 3338 | 1.1.1.7.1 | 1.1.1.7.1 | 5 | System Setup | 2026-06-08 | 2026-06-17 | 2026-06-08 | 2026-06-17 | 0 | 8 | As Soon As Possible | Future Task | -35.25d | 0d | COULD NOT BE DETERMINED | True | True | True | True | QS4 UAT Refresh |  |  | 902 |  | 1315 |  |  |
| 885 | 1.1.1.7.1.1 | 1.1.1.7.1.1 | 6 | System Refresh Basis(Workinig with NS2) | 2026-06-08 | 2026-06-09 | 2026-06-19 | 2026-06-19 | 0 | 2 | Must Start On | Future Task | 0d | 0d | Basis |  | True | True |  | System Setup | Lokchetan Meghavath | Basis | 888 | 0 2 288.69 290.69 288.69  |  |  |  |
| 896 | 1.1.1.7.1.10 | 1.1.1.7.1.10 | 6 | Validate Fiori | 2026-06-16 | 2026-06-16 | 2026-07-06 | 2026-07-07 | 0 | 1 | As Soon As Possible | Future Task | -36.38d | 0d | Basis |  | True | True |  | System Setup |  | Basis | 898, 899, 897, 900 | 7 8 295.69 296.69 288.69  | 895 | 895 7 Manual Technical Tasks |  |
| 897 | 1.1.1.7.1.11 | 1.1.1.7.1.11 | 6 | Fiori App Activation | 2026-06-16 | 2026-06-16 | 2026-07-07 | 2026-07-07 | 0 | 1 | As Soon As Possible | Future Task | -36.25d | 0d | Dev Team |  | True | True |  | System Setup | Brian Wagner | Development |  | 8 9 303 304 295  | 896 | 896 8 Validate Fiori |  |
| 898 | 1.1.1.7.1.12 | 1.1.1.7.1.12 | 6 | Download Transport List | 2026-06-17 | 2026-06-17 | 2026-07-07 | 2026-07-07 | 0 | 0.125 | As Soon As Possible | Future Task | -291.02h | 0h | Basis |  | True | True |  | System Setup |  | Basis |  | 8 8.13 303.88 304 295.88  | 896 | 896 8 Validate Fiori |  |
| 899 | 1.1.1.7.1.13 | 1.1.1.7.1.13 | 6 | Business Functions Validation | 2026-06-16 | 2026-06-16 | 2026-07-07 | 2026-07-08 | 0 | 1 | Start No Earlier Than | Future Task | -36.25d | 0d | Basis |  | True | True |  | System Setup |  | Basis |  | 8 9 303 304 295  | 896 | 896 8 Validate Fiori |  |
| 900 | 1.1.1.7.1.14 | 1.1.1.7.1.14 | 6 | Functional Leads Validation of Transport List | 2026-06-16 | 2026-06-16 | 2026-07-07 | 2026-07-07 | 0 | 1 | As Soon As Possible | Future Task | -36.38d | 0d | Functional Leads |  | True | True |  | System Setup |  | Development | 903, 901 | 8 9 296.69 297.69 288.69  | 896 | 896 8 Validate Fiori |  |
| 901 | 1.1.1.7.1.15 | 1.1.1.7.1.15 | 6 | Release Security roles to Functional Team | 2026-06-17 | 2026-06-17 | 2026-07-07 | 2026-07-07 | 0 | 0.125 | As Soon As Possible | Future Task | -291.02h | 0h | Security |  | True | True |  | System Setup | Manjunatha Umesha | Security |  | 9 9.13 298.88 299 289.88  | 900 | 900 9 Functional Leads Validation of Transport List |  |
| 888 | 1.1.1.7.1.2 | 1.1.1.7.1.2 | 6 | Client Config / Validation | 2026-06-10 | 2026-06-11 | 2026-06-26 | 2026-06-29 | 0 | 2 | As Soon As Possible | Future Task | -37.25d | 0d | Basis |  | True | True |  | System Setup |  | Basis | 889, 890 | 2 4 290.69 292.69 288.69  | 885 | 885 2 System Refresh Basis(Workinig with NS2) |  |
| 889 | 1.1.1.7.1.3 | 1.1.1.7.1.3 | 6 | Technical Transports / BP Setup | 2026-06-12 | 2026-06-12 | 2026-06-29 | 2026-06-30 | 0 | 1 | As Soon As Possible | Future Task | -36.38d | 0d | Basis |  | True | True |  | System Setup |  | Basis | 893 | 4 5 292.69 293.69 288.69  | 888 | 888 4 Client Config / Validation |  |
| 890 | 1.1.1.7.1.4 | 1.1.1.7.1.4 | 6 | Best Practice / Country Validation | 2026-06-12 | 2026-06-12 | 2026-06-30 | 2026-07-01 | 0 | 1 | As Soon As Possible | Future Task | -37.25d | 0d | Basis |  | True | True |  | System Setup |  | Basis | 891, 893 | 4 5 292.69 293.69 288.69  | 888 | 888 4 Client Config / Validation |  |
| 891 | 1.1.1.7.1.5 | 1.1.1.7.1.5 | 6 | Connect Systems and Validate | 2026-06-15 | 2026-06-16 | 2026-07-01 | 2026-07-02 | 0 | 2 | As Soon As Possible | Future Task | -37.25d | 0d | Basis |  | True | True |  | System Setup |  | Basis | 892 | 5 7 301 303 296  | 890 | 890 5 Best Practice / Country Validation |  |
| 892 | 1.1.1.7.1.6 | 1.1.1.7.1.6 | 6 | Validate Syniti Connections to QS5 | 2026-06-17 | 2026-06-17 | 2026-07-02 | 2026-07-03 | 0 | 1 | As Soon As Possible | Future Task | -37.25d | 0d | Data |  | True | True |  | System Setup |  | Data |  | 7 8 303 304 296  | 891 | 891 7 Connect Systems and Validate |  |
| 893 | 1.1.1.7.1.7 | 1.1.1.7.1.7 | 6 | Security Transports | 2026-06-15 | 2026-06-15 | 2026-07-03 | 2026-07-03 | 0 | 1 | As Soon As Possible | Future Task | -36.38d | 0d | Security |  | True | True |  | System Setup | Manjunatha Umesha | Security | 895, 894 | 5 6 293.69 294.69 288.69  | 890, 889 | 890 5 Best Practice / Country Validation, 889 5 Technical Transports / BP Setup |  |
| 894 | 1.1.1.7.1.8 | 1.1.1.7.1.8 | 6 | Security Manual Tasks | 2026-06-16 | 2026-06-16 | 2026-07-03 | 2026-07-06 | 0 | 1 | As Soon As Possible | Future Task | -36.25d | 0d | Security |  | True | True |  | System Setup | Manjunatha Umesha | Security |  | 6 7 303 304 297  | 893 | 893 6 Security Transports |  |
| 895 | 1.1.1.7.1.9 | 1.1.1.7.1.9 | 6 | Manual Technical Tasks | 2026-06-15 | 2026-06-15 | 2026-07-03 | 2026-07-06 | 0 | 1 | As Soon As Possible | Future Task | -36.38d | 0d | Basis |  | True | True |  | System Setup |  | Basis | 896 | 6 7 294.69 295.69 288.69  | 893 | 893 6 Security Transports |  |
| 902 | 1.1.1.7.2 | 1.1.1.7.2 | 5 | Release Transports to Client | 2026-06-18 | 2026-06-25 | 2026-07-07 | 2026-07-14 | 0 | 5.5 | As Soon As Possible | Future Task | -37.25d | 0d | COULD NOT BE DETERMINED | True | True | True | True | QS4 UAT Refresh |  |  | 3368 |  | 3338 |  |  |
| 903 | 1.1.1.7.2.1 | 1.1.1.7.2.1 | 6 | Import Group 1 - Ent Structure | 2026-06-18 | 2026-06-18 | 2026-07-07 | 2026-07-07 | 0 | 0.25 | As Soon As Possible | Future Task | -298.02h | 0h | Functional Leads |  | True | True |  | Release Transports to Client |  | Development | 904 | 9 9.25 297.69 297.94 288.69  | 900 | 900 9 Functional Leads Validation of Transport List |  |
| 904 | 1.1.1.7.2.2 | 1.1.1.7.2.2 | 6 | Manual activities group 1 | 2026-06-18 | 2026-06-22 | 2026-07-07 | 2026-07-10 | 0 | 2.5 | As Soon As Possible | Future Task | -298.02h | 0h | Functional Leads |  | True | True |  | Release Transports to Client |  | Development | 905 | 9.25 11.75 297.94 300.44 288.69  | 903 | 903 9.25 Import Group 1 - Ent Structure |  |
| 905 | 1.1.1.7.2.3 | 1.1.1.7.2.3 | 6 | Import Group 2 - Core Transports | 2026-06-22 | 2026-06-22 | 2026-07-10 | 2026-07-10 | 0 | 0.25 | As Soon As Possible | Future Task | -298.02h | 0h | Functional Leads |  | True | True |  | Release Transports to Client |  | Development | 906 | 11.75 12 300.44 300.69 288.69  | 904 | 904 11.75 Manual activities group 1 |  |
| 906 | 1.1.1.7.2.4 | 1.1.1.7.2.4 | 6 | Manual activities group 2 | 2026-06-23 | 2026-06-23 | 2026-07-10 | 2026-07-13 | 0 | 1 | As Soon As Possible | Future Task | -37.25d | 0d | Functional Leads |  | True | True |  | Release Transports to Client |  | Development | 907 | 12 13 300.69 301.69 288.69  | 905 | 905 12 Import Group 2 - Core Transports |  |
| 907 | 1.1.1.7.2.5 | 1.1.1.7.2.5 | 6 | Import Group 3 - prior to transactions | 2026-06-24 | 2026-06-24 | 2026-07-13 | 2026-07-13 | 0 | 0.25 | As Soon As Possible | Future Task | -298.02h | 0h | Functional Leads |  | True | True |  | Release Transports to Client |  | Development | 908 | 13 13.25 301.69 301.94 288.69  | 906 | 906 13 Manual activities group 2 |  |
| 908 | 1.1.1.7.2.6 | 1.1.1.7.2.6 | 6 | Manual Activities Group 3 | 2026-06-24 | 2026-06-25 | 2026-07-13 | 2026-07-14 | 0 | 1 | As Soon As Possible | Future Task | -37.25d | 0d | Functional Leads |  | True | True |  | Release Transports to Client |  | Development | 909 | 13.25 14.25 301.94 302.94 288.69  | 907 | 907 13.25 Import Group 3 - prior to transactions |  |
| 909 | 1.1.1.7.2.7 | 1.1.1.7.2.7 | 6 | Import Group 4 - workbench / dev work | 2026-06-25 | 2026-06-25 | 2026-07-14 | 2026-07-14 | 0 | 0.25 | As Soon As Possible | Future Task | -298.02h | 0h | Dev Team |  | True | True |  | Release Transports to Client |  | Development | 910 | 14.25 14.5 302.94 303.19 288.69  | 908 | 908 14.25 Manual Activities Group 3 |  |
| 910 | 1.1.1.7.2.8 | 1.1.1.7.2.8 | 6 | Import Group 5 - Config to support dev workbench | 2026-06-25 | 2026-06-25 | 2026-07-15 | 2026-07-15 | 0 | 0.25 | As Soon As Possible | Future Task | -298.02h | 0h | Dev Team |  | True | True |  | Release Transports to Client |  | Development | 1228 | 14.5 14.75 303.19 303.44 288.69  | 909 | 909 14.5 Import Group 4 - workbench / dev work |  |
| 1227 | 1.1.1.7.3 | 1.1.1.7.3 | 5 | Data Project Create | 2026-06-25 | 2026-06-26 | 2026-07-15 | 2026-07-16 | 0 | 0.56 | As Soon As Possible | Future Task | -26.75d | 0d | Jyoti Nain; Manoj Patel; Michelle Connnors; Roy John; Shiva Janga; Vishal Pujari; (Curtis) Todd Breithaupt; Jerry Ramos | True | True | True | True | QS4 UAT Refresh | Manoj Patel | Data |  |  |  |  |  |
| 1228 | 1.1.1.7.3.1 | 1.1.1.7.3.1 | 6 | Open Client | 2026-06-25 | 2026-06-25 | 2026-07-15 | 2026-07-15 | 0 | 0.03125 | As Soon As Possible | Future Task | -12841m | 0m | Basis |  | True | True |  | Data Project Create |  | Basis | 1229 | 14.75 14.78 303.44 303.47 288.69  | 910 | 910 14.75 Import Group 5 - Config to support dev workbench |  |
| 1229 | 1.1.1.7.3.2 | 1.1.1.7.3.2 | 6 | Create Migration Data Project in DMC | 2026-06-25 | 2026-06-26 | 2026-07-15 | 2026-07-16 | 0 | 0.5 | As Soon As Possible | Future Task | -214.02h | 0h | Data Migration Team |  | True | True |  | Data Project Create | Manoj Patel | Data | 1230 | 14.78 15.28 303.47 303.97 288.69  | 1228 | 1228 14.78125 Open Client |  |
| 1230 | 1.1.1.7.3.3 | 1.1.1.7.3.3 | 6 | Close Client | 2026-06-26 | 2026-06-26 | 2026-07-16 | 2026-07-16 | 0 | 0.03125 | As Soon As Possible | Future Task | -12841m | 0m | Basis |  | True | True |  | Data Project Create |  | Basis | 912 | 15.28 15.31 303.97 304 288.69  | 1229 | 1229 15.28125 Create Migration Data Project in DMC |  |
| 912 | 1.1.1.7.4 | 1.1.1.7.4 | 5 | Environment Ready for Build | 2026-06-26 | 2026-06-26 | 2025-03-13 | 2025-03-13 | 0 | 0 | As Soon As Possible | Future Task | -12841m | 0m | PMO |  | True | True | True | QS4 UAT Refresh |  | PMO |  | 15.31 15.31 304 304 288.69  | 1230 | 1230 15.3125 Close Client | True |
| 3367 | 1.1.1.8 | 1.1.1.8 | 4 | P? Production System | 2026-09-07 | 2026-09-24 | 2025-03-13 | 2026-07-16 | 0 | 13.06 | As Soon As Possible | Future Task | -88.75d | 0d | COULD NOT BE DETERMINED | True | True | True | True | Environment Schedule | Brad Meseck |  | 2, 422, 242, 329, 741, 600, 0 |  |  |  |  |
| 3368 | 1.1.1.8.1 | 1.1.1.8.1 | 5 | System Setup | 2026-09-07 | 2026-09-16 | 2026-09-07 | 2026-09-16 | 0 | 8 | As Soon As Possible | Future Task | -88.75d | 0d | COULD NOT BE DETERMINED | True | True | True |  | P? Production System |  |  |  |  | 902 |  |  |
| 3369 | 1.1.1.8.1.1 | 1.1.1.8.1.1 | 6 | System Refresh Basis(Workinig with NS2) | 2026-09-07 | 2026-09-08 | 2026-06-19 | 2026-06-19 | 0 | 2 | Must Start On | Future Task | 0d | 0d | Basis |  | True | True |  | System Setup | Lokchetan Meghavath | Basis | 3370 | 0 2 296 298 296  |  |  |  |
| 3378 | 1.1.1.8.1.10 | 1.1.1.8.1.10 | 6 | Validate Fiori | 2026-09-15 | 2026-09-15 | 2026-07-06 | 2026-07-07 | 0 | 1 | As Soon As Possible | Future Task | -90.75d | 0d | Basis |  | True | True |  | System Setup |  | Basis | 3380, 3381, 3379, 3382 | 77 78 295.69 296.69 218.69  | 3377 | 3377 77 Manual Technical Tasks |  |
| 3379 | 1.1.1.8.1.11 | 1.1.1.8.1.11 | 6 | Fiori App Activation | 2026-09-15 | 2026-09-15 | 2026-07-07 | 2026-07-07 | 0 | 1 | As Soon As Possible | Future Task | -84.69d | 0d | Dev Team |  | True | True |  | System Setup | Brian Wagner | Development |  | 78 79 303 304 225  | 3378 | 3378 78 Validate Fiori |  |
| 3380 | 1.1.1.8.1.12 | 1.1.1.8.1.12 | 6 | Download Transport List | 2026-09-16 | 2026-09-16 | 2026-07-07 | 2026-07-07 | 0 | 0.125 | As Soon As Possible | Future Task | -678.52h | 0h | Basis |  | True | True |  | System Setup |  | Basis |  | 78 78.13 303.88 304 225.88  | 3378 | 3378 78 Validate Fiori |  |
| 3381 | 1.1.1.8.1.13 | 1.1.1.8.1.13 | 6 | Business Functions Validation | 2026-09-15 | 2026-09-15 | 2026-07-07 | 2026-07-08 | 0 | 1 | Start No Earlier Than | Future Task | -84.69d | 0d | Basis |  | True | True |  | System Setup |  | Basis |  | 78 79 303 304 225  | 3378 | 3378 78 Validate Fiori |  |

| uid | wbs | outlineNumber | outlineLevel | name | start | finish | baselineStart | baselineFinish | percentComplete | durationDays | constraintType | status | totalSlackRaw | freeSlackRaw | resourceNames | summary | criticalFlag | active | flag20 | summaryName | businessValidationOwner | workstream | successors | cpm | predecessors | drivers | milestone |
| --- | --- | --- | --- | --- | --- | --- | --- | --- | --- | --- | --- | --- | --- | --- | --- | --- | --- | --- | --- | --- | --- | --- | --- | --- | --- | --- | --- |
| 3382 | 1.1.1.8.1.14 | 1.1.1.8.1.14 | 6 | Functional Leads Validation of Transport List | 2026-09-15 | 2026-09-15 | 2026-07-07 | 2026-07-07 | 0 | 1 | As Soon As Possible | Future Task | -90.75d | 0d | Functional Leads |  | True | True |  | System Setup |  | Development | 338, 433, 853, 383 | 78 79 296.69 297.69 218.69  | 3378 | 3378 78 Validate Fiori |  |
| 3383 | 1.1.1.8.1.15 | 1.1.1.8.1.15 | 6 | Release Security roles to Functional Team | 2026-09-16 | 2026-09-16 | 2026-07-07 | 2026-07-07 | 0 | 0.125 | As Soon As Possible | Future Task | -678.52h | 0h | Security |  | True | True |  | System Setup | Manjunatha Umesha | Security |  | 79 79.13 303.88 304 224.88  | 3382 | 3382 79 Functional Leads Validation of Transport List |  |
| 3370 | 1.1.1.8.1.2 | 1.1.1.8.1.2 | 6 | Client Config / Validation | 2026-09-09 | 2026-09-10 | 2026-06-26 | 2026-06-29 | 0 | 2 | As Soon As Possible | Future Task | -90.75d | 0d | Basis |  | True | True |  | System Setup |  | Basis | 33, 713, 372 | 2 4 298 300 296  | 3369 | 3369 2 System Refresh Basis(Workinig with NS2) |  |
| 3371 | 1.1.1.8.1.3 | 1.1.1.8.1.3 | 6 | Technical Transports / BP Setup | 2026-09-11 | 2026-09-11 | 2026-06-29 | 2026-06-30 | 0 | 1 | As Soon As Possible | Future Task | -90.75d | 0d | Basis |  | True | True |  | System Setup |  | Basis | 3375 | 4 5 303 304 299  | 3370 | 3370 4 Client Config / Validation |  |
| 3372 | 1.1.1.8.1.4 | 1.1.1.8.1.4 | 6 | Best Practice / Country Validation | 2026-09-11 | 2026-09-11 | 2026-06-30 | 2026-07-01 | 0 | 1 | As Soon As Possible | Future Task | -90.75d | 0d | Basis |  | True | True |  | System Setup |  | Basis | 33, 733, 375 | 4 5 300 301 296  | 3370 | 3370 4 Client Config / Validation |  |
| 3373 | 1.1.1.8.1.5 | 1.1.1.8.1.5 | 6 | Connect Systems and Validate | 2026-09-14 | 2026-09-15 | 2026-07-01 | 2026-07-02 | 0 | 2 | As Soon As Possible | Future Task | -85.69d | 0d | Basis |  | True | True |  | System Setup |  | Basis | 3374 | 5 7 301 303 296  | 3372 | 3372 5 Best Practice / Country Validation |  |
| 3374 | 1.1.1.8.1.6 | 1.1.1.8.1.6 | 6 | Validate Syniti Connections to QS5 | 2026-09-16 | 2026-09-16 | 2026-07-02 | 2026-07-03 | 0 | 1 | As Soon As Possible | Future Task | -85.69d | 0d | Data |  | True | True |  | System Setup |  | Data |  | 7 8 303 304 296  | 3373 | 3373 7 Connect Systems and Validate |  |
| 3375 | 1.1.1.8.1.7 | 1.1.1.8.1.7 | 6 | Security Transports | 2026-09-14 | 2026-09-14 | 2026-07-03 | 2026-07-03 | 0 | 1 | As Soon As Possible | Future Task | -90.75d | 0d | Security |  | True | True |  | System Setup | Manjunatha Umesha | Security | 3377, 3376 | 75 76 293.69 294.69 218.69  | 33, 713, 372 | 33 75 In Draft |  |
| 3376 | 1.1.1.8.1.8 | 1.1.1.8.1.8 | 6 | Security Manual Tasks | 2026-09-15 | 2026-09-15 | 2026-07-03 | 2026-07-06 | 0 | 1 | As Soon As Possible | Future Task | -84.69d | 0d | Security |  | True | True |  | System Setup | Manjunatha Umesha | Security |  | 76 77 303 304 227  | 3375 | 3375 76 Security Transports |  |
| 3377 | 1.1.1.8.1.9 | 1.1.1.8.1.9 | 6 | Manual Technical Tasks | 2026-09-14 | 2026-09-14 | 2026-07-03 | 2026-07-06 | 0 | 1 | As Soon As Possible | Future Task | -90.75d | 0d | Basis |  | True | True |  | System Setup |  | Basis | 3378 | 76 77 294.69 295.69 218.69  | 3375 | 3375 76 Security Transports |  |
| 3384 | 1.1.1.8.2 | 1.1.1.8.2 | 5 | Release Transports to Client | 2026-09-16 | 2026-09-23 | 2026-07-07 | 2026-07-14 | 0 | 5.5 | As Soon As Possible | Future Task | -90.75d | 0d | COULD NOT BE DETERMINED | True | True | True |  | P? Production System |  |  |  |  | 3382 |  |  |
| 3385 | 1.1.1.8.2.1 | 1.1.1.8.2.1 | 6 | Import Group 1 - Ent Structure | 2026-09-16 | 2026-09-16 | 2026-07-07 | 2026-07-07 | 0 | 0.25 | As Soon As Possible | Future Task | -726.02h | 0h | Functional Leads |  | True | True |  | Release Transports to Client |  | Development | 3386 | 79 79.25 297.69 297.94 218.69  | 3382 | 3382 79 Functional Leads Validation of Transport List |  |
| 3386 | 1.1.1.8.2.2 | 1.1.1.8.2.2 | 6 | Manual activities group 1 | 2026-09-16 | 2026-09-18 | 2026-07-07 | 2026-07-10 | 0 | 2.5 | Finish No Earlier Than | Future Task | -726.02h | 0h | Functional Leads |  | True | True |  | Release Transports to Client |  | Development | 3387 | 79.25 81.75 297.94 300.44 218.69  | 3385 | 3385 79.25 Import Group 1 - Ent Structure |  |
| 3387 | 1.1.1.8.2.3 | 1.1.1.8.2.3 | 6 | Import Group 2 - Core Transports | 2026-09-18 | 2026-09-18 | 2026-07-10 | 2026-07-10 | 0 | 0.25 | As Soon As Possible | Future Task | -726.02h | 0h | Functional Leads |  | True | True |  | Release Transports to Client |  | Development | 3388 | 81.75 82 300.44 300.69 218.69  | 3386 | 3386 81.75 Manual activities group 1 |  |
| 3388 | 1.1.1.8.2.4 | 1.1.1.8.2.4 | 6 | Manual activities group 2 | 2026-09-21 | 2026-09-21 | 2026-07-10 | 2026-07-13 | 0 | 1 | As Soon As Possible | Future Task | -90.75d | 0d | Functional Leads |  | True | True |  | Release Transports to Client |  | Development | 3389 | 82 83 300.69 301.69 218.69  | 3387 | 3387 82 Import Group 2 - Core Transports |  |
| 3389 | 1.1.1.8.2.5 | 1.1.1.8.2.5 | 6 | Import Group 3 - prior to transactions | 2026-09-22 | 2026-09-22 | 2026-07-13 | 2026-07-13 | 0 | 0.25 | As Soon As Possible | Future Task | -726.02h | 0h | Functional Leads |  | True | True |  | Release Transports to Client |  | Development | 3390 | 83 83.25 301.69 301.94 218.69  | 3388 | 3388 83 Manual activities group 2 |  |
| 3390 | 1.1.1.8.2.6 | 1.1.1.8.2.6 | 6 | Manual Activities Group 3 | 2026-09-22 | 2026-09-23 | 2026-07-13 | 2026-07-14 | 0 | 1 | As Soon As Possible | Future Task | -90.75d | 0d | Functional Leads |  | True | True |  | Release Transports to Client |  | Development | 3391 | 83.25 84.25 301.94 302.94 218.69  | 3389 | 3389 83.25 Import Group 3 - prior to transactions |  |
| 3391 | 1.1.1.8.2.7 | 1.1.1.8.2.7 | 6 | Import Group 4 - workbench / dev work | 2026-09-23 | 2026-09-23 | 2026-07-14 | 2026-07-14 | 0 | 0.25 | Start No Earlier Than | Future Task | -726.02h | 0h | Dev Team |  | True | True |  | Release Transports to Client |  | Development | 3392 | 84.25 84.5 302.94 303.19 218.69  | 3390 | 3390 84.25 Manual Activities Group 3 |  |
| 3392 | 1.1.1.8.2.8 | 1.1.1.8.2.8 | 6 | Import Group 5 - Config to support dev workbench | 2026-09-23 | 2026-09-23 | 2026-07-15 | 2026-07-15 | 0 | 0.25 | As Soon As Possible | Future Task | -726.02h | 0h | Dev Team |  | True | True |  | Release Transports to Client |  | Development | 3394 | 84.5 84.75 303.19 303.44 218.69  | 3391 | 3391 84.5 Import Group 4 - workbench / dev work |  |
| 3393 | 1.1.1.8.3 | 1.1.1.8.3 | 5 | Data Project Create | 2026-09-23 | 2026-09-24 | 2026-07-15 | 2026-07-16 | 0 | 0.56 | As Soon As Possible | Future Task | -90.75d | 0d | Jyoti Nain; Manoj Patel; Michelle Connnors; Roy John; Shiva Janga; Vishal Pujari; (Curtis) Todd Breithaupt; Jerry Ramos | True | True | True |  | P? Production System | Manoj Patel | Data | 3397 |  |  |  |  |
| 3394 | 1.1.1.8.3.1 | 1.1.1.8.3.1 | 6 | Open Client | 2026-09-23 | 2026-09-23 | 2026-07-15 | 2026-07-15 | 0 | 0.03125 | As Soon As Possible | Future Task | -43561m | 0m | Basis |  | True | True |  | Data Project Create |  | Basis | 3395 | 84.75 84.78 303.44 303.47 218.69  | 3392 | 3392 84.75 Import Group 5 - Config to support dev workbench |  |
| 3395 | 1.1.1.8.3.2 | 1.1.1.8.3.2 | 6 | Create Migration Data Project in DMC | 2026-09-23 | 2026-09-24 | 2026-07-15 | 2026-07-16 | 0 | 0.5 | As Soon As Possible | Future Task | -726.02h | 0h | Data Migration Team |  | True | True |  | Data Project Create | Manoj Patel | Data | 3396 | 84.78 85.28 303.47 303.97 218.69  | 3394 | 3394 84.78125 Open Client |  |
| 3396 | 1.1.1.8.3.3 | 1.1.1.8.3.3 | 6 | Close Client | 2026-09-24 | 2026-09-24 | 2026-07-16 | 2026-07-16 | 0 | 0.03125 | As Soon As Possible | Future Task | -43561m | 0m | Basis |  | True | True |  | Data Project Create |  | Basis |  | 85.28 85.31 303.97 304 218.69  | 3395 | 3395 85.28125 Create Migration Data Project in DMC |  |
| 3397 | 1.1.1.8.4 | 1.1.1.8.4 | 5 | Environment Ready for Build | 2026-09-24 | 2026-09-24 | 2025-03-13 | 2025-03-13 | 0 | 0 | As Soon As Possible | Future Task | -43561m | 0m | PMO |  | True | True |  | P? Production System |  | PMO |  | 0 0 304 304 304  | 3393 |  | True |
| 201 | 1.1.1.9 | 1.1.1.9 | 4 | Prod (PS4) Setup | 2026-09-07 | 2026-09-29 | 2025-03-13 | 2025-04-07 | 0 | 17 | Start No Earlier Than | Future Task | 29d | 29d | COULD NOT BE DETERMINED |  |  | True | True | Environment Schedule |  |  |  | 0 17 287 304 287  |  |  |  |
| 248 | 1.1.2 | 1.1.2 | 3 | GRC Security Utility | 2025-02-17 | 2026-10-22 | 2025-02-17 | 2026-04-06 | 88 | 439 | As Soon As Possible | Complete | 12d? | 12d? | Manjunatha Umesha; Sajith Ravindran; Salam Omer; Sandeep Katika | True |  | True | True | System Readiness | Manjunatha Umesha | Security |  |  |  |  |  |
| 299 | 1.1.2.1 | 1.1.2.1 | 4 | Initiation & Planning | 2025-02-17 | 2026-02-17 | 2025-02-17 | 2026-02-17 | 100 | 262 | As Soon As Possible | Complete | 0d | 0d | COULD NOT BE DETERMINED | True |  | True |  | GRC Security Utility |  |  |  |  |  |  |  |
| 249 | 1.1.2.1.1 | 1.1.2.1.1 | 5 | Project kickoff | 2025-07-16 | 2025-07-16 | 2025-07-16 | 2025-07-16 | 100 | 1 | Start No Earlier Than | Complete | 0d | 0d | COULD NOT BE DETERMINED |  |  | True |  | Initiation & Planning |  |  |  | 0 1 303 304 303  |  |  |  |
| 250 | 1.1.2.1.2 | 1.1.2.1.2 | 5 | Requirement gathering | 2025-02-17 | 2025-08-15 | 2025-02-17 | 2025-08-15 | 100 | 130 | Start No Earlier Than | Complete | 0d | 0d | COULD NOT BE DETERMINED |  |  | True |  | Initiation & Planning |  |  | 251 | 0 130 166.38 296.38 166.38  |  |  |  |
| 251 | 1.1.2.1.3 | 1.1.2.1.3 | 5 | Landscape design | 2025-08-18 | 2025-08-19 | 2025-08-18 | 2025-08-19 | 100 | 2 | Finish No Earlier Than | Complete | 0d | 0d | COULD NOT BE DETERMINED |  |  | True |  | Initiation & Planning | Brian Wagner |  |  | 130 132 296.38 298.38 166.38  | 250 | 250 130 Requirement gathering |  |
| 252 | 1.1.2.1.4 | 1.1.2.1.4 | 5 | Project plan finalization | 2026-02-16 | 2026-02-17 | 2026-02-16 | 2026-02-17 | 100 | 2 | Start No Earlier Than | Complete | 0d | 0d | COULD NOT BE DETERMINED |  |  | True |  | Initiation & Planning |  |  | 258 | 0 2 268 270 268  |  |  |  |
| 55 | 1.1.2.10 | 1.1.2.10 | 4 | RICEFW Development Tasks (RICEFW Tracker) | 2025-03-13 | 2025-03-13 | 2025-03-13 | 2025-03-13 | 100 | 1 | As Soon As Possible | Complete | 0d | 0d | Bijoykrishna Das; Manas Prasanna Das; Punith Ravi; Purnachandrarao.V; Sreevalli Vasireddy; Siddharth Singh; Naveen Kanaparthi; Venkateshsai CH; Kumar Gaurav; Praveenkumar K | True |  | True | True | GRC Security Utility | Bijoykrishna Das | Development |  |  |  |  |  |
| 59 | 1.1.2.10.1 | 1.1.2.10.1 | 5 | Finance and Controlling | 2025-03-13 | 2025-03-13 | 2025-03-13 | 2025-03-13 | 100 | 1 | As Soon As Possible | Complete | 0d | 0d | Brian Wagner; Chandrababu Boyapati; Femi Oguntala; Jon Marsh; Kasey Hughes; Roy Woo; Steve Trust; Tom Montgomery; Tony Jose; Wolfgang Beul | True |  | True |  | RICEFW Development Tasks (RICEFW Tracker) | Brian Wagner | Finance |  |  |  |  |  |
| 60 | 1.1.2.10.1.1 | 1.1.2.10.1.1 | 6 | Specs Completed | 2025-03-13 | 2025-03-13 | 2025-03-13 | 2025-03-13 | 100 | 1 | As Soon As Possible | Complete | 0d | 0d | COULD NOT BE DETERMINED |  |  | True |  | Finance and Controlling |  |  |  | 0 1 303 304 303  |  |  |  |
| 61 | 1.1.2.10.1.2 | 1.1.2.10.1.2 | 6 | Specs Assigned to Developer | 2025-03-13 | 2025-03-13 | 2025-03-13 | 2025-03-13 | 100 | 1 | As Soon As Possible | Complete | 0d | 0d | COULD NOT BE DETERMINED |  |  | True |  | Finance and Controlling |  |  |  | 0 1 303 304 303  |  |  |  |
| 71 | 1.1.2.10.1.3 | 1.1.2.10.1.3 | 6 | Testing Complete | 2025-03-13 | 2025-03-13 | 2025-03-13 | 2025-03-13 | 100 | 1 | As Soon As Possible | Complete | 0d | 0d | Kishore Kakarla |  |  | True |  | Finance and Controlling | Kishore Kakarla | Testing |  | 0 1 303 304 303  |  |  |  |
| 72 | 1.1.2.10.1.4 | 1.1.2.10.1.4 | 6 | Assigned to Testing Cycle | 2025-03-13 | 2025-03-13 | 2025-03-13 | 2025-03-13 | 100 | 1 | As Soon As Possible | Complete | 0d | 0d | Kishore Kakarla |  |  | True |  | Finance and Controlling | Kishore Kakarla | Testing |  | 0 1 303 304 303  |  |  |  |
| 62 | 1.1.2.10.2 | 1.1.2.10.2 | 5 | Plan to Make | 2025-03-13 | 2025-03-13 | 2025-03-13 | 2025-03-13 | 100 | 1 | As Soon As Possible | Complete | 0d | 0d | COULD NOT BE DETERMINED | True |  | True |  | RICEFW Development Tasks (RICEFW Tracker) |  |  |  |  |  |  |  |
| 73 | 1.1.2.10.2.1 | 1.1.2.10.2.1 | 6 | Specs Completed | 2025-03-13 | 2025-03-13 | 2025-03-13 | 2025-03-13 | 100 | 1 | As Soon As Possible | Complete | 0d | 0d | COULD NOT BE DETERMINED |  |  | True |  | Plan to Make |  |  |  | 0 1 303 304 303  |  |  |  |
| 74 | 1.1.2.10.2.2 | 1.1.2.10.2.2 | 6 | Specs Assigned to Developer | 2025-03-13 | 2025-03-13 | 2025-03-13 | 2025-03-13 | 100 | 1 | As Soon As Possible | Complete | 0d | 0d | COULD NOT BE DETERMINED |  |  | True |  | Plan to Make |  |  |  | 0 1 303 304 303  |  |  |  |
| 75 | 1.1.2.10.2.3 | 1.1.2.10.2.3 | 6 | Testing Complete | 2025-03-13 | 2025-03-13 | 2025-03-13 | 2025-03-13 | 100 | 1 | As Soon As Possible | Complete | 0d | 0d | Kishore Kakarla |  |  | True |  | Plan to Make | Kishore Kakarla | Testing |  | 0 1 303 304 303  |  |  |  |
| 76 | 1.1.2.10.2.4 | 1.1.2.10.2.4 | 6 | Assigned to Testing Cycle | 2025-03-13 | 2025-03-13 | 2025-03-13 | 2025-03-13 | 100 | 1 | As Soon As Possible | Complete | 0d | 0d | Kishore Kakarla |  |  | True |  | Plan to Make | Kishore Kakarla | Testing |  | 0 1 303 304 303  |  |  |  |
| 65 | 1.1.2.10.3 | 1.1.2.10.3 | 5 | Procure to Pay | 2025-03-13 | 2025-03-13 | 2025-03-13 | 2025-03-13 | 100 | 1 | As Soon As Possible | Complete | 0d | 0d | COULD NOT BE DETERMINED | True |  | True |  | RICEFW Development Tasks (RICEFW Tracker) | Muniraju Surappachari |  |  |  |  |  |  |
| 77 | 1.1.2.10.3.1 | 1.1.2.10.3.1 | 6 | Specs Completed | 2025-03-13 | 2025-03-13 | 2025-03-13 | 2025-03-13 | 100 | 1 | As Soon As Possible | Complete | 0d | 0d | COULD NOT BE DETERMINED |  |  | True |  | Procure to Pay |  |  |  | 0 1 303 304 303  |  |  |  |
| 78 | 1.1.2.10.3.2 | 1.1.2.10.3.2 | 6 | Specs Assigned to Developer | 2025-03-13 | 2025-03-13 | 2025-03-13 | 2025-03-13 | 100 | 1 | As Soon As Possible | Complete | 0d | 0d | COULD NOT BE DETERMINED |  |  | True |  | Procure to Pay |  |  |  | 0 1 303 304 303  |  |  |  |
| 79 | 1.1.2.10.3.3 | 1.1.2.10.3.3 | 6 | Testing Complete | 2025-03-13 | 2025-03-13 | 2025-03-13 | 2025-03-13 | 100 | 1 | As Soon As Possible | Complete | 0d | 0d | Kishore Kakarla |  |  | True |  | Procure to Pay | Kishore Kakarla | Testing |  | 0 1 303 304 303  |  |  |  |
| 80 | 1.1.2.10.3.4 | 1.1.2.10.3.4 | 6 | Assigned to Testing Cycle | 2025-03-13 | 2025-03-13 | 2025-03-13 | 2025-03-13 | 100 | 1 | As Soon As Possible | Complete | 0d | 0d | Kishore Kakarla |  |  | True |  | Procure to Pay | Kishore Kakarla | Testing |  | 0 1 303 304 303  |  |  |  |
| 68 | 1.1.2.10.4 | 1.1.2.10.4 | 5 | Order to Cash | 2025-03-13 | 2025-03-13 | 2025-03-13 | 2025-03-13 | 100 | 1 | As Soon As Possible | Complete | 0d | 0d | COULD NOT BE DETERMINED | True |  | True |  | RICEFW Development Tasks (RICEFW Tracker) | Kim Kolesar |  |  |  |  |  |  |
| 81 | 1.1.2.10.4.1 | 1.1.2.10.4.1 | 6 | Specs Completed | 2025-03-13 | 2025-03-13 | 2025-03-13 | 2025-03-13 | 100 | 1 | As Soon As Possible | Complete | 0d | 0d | COULD NOT BE DETERMINED |  |  | True |  | Order to Cash |  |  |  | 0 1 303 304 303  |  |  |  |
| 82 | 1.1.2.10.4.2 | 1.1.2.10.4.2 | 6 | Specs Assigned to Developer | 2025-03-13 | 2025-03-13 | 2025-03-13 | 2025-03-13 | 100 | 1 | As Soon As Possible | Complete | 0d | 0d | COULD NOT BE DETERMINED |  |  | True |  | Order to Cash |  |  |  | 0 1 302.5 303.5 302.5  |  |  |  |
| 83 | 1.1.2.10.4.3 | 1.1.2.10.4.3 | 6 | Testing Complete | 2025-03-13 | 2025-03-13 | 2025-03-13 | 2025-03-13 | 100 | 1 | As Soon As Possible | Complete | 0d | 0d | Kishore Kakarla |  |  | True |  | Order to Cash | Kishore Kakarla | Testing |  | 0 1 303 304 303  |  |  |  |
| 84 | 1.1.2.10.4.4 | 1.1.2.10.4.4 | 6 | Assigned to Testing Cycle | 2025-03-13 | 2025-03-13 | 2025-03-13 | 2025-03-13 | 100 | 1 | As Soon As Possible | Complete | 0d | 0d | Kishore Kakarla |  |  | True |  | Order to Cash | Kishore Kakarla | Testing |  | 0 1 303 304 303  |  |  |  |
| 253 | 1.1.2.2 | 1.1.2.2 | 4 | System Setup & Connectivity | 2025-07-28 | 2026-03-23 | 2025-07-28 | 2026-03-23 | 100 | 171 | As Soon As Possible | Complete | 0d | 0d | COULD NOT BE DETERMINED | True |  | True |  | GRC Security Utility |  |  |  |  |  |  |  |
| 254 | 1.1.2.2.1 | 1.1.2.2.1 | 5 | Install GRC AC components | 2025-07-28 | 2025-08-01 | 2025-07-28 | 2025-08-01 | 100 | 5 | Start No Earlier Than | Complete | 0d | 0d | COULD NOT BE DETERMINED |  |  | True |  | System Setup & Connectivity |  |  |  | 0 5 296.97 301.97 296.97  |  |  |  |
| 258 | 1.1.2.2.2 | 1.1.2.2.2 | 5 | Install plug-ins on target systems | 2026-02-18 | 2026-02-24 | 2026-02-18 | 2026-02-24 | 100 | 5 | As Soon As Possible | Complete | 0d | 0d | COULD NOT BE DETERMINED |  |  | True |  | System Setup & Connectivity | Brian Wagner |  | 259 | 2 7 270 275 268  | 252 | 252 2 Project plan finalization |  |
| 259 | 1.1.2.2.3 | 1.1.2.2.3 | 5 | Post installation Steps | 2026-02-25 | 2026-03-03 | 2026-02-25 | 2026-03-03 | 100 | 5 | As Soon As Possible | Complete | 0d | 0d | COULD NOT BE DETERMINED |  |  | True |  | System Setup & Connectivity |  |  | 260 | 7 12 275 280 268  | 258 | 258 7 Install plug-ins on target systems |  |
| 260 | 1.1.2.2.4 | 1.1.2.2.4 | 5 | Activate BC Sets | 2026-03-04 | 2026-03-05 | 2026-03-04 | 2026-03-05 | 100 | 2 | As Soon As Possible | Complete | 0d | 0d | COULD NOT BE DETERMINED |  |  | True |  | System Setup & Connectivity |  |  | 261 | 12 14 280 282 268  | 259 | 259 12 Post installation Steps |  |
| 261 | 1.1.2.2.5 | 1.1.2.2.5 | 5 | Connector configuration (S4 / LDAP Connector) | 2026-03-06 | 2026-03-12 | 2026-03-06 | 2026-03-12 | 100 | 5 | As Soon As Possible | Complete | 0d | 0d | COULD NOT BE DETERMINED |  |  | True |  | System Setup & Connectivity | Brian Wagner |  | 262 | 14 19 282 287 268  | 260 | 260 14 Activate BC Sets |  |
| 262 | 1.1.2.2.6 | 1.1.2.2.6 | 5 | Initial configuration [GRC Parameter/Business Process/Sub Process and system Configuration] | 2026-03-13 | 2026-03-20 | 2026-03-13 | 2026-03-20 | 100 | 6 | As Soon As Possible | Complete | 0d | 0d | COULD NOT BE DETERMINED |  |  | True |  | System Setup & Connectivity | Brian Wagner |  | 263 | 19 25 287 293 268  | 261 | 261 19 Connector configuration (S4 / LDAP Connector) |  |
| 263 | 1.1.2.2.7 | 1.1.2.2.7 | 5 | Transport setup | 2026-03-23 | 2026-03-23 | 2026-03-23 | 2026-03-23 | 100 | 1 | As Soon As Possible | Complete | 0d | 0d | COULD NOT BE DETERMINED |  |  | True |  | System Setup & Connectivity |  |  | 265 | 25 26 293 294 268  | 262 | 262 25 Initial configuration [GRC Parameter/Business Process/Sub Process and system Configuration] |  |
| 264 | 1.1.2.3 | 1.1.2.3 | 4 | Workflow setup | 2026-03-24 | 2026-04-06 | 2026-03-24 | 2026-04-06 | 100 | 10 | As Soon As Possible | Complete | 0d | 0d | COULD NOT BE DETERMINED | True |  | True |  | GRC Security Utility |  |  |  |  |  |  |  |
| 265 | 1.1.2.3.1 | 1.1.2.3.1 | 5 | MSMP workflow configuration | 2026-03-24 | 2026-03-30 | 2026-03-24 | 2026-03-30 | 100 | 5 | As Soon As Possible | Complete | 0d | 0d | COULD NOT BE DETERMINED |  |  | True |  | Workflow setup |  |  | 266 | 26 31 294 299 268  | 263 | 263 26 Transport setup |  |
| 266 | 1.1.2.3.2 | 1.1.2.3.2 | 5 | BRF+ decision tables | 2026-03-31 | 2026-04-06 | 2026-03-31 | 2026-04-06 | 100 | 5 | As Soon As Possible | Complete | 0d | 0d | COULD NOT BE DETERMINED |  |  | True |  | Workflow setup |  |  |  | 31 36 299 304 268  | 265 | 265 31 MSMP workflow configuration |  |
| 267 | 1.1.2.4 | 1.1.2.4 | 4 | Rule Set & Role Design | 2025-03-13 | 2026-05-21 | 2025-03-13 | 2025-12-10 | 77 | 311 | As Soon As Possible | Complete | 122d? | 122d? | COULD NOT BE DETERMINED | True |  | True |  | GRC Security Utility | Manjunatha Umesha |  |  |  |  |  |  |
| 268 | 1.1.2.4.1 | 1.1.2.4.1 | 5 | Extract the default Global Ruleset from SAP | 2025-09-02 | 2025-09-05 | 2025-09-02 | 2025-09-05 | 100 | 4 | Start No Earlier Than | Complete | 0d | 0d | COULD NOT BE DETERMINED |  |  | True |  | Rule Set & Role Design | Brian Wagner |  | 269 | 0 4 232 236 232  |  |  |  |
| 270 | 1.1.2.4.10 | 1.1.2.4.10 | 5 | Role remediation planning - Can impact role design & Possible of retesting. | 2026-05-08 | 2026-05-21 | 2025-11-27 | 2025-12-10 | 0 | 10 | Start No Earlier Than | Future Task | 122d | 122d | Kishore Kakarla |  |  | True |  | Rule Set & Role Design | Kishore Kakarla | Testing |  | 62 72 294 304 232  | 286 | 286 62 Risk analysis on existing roles |  |
| 269 | 1.1.2.4.2 | 1.1.2.4.2 | 5 | Extract SU24 Details of transactions from global ruleset and Custom Transactions | 2025-09-08 | 2025-09-16 | 2025-09-08 | 2025-09-16 | 100 | 7 | As Soon As Possible | Complete | 0d | 0d | COULD NOT BE DETERMINED |  |  | True |  | Rule Set & Role Design | Brian Wagner |  | 281 | 4 11 236 243 232  | 268 | 268 4 Extract the default Global Ruleset from SAP |  |
| 281 | 1.1.2.4.3 | 1.1.2.4.3 | 5 | Prepare/Share the Ruleset Draft with all the functional leads for inputs | 2025-09-17 | 2025-09-24 | 2025-09-17 | 2025-09-24 | 100 | 6 | As Soon As Possible | Complete | 0d | 0d | COULD NOT BE DETERMINED |  |  | True |  | Rule Set & Role Design | Brian Wagner |  | 282 | 11 17 243 249 232  | 269 | 269 11 Extract SU24 Details of transactions from global ruleset and Custom Transactions |  |
| 282 | 1.1.2.4.4 | 1.1.2.4.4 | 5 | Schedule workshops to collect complete details of ruleset module wise and close the gaps | 2025-09-25 | 2025-10-30 | 2025-09-25 | 2025-10-30 | 100 | 26 | As Soon As Possible | Complete | 0d | 0d | COULD NOT BE DETERMINED |  |  | True |  | Rule Set & Role Design | Brian Wagner |  | 283 | 17 43 249 275 232  | 281 | 281 17 Prepare/Share the Ruleset Draft with all the functional leads for inputs |  |
| 283 | 1.1.2.4.5 | 1.1.2.4.5 | 5 | Final Review Rule Set and update the recommendations | 2025-10-31 | 2026-05-04 | 2025-10-31 | 2025-11-05 | 60 | 4 | As Soon As Possible | Late | 135.4d | 135.4d | COULD NOT BE DETERMINED |  |  | True |  | Rule Set & Role Design |  |  | 284 | 43 47 275 279 232  | 282 | 282 43 Schedule workshops to collect complete details of ruleset module wise and close the gaps |  |

| uid | wbs | outlineNumber | outlineLevel | name | start | finish | baselineStart | baselineFinish | percentComplete | durationDays | constraintType | status | totalSlackRaw | freeSlackRaw | resourceNames | summary | criticalFlag | active | flag20 | summaryName | businessValidationOwner | workstream | successors | cpm | predecessors | drivers |
| --- | --- | --- | --- | --- | --- | --- | --- | --- | --- | --- | --- | --- | --- | --- | --- | --- | --- | --- | --- | --- | --- | --- | --- | --- | --- | --- |
| 284 | 1.1.2.4.6 | 1.1.2.4.6 | 5 | Import rulesets into system | 2025-11-06 | 2025-11-11 | 2025-11-06 | 2025-11-11 | 100 | 4 | As Soon As Possible | Complete | 0d | 0d | COULD NOT BE DETERMINED |  |  | True |  | Rule Set & Role Design |  |  | 285 | 47 51 279 283 232  | 283 | 283 47 Final Review Rule Set and update the recommendations |
| 303 | 1.1.2.4.7 | 1.1.2.4.7 | 5 | RCM Development | 2025-03-13 | 2025-03-13 | 2025-03-13 | 2025-03-13 | 100 | 1 | As Soon As Possible | Complete | 0d? | 0d? | Controlling Team |  |  | True |  | Rule Set & Role Design | Bijoykrishna Das |  |  | 0 1 303 304 303  |  |  |
| 285 | 1.1.2.4.8 | 1.1.2.4.8 | 5 | Setup Mitigation controls | 2025-11-12 | 2025-11-19 | 2025-11-12 | 2025-11-19 | 100 | 6 | As Soon As Possible | Complete | 0d | 0d | COULD NOT BE DETERMINED |  |  | True |  | Rule Set & Role Design |  |  | 286 | 51 57 283 289 232  | 284 | 284 51 Import rulesets into system |
| 286 | 1.1.2.4.9 | 1.1.2.4.9 | 5 | Risk analysis on existing roles | 2026-05-01 | 2026-05-07 | 2025-11-20 | 2025-11-26 | 0 | 5 | Start No Earlier Than | Late | 122d | 0d | COULD NOT BE DETERMINED |  |  | True |  | Rule Set & Role Design | Manjunatha Umesha |  | 270, 272 | 57 62 289 294 232  | 285 | 285 57 Setup Mitigation controls |
| 271 | 1.1.2.5 | 1.1.2.5 | 4 | Business Role Management | 2026-05-08 | 2026-05-21 | 2025-11-27 | 2025-12-10 | 0 | 10 | As Soon As Possible | Future Task | 122d | 122d | COULD NOT BE DETERMINED | True |  | True |  | GRC Security Utility | Manjunatha Umesha |  |  |  |  |  |
| 272 | 1.1.2.5.1 | 1.1.2.5.1 | 5 | Role Mapping with Business Process and Sub-Process /Functional Area | 2026-05-08 | 2026-05-14 | 2025-11-27 | 2025-12-03 | 0 | 5 | Start No Earlier Than | Future Task | 122d | 0d | SAPFinance@ametek.com; SAPOTC@ametek.com; sapptm@ametek.com |  |  | True |  | Business Role Management | Manjunatha Umesha | Functional | 273 | 62 67 294 299 232  | 286 | 286 62 Risk analysis on existing roles |
| 273 | 1.1.2.5.2 | 1.1.2.5.2 | 5 | Role Upload to SAP GRC | 2026-05-15 | 2026-05-21 | 2025-12-04 | 2025-12-10 | 0 | 5 | Start No Earlier Than | Future Task | 122d | 122d | COULD NOT BE DETERMINED |  |  | True |  | Business Role Management | Manjunatha Umesha |  |  | 67 72 299 304 232  | 272 | 272 67 Role Mapping with Business Process and Sub-Process /Functional Area |
| 274 | 1.1.2.6 | 1.1.2.6 | 4 | Firefighter Configuration | 2026-05-01 | 2026-05-21 | 2025-10-20 | 2025-11-07 | 0 | 15 | As Soon As Possible | Late | 122d | 122d | COULD NOT BE DETERMINED | True |  | True |  | GRC Security Utility |  |  |  |  |  |  |
| 275 | 1.1.2.6.1 | 1.1.2.6.1 | 5 | Firefighter ID setup | 2026-05-01 | 2026-05-07 | 2025-10-20 | 2025-10-24 | 0 | 5 | Start No Earlier Than | Late | 122d | 0d | COULD NOT BE DETERMINED |  |  | True |  | Firefighter Configuration |  |  | 276 | 0 5 289 294 289  |  |  |
| 276 | 1.1.2.6.2 | 1.1.2.6.2 | 5 | Firefighter log settings | 2026-05-08 | 2026-05-14 | 2025-10-27 | 2025-10-31 | 0 | 5 | Start No Earlier Than | Future Task | 122d | 0d | COULD NOT BE DETERMINED |  |  | True |  | Firefighter Configuration |  |  | 277 | 5 10 294 299 289  | 275 | 275 5 Firefighter ID setup |
| 277 | 1.1.2.6.3 | 1.1.2.6.3 | 5 | Functional validation | 2026-05-15 | 2026-05-21 | 2025-11-03 | 2025-11-07 | 0 | 5 | Start No Earlier Than | Future Task | 122d | 122d | SAPFinance@ametek.com; SAPOTC@ametek.com; sapptm@ametek.com |  |  | True |  | Firefighter Configuration |  | Functional |  | 10 15 299 304 289  | 276 | 276 10 Firefighter log settings |
| 278 | 1.1.2.7 | 1.1.2.7 | 4 | Testing & Training | 2026-05-01 | 2026-08-05 | 2025-11-10 | 2026-02-12 | 0 | 69 | As Soon As Possible | Late | 68d | 68d | Kishore Kakarla | True |  | True |  | GRC Security Utility | Karen Zalnis | Testing |  |  |  |  |
| 279 | 1.1.2.7.1 | 1.1.2.7.1 | 5 | Unit testing | 2026-05-01 | 2026-05-13 | 2025-11-10 | 2025-11-20 | 0 | 9 | Start No Earlier Than | Late | 68d | 0d | Kishore Kakarla |  |  | True |  | Testing & Training | Kishore Kakarla | Testing | 280 | 0 9 235 244 235  |  |  |
| 280 | 1.1.2.7.2 | 1.1.2.7.2 | 5 | Changes moved to Test System | 2026-05-14 | 2026-05-18 | 2025-11-21 | 2025-11-25 | 0 | 3 | Start No Earlier Than | Future Task | 68d | 0d | Dan Taylor; Dana Ansky; Jim Long |  |  | True |  | Testing & Training | Kishore Kakarla | Training | 287 | 9 12 244 247 235  | 279 | 279 9 Unit testing |
| 287 | 1.1.2.7.3 | 1.1.2.7.3 | 5 | Connector configuration (S4 / LDAP Connector) | 2026-05-19 | 2026-05-21 | 2025-11-26 | 2025-11-28 | 0 | 3 | Start No Earlier Than | Future Task | 68d | 0d | Dan Taylor; Dana Ansky; Jim Long |  |  | True |  | Testing & Training | Brian Wagner | Training | 288 | 12 15 247 250 235  | 280 | 280 12 Changes moved to Test System |
| 288 | 1.1.2.7.4 | 1.1.2.7.4 | 5 | Workflow Activation / Data load in Test System | 2026-05-22 | 2026-05-28 | 2025-12-01 | 2025-12-05 | 0 | 5 | Start No Earlier Than | Future Task | 68d | 0d | Jyoti Nain; Manoj Patel; Michelle Connnors; Roy John; Shiva Janga; Vishal Pujari; (Curtis) Todd Breithaupt; Jerry Ramos |  |  | True |  | Testing & Training | Manoj Patel | Data | 289 | 15 20 250 255 235  | 287 | 287 15 Connector configuration (S4 / LDAP Connector) |
| 289 | 1.1.2.7.5 | 1.1.2.7.5 | 5 | Integration testing - Smoke Test | 2026-05-29 | 2026-06-10 | 2025-12-08 | 2025-12-18 | 0 | 9 | Start No Earlier Than | Future Task | 68d | 0d | Kishore Kakarla |  |  | True |  | Testing & Training | Kishore Kakarla | Testing | 290 | 20 29 255 264 235  | 288 | 288 20 Workflow Activation / Data load in Test System |
| 290 | 1.1.2.7.6 | 1.1.2.7.6 | 5 | UAT (User Acceptance Testing) - ITC-3 - with roles | 2026-06-11 | 2026-07-02 | 2025-12-19 | 2026-01-09 | 0 | 16 | Start No Earlier Than | Future Task | 68d | 0d | Kishore Kakarla |  |  | True |  | Testing & Training | Kishore Kakarla | Testing | 291 | 29 45 264 280 235  | 289 | 289 29 Integration testing - Smoke Test |
| 291 | 1.1.2.7.7 | 1.1.2.7.7 | 5 | Issue resolution | 2026-07-03 | 2026-07-16 | 2026-01-12 | 2026-01-23 | 0 | 10 | Start No Earlier Than | Future Task | 68d | 0d | Dan Taylor; Dana Ansky; Jim Long |  |  | True |  | Testing & Training |  | Training | 292 | 45 55 280 290 235  | 290 | 290 45 UAT (User Acceptance Testing) - ITC-3 - with roles |
| 292 | 1.1.2.7.8 | 1.1.2.7.8 | 5 | End-user training | 2026-07-17 | 2026-07-24 | 2026-01-26 | 2026-02-02 | 0 | 6 | Start No Earlier Than | Future Task | 68d | 0d | Karen Zalnis; Mohamed Thanveer Akram (Sira); Sarah George; Paul Ward; Jim Long; Dana Ansky; Dan Taylor |  |  | True |  | Testing & Training | Karen Zalnis | Training | 293 | 55 61 290 296 235  | 291 | 291 55 Issue resolution |
| 293 | 1.1.2.7.9 | 1.1.2.7.9 | 5 | Initiate Preparation of Cutover Plans | 2026-07-27 | 2026-08-05 | 2026-02-03 | 2026-02-12 | 0 | 8 | Start No Earlier Than | Future Task | 68d | 68d | Dan Taylor; Dana Ansky; Jim Long |  |  | True |  | Testing & Training | Renee DiTullio | Training |  | 61 69 296 304 235  | 292 | 292 61 End-user training |
| 294 | 1.1.2.8 | 1.1.2.8 | 4 | Go-Live | 2026-10-01 | 2026-10-22 | 2026-01-01 | 2026-01-22 | 0 | 16 | Start No Earlier Than | Future Task | 0d | 0d | COULD NOT BE DETERMINED | True | True | True |  | GRC Security Utility |  |  |  |  |  |  |
| 297 | 1.1.2.8.1 | 1.1.2.8.1 | 5 | Production deployment | 2026-10-01 | 2026-10-09 | 2026-01-01 | 2026-01-09 | 0 | 7 | Must Start On | Future Task | 0d | 0d | COULD NOT BE DETERMINED |  | True | True |  | Go-Live | Brad Meseck |  | 295 | 0 7 278 285 278  | 3367 |  |
| 295 | 1.1.2.8.2 | 1.1.2.8.2 | 5 | Execution of Cutover Plan(Business and Technical) | 2026-10-01 | 2026-10-09 | 2026-01-01 | 2026-01-09 | 0 | 7 | As Soon As Possible | Future Task | 12d | 0d | SAPAnalytics@ametek.com; SAPBasis@ametek.com; SAPBTP@ametek.com |  |  | True |  | Go-Live | Renee DiTullio | Technical | 296 | 7 14 285 292 278  | 297 | 297 7 Production deployment |
| 296 | 1.1.2.8.3 | 1.1.2.8.3 | 5 | Final risk analysis | 2026-10-12 | 2026-10-20 | 2026-01-12 | 2026-01-20 | 0 | 7 | As Soon As Possible | Future Task | 12d | 0d | COULD NOT BE DETERMINED |  |  | True |  | Go-Live |  |  | 298 | 14 21 292 299 278  | 295 | 295 14 Execution of Cutover Plan(Business and Technical) |
| 298 | 1.1.2.8.4 | 1.1.2.8.4 | 5 | Go-live (Technical) | 2026-10-21 | 2026-10-22 | 2026-01-21 | 2026-01-22 | 0 | 2 | As Soon As Possible | Future Task | 12d | 12d | SAPAnalytics@ametek.com; SAPBasis@ametek.com; SAPBTP@ametek.com |  |  | True |  | Go-Live |  | Technical |  | 21 23 302 304 281  | 296 | 296 21 Final risk analysis |
| 24 | 1.1.2.9 | 1.1.2.9 | 4 | Functional Build Tasks | 2025-04-07 | 2025-09-18 | 2025-04-07 | 2025-09-18 | 100 | 119 | As Soon As Possible | Complete | 0d | 0d | COULD NOT BE DETERMINED | True |  | True | True | GRC Security Utility |  |  |  |  |  |  |
| 25 | 1.1.2.9.1 | 1.1.2.9.1 | 5 | BPD Development / Configuration Specs | 2025-04-07 | 2025-09-18 | 2025-04-07 | 2025-09-18 | 100 | 119 | As Soon As Possible | Complete | 0d | 0d | Bijoykrishna Das; Manas Prasanna Das; Punith Ravi; Purnachandrarao.V; Sreevalli Vasireddy; Siddharth Singh; Naveen Kanaparthi; Venkateshsai CH; Kumar Gaurav; Praveenkumar K | True |  | True | True | Functional Build Tasks | Bijoykrishna Das | Development |  |  |  |  |
| 56 | 1.1.2.9.1.1 | 1.1.2.9.1.1 | 6 | Master Data | 2025-06-16 | 2025-09-04 | 2025-06-16 | 2025-09-04 | 100 | 59 | As Soon As Possible | Complete | 0d | 0d | Jyoti Nain; Manoj Patel; Michelle Connnors; Roy John; Shiva Janga; Vishal Pujari; (Curtis) Todd Breithaupt; Jerry Ramos | True |  | True |  | BPD Development / Configuration Specs | Manoj Patel | Data |  |  |  |  |
| 57 | 1.1.2.9.1.1.1 | 1.1.2.9.1.1.1 | 7 | In Draft | 2025-06-16 | 2025-07-15 | 2025-06-16 | 2025-07-15 | 100 | 22 | Finish No Earlier Than | Complete | 0d | 0d | COULD NOT BE DETERMINED |  |  | True |  | Master Data |  |  |  | 0 22 282 304 282  |  |  |
| 58 | 1.1.2.9.1.1.2 | 1.1.2.9.1.1.2 | 7 | Complete - Ready for Security Review | 2025-07-07 | 2025-08-15 | 2025-07-07 | 2025-08-15 | 100 | 30 | Finish No Earlier Than | Complete | 0d | 0d | Manjunatha Umesha; Sajith Ravindran; Salam Omer; Sandeep Katika |  |  | True |  | Master Data | Manjunatha Umesha | Security | 133 | 0 30 260 290 260  |  |  |
| 133 | 1.1.2.9.1.1.3 | 1.1.2.9.1.1.3 | 7 | Complete - Audit and Controls Review | 2025-08-18 | 2025-09-04 | 2025-08-18 | 2025-09-04 | 100 | 14 | As Soon As Possible | Complete | 0d | 0d | COULD NOT BE DETERMINED |  |  | True |  | Master Data |  |  |  | 30 44 290 304 260  | 58 | 58 30 Complete - Ready for Security Review |
| 26 | 1.1.2.9.1.2 | 1.1.2.9.1.2 | 6 | Finance | 2025-04-07 | 2025-08-28 | 2025-04-07 | 2025-08-28 | 100 | 104 | As Soon As Possible | Complete | 0d | 0d | Brian Wagner; Chandrababu Boyapati; Femi Oguntala; Jon Marsh; Kasey Hughes; Roy Woo; Steve Trust; Tom Montgomery; Tony Jose; Wolfgang Beul | True |  | True |  | BPD Development / Configuration Specs | Brian Wagner | Finance |  |  |  |  |
| 31 | 1.1.2.9.1.2.1 | 1.1.2.9.1.2.1 | 7 | In Draft | 2025-04-07 | 2025-06-27 | 2025-04-07 | 2025-06-27 | 100 | 60 | Finish No Earlier Than | Complete | 0d | 0d | COULD NOT BE DETERMINED |  |  | True |  | Finance |  |  |  | 0 60 238.38 298.38 238.38  |  |  |
| 32 | 1.1.2.9.1.2.2 | 1.1.2.9.1.2.2 | 7 | Complete - Ready for Security Review | 2025-04-21 | 2025-08-08 | 2025-04-21 | 2025-08-08 | 100 | 80 | Start No Earlier Than | Complete | 0d | 0d | Manjunatha Umesha; Sajith Ravindran; Salam Omer; Sandeep Katika |  |  | True |  | Finance | Manjunatha Umesha | Security | 134 | 0 80 210 290 210  |  |  |
| 134 | 1.1.2.9.1.2.3 | 1.1.2.9.1.2.3 | 7 | Complete - Ready for Audit and Controls Review | 2025-08-11 | 2025-08-28 | 2025-08-11 | 2025-08-28 | 100 | 14 | As Soon As Possible | Complete | 0d | 0d | COULD NOT BE DETERMINED |  |  | True |  | Finance |  |  |  | 80 94 290 304 210  | 32 | 32 80 Complete - Ready for Security Review |
| 27 | 1.1.2.9.1.3 | 1.1.2.9.1.3 | 6 | Plan to Make | 2025-04-08 | 2025-09-04 | 2025-04-07 | 2025-09-04 | 100 | 108 | As Soon As Possible | Complete | 0d | 0d | COULD NOT BE DETERMINED | True |  | True |  | BPD Development / Configuration Specs |  |  |  |  |  |  |
| 33 | 1.1.2.9.1.3.1 | 1.1.2.9.1.3.1 | 7 | In Draft | 2025-04-08 | 2025-07-21 | 2025-04-07 | 2025-07-21 | 100 | 75 | Finish No Earlier Than | Complete | 0d | 0d | COULD NOT BE DETERMINED |  |  | True |  | Plan to Make |  |  |  | 0 75 218.69 293.69 218.69  |  |  |
| 34 | 1.1.2.9.1.3.2 | 1.1.2.9.1.3.2 | 7 | Complete - Ready for Security Review | 2025-04-21 | 2025-08-15 | 2025-04-21 | 2025-08-15 | 100 | 85 | Start No Earlier Than | Complete | 0d | 0d | Manjunatha Umesha; Sajith Ravindran; Salam Omer; Sandeep Katika |  |  | True |  | Plan to Make | Manjunatha Umesha | Security | 135 | 0 85 205 290 205  |  |  |
| 135 | 1.1.2.9.1.3.3 | 1.1.2.9.1.3.3 | 7 | Complete - Ready for Audit and Controls Review | 2025-08-18 | 2025-09-04 | 2025-08-18 | 2025-09-04 | 100 | 14 | As Soon As Possible | Complete | 0d | 0d | COULD NOT BE DETERMINED |  |  | True |  | Plan to Make |  |  |  | 85 99 290 304 205  | 34 | 34 85 Complete - Ready for Security Review |
| 28 | 1.1.2.9.1.4 | 1.1.2.9.1.4 | 6 | Procure to Pay | 2025-04-07 | 2025-09-18 | 2025-04-07 | 2025-09-18 | 100 | 119 | As Soon As Possible | Complete | 0d | 0d | COULD NOT BE DETERMINED | True |  | True |  | BPD Development / Configuration Specs | Muniraju Surappachari |  |  |  |  |  |
| 35 | 1.1.2.9.1.4.1 | 1.1.2.9.1.4.1 | 7 | In Draft | 2025-04-07 | 2025-08-18 | 2025-04-07 | 2025-08-18 | 100 | 96 | Finish No Earlier Than | Complete | 0d | 0d | COULD NOT BE DETERMINED |  |  | True |  | Procure to Pay |  |  |  | 0 96 205.38 301.38 205.38  |  |  |
| 36 | 1.1.2.9.1.4.2 | 1.1.2.9.1.4.2 | 7 | Complete - Ready for Security Review | 2025-04-21 | 2025-08-29 | 2025-04-21 | 2025-08-29 | 100 | 95 | Start No Earlier Than | Complete | 0d | 0d | Manjunatha Umesha; Sajith Ravindran; Salam Omer; Sandeep Katika |  |  | True |  | Procure to Pay | Manjunatha Umesha | Security | 136 | 0 95 195 290 195  |  |  |
| 136 | 1.1.2.9.1.4.3 | 1.1.2.9.1.4.3 | 7 | Complete - Ready for Audit and Controls Review | 2025-09-01 | 2025-09-18 | 2025-09-01 | 2025-09-18 | 100 | 14 | As Soon As Possible | Complete | 0d | 0d | COULD NOT BE DETERMINED |  |  | True |  | Procure to Pay |  |  |  | 95 109 290 304 195  | 36 | 36 95 Complete - Ready for Security Review |
| 29 | 1.1.2.9.1.5 | 1.1.2.9.1.5 | 6 | Order to Cash | 2025-04-07 | 2025-08-21 | 2025-04-07 | 2025-08-21 | 100 | 99 | As Soon As Possible | Complete | 0d | 0d | COULD NOT BE DETERMINED | True |  | True |  | BPD Development / Configuration Specs | Kim Kolesar |  |  |  |  |  |
| 37 | 1.1.2.9.1.5.1 | 1.1.2.9.1.5.1 | 7 | In Draft | 2025-04-07 | 2025-07-21 | 2025-04-07 | 2025-07-21 | 100 | 76 | Finish No Earlier Than | Complete | 0d | 0d | COULD NOT BE DETERMINED |  |  | True |  | Order to Cash |  |  |  | 0 76 222.38 298.38 222.38  |  |  |
| 38 | 1.1.2.9.1.5.2 | 1.1.2.9.1.5.2 | 7 | Complete - Ready for Security Review | 2025-04-21 | 2025-08-01 | 2025-04-21 | 2025-08-01 | 100 | 75 | Start No Earlier Than | Complete | 0d | 0d | Manjunatha Umesha; Sajith Ravindran; Salam Omer; Sandeep Katika |  |  | True |  | Order to Cash | Manjunatha Umesha | Security | 137 | 0 75 215 290 215  |  |  |
| 137 | 1.1.2.9.1.5.3 | 1.1.2.9.1.5.3 | 7 | Complete - Ready for Audit and Controls Review | 2025-08-04 | 2025-08-21 | 2025-08-04 | 2025-08-21 | 100 | 14 | As Soon As Possible | Complete | 0d | 0d | COULD NOT BE DETERMINED |  |  | True |  | Order to Cash |  |  |  | 75 89 290 304 215  | 38 | 38 75 Complete - Ready for Security Review |
| 682 | 1.2 | 1.2 | 2 | Data Readiness | 2026-04-06 | 2026-10-12 | 2025-03-13 | 2026-04-21 | 20 | 135.66 | As Soon As Possible | On Schedule | -2.03d | 0d | Jyoti Nain; Manoj Patel; Michelle Connnors; Roy John; Shiva Janga; Vishal Pujari; (Curtis) Todd Breithaupt; Jerry Ramos | True | True | True | True | AMETEK Release-1, 3-Deployment Plan | Manoj Patel | Data |  |  |  |  |
| 425 | 1.2.1 | 1.2.1 | 3 | ITC1 Data Load Tasks QS5 | 2026-04-06 | 2026-04-23 | 2025-03-13 | 2026-04-21 | 100 | 13.66 | As Soon As Possible | Complete | 0d | 0d | Jyoti Nain; Manoj Patel; Michelle Connnors; Roy John; Shiva Janga; Vishal Pujari; (Curtis) Todd Breithaupt; Jerry Ramos | True |  | True |  | Data Readiness | Manoj Patel | Data | 2809 |  |  |  |
| 956 | 1.2.1.1 | 1.2.1.1 | 4 | PMO Authorization to Start Data Loads | 2026-04-06 | 2026-04-06 | 2026-04-06 | 2026-04-06 | 100 | 0.03125 | Start No Earlier Than | Complete | 0m | 0m | Mark George |  |  | True |  | ITC1 Data Load Tasks QS5 | Manoj Patel | PMO | 777, 115, 111, 781, 182 | 0 0.03 296.28 296.31 296.28  |  |  |
| 757 | 1.2.1.10 | 1.2.1.10 | 4 | RTR_CM06_Bank_master | 2026-04-14 | 2026-04-16 | 2026-04-08 | 2026-04-09 | 100 | 2.19 | As Soon As Possible | Complete | 0d | 0d | COULD NOT BE DETERMINED | True |  | True |  | ITC1 Data Load Tasks QS5 |  |  | 758 |  | 753 |  |
| 789 | 1.2.1.10.1 | 1.2.1.10.1 | 5 | Load File Staged and Posted "Ready" | 2026-04-14 | 2026-04-14 | 2026-04-08 | 2026-04-08 | 100 | 0.125 | As Soon As Possible | Complete | 0h | 0h | Data Migration Team |  |  | True |  | RTR_CM06_Bank_master |  | Data | 790 | 3.28 3.41 303.63 303.75 300.34  | 776 | 776 3.28125 Post Load Validation |
| 790 | 1.2.1.10.2 | 1.2.1.10.2 | 5 | Pre Load Validation | 2026-04-14 | 2026-04-14 | 2026-04-08 | 2026-04-09 | 100 | 0.25 | As Soon As Possible | Complete | 0h | 0h | Kasey Hughes |  |  | True |  | RTR_CM06_Bank_master | Brian Wagner | Finance |  | 3.41 3.66 303.75 304 300.34  | 789 | 789 3.40625 Load File Staged and Posted "Ready" |
| 791 | 1.2.1.10.3 | 1.2.1.10.3 | 5 | Simulate Load | 2026-04-15 | 2026-04-15 | 2026-04-09 | 2026-04-09 | 100 | 0.125 | Start No Earlier Than | Complete | 0h | 0h | Data Migration Team |  |  | True |  | RTR_CM06_Bank_master |  | Data | 792 | 0 0.13 287.38 287.5 287.38  |  |  |
| 792 | 1.2.1.10.4 | 1.2.1.10.4 | 5 | Error and Defect Mitigation | 2026-04-15 | 2026-04-15 | 2026-04-09 | 2026-04-09 | 100 | 0.25 | As Soon As Possible | Complete | 0h | 0h | Kasey Hughes |  |  | True |  | RTR_CM06_Bank_master | Brian Wagner | Finance | 793 | 0.13 0.38 287.5 287.75 287.38  | 791 | 791 0.125 Simulate Load |
| 793 | 1.2.1.10.5 | 1.2.1.10.5 | 5 | Load | 2026-04-15 | 2026-04-15 | 2026-04-09 | 2026-04-09 | 100 | 0.625 | Finish No Earlier Than | Complete | 0h | 0h | Data Migration Team |  |  | True |  | RTR_CM06_Bank_master |  | Data | 794, 796 | 0.38 1 287.75 288.38 287.38  | 792 | 792 0.375 Error and Defect Mitigation |
| 794 | 1.2.1.10.6 | 1.2.1.10.6 | 5 | Post Load Validation | 2026-04-15 | 2026-04-16 | 2026-04-09 | 2026-04-09 | 100 | 0.25 | Finish No Earlier Than | Complete | 0h | 0h | Kasey Hughes |  |  | True |  | RTR_CM06_Bank_master | Brian Wagner | Finance | 974, 989 | 1 1.25 288.38 288.63 287.38  | 793 | 793 1 Load |
| 758 | 1.2.1.11 | 1.2.1.11 | 4 | RTR_CM08_Exchange_Rates | 2026-04-09 | 2026-04-10 | 2026-04-09 | 2026-04-10 | 100 | 1.13 | As Soon As Possible | Complete | 0d | 0d | COULD NOT BE DETERMINED | True |  | True |  | ITC1 Data Load Tasks QS5 |  |  | 761 |  | 757 |  |
| 796 | 1.2.1.11.1 | 1.2.1.11.1 | 5 | Load File Staged and Posted "Ready" | 2026-04-09 | 2026-04-09 | 2026-04-09 | 2026-04-09 | 100 | 0.125 | As Soon As Possible | Complete | 0h | 0h | Kasey Hughes |  |  | True |  | RTR_CM08_Exchange_Rates |  | Finance | 797 | 1 1.13 302.88 303 301.88  | 793 | 793 1 Load |
| 797 | 1.2.1.11.2 | 1.2.1.11.2 | 5 | Pre Load Validation | 2026-04-09 | 2026-04-10 | 2026-04-09 | 2026-04-10 | 100 | 0.25 | As Soon As Possible | Complete | 0h | 0h | Kasey Hughes |  |  | True |  | RTR_CM08_Exchange_Rates | Brian Wagner | Finance | 798 | 1.13 1.38 303 303.25 301.88  | 796 | 796 1.125 Load File Staged and Posted "Ready" |
| 798 | 1.2.1.11.3 | 1.2.1.11.3 | 5 | Simulate Load | 2026-04-10 | 2026-04-10 | 2026-04-10 | 2026-04-10 | 100 | 0.125 | As Soon As Possible | Complete | 0h | 0h | Data Migration Team |  |  | True |  | RTR_CM08_Exchange_Rates |  | Data | 799 | 1.38 1.5 303.25 303.38 301.88  | 797 | 797 1.375 Pre Load Validation |
| 799 | 1.2.1.11.4 | 1.2.1.11.4 | 5 | Error and Defect Mitigation | 2026-04-10 | 2026-04-10 | 2026-04-10 | 2026-04-10 | 100 | 0.25 | As Soon As Possible | Complete | 0h | 0h | Kasey Hughes |  |  | True |  | RTR_CM08_Exchange_Rates | Brian Wagner | Finance | 800 | 1.5 1.75 303.38 303.63 301.88  | 798 | 798 1.5 Simulate Load |
| 800 | 1.2.1.11.5 | 1.2.1.11.5 | 5 | Load | 2026-04-10 | 2026-04-10 | 2026-04-10 | 2026-04-10 | 100 | 0.125 | As Soon As Possible | Complete | 0h | 0h | Data Migration Team |  |  | True |  | RTR_CM08_Exchange_Rates |  | Data | 801 | 1.75 1.88 303.63 303.75 301.88  | 799 | 799 1.75 Error and Defect Mitigation |
| 801 | 1.2.1.11.6 | 1.2.1.11.6 | 5 | Post Load Validation | 2026-04-10 | 2026-04-10 | 2026-04-10 | 2026-04-10 | 100 | 0.25 | As Soon As Possible | Complete | 0h | 0h | Kasey Hughes |  |  | True |  | RTR_CM08_Exchange_Rates | Brian Wagner | Finance |  | 1.88 2.13 303.75 304 301.88  | 800 | 800 1.875 Load |
| 761 | 1.2.1.12 | 1.2.1.12 | 4 | RTR_CM14_Cost Element_Group | 2026-04-15 | 2026-04-22 | 2026-04-08 | 2026-04-15 | 100 | 5.38 | As Soon As Possible | Complete | 0d | 0d | Kasey Hughes | True |  | True |  | ITC1 Data Load Tasks QS5 | Brian Wagner | Finance | 764 |  | 758 |  |
| 814 | 1.2.1.12.1 | 1.2.1.12.1 | 5 | Manual File Staged and Posted "Ready" | 2026-04-15 | 2026-04-15 | 2026-04-08 | 2026-04-14 | 100 | 0.0625 | Finish No Earlier Than | Complete | 0m | 0m | Kasey Hughes |  |  | True |  | RTR_CM14_Cost Element_Group |  | Finance | 815 | 3.28 3.34 299.56 299.63 296.28  | 776 | 776 3.28125 Post Load Validation |
| 815 | 1.2.1.12.2 | 1.2.1.12.2 | 5 | Load | 2026-04-16 | 2026-04-21 | 2026-04-15 | 2026-04-15 | 100 | 4 | Finish No Earlier Than | Complete | 0h | 0h | Kasey Hughes |  |  | True |  | RTR_CM14_Cost Element_Group |  | Finance | 816 | 3.34 7.34 299.63 303.63 296.28  | 814 | 814 3.34375 Manual File Staged and Posted "Ready" |
| 816 | 1.2.1.12.3 | 1.2.1.12.3 | 5 | Post Load Validation | 2026-04-22 | 2026-04-22 | 2026-04-15 | 2026-04-15 | 100 | 0.375 | Start No Earlier Than | Complete | 0h | 0h | Kasey Hughes |  |  | True |  | RTR_CM14_Cost Element_Group | Brian Wagner | Finance |  | 7.34 7.72 303.63 304 296.28  | 815 | 815 7.34375 Load |
| 764 | 1.2.1.13 | 1.2.1.13 | 4 | OTC_CM19_Customer_Master - Bill-To | 2026-04-16 | 2026-04-16 | 2025-04-16 | 2025-04-16 | 100 | 0.25 | As Soon As Possible | Complete | 0h | 0h | Anitha Jothi; Kim Kolesar; Michele Colombo; Michiko Tomihari; Ric Haraida; Rod Santos; Shibu Mathew; Narendra Kallam; Keith Riley; James Manohar |  |  | True |  | ITC1 Data Load Tasks QS5 | Kim Kolesar | OTC | 763 | 0 0.25 303.75 304 303.75  | 761 |  |

| uid | wbs | outlineNumber | outlineLevel | name | start | finish | baselineStart | baselineFinish | percentComplete | durationDays | constraintType | status | totalSlackRaw | freeSlackRaw | resourceNames | summary | active | summaryName | businessValidationOwner | workstream | successors | cpm | predecessors | drivers |
| --- | --- | --- | --- | --- | --- | --- | --- | --- | --- | --- | --- | --- | --- | --- | --- | --- | --- | --- | --- | --- | --- | --- | --- | --- |
| 763 | 1.2.1.14 | 1.2.1.14 | 4 | OTC_CM19_Customer_Master - Ship-To | 2026-04-08 | 2026-04-10 | 2026-04-08 | 2026-04-13 | 100 | 2.16 | As Soon As Possible | Complete | 0d | 0d | Anitha Jothi; Kim Kolesar; Michele Colombo; Michiko Tomihari; Ric Haraida; Rod Santos; Shibu Mathew; Narendra Kallam; Keith Riley; James Manohar | True | True | ITC1 Data Load Tasks QS5 | Kim Kolesar | OTC | 762 |  | 764 |  |
| 823 | 1.2.1.14.1 | 1.2.1.14.1 | 5 | Load File Staged and Posted "Ready" | 2026-04-08 | 2026-04-08 | 2026-04-08 | 2026-04-08 | 100 | 0.0625 | As Soon As Possible | Complete | 0m | 0m | Ric Haraida |  | True | OTC_CM19_Customer_Master - Ship-To |  | OTC | 824 | 3.28 3.34 302.5 302.56 299.22  | 776 | 776 3.28125 Post Load Validation |
| 824 | 1.2.1.14.2 | 1.2.1.14.2 | 5 | Pre Load Validation | 2026-04-08 | 2026-04-08 | 2026-04-08 | 2026-04-08 | 100 | 0.0625 | As Soon As Possible | Complete | 0m | 0m | Ric Haraida |  | True | OTC_CM19_Customer_Master - Ship-To | Kim Kolesar | OTC | 8, 258, 171, 231 | 3.34 3.41 302.56 302.63 299.22  | 823 | 823 3.34375 Load File Staged and Posted "Ready" |
| 1231 | 1.2.1.14.3 | 1.2.1.14.3 | 5 | Open client for BP number range update | 2026-04-08 | 2026-04-09 | 2026-04-08 | 2026-04-09 | 100 | 0.0625 | As Soon As Possible | Complete | 0m | 0m | Basis |  | True | OTC_CM19_Customer_Master - Ship-To |  | Basis | 1232 | 3.41 3.47 303.84 303.91 300.44  | 824 | 824 3.40625 Pre Load Validation |
| 1232 | 1.2.1.14.4 | 1.2.1.14.4 | 5 | Update number range BP02 from Internal to External | 2026-04-09 | 2026-04-10 | 2026-04-09 | 2026-04-10 | 100 | 0.0625 | As Soon As Possible | Complete | 0m | 0m | Ric Haraida |  | True | OTC_CM19_Customer_Master - Ship-To |  | OTC | 1233 | 3.47 3.53 303.91 303.97 300.44  | 1231 | 1231 3.46875 Open client for BP number range update |
| 1233 | 1.2.1.14.5 | 1.2.1.14.5 | 5 | Close Client | 2026-04-10 | 2026-04-10 | 2026-04-10 | 2026-04-13 | 100 | 0.03125 | As Soon As Possible | Complete | 0m | 0m | Basis |  | True | OTC_CM19_Customer_Master - Ship-To |  | Basis |  | 3.53 3.56 303.97 304 300.44  | 1232 | 1232 3.53125 Update number range BP02 from Internal to External |
| 825 | 1.2.1.14.6 | 1.2.1.14.6 | 5 | Simulate Load | 2026-04-08 | 2026-04-09 | 2026-04-08 | 2026-04-09 | 100 | 0.125 | As Soon As Possible | Complete | 0h | 0h | Data Migration Team |  | True | OTC_CM19_Customer_Master - Ship-To |  | Data | 8, 268, 191, 240 | 3.41 3.53 302.63 302.75 299.22  | 824 | 824 3.40625 Pre Load Validation |
| 826 | 1.2.1.14.7 | 1.2.1.14.7 | 5 | Error and Defect Mitigation | 2026-04-09 | 2026-04-09 | 2026-04-09 | 2026-04-09 | 100 | 0.5 | As Soon As Possible | Complete | 0h | 0h | Ric Haraida |  | True | OTC_CM19_Customer_Master - Ship-To | Kim Kolesar | OTC | 827 | 3.53 4.03 302.75 303.25 299.22  | 825 | 825 3.53125 Simulate Load |
| 827 | 1.2.1.14.8 | 1.2.1.14.8 | 5 | Load | 2026-04-09 | 2026-04-09 | 2026-04-09 | 2026-04-09 | 100 | 0.375 | As Soon As Possible | Complete | 0h | 0h | Data Migration Team |  | True | OTC_CM19_Customer_Master - Ship-To |  | Data | 828 | 4.03 4.41 303.25 303.63 299.22  | 826 | 826 4.03125 Error and Defect Mitigation |
| 828 | 1.2.1.14.9 | 1.2.1.14.9 | 5 | Post Load Validation | 2026-04-09 | 2026-04-10 | 2026-04-09 | 2026-04-10 | 100 | 0.375 | As Soon As Possible | Complete | 0h | 0h | Ric Haraida |  | True | OTC_CM19_Customer_Master - Ship-To | Kim Kolesar | OTC |  | 4.41 4.78 303.63 304 299.22  | 827 | 827 4.40625 Load |
| 762 | 1.2.1.15 | 1.2.1.15 | 4 | OTC_CM19_Customer_Master - Sold-To | 2026-04-08 | 2026-04-10 | 2026-04-08 | 2026-04-10 | 100 | 1.63 | As Soon As Possible | Complete | 0d | 0d | Anitha Jothi; Kim Kolesar; Michele Colombo; Michiko Tomihari; Ric Haraida; Rod Santos; Shibu Mathew; Narendra Kallam; Keith Riley; James Manohar | True | True | ITC1 Data Load Tasks QS5 | Kim Kolesar | OTC | 765 |  | 763 |  |
| 817 | 1.2.1.15.1 | 1.2.1.15.1 | 5 | Load File Staged and Posted "Ready" | 2026-04-08 | 2026-04-09 | 2026-04-08 | 2026-04-09 | 100 | 0.0625 | As Soon As Possible | Complete | 0m | 0m | Ric Haraida |  | True | OTC_CM19_Customer_Master - Sold-To |  | OTC | 818 | 3.41 3.47 303.88 303.94 300.47  | 824 | 824 3.40625 Pre Load Validation |
| 818 | 1.2.1.15.2 | 1.2.1.15.2 | 5 | Pre Load Validation | 2026-04-09 | 2026-04-09 | 2026-04-09 | 2026-04-09 | 100 | 0.0625 | As Soon As Possible | Complete | 0m | 0m | Ric Haraida |  | True | OTC_CM19_Customer_Master - Sold-To | Kim Kolesar | OTC |  | 3.47 3.53 303.94 304 300.47  | 817 | 817 3.46875 Load File Staged and Posted "Ready" |
| 819 | 1.2.1.15.3 | 1.2.1.15.3 | 5 | Simulate Load | 2026-04-09 | 2026-04-09 | 2026-04-09 | 2026-04-09 | 100 | 0.125 | As Soon As Possible | Complete | 0h | 0h | Data Migration Team |  | True | OTC_CM19_Customer_Master - Sold-To |  | Data | 820 | 132 132.13 300.72 300.84 168.72  | 8, 251, 244 | 251 132 Landscape design |
| 820 | 1.2.1.15.4 | 1.2.1.15.4 | 5 | Error and Defect Mitigation | 2026-04-09 | 2026-04-09 | 2026-04-09 | 2026-04-09 | 100 | 0.375 | As Soon As Possible | Complete | 0h | 0h | Ric Haraida |  | True | OTC_CM19_Customer_Master - Sold-To | Kim Kolesar | OTC | 821 | 132.13 132.5 300.84 301.22 168.72  | 819 | 819 132.125 Simulate Load |
| 821 | 1.2.1.15.5 | 1.2.1.15.5 | 5 | Load | 2026-04-09 | 2026-04-10 | 2026-04-09 | 2026-04-10 | 100 | 0.375 | As Soon As Possible | Complete | 0h | 0h | Data Migration Team |  | True | OTC_CM19_Customer_Master - Sold-To |  | Data | 822, 972, 984, 987, 993 | 132.5 132.88 301.22 301.59 168.72  | 820 | 820 132.5 Error and Defect Mitigation |
| 822 | 1.2.1.15.6 | 1.2.1.15.6 | 5 | Post Load Validation | 2026-04-10 | 2026-04-10 | 2026-04-10 | 2026-04-10 | 100 | 0.375 | As Soon As Possible | Complete | 0h | 0h | Ric Haraida |  | True | OTC_CM19_Customer_Master - Sold-To | Kim Kolesar | OTC |  | 132.88 133.25 303.63 304 170.75  | 821 | 821 132.875 Load |
| 1240 | 1.2.1.15.7 | 1.2.1.15.7 | 5 | Open client for BP number range update | 2026-04-09 | 2026-04-09 | 2026-04-09 | 2026-04-09 | 100 | 0.03125 | As Soon As Possible | Complete | 0m | 0m | Basis |  | True | OTC_CM19_Customer_Master - Sold-To |  | Basis | 1241 | 3.53 3.56 303.91 303.94 300.38  | 825 | 825 3.53125 Simulate Load |
| 1241 | 1.2.1.15.8 | 1.2.1.15.8 | 5 | Update number range BP02 from Internal to External | 2026-04-09 | 2026-04-09 | 2026-04-09 | 2026-04-09 | 100 | 0.03125 | As Soon As Possible | Complete | 0m | 0m | Ric Haraida |  | True | OTC_CM19_Customer_Master - Sold-To |  | OTC | 1242 | 3.56 3.59 303.94 303.97 300.38  | 1240 | 1240 3.5625 Open client for BP number range update |
| 1242 | 1.2.1.15.9 | 1.2.1.15.9 | 5 | Close Client | 2026-04-09 | 2026-04-09 | 2026-04-09 | 2026-04-09 | 100 | 0.03125 | As Soon As Possible | Complete | 0m | 0m | Basis |  | True | OTC_CM19_Customer_Master - Sold-To |  | Basis |  | 3.59 3.63 303.97 304 300.38  | 1241 | 1241 3.59375 Update number range BP02 from Internal to External |
| 765 | 1.2.1.16 | 1.2.1.16 | 4 | PTP_CM27_Vendor Master as Customer - FLCU01 | 2026-04-10 | 2026-04-14 | 2026-04-10 | 2026-04-14 | 100 | 2.31 | As Soon As Possible | Complete | 0d | 0d | Muniraju Surappachari; Nevin Varkey; Samuel Houff; Sarasija Ghosh; Surendra Krishna Acharya; Swetha SethumadhavaRao; James Farmer | True | True | ITC1 Data Load Tasks QS5 | Muniraju Surappachari | PTP | 771 |  | 762 |  |
| 972 | 1.2.1.16.1 | 1.2.1.16.1 | 5 | Extract File | 2026-04-10 | 2026-04-10 | 2026-04-10 | 2026-04-10 | 100 | 0.125 | As Soon As Possible | Complete | 0h | 0h | Data Migration Team |  | True | PTP_CM27_Vendor Master as Customer - FLCU01 |  | Data | 973 | 132.88 133 301.59 301.72 168.72  | 821 | 821 132.875 Load |
| 973 | 1.2.1.16.2 | 1.2.1.16.2 | 5 | Pre Load Validation | 2026-04-10 | 2026-04-10 | 2026-04-10 | 2026-04-10 | 100 | 0.25 | As Soon As Possible | Complete | 0h | 0h | Nevin Varkey |  | True | PTP_CM27_Vendor Master as Customer - FLCU01 | Sam Houff | PTP | 974 | 133 133.25 301.72 301.97 168.72  | 972 | 972 133 Extract File |
| 974 | 1.2.1.16.3 | 1.2.1.16.3 | 5 | Simulate Load | 2026-04-10 | 2026-04-13 | 2026-04-10 | 2026-04-13 | 100 | 1.40625 | Finish No Earlier Than | Complete | 0h | 0h | Data Migration Team |  | True | PTP_CM27_Vendor Master as Customer - FLCU01 |  | Data | 975 | 133.25 134.66 301.97 303.38 168.72  | 973, 794 | 973 133.25 Pre Load Validation |
| 975 | 1.2.1.16.4 | 1.2.1.16.4 | 5 | Error and Defect Mitigation | 2026-04-10 | 2026-04-14 | 2026-04-10 | 2026-04-14 | 100 | 0.25 | As Soon As Possible | Complete | 0h | 0h | Nevin Varkey |  | True | PTP_CM27_Vendor Master as Customer - FLCU01 | Sam Houff | PTP | 976 | 134.66 134.91 303.38 303.63 168.72  | 974 | 974 134.65625 Simulate Load |
| 976 | 1.2.1.16.5 | 1.2.1.16.5 | 5 | Load | 2026-04-10 | 2026-04-14 | 2026-04-10 | 2026-04-14 | 100 | 0.125 | As Soon As Possible | Complete | 0h | 0h | Data Migration Team |  | True | PTP_CM27_Vendor Master as Customer - FLCU01 |  | Data | 977 | 134.91 135.03 303.63 303.75 168.72  | 975 | 975 134.90625 Error and Defect Mitigation |
| 977 | 1.2.1.16.6 | 1.2.1.16.6 | 5 | Post Load Validation | 2026-04-14 | 2026-04-14 | 2026-04-14 | 2026-04-14 | 100 | 0.25 | As Soon As Possible | Complete | 0h | 0h | Nevin Varkey |  | True | PTP_CM27_Vendor Master as Customer - FLCU01 | Sam Houff | PTP |  | 135.03 135.28 303.75 304 168.72  | 976 | 976 135.03125 Load |
| 771 | 1.2.1.17 | 1.2.1.17 | 4 | OTC_CM23_Customer_Hierarchy | 2026-04-10 | 2026-04-15 | 2026-04-10 | 2026-04-10 | 100 | 3.03 | As Soon As Possible | Complete | 0d | 0d | Anitha Jothi; Kim Kolesar; Michele Colombo; Michiko Tomihari; Ric Haraida; Rod Santos; Shibu Mathew; Narendra Kallam; Keith Riley; James Manohar | True | True | ITC1 Data Load Tasks QS5 | Kim Kolesar | OTC | 766 |  | 765 |  |
| 984 | 1.2.1.17.1 | 1.2.1.17.1 | 5 | Manual File Staged and Posted "Ready" | 2026-04-10 | 2026-04-10 | 2026-04-10 | 2026-04-10 | 100 | 0.0625 | Start No Earlier Than | Complete | 0m | 0m | Ric Haraida |  | True | OTC_CM23_Customer_Hierarchy | Kim Kolesar | OTC | 985 | 132.88 132.94 303.31 303.38 170.44  | 821 | 821 132.875 Load |
| 985 | 1.2.1.17.2 | 1.2.1.17.2 | 5 | Load | 2026-04-15 | 2026-04-15 | 2026-04-10 | 2026-04-10 | 100 | 0.25 | Start No Earlier Than | Complete | 0h | 0h | Ric Haraida |  | True | OTC_CM23_Customer_Hierarchy |  | OTC | 986 | 132.94 133.19 303.38 303.63 170.44  | 984 | 984 132.9375 Manual File Staged and Posted "Ready" |
| 986 | 1.2.1.17.3 | 1.2.1.17.3 | 5 | Post Load Validation | 2026-04-10 | 2026-04-10 | 2026-04-10 | 2026-04-10 | 100 | 0.375 | As Soon As Possible | Complete | 0h | 0h | Ric Haraida |  | True | OTC_CM23_Customer_Hierarchy | Kim Kolesar | OTC |  | 133.19 133.56 303.63 304 170.44  | 985 | 985 133.1875 Load |
| 766 | 1.2.1.18 | 1.2.1.18 | 4 | PTP_CM27_Vendor Master - Z001 - External Sales Rep | 2026-04-10 | 2026-04-15 | 2026-04-10 | 2026-04-13 | 100 | 3.38 | As Soon As Possible | Complete | 0d | 0d | Muniraju Surappachari; Nevin Varkey; Samuel Houff; Sarasija Ghosh; Surendra Krishna Acharya; Swetha SethumadhavaRao; James Farmer | True | True | ITC1 Data Load Tasks QS5 | Kim Kolesar | PTP | 768 |  | 771 |  |
| 987 | 1.2.1.18.1 | 1.2.1.18.1 | 5 | Extract File | 2026-04-10 | 2026-04-10 | 2026-04-10 | 2026-04-10 | 100 | 0.125 | As Soon As Possible | Complete | 0h | 0h | Data Migration Team |  | True | PTP_CM27_Vendor Master - Z001 - External Sales Rep |  | Data | 988, 999 | 132.88 133 302.88 303 170  | 821 | 821 132.875 Load |
| 988 | 1.2.1.18.2 | 1.2.1.18.2 | 5 | Pre Load Validation | 2026-04-10 | 2026-04-10 | 2026-04-10 | 2026-04-10 | 100 | 0.25 | As Soon As Possible | Complete | 0h | 0h | Nevin Varkey |  | True | PTP_CM27_Vendor Master - Z001 - External Sales Rep | Sam Houff | PTP | 989 | 133 133.25 303 303.25 170  | 987 | 987 133 Extract File |
| 989 | 1.2.1.18.3 | 1.2.1.18.3 | 5 | Simulate Load | 2026-04-10 | 2026-04-10 | 2026-04-10 | 2026-04-10 | 100 | 0.125 | As Soon As Possible | Complete | 0h | 0h | Data Migration Team |  | True | PTP_CM27_Vendor Master - Z001 - External Sales Rep |  | Data | 990 | 133.25 133.38 303.25 303.38 170  | 988, 794 | 988 133.25 Pre Load Validation |
| 990 | 1.2.1.18.4 | 1.2.1.18.4 | 5 | Error and Defect Mitigation | 2026-04-15 | 2026-04-15 | 2026-04-10 | 2026-04-10 | 100 | 0.25 | As Soon As Possible | Complete | 0h | 0h | Nevin Varkey |  | True | PTP_CM27_Vendor Master - Z001 - External Sales Rep | Sam Houff | PTP | 991 | 133.38 133.63 303.38 303.63 170  | 989 | 989 133.375 Simulate Load |
| 991 | 1.2.1.18.5 | 1.2.1.18.5 | 5 | Load | 2026-04-10 | 2026-04-15 | 2026-04-10 | 2026-04-13 | 100 | 0.125 | As Soon As Possible | Complete | 0h | 0h | Data Migration Team |  | True | PTP_CM27_Vendor Master - Z001 - External Sales Rep |  | Data | 992 | 133.63 133.75 303.63 303.75 170  | 990 | 990 133.625 Error and Defect Mitigation |
| 992 | 1.2.1.18.6 | 1.2.1.18.6 | 5 | Post Load Validation | 2026-04-15 | 2026-04-15 | 2026-04-13 | 2026-04-13 | 100 | 0.25 | As Soon As Possible | Complete | 0h | 0h | Nevin Varkey |  | True | PTP_CM27_Vendor Master - Z001 - External Sales Rep | Sam Houff | PTP |  | 133.75 134 303.75 304 170  | 991 | 991 133.75 Load |
| 768 | 1.2.1.19 | 1.2.1.19 | 4 | RTR_CM10_Credit_Management_Role | 2026-04-10 | 2026-04-17 | 2026-04-10 | 2026-04-13 | 100 | 5.56 | As Soon As Possible | Complete | 0d | 0d | COULD NOT BE DETERMINED | True | True | ITC1 Data Load Tasks QS5 | Manjunatha Umesha |  | 752 |  | 766 |  |
| 993 | 1.2.1.19.1 | 1.2.1.19.1 | 5 | Load File Staged and Posted "Ready" | 2026-04-10 | 2026-04-10 | 2026-04-10 | 2026-04-10 | 100 | 0.0625 | As Soon As Possible | Complete | 0m | 0m | Kasey Hughes |  | True | RTR_CM10_Credit_Management_Role |  | Finance | 994 | 132.88 132.94 302.25 302.31 169.38  | 821 | 821 132.875 Load |
| 994 | 1.2.1.19.2 | 1.2.1.19.2 | 5 | Pre Load Validation | 2026-04-10 | 2026-04-10 | 2026-04-10 | 2026-04-10 | 100 | 0.0625 | As Soon As Possible | Complete | 0m | 0m | Kasey Hughes |  | True | RTR_CM10_Credit_Management_Role | Brian Wagner | Finance | 995 | 132.94 133 302.31 302.38 169.38  | 993 | 993 132.9375 Load File Staged and Posted "Ready" |
| 995 | 1.2.1.19.3 | 1.2.1.19.3 | 5 | Simulate Load | 2026-04-17 | 2026-04-17 | 2026-04-10 | 2026-04-10 | 100 | 0.125 | As Soon As Possible | Complete | 0h | 0h | Data Migration Team |  | True | RTR_CM10_Credit_Management_Role |  | Data | 996 | 133 133.13 302.38 302.5 169.38  | 994 | 994 133 Pre Load Validation |
| 996 | 1.2.1.19.4 | 1.2.1.19.4 | 5 | Error and Defect Mitigation | 2026-04-17 | 2026-04-17 | 2026-04-10 | 2026-04-10 | 100 | 0.25 | As Soon As Possible | Complete | 0h | 0h | Kasey Hughes |  | True | RTR_CM10_Credit_Management_Role | Brian Wagner | Finance | 9, 971, 11 | 133.13 133.38 302.5 302.75 169.38  | 995 | 995 133.125 Simulate Load |
| 997 | 1.2.1.19.5 | 1.2.1.19.5 | 5 | Load | 2026-04-17 | 2026-04-17 | 2026-04-10 | 2026-04-10 | 100 | 0.25 | As Soon As Possible | Complete | 0h | 0h | Data Migration Team |  | True | RTR_CM10_Credit_Management_Role |  | Data | 998 | 133.38 133.63 302.75 303 169.38  | 996 | 996 133.375 Error and Defect Mitigation |
| 998 | 1.2.1.19.6 | 1.2.1.19.6 | 5 | Post Load Validation | 2026-04-17 | 2026-04-17 | 2026-04-10 | 2026-04-13 | 100 | 0.375 | As Soon As Possible | Complete | 0h | 0h | Kasey Hughes |  | True | RTR_CM10_Credit_Management_Role | Brian Wagner | Finance | 10, 121, 119 | 133.63 134 303 303.38 169.38  | 997 | 997 133.625 Load |
| 755 | 1.2.1.2 | 1.2.1.2 | 4 | RTR_CM02_Profit Center Hierarchy | 2026-04-06 | 2026-04-06 | 2026-04-06 | 2026-04-06 | 100 | 0.75 | As Soon As Possible | Complete | 0d | 0d | COULD NOT BE DETERMINED | True | True | ITC1 Data Load Tasks QS5 | Brian Wagner |  | 882, 883, 756 |  |  |  |
| 777 | 1.2.1.2.1 | 1.2.1.2.1 | 5 | Manual File Staged and Posted "Ready" | 2026-04-06 | 2026-04-06 | 2026-04-06 | 2026-04-06 | 100 | 0.125 | Start No Earlier Than | Complete | 0h | 0h | Kasey Hughes |  | True | RTR_CM02_Profit Center Hierarchy |  | Finance | 780 | 0.03 0.16 296.31 296.44 296.28  | 956 | 956 0.03125 PMO Authorization to Start Data Loads |
| 780 | 1.2.1.2.2 | 1.2.1.2.2 | 5 | Load | 2026-04-06 | 2026-04-06 | 2026-04-06 | 2026-04-06 | 100 | 0.25 | As Soon As Possible | Complete | 0h | 0h | Kasey Hughes |  | True | RTR_CM02_Profit Center Hierarchy |  | Finance | 781 | 0.16 0.41 296.44 296.69 296.28  | 777 | 777 0.15625 Manual File Staged and Posted "Ready" |
| 781 | 1.2.1.2.3 | 1.2.1.2.3 | 5 | Post Load Validation | 2026-04-06 | 2026-04-06 | 2026-04-06 | 2026-04-06 | 100 | 0.375 | As Soon As Possible | Complete | 0h | 0h | Kasey Hughes |  | True | RTR_CM02_Profit Center Hierarchy | Brian Wagner | Finance | 783, 802 | 0.41 0.78 296.69 297.06 296.28  | 780 | 780 0.40625 Load |
| 752 | 1.2.1.20 | 1.2.1.20 | 4 | PTP_CM27_Vendor Master | 2026-04-10 | 2026-04-16 | 2026-04-10 | 2026-04-15 | 100 | 3.72 | As Soon As Possible | Complete | 0d | 0d | Muniraju Surappachari; Nevin Varkey; Samuel Houff; Sarasija Ghosh; Surendra Krishna Acharya; Swetha SethumadhavaRao; James Farmer | True | True | ITC1 Data Load Tasks QS5 | Muniraju Surappachari | PTP | 692 |  | 768 |  |
| 999 | 1.2.1.20.1 | 1.2.1.20.1 | 5 | Extract File | 2026-04-10 | 2026-04-10 | 2026-04-10 | 2026-04-10 | 100 | 0.125 | As Soon As Possible | Complete | 0h | 0h | Data Migration Team |  | True | PTP_CM27_Vendor Master |  | Data | 1000 | 133 133.13 303.09 303.22 170.09  | 987 | 987 133 Extract File |
| 1000 | 1.2.1.20.2 | 1.2.1.20.2 | 5 | Pre Load Validation | 2026-04-10 | 2026-04-10 | 2026-04-10 | 2026-04-10 | 100 | 0.25 | As Soon As Possible | Complete | 0h | 0h | Nevin Varkey |  | True | PTP_CM27_Vendor Master | Sam Houff | PTP | 1001 | 133.13 133.38 303.22 303.47 170.09  | 999 | 999 133.125 Extract File |
| 1001 | 1.2.1.20.3 | 1.2.1.20.3 | 5 | Simulate Load | 2026-04-10 | 2026-04-10 | 2026-04-10 | 2026-04-14 | 100 | 0.28125 | Finish No Earlier Than | Complete | 0h | 0h | Data Migration Team |  | True | PTP_CM27_Vendor Master |  | Data | 1002 | 133.38 133.66 303.47 303.75 170.09  | 1000 | 1000 133.375 Pre Load Validation |
| 1002 | 1.2.1.20.4 | 1.2.1.20.4 | 5 | Error and Defect Mitigation | 2026-04-13 | 2026-04-13 | 2026-04-14 | 2026-04-14 | 100 | 0.25 | As Soon As Possible | Complete | 0h | 0h | Nevin Varkey |  | True | PTP_CM27_Vendor Master | Sam Houff | PTP |  | 133.66 133.91 303.75 304 170.09  | 1001 | 1001 133.65625 Simulate Load |
| 1003 | 1.2.1.20.5 | 1.2.1.20.5 | 5 | Load | 2026-04-15 | 2026-04-15 | 2026-04-14 | 2026-04-14 | 100 | 0.125 | As Soon As Possible | Complete | 0h | 0h | Data Migration Team |  | True | PTP_CM27_Vendor Master |  | Data | 1004 | 0 0.13 295.09 295.22 295.09  |  |  |
| 1004 | 1.2.1.20.6 | 1.2.1.20.6 | 5 | Post Load Validation | 2026-04-15 | 2026-04-16 | 2026-04-15 | 2026-04-15 | 100 | 0.25 | As Soon As Possible | Complete | 0h | 0h | Nevin Varkey |  | True | PTP_CM27_Vendor Master | Sam Houff | PTP | 101, 410, 211, 42 | 0.13 0.38 295.22 295.47 295.09  | 1003 | 1003 0.125 Load |
| 692 | 1.2.1.21 | 1.2.1.21 | 4 | PTP_CM27_Vendor Master - Mass Maintenance - LFA1-WERKR | 2026-04-16 | 2026-04-16 | 2026-04-10 | 2026-04-15 | 100 | 0.88 | As Soon As Possible | Complete | 0d | 0d | Muniraju Surappachari; Nevin Varkey; Samuel Houff; Sarasija Ghosh; Surendra Krishna Acharya; Swetha SethumadhavaRao; James Farmer | True | True | ITC1 Data Load Tasks QS5 | Muniraju Surappachari | PTP | 935 |  | 752 |  |
| 1005 | 1.2.1.21.1 | 1.2.1.21.1 | 5 | Extract File(Will Extract from LFA1) | 2026-04-16 | 2026-04-16 | 2026-04-10 | 2026-04-10 | 100 | 0.125 | Start No Earlier Than | Complete | 0h | 0h | Nevin Varkey |  | True | PTP_CM27_Vendor Master - Mass Maintenance - LFA1-WERKR |  | PTP | 10, 61, 20 | 0 0.13 302.5 302.63 302.5  |  |  |
| 1006 | 1.2.1.21.2 | 1.2.1.21.2 | 5 | Pre Load Validation | 2026-04-16 | 2026-04-16 | 2026-04-10 | 2026-04-10 | 100 | 0.25 | As Soon As Possible | Complete | 0h | 0h | Nevin Varkey |  | True | PTP_CM27_Vendor Master - Mass Maintenance - LFA1-WERKR | Sam Houff | PTP | 1007 | 0.13 0.38 302.63 302.88 302.5  | 1005 | 1005 0.125 Extract File(Will Extract from LFA1) |
| 1007 | 1.2.1.21.3 | 1.2.1.21.3 | 5 | Simulate Load/ Not Needed | 2026-04-16 | 2026-04-16 | 2026-04-10 | 2026-04-10 | 100 | 0.125 | As Soon As Possible | Complete | 0h | 0h | Nevin Varkey |  | True | PTP_CM27_Vendor Master - Mass Maintenance - LFA1-WERKR |  | PTP | 10, 81, 9 | 0.38 0.5 302.88 303 302.5  | 1006 | 1006 0.375 Pre Load Validation |
| 1008 | 1.2.1.21.4 | 1.2.1.21.4 | 5 | Error and Defect Mitigation | 2026-04-16 | 2026-04-16 | 2026-04-10 | 2026-04-13 | 100 | 0.25 | As Soon As Possible | Complete | 0h | 0h | Nevin Varkey |  | True | PTP_CM27_Vendor Master - Mass Maintenance - LFA1-WERKR | Sam Houff | PTP |  | 0.5 0.75 303.75 304 303.25  | 1007 | 1007 0.5 Simulate Load/ Not Needed |
| 1009 | 1.2.1.21.5 | 1.2.1.21.5 | 5 | Load | 2026-04-16 | 2026-04-16 | 2026-04-15 | 2026-04-15 | 100 | 0.125 | As Soon As Possible | Complete | 0h | 0h | Nevin Varkkey |  | True | PTP_CM27_Vendor Master - Mass Maintenance - LFA1-WERKR |  | PTP | 1010 | 0.5 0.63 303 303.13 302.5  | 1007 | 1007 0.5 Simulate Load/ Not Needed |
| 1010 | 1.2.1.21.6 | 1.2.1.21.6 | 5 | Post Load Validation | 2026-04-16 | 2026-04-16 | 2026-04-15 | 2026-04-15 | 100 | 0.25 | As Soon As Possible | Complete | 0h | 0h | Nevin Varkey |  | True | PTP_CM27_Vendor Master - Mass Maintenance - LFA1-WERKR | Sam Houff | PTP | 1176 | 0.63 0.88 303.13 303.38 302.5  | 1009 | 1009 0.625 Load |
| 935 | 1.2.1.22 | 1.2.1.22 | 4 | RTR_****_Credit Hierarchy | 2026-04-15 | 2026-04-16 | 2026-04-10 | 2026-04-13 | 100 | 1.38 | As Soon As Possible | Complete | 0d | 0d | COULD NOT BE DETERMINED | True | True | ITC1 Data Load Tasks QS5 | Brian Wagner |  | 693 |  | 692 |  |
| 1011 | 1.2.1.22.1 | 1.2.1.22.1 | 5 | Manual File Staged and Posted "Ready" | 2026-04-15 | 2026-04-15 | 2026-04-10 | 2026-04-10 | 100 | 0.0625 | Start No Earlier Than | Complete | 0m | 0m | Kasey Hughes |  | True | RTR_****_Credit Hierarchy | Brian Wagner | Finance |  | 133.38 133.44 303.94 304 170.56  | 996 | 996 133.375 Error and Defect Mitigation |
| 1012 | 1.2.1.22.2 | 1.2.1.22.2 | 5 | Load | 2026-04-15 | 2026-04-15 | 2026-04-13 | 2026-04-13 | 100 | 0.25 | As Soon As Possible | Complete | 0h | 0h | Kasey Hughes |  | True | RTR_****_Credit Hierarchy |  | Finance | 1013 | 134 134.25 303.38 303.63 169.38  | 998 | 998 134 Post Load Validation |
| 1013 | 1.2.1.22.3 | 1.2.1.22.3 | 5 | Post Load Validation | 2026-04-16 | 2026-04-16 | 2026-04-13 | 2026-04-13 | 100 | 0.375 | As Soon As Possible | Complete | 0h | 0h | Kasey Hughes |  | True | RTR_****_Credit Hierarchy | Brian Wagner | Finance |  | 134.25 134.63 303.63 304 169.38  | 1012 | 1012 134.25 Load |
| 693 | 1.2.1.23 | 1.2.1.23 | 4 | PTP_CM27_BP_Intercompany Supplier | 2026-04-13 | 2026-04-14 | 2026-04-13 | 2026-04-14 | 100 | 1.13 | As Soon As Possible | Complete | 0d | 0d | Muniraju Surappachari; Nevin Varkey; Samuel Houff; Sarasija Ghosh; Surendra Krishna Acharya; Swetha SethumadhavaRao; James Farmer | True | True | ITC1 Data Load Tasks QS5 | Muniraju Surappachari | PTP | 1245 |  | 935 |  |
| 1014 | 1.2.1.23.1 | 1.2.1.23.1 | 5 | Load File Staged and Posted "Ready" | 2026-04-13 | 2026-04-13 | 2026-04-13 | 2026-04-13 | 100 | 0.0625 | As Soon As Possible | Complete | 0m | 0m | Nevin Varkey,Ric Haraida |  | True | PTP_CM27_BP_Intercompany Supplier |  | PTP | 1015 | 0.38 0.44 302.88 302.94 302.5  | 1004 | 1004 0.375 Post Load Validation |
| 1015 | 1.2.1.23.2 | 1.2.1.23.2 | 5 | Pre Load Validation | 2026-04-13 | 2026-04-13 | 2026-04-13 | 2026-04-13 | 100 | 0.0625 | As Soon As Possible | Complete | 0m | 0m | Nevin Varkey,Ric Haraida |  | True | PTP_CM27_BP_Intercompany Supplier | Sam Houff,Kim Kolesar | PTP | 1016 | 0.44 0.5 302.94 303 302.5  | 1014 | 1014 0.4375 Load File Staged and Posted "Ready" |

| uid | wbs | outlineNumber | outlineLevel | name | start | finish | baselineStart | baselineFinish | percentComplete | durationDays | constraintType | status | totalSlackRaw | freeSlackRaw | resourceNames | summary | active | summaryName | businessValidationOwner | workstream | successors | cpm | predecessors | drivers |
| --- | --- | --- | --- | --- | --- | --- | --- | --- | --- | --- | --- | --- | --- | --- | --- | --- | --- | --- | --- | --- | --- | --- | --- | --- |
| 1016 | 1.2.1.23.3 | 1.2.1.23.3 | 5 | Simulate Load | 2026-04-13 | 2026-04-13 | 2026-04-13 | 2026-04-13 | 100 | 0.125 | As Soon As Possible | Complete | 0h | 0h | Data Migration Team |  | True | PTP_CM27_BP_Intercompany Supplier |  | Data | 1017 | 0.5 0.63 303 303.13 302.5  | 1015 | 1015 0.5 Pre Load Validation |
| 1017 | 1.2.1.23.4 | 1.2.1.23.4 | 5 | Error and Defect Mitigation | 2026-04-13 | 2026-04-13 | 2026-04-13 | 2026-04-13 | 100 | 0.25 | As Soon As Possible | Complete | 0h | 0h | Nevin Varkey,Ric Haraida |  | True | PTP_CM27_BP_Intercompany Supplier | Sam Houff,Kim Kolesar | PTP | 1018 | 0.63 0.88 303.13 303.38 302.5  | 1016 | 1016 0.625 Simulate Load |
| 1018 | 1.2.1.23.5 | 1.2.1.23.5 | 5 | Load | 2026-04-13 | 2026-04-14 | 2026-04-13 | 2026-04-14 | 100 | 0.25 | As Soon As Possible | Complete | 0h | 0h | Data Migration Team |  | True | PTP_CM27_BP_Intercompany Supplier |  | Data | 10, 191, 118 | 0.88 1.13 303.38 303.63 302.5  | 1017 | 1017 0.875 Error and Defect Mitigation |
| 1019 | 1.2.1.23.6 | 1.2.1.23.6 | 5 | Post Load Validation | 2026-04-14 | 2026-04-14 | 2026-04-14 | 2026-04-14 | 100 | 0.375 | As Soon As Possible | Complete | 0h | 0h | Nevin Varkey,Ric Haraida |  | True | PTP_CM27_BP_Intercompany Supplier | Sam Houff,Kim Kolesar | PTP |  | 1.13 1.5 303.63 304 302.5  | 1018 | 1018 1.125 Load |
| 1245 | 1.2.1.24 | 1.2.1.24 | 4 | PTP_CM27_BP_Intercompany Customer | 2026-04-13 | 2026-04-14 | 2026-04-13 | 2026-04-14 | 100 | 1.13 | As Soon As Possible | Complete | 0d | 0d | Muniraju Surappachari; Nevin Varkey; Samuel Houff; Sarasija Ghosh; Surendra Krishna Acharya; Swetha SethumadhavaRao; James Farmer | True | True | ITC1 Data Load Tasks QS5 | Muniraju Surappachari | PTP | 741 |  | 693 |  |
| 1246 | 1.2.1.24.1 | 1.2.1.24.1 | 5 | Load File Staged and Posted "Ready" | 2026-04-13 | 2026-04-13 | 2026-04-13 | 2026-04-13 | 100 | 0.0625 | As Soon As Possible | Complete | 0m | 0m | Nevin Varkey,Ric Haraida |  | True | PTP_CM27_BP_Intercompany Customer |  | PTP |  | 0 0.06 303.94 304 303.94  |  |  |
| 1247 | 1.2.1.24.2 | 1.2.1.24.2 | 5 | Pre Load Validation | 2026-04-13 | 2026-04-13 | 2026-04-13 | 2026-04-13 | 100 | 0.0625 | As Soon As Possible | Complete | 0m | 0m | Nevin Varkey,Ric Haraida |  | True | PTP_CM27_BP_Intercompany Customer | Sam Houff,Kim Kolesar | PTP | 1248 | 0 0.06 302.94 303 302.94  |  |  |
| 1248 | 1.2.1.24.3 | 1.2.1.24.3 | 5 | Simulate Load | 2026-04-13 | 2026-04-13 | 2026-04-13 | 2026-04-13 | 100 | 0.125 | As Soon As Possible | Complete | 0h | 0h | Data Migration Team |  | True | PTP_CM27_BP_Intercompany Customer |  | Data | 1249 | 0.06 0.19 303 303.13 302.94  | 1247 | 1247 0.0625 Pre Load Validation |
| 1249 | 1.2.1.24.4 | 1.2.1.24.4 | 5 | Error and Defect Mitigation | 2026-04-13 | 2026-04-13 | 2026-04-13 | 2026-04-13 | 100 | 0.25 | As Soon As Possible | Complete | 0h | 0h | Nevin Varkey,Ric Haraida |  | True | PTP_CM27_BP_Intercompany Customer | Sam Houff,Kim Kolesar | PTP | 1250 | 0.19 0.44 303.13 303.38 302.94  | 1248 | 1248 0.1875 Simulate Load |
| 1250 | 1.2.1.24.5 | 1.2.1.24.5 | 5 | Load | 2026-04-13 | 2026-04-14 | 2026-04-13 | 2026-04-14 | 100 | 0.25 | As Soon As Possible | Complete | 0h | 0h | Data Migration Team |  | True | PTP_CM27_BP_Intercompany Customer |  | Data | 12, 511, 118 | 0.44 0.69 303.38 303.63 302.94  | 1249 | 1249 0.4375 Error and Defect Mitigation |
| 1251 | 1.2.1.24.6 | 1.2.1.24.6 | 5 | Post Load Validation | 2026-04-14 | 2026-04-14 | 2026-04-14 | 2026-04-14 | 100 | 0.375 | As Soon As Possible | Complete | 0h | 0h | Nevin Varkey,Ric Haraida |  | True | PTP_CM27_BP_Intercompany Customer | Sam Houff,Kim Kolesar | PTP |  | 0.69 1.06 303.63 304 302.94  | 1250 | 1250 0.6875 Load |
| 741 | 1.2.1.25 | 1.2.1.25 | 4 | PTP_CM26_Material_Master - All Types | 2026-04-10 | 2026-04-15 | 2026-04-10 | 2026-04-15 | 100 | 3.16 | As Soon As Possible | Complete | 0d | 0d | Muniraju Surappachari; Nevin Varkey; Samuel Houff; Sarasija Ghosh; Surendra Krishna Acharya; Swetha SethumadhavaRao; James Farmer | True | True | ITC1 Data Load Tasks QS5 | Muniraju Surappachari | PTP | 748 |  | 1245 |  |
| 1020 | 1.2.1.25.1 | 1.2.1.25.1 | 5 | Extract File | 2026-04-10 | 2026-04-13 | 2026-04-10 | 2026-04-13 | 100 | 0.625 | As Soon As Possible | Complete | 0h | 0h | Data Migration Team |  | True | PTP_CM26_Material_Master - All Types |  | Data |  | 0.13 0.75 303.38 304 303.25  | 1005 | 1005 0.125 Extract File(Will Extract from LFA1) |
| 1021 | 1.2.1.25.2 | 1.2.1.25.2 | 5 | Pre Load Validation | 2026-04-13 | 2026-04-14 | 2026-04-13 | 2026-04-14 | 100 | 0.25 | As Soon As Possible | Complete | 0h | 0h | Nevin Varkey,Ric Haraida |  | True | PTP_CM26_Material_Master - All Types | Sam Houff,Kim Kolesar,Matt | PTP | 1022 | 0.38 0.63 295.47 295.72 295.09  | 1004 | 1004 0.375 Post Load Validation |
| 1022 | 1.2.1.25.3 | 1.2.1.25.3 | 5 | Simulate Load | 2026-04-14 | 2026-04-14 | 2026-04-14 | 2026-04-14 | 100 | 0.125 | As Soon As Possible | Complete | 0h | 0h | Data Migration Team |  | True | PTP_CM26_Material_Master - All Types |  | Data | 1023 | 0.63 0.75 295.72 295.84 295.09  | 1021 | 1021 0.625 Pre Load Validation |
| 1023 | 1.2.1.25.4 | 1.2.1.25.4 | 5 | Error and Defect Mitigation | 2026-04-14 | 2026-04-14 | 2026-04-14 | 2026-04-14 | 100 | 0.5 | As Soon As Possible | Complete | 0h | 0h | Nevin Varkey |  | True | PTP_CM26_Material_Master - All Types | Sam Houff,Kim Kolesar,Matt | PTP | 1024 | 0.75 1.25 295.84 296.34 295.09  | 1022 | 1022 0.75 Simulate Load |
| 1024 | 1.2.1.25.5 | 1.2.1.25.5 | 5 | Load | 2026-04-14 | 2026-04-15 | 2026-04-14 | 2026-04-15 | 100 | 0.375 | As Soon As Possible | Complete | 0h | 0h | Data Migration Team |  | True | PTP_CM26_Material_Master - All Types |  | Data | 102, 510, 271, 33 | 1.25 1.63 296.34 296.72 295.09  | 1023 | 1023 1.25 Error and Defect Mitigation |
| 1025 | 1.2.1.25.6 | 1.2.1.25.6 | 5 | Post Load Validation | 2026-04-15 | 2026-04-15 | 2026-04-15 | 2026-04-15 | 100 | 0.25 | As Soon As Possible | Complete | 0h | 0h | Nevin Varkey |  | True | PTP_CM26_Material_Master - All Types | Sam Houff,Kim Kolesar,Matt | PTP | 103, 810, 441, 50 | 1.63 1.88 303.75 304 302.13  | 1024 | 1024 1.625 Load |
| 748 | 1.2.1.26 | 1.2.1.26 | 4 | PTP_CM26_Material_Master - SERV - Service Materials | 2026-04-07 | 2026-04-15 | 2026-04-07 | 2026-04-15 | 100 | 5.88 | As Soon As Possible | Complete | 0d | 0d | Muniraju Surappachari; Nevin Varkey; Samuel Houff; Sarasija Ghosh; Surendra Krishna Acharya; Swetha SethumadhavaRao; James Farmer | True | True | ITC1 Data Load Tasks QS5 | Muniraju Surappachari | PTP | 749 |  | 741 |  |
| 1026 | 1.2.1.26.1 | 1.2.1.26.1 | 5 | Load File Staged and Posted "Ready" | 2026-04-07 | 2026-04-07 | 2026-04-07 | 2026-04-07 | 100 | 0.0625 | As Soon As Possible | Complete | 0m | 0m | Nevin Varkey,Ric Haraida |  | True | PTP_CM26_Material_Master - SERV - Service Materials |  | PTP |  | 1.91 1.97 303.94 304 302.03  | 807 | 807 1.90625 Post Load Validation |
| 1027 | 1.2.1.26.2 | 1.2.1.26.2 | 5 | Pre Load Validation | 2026-04-14 | 2026-04-14 | 2026-04-14 | 2026-04-14 | 100 | 0.0625 | As Soon As Possible | Complete | 0m | 0m | Nevin Varkey,Ric Haraida |  | True | PTP_CM26_Material_Master - SERV - Service Materials | Sam Houff,Kim Kolesar | PTP | 1028 | 1.63 1.69 302.94 303 301.31  | 1024 | 1024 1.625 Load |
| 1028 | 1.2.1.26.3 | 1.2.1.26.3 | 5 | Simulate Load | 2026-04-14 | 2026-04-14 | 2026-04-14 | 2026-04-14 | 100 | 0.125 | As Soon As Possible | Complete | 0h | 0h | Data Migration Team |  | True | PTP_CM26_Material_Master - SERV - Service Materials |  | Data | 1029 | 1.69 1.81 303 303.13 301.31  | 1027 | 1027 1.6875 Pre Load Validation |
| 1029 | 1.2.1.26.4 | 1.2.1.26.4 | 5 | Error and Defect Mitigation | 2026-04-14 | 2026-04-15 | 2026-04-14 | 2026-04-15 | 100 | 0.25 | As Soon As Possible | Complete | 0h | 0h | Nevin Varkey,Ric Haraida |  | True | PTP_CM26_Material_Master - SERV - Service Materials | Sam Houff,Kim Kolesar | PTP | 1030 | 1.81 2.06 303.13 303.38 301.31  | 1028 | 1028 1.8125 Simulate Load |
| 1030 | 1.2.1.26.5 | 1.2.1.26.5 | 5 | Load | 2026-04-15 | 2026-04-15 | 2026-04-15 | 2026-04-15 | 100 | 0.25 | As Soon As Possible | Complete | 0h | 0h | Data Migration Team |  | True | PTP_CM26_Material_Master - SERV - Service Materials |  | Data | 1031 | 2.06 2.31 303.38 303.63 301.31  | 1029 | 1029 2.0625 Error and Defect Mitigation |
| 1031 | 1.2.1.26.6 | 1.2.1.26.6 | 5 | Post Load Validation | 2026-04-15 | 2026-04-15 | 2026-04-15 | 2026-04-15 | 100 | 0.375 | As Soon As Possible | Complete | 0h | 0h | Nevin Varkey,Ric Haraida |  | True | PTP_CM26_Material_Master - SERV - Service Materials | Sam Houff,Kim Kolesar | PTP |  | 2.31 2.69 303.63 304 301.31  | 1030 | 1030 2.3125 Load |
| 749 | 1.2.1.27 | 1.2.1.27 | 4 | PTP_CM26_Material_Master - KMAT - Configurable Materials | 2026-04-07 | 2026-04-15 | 2026-04-07 | 2026-04-15 | 100 | 5.88 | As Soon As Possible | Complete | 0d | 0d | Muniraju Surappachari; Nevin Varkey; Samuel Houff; Sarasija Ghosh; Surendra Krishna Acharya; Swetha SethumadhavaRao; James Farmer | True | True | ITC1 Data Load Tasks QS5 | Muniraju Surappachari | PTP | 11, 621, 160 |  | 748 |  |
| 1032 | 1.2.1.27.1 | 1.2.1.27.1 | 5 | Load File Staged and Posted "Ready" | 2026-04-07 | 2026-04-07 | 2026-04-07 | 2026-04-07 | 100 | 0.0625 | As Soon As Possible | Complete | 0m | 0m | Eric Heisler |  | True | PTP_CM26_Material_Master - KMAT - Configurable Materials |  | PTM |  | 1.91 1.97 303.94 304 302.03  | 807 | 807 1.90625 Post Load Validation |
| 1033 | 1.2.1.27.2 | 1.2.1.27.2 | 5 | Pre Load Validation | 2026-04-14 | 2026-04-14 | 2026-04-14 | 2026-04-14 | 100 | 0.0625 | As Soon As Possible | Complete | 0m | 0m | Eric Heisler |  | True | PTP_CM26_Material_Master - KMAT - Configurable Materials | Sam Houff,Kim Kolesar,Matt | PTM | 1034 | 1.63 1.69 296.72 296.78 295.09  | 1024 | 1024 1.625 Load |
| 1034 | 1.2.1.27.3 | 1.2.1.27.3 | 5 | Simulate Load | 2026-04-14 | 2026-04-14 | 2026-04-14 | 2026-04-14 | 100 | 0.125 | As Soon As Possible | Complete | 0h | 0h | Data Migration Team |  | True | PTP_CM26_Material_Master - KMAT - Configurable Materials |  | Data | 1035 | 1.69 1.81 296.78 296.91 295.09  | 1033 | 1033 1.6875 Pre Load Validation |
| 1035 | 1.2.1.27.4 | 1.2.1.27.4 | 5 | Error and Defect Mitigation | 2026-04-14 | 2026-04-15 | 2026-04-14 | 2026-04-15 | 100 | 0.25 | As Soon As Possible | Complete | 0h | 0h | Eric Heisler |  | True | PTP_CM26_Material_Master - KMAT - Configurable Materials | Sam Houff,Kim Kolesar,Matt | PTM | 1036 | 1.81 2.06 296.91 297.16 295.09  | 1034 | 1034 1.8125 Simulate Load |
| 1036 | 1.2.1.27.5 | 1.2.1.27.5 | 5 | Load | 2026-04-15 | 2026-04-15 | 2026-04-15 | 2026-04-15 | 100 | 0.25 | As Soon As Possible | Complete | 0h | 0h | Data Migration Team |  | True | PTP_CM26_Material_Master - KMAT - Configurable Materials |  | Data | 1037 | 2.06 2.31 297.16 297.41 295.09  | 1035 | 1035 2.0625 Error and Defect Mitigation |
| 1037 | 1.2.1.27.6 | 1.2.1.27.6 | 5 | Post Load Validation | 2026-04-15 | 2026-04-15 | 2026-04-15 | 2026-04-15 | 100 | 0.375 | As Soon As Possible | Complete | 0h | 0h | Eric Heisler |  | True | PTP_CM26_Material_Master - KMAT - Configurable Materials | Sam Houff,Kim Kolesar,Matt | PTM | 10, 381, 44, 105, 11, 500, 0 | 2.31 2.69 297.41 297.78 295.09  | 1036 | 1036 2.3125 Load |
| 703 | 1.2.1.28 | 1.2.1.28 | 4 | PTP_CM28_Purchase_Info_Records | 2026-04-15 | 2026-04-17 | 2026-04-15 | 2026-04-16 | 100 | 1.59 | As Soon As Possible | Complete | 0d | 0d | Muniraju Surappachari; Nevin Varkey; Samuel Houff; Sarasija Ghosh; Surendra Krishna Acharya; Swetha SethumadhavaRao; James Farmer | True | True | ITC1 Data Load Tasks QS5 | Muniraju Surappachari | PTP |  |  |  |  |
| 1038 | 1.2.1.28.1 | 1.2.1.28.1 | 5 | Extract File | 2026-04-15 | 2026-04-15 | 2026-04-15 | 2026-04-15 | 100 | 0.125 | As Soon As Possible | Complete | 0h | 0h | Data Migration Team |  | True | PTP_CM28_Purchase_Info_Records |  | Data | 10, 391, 56 | 132 132.13 299.53 299.66 167.53  | 10, 251, 37 | 251 132 Landscape design |
| 1039 | 1.2.1.28.2 | 1.2.1.28.2 | 5 | Pre Load Validation | 2026-04-15 | 2026-04-16 | 2026-04-15 | 2026-04-16 | 100 | 0.25 | As Soon As Possible | Complete | 0h | 0h | Nevin Varkey |  | True | PTP_CM28_Purchase_Info_Records | Sam Houff | PTP | 1040 | 132.13 132.38 303.38 303.63 171.25  | 1038 | 1038 132.125 Extract File |
| 1040 | 1.2.1.28.3 | 1.2.1.28.3 | 5 | Simulate Load | 2026-04-16 | 2026-04-16 | 2026-04-16 | 2026-04-16 | 100 | 0.125 | As Soon As Possible | Complete | 0h | 0h | Data Migration Team |  | True | PTP_CM28_Purchase_Info_Records |  | Data | 1041 | 132.38 132.5 303.63 303.75 171.25  | 1039 | 1039 132.375 Pre Load Validation |
| 1041 | 1.2.1.28.4 | 1.2.1.28.4 | 5 | Error and Defect Mitigation | 2026-04-17 | 2026-04-17 | 2026-04-16 | 2026-04-16 | 100 | 0.25 | Start No Earlier Than | Complete | 0h | 0h | Nevin Varkey |  | True | PTP_CM28_Purchase_Info_Records | Sam Houff | PTP |  | 132.5 132.75 303.75 304 171.25  | 1040 | 1040 132.5 Simulate Load |
| 1042 | 1.2.1.28.5 | 1.2.1.28.5 | 5 | Load | 2026-04-17 | 2026-04-17 | 2026-04-15 | 2026-04-15 | 100 | 0.125 | Start No Earlier Than | Complete | 0h | 0h | Data Migration Team |  | True | PTP_CM28_Purchase_Info_Records |  | Data | 1043 | 0.38 0.5 303.63 303.75 303.25  | 1004 | 1004 0.375 Post Load Validation |
| 1043 | 1.2.1.28.6 | 1.2.1.28.6 | 5 | Post Load Validation | 2026-04-17 | 2026-04-17 | 2026-04-15 | 2026-04-15 | 100 | 0.25 | Start No Earlier Than | Complete | 0h | 0h | Nevin Varkey |  | True | PTP_CM28_Purchase_Info_Records | Sam Houff | PTP |  | 0.5 0.75 303.75 304 303.25  | 1042 | 1042 0.5 Load |
| 936 | 1.2.1.29 | 1.2.1.29 | 4 | PTP_CM28_Purchase_Info_Record External Processing | 2026-04-15 | 2026-04-17 | 2026-04-15 | 2026-04-16 | 100 | 1.47 | As Soon As Possible | Complete | 0d | 0d | Muniraju Surappachari; Nevin Varkey; Samuel Houff; Sarasija Ghosh; Surendra Krishna Acharya; Swetha SethumadhavaRao; James Farmer | True | True | ITC1 Data Load Tasks QS5 | Muniraju Surappachari | PTP |  |  |  |  |
| 1044 | 1.2.1.29.1 | 1.2.1.29.1 | 5 | Load File Staged and Posted "Ready" | 2026-04-15 | 2026-04-15 | 2026-04-15 | 2026-04-15 | 100 | 0.0625 | As Soon As Possible | Complete | 0m | 0m | Nevin Varkey |  | True | PTP_CM28_Purchase_Info_Record External Processing |  | PTP | 1045 | 132 132.06 302.88 302.94 170.88  | 10, 251, 37 | 251 132 Landscape design |
| 1045 | 1.2.1.29.2 | 1.2.1.29.2 | 5 | Pre Load Validation | 2026-04-15 | 2026-04-15 | 2026-04-15 | 2026-04-15 | 100 | 0.0625 | As Soon As Possible | Complete | 0m | 0m | Nevin Varkey |  | True | PTP_CM28_Purchase_Info_Record External Processing | Sam Houff | PTP | 1046 | 132.06 132.13 302.94 303 170.88  | 1044 | 1044 132.0625 Load File Staged and Posted "Ready" |
| 1046 | 1.2.1.29.3 | 1.2.1.29.3 | 5 | Simulate Load | 2026-04-16 | 2026-04-16 | 2026-04-15 | 2026-04-16 | 100 | 0.125 | As Soon As Possible | Complete | 0h | 0h | Data Migration Team |  | True | PTP_CM28_Purchase_Info_Record External Processing |  | Data | 1047 | 132.13 132.25 303 303.13 170.88  | 1045 | 1045 132.125 Pre Load Validation |
| 1047 | 1.2.1.29.4 | 1.2.1.29.4 | 5 | Error and Defect Mitigation | 2026-04-16 | 2026-04-16 | 2026-04-16 | 2026-04-16 | 100 | 0.25 | As Soon As Possible | Complete | 0h | 0h | Nevin Varkey |  | True | PTP_CM28_Purchase_Info_Record External Processing | Sam Houff | PTP | 1048 | 132.25 132.5 303.13 303.38 170.88  | 1046 | 1046 132.25 Simulate Load |
| 1048 | 1.2.1.29.5 | 1.2.1.29.5 | 5 | Load | 2026-04-17 | 2026-04-17 | 2026-04-16 | 2026-04-16 | 100 | 0.25 | As Soon As Possible | Complete | 0h | 0h | Data Migration Team |  | True | PTP_CM28_Purchase_Info_Record External Processing |  | Data | 1049 | 132.5 132.75 303.38 303.63 170.88  | 1047 | 1047 132.5 Error and Defect Mitigation |
| 1049 | 1.2.1.29.6 | 1.2.1.29.6 | 5 | Post Load Validation | 2026-04-16 | 2026-04-16 | 2026-04-16 | 2026-04-16 | 100 | 0.375 | As Soon As Possible | Complete | 0h | 0h | Nevin Varkey |  | True | PTP_CM28_Purchase_Info_Record External Processing | Sam Houff | PTP |  | 132.75 133.13 303.63 304 170.88  | 1048 | 1048 132.75 Load |
| 756 | 1.2.1.3 | 1.2.1.3 | 4 | RTR_CM03_Cost Center Hierarchy | 2026-04-06 | 2026-04-07 | 2026-04-06 | 2026-04-07 | 100 | 0.75 | As Soon As Possible | Complete | 0d | 0d | COULD NOT BE DETERMINED | True | True | ITC1 Data Load Tasks QS5 | Brian Wagner |  | 882, 883, 740 |  | 755 |  |
| 783 | 1.2.1.3.1 | 1.2.1.3.1 | 5 | Manual File Staged and Posted "Ready" | 2026-04-06 | 2026-04-06 | 2026-04-06 | 2026-04-06 | 100 | 0.125 | Start No Earlier Than | Complete | 0h | 0h | Kasey Hughes |  | True | RTR_CM03_Cost Center Hierarchy |  | Finance | 786 | 0.78 0.91 297.06 297.19 296.28  | 781 | 781 0.78125 Post Load Validation |
| 786 | 1.2.1.3.2 | 1.2.1.3.2 | 5 | Load | 2026-04-06 | 2026-04-07 | 2026-04-06 | 2026-04-07 | 100 | 0.25 | As Soon As Possible | Complete | 0h | 0h | Kasey Hughes |  | True | RTR_CM03_Cost Center Hierarchy |  | Finance | 787 | 0.91 1.16 297.19 297.44 296.28  | 783 | 783 0.90625 Manual File Staged and Posted "Ready" |
| 787 | 1.2.1.3.3 | 1.2.1.3.3 | 5 | Post Load Validation | 2026-04-07 | 2026-04-07 | 2026-04-07 | 2026-04-07 | 100 | 0.375 | As Soon As Possible | Complete | 0h | 0h | Kasey Hughes |  | True | RTR_CM03_Cost Center Hierarchy | Brian Wagner | Finance | 958, 965 | 1.16 1.53 297.44 297.81 296.28  | 786 | 786 1.15625 Load |
| 937 | 1.2.1.30 | 1.2.1.30 | 4 | PTP_CM28_Purchase_Info_Record Subcontracting and Consignment | 2026-04-15 | 2026-04-16 | 2026-04-15 | 2026-04-16 | 100 | 1.13 | As Soon As Possible | Complete | 0d | 0d | Muniraju Surappachari; Nevin Varkey; Samuel Houff; Sarasija Ghosh; Surendra Krishna Acharya; Swetha SethumadhavaRao; James Farmer | True | True | ITC1 Data Load Tasks QS5 | Muniraju Surappachari | PTP |  |  |  |  |
| 1050 | 1.2.1.30.1 | 1.2.1.30.1 | 5 | Load File Staged and Posted "Ready" | 2026-04-15 | 2026-04-15 | 2026-04-15 | 2026-04-15 | 100 | 0.0625 | As Soon As Possible | Complete | 0m | 0m | Nevin Varkey |  | True | PTP_CM28_Purchase_Info_Record Subcontracting and Consignment |  | PTP | 1051 | 132 132.06 298.38 298.44 166.38  | 10, 251, 37 | 251 132 Landscape design |
| 1051 | 1.2.1.30.2 | 1.2.1.30.2 | 5 | Pre Load Validation | 2026-04-15 | 2026-04-15 | 2026-04-15 | 2026-04-15 | 100 | 0.0625 | As Soon As Possible | Complete | 0m | 0m | Nevin Varkey |  | True | PTP_CM28_Purchase_Info_Record Subcontracting and Consignment | Sam Houff | PTP | 1052 | 132.06 132.13 298.44 298.5 166.38  | 1050 | 1050 132.0625 Load File Staged and Posted "Ready" |
| 1052 | 1.2.1.30.3 | 1.2.1.30.3 | 5 | Simulate Load | 2026-04-15 | 2026-04-16 | 2026-04-15 | 2026-04-16 | 100 | 0.125 | As Soon As Possible | Complete | 0h | 0h | Data Migration Team |  | True | PTP_CM28_Purchase_Info_Record Subcontracting and Consignment |  | Data | 10, 531, 171 | 132.13 132.25 298.5 298.63 166.38  | 1051 | 1051 132.125 Pre Load Validation |
| 1053 | 1.2.1.30.4 | 1.2.1.30.4 | 5 | Error and Defect Mitigation | 2026-04-16 | 2026-04-16 | 2026-04-16 | 2026-04-16 | 100 | 0.25 | As Soon As Possible | Complete | 0h | 0h | Nevin Varkey |  | True | PTP_CM28_Purchase_Info_Record Subcontracting and Consignment | Sam Houff | PTP | 1054 | 132.25 132.5 303.13 303.38 170.88  | 1052 | 1052 132.25 Simulate Load |
| 1054 | 1.2.1.30.5 | 1.2.1.30.5 | 5 | Load | 2026-04-16 | 2026-04-16 | 2026-04-16 | 2026-04-16 | 100 | 0.25 | As Soon As Possible | Complete | 0h | 0h | Data Migration Team |  | True | PTP_CM28_Purchase_Info_Record Subcontracting and Consignment |  | Data | 1055 | 132.5 132.75 303.38 303.63 170.88  | 1053 | 1053 132.5 Error and Defect Mitigation |
| 1055 | 1.2.1.30.6 | 1.2.1.30.6 | 5 | Post Load Validation | 2026-04-16 | 2026-04-16 | 2026-04-16 | 2026-04-16 | 100 | 0.375 | As Soon As Possible | Complete | 0h | 0h | Nevin Varkey |  | True | PTP_CM28_Purchase_Info_Record Subcontracting and Consignment | Sam Houff | PTP |  | 132.75 133.13 303.63 304 170.88  | 1054 | 1054 132.75 Load |
| 694 | 1.2.1.31 | 1.2.1.31 | 4 | PTM_CM31_BOM Conversion | 2026-04-15 | 2026-04-17 | 2026-04-15 | 2026-04-17 | 100 | 2.09 | As Soon As Possible | Complete | 0d | 0d | Brad Meseck; Chip Holder; David Duda; Matt Palastro; Sunil Srinivasa; Aniruddha Sathe; Susan Graham; Eric Heisler; Sam Penrod; Furkan Alko | True | True | ITC1 Data Load Tasks QS5 | Manoj Patel | PTM |  |  |  |  |
| 1056 | 1.2.1.31.1 | 1.2.1.31.1 | 5 | Extract File | 2026-04-15 | 2026-04-16 | 2026-04-15 | 2026-04-16 | 100 | 0.125 | As Soon As Possible | Complete | 0h | 0h | Data Migration Team |  | True | PTM_CM31_BOM Conversion |  | Data | 10, 571, 62 | 132.13 132.25 299.66 299.78 167.53  | 1038 | 1038 132.125 Extract File |
| 1057 | 1.2.1.31.2 | 1.2.1.31.2 | 5 | Pre Load Validation | 2026-04-16 | 2026-04-16 | 2026-04-16 | 2026-04-16 | 100 | 0.0625 | As Soon As Possible | Complete | 0h | 0h | Brad Meseck |  | True | PTM_CM31_BOM Conversion | Matt Palastro, Dave Duda | PTM | 1058 | 132.25 132.31 299.78 299.84 167.53  | 1056 | 1056 132.25 Extract File |
| 1058 | 1.2.1.31.3 | 1.2.1.31.3 | 5 | Simulate Load | 2026-04-16 | 2026-04-17 | 2026-04-16 | 2026-04-16 | 100 | 1.9375 | Finish No Earlier Than | Complete | 0h | 0h | Data Migration Team |  | True | PTM_CM31_BOM Conversion |  | Data | 1059 | 132.31 134.25 299.84 301.78 167.53  | 1057 | 1057 132.3125 Pre Load Validation |
| 1059 | 1.2.1.31.4 | 1.2.1.31.4 | 5 | Error and Defect Mitigation | 2026-04-17 | 2026-04-17 | 2026-04-16 | 2026-04-16 | 100 | 0.0625 | Finish No Earlier Than | Complete | 0h | 0h | Brad Meseck |  | True | PTM_CM31_BOM Conversion | Matt Palastro, Dave Duda | PTM | 1060 | 134.25 134.31 301.78 301.84 167.53  | 1058 | 1058 134.25 Simulate Load |
| 1060 | 1-Apr | 1.2.1.31.5 | 5 | Load | 2026-04-17 | 2026-04-17 | 2026-04-16 | 2026-04-16 | 100 | 0.125 | As Soon As Possible | Complete | 0h | 0h | Data Migration Team |  | True | PTM_CM31_BOM Conversion |  | Data | 1061 | 134.31 134.44 301.84 301.97 167.53  | 1059 | 1059 134.3125 Error and Defect Mitigation |
| 1061 | 1.2.1.31.6 | 1.2.1.31.6 | 5 | Post Load Validation | 2026-04-17 | 2026-04-17 | 2026-04-16 | 2026-04-17 | 100 | 0.0625 | Finish No Earlier Than | Complete | 0h | 0h | Brad Meseck |  | True | PTM_CM31_BOM Conversion | Matt Palastro, Dave Duda | PTM | 1063 | 134.44 134.5 301.97 302.03 167.53  | 1060 | 1060 134.4375 Load |
| 695 | 1.2.1.32 | 1.2.1.32 | 4 | PTM_CM40_Work Center Conversion | 2026-04-16 | 2026-04-16 | 2026-04-16 | 2026-04-20 | 100 | 0.38 | As Soon As Possible | Complete | 0d | 0d | Brad Meseck; Chip Holder; David Duda; Matt Palastro; Sunil Srinivasa; Aniruddha Sathe; Susan Graham; Eric Heisler; Sam Penrod; Furkan Alko | True | True | ITC1 Data Load Tasks QS5 | Manoj Patel | PTM |  |  |  |  |
| 1062 | 1.2.1.32.1 | 1.2.1.32.1 | 5 | Extract File | 2026-04-16 | 2026-04-16 | 2026-04-16 | 2026-04-16 | 100 | 0.125 | As Soon As Possible | Complete | 0h | 0h | Data Migration Team |  | True | PTM_CM40_Work Center Conversion |  | Data | 1075 | 132.25 132.38 300.69 300.81 168.44  | 1056 | 1056 132.25 Extract File |
| 1063 | 1.2.1.32.2 | 1.2.1.32.2 | 5 | Pre Load Validation | 2026-04-16 | 2026-04-16 | 2026-04-17 | 2026-04-17 | 100 | 0.25 | As Soon As Possible | Complete | 0h | 0h | Brad Meseck |  | True | PTM_CM40_Work Center Conversion | Matt Palastro, Dave Duda | PTM | 1064 | 134.5 134.75 302.03 302.28 167.53  | 1061 | 1061 134.5 Post Load Validation |
| 1064 | 1.2.1.32.3 | 1.2.1.32.3 | 5 | Simulate Load | 2026-04-16 | 2026-04-16 | 2026-04-17 | 2026-04-17 | 100 | 0.03125 | As Soon As Possible | Complete | 0h | 0h | Data Migration Team |  | True | PTM_CM40_Work Center Conversion |  | Data | 1065 | 134.75 134.78 302.28 302.31 167.53  | 1063 | 1063 134.75 Pre Load Validation |
| 1065 | 1.2.1.32.4 | 1.2.1.32.4 | 5 | Error and Defect Mitigation | 2026-04-16 | 2026-04-16 | 2026-04-17 | 2026-04-17 | 100 | 0.0625 | As Soon As Possible | Complete | 0h | 0h | Brad Meseck |  | True | PTM_CM40_Work Center Conversion | Matt Palastro, Dave Duda | PTM | 1066 | 134.78 134.84 302.31 302.38 167.53  | 1064 | 1064 134.78125 Simulate Load |
| 1066 | 1.2.1.32.5 | 1.2.1.32.5 | 5 | Load | 2026-04-16 | 2026-04-16 | 2026-04-17 | 2026-04-17 | 100 | 0.125 | As Soon As Possible | Complete | 0h | 0h | Data Migration Team |  | True | PTM_CM40_Work Center Conversion |  | Data | 1067 | 134.84 134.97 302.38 302.5 167.53  | 1065 | 1065 134.84375 Error and Defect Mitigation |

| uid | wbs | outlineNumber | outlineLevel | name | start | finish | baselineStart | baselineFinish | percentComplete | durationDays | constraintType | status | totalSlackRaw | freeSlackRaw | resourceNames | summary | active | summaryName | businessValidationOwner | workstream | successors | cpm | predecessors | drivers |
| --- | --- | --- | --- | --- | --- | --- | --- | --- | --- | --- | --- | --- | --- | --- | --- | --- | --- | --- | --- | --- | --- | --- | --- | --- |
| 1067 | 1.2.1.32.6 | 1.2.1.32.6 | 5 | Post Load Validation | 2026-04-16 | 2026-04-16 | 2026-04-17 | 2026-04-20 | 100 | 0.25 | As Soon As Possible | Complete | 0h | 0h | Brad Meseck |  | True | PTM_CM40_Work Center Conversion | Matt Palastro, Dave Duda | PTM | 1076 | 134.97 135.22 302.5 302.75 167.53  | 1066 | 1066 134.96875 Load |
| 707 | 1.2.1.33 | 1.2.1.33 | 4 | PTM_CM38_Routing Conversion | 2026-04-16 | 2026-04-20 | 2026-04-16 | 2026-04-21 | 100 | 2.75 | As Soon As Possible | Complete | 0d | 0d | Brad Meseck; Chip Holder; David Duda; Matt Palastro; Sunil Srinivasa; Aniruddha Sathe; Susan Graham; Eric Heisler; Sam Penrod; Furkan Alko | True | True | ITC1 Data Load Tasks QS5 | Manoj Patel | PTM |  |  |  |  |
| 1075 | 1.2.1.33.1 | 1.2.1.33.1 | 5 | Extract File | 2026-04-16 | 2026-04-16 | 2026-04-16 | 2026-04-16 | 100 | 0.125 | As Soon As Possible | Complete | 0h | 0h | Data Migration Team |  | True | PTM_CM38_Routing Conversion |  | Data | 1081 | 132.38 132.5 300.81 300.94 168.44  | 1062 | 1062 132.375 Extract File |
| 1076 | 1.2.1.33.2 | 1.2.1.33.2 | 5 | Pre Load Validation | 2026-04-16 | 2026-04-16 | 2026-04-20 | 2026-04-20 | 100 | 0.25 | As Soon As Possible | Complete | 0h | 0h | Brad Meseck |  | True | PTM_CM38_Routing Conversion | Matt Palastro, Dave Duda | PTM | 1077 | 135.22 135.47 302.75 303 167.53  | 1067 | 1067 135.21875 Post Load Validation |
| 1077 | 1.2.1.33.3 | 1.2.1.33.3 | 5 | Simulate Load | 2026-04-20 | 2026-04-20 | 2026-04-20 | 2026-04-20 | 100 | 0.25 | Finish No Earlier Than | Complete | 0h | 0h | Data Migration Team |  | True | PTM_CM38_Routing Conversion |  | Data | 1078 | 135.47 135.72 303 303.25 167.53  | 1076 | 1076 135.46875 Pre Load Validation |
| 1078 | 1.2.1.33.4 | 1.2.1.33.4 | 5 | Error and Defect Mitigation | 2026-04-20 | 2026-04-20 | 2026-04-20 | 2026-04-20 | 100 | 0.375 | Start No Earlier Than | Complete | 0h | 0h | Brad Meseck |  | True | PTM_CM38_Routing Conversion | Matt Palastro, Dave Duda | PTM | 1079 | 135.72 136.09 303.25 303.63 167.53  | 1077 | 1077 135.71875 Simulate Load |
| 1079 | 1.2.1.33.5 | 1.2.1.33.5 | 5 | Load | 2026-04-20 | 2026-04-20 | 2026-04-20 | 2026-04-20 | 100 | 0.125 | Start No Earlier Than | Complete | 0h | 0h | Data Migration Team |  | True | PTM_CM38_Routing Conversion |  | Data | 1080 | 136.09 136.22 303.63 303.75 167.53  | 1078 | 1078 136.09375 Error and Defect Mitigation |
| 1080 | 1.2.1.33.6 | 1.2.1.33.6 | 5 | Post Load Validation | 2026-04-20 | 2026-04-20 | 2026-04-20 | 2026-04-21 | 100 | 0.25 | Start No Earlier Than | Complete | 0h | 0h | Brad Meseck |  | True | PTM_CM38_Routing Conversion | Matt Palastro, Dave Duda | PTM |  | 136.22 136.47 303.75 304 167.53  | 1079 | 1079 136.21875 Load |
| 709 | 1.2.1.34 | 1.2.1.34 | 4 | PTM_CM36_Production Version Conversion | 2026-04-20 | 2026-04-21 | 2026-04-16 | 2026-04-17 | 100 | 1.13 | Start No Earlier Than | Complete | 0d | 0d | Brad Meseck; Chip Holder; David Duda; Matt Palastro; Sunil Srinivasa; Aniruddha Sathe; Susan Graham; Eric Heisler; Sam Penrod; Furkan Alko | True | True | ITC1 Data Load Tasks QS5 | Brad Meseck | PTM |  |  |  |  |
| 1081 | 1.2.1.34.1 | 1.2.1.34.1 | 5 | Load File Staged and Posted "Ready" | 2026-04-20 | 2026-04-20 | 2026-04-16 | 2026-04-16 | 100 | 0.0625 | Start No Earlier Than | Complete | 0m | 0m | Brad Meseck |  | True | PTM_CM36_Production Version Conversion |  | PTM | 10, 821, 127 | 132.5 132.56 300.94 301 168.44  | 1075 | 1075 132.5 Extract File |
| 1082 | 1.2.1.34.2 | 1.2.1.34.2 | 5 | Pre Load Validation | 2026-04-20 | 2026-04-20 | 2026-04-16 | 2026-04-16 | 100 | 0.0625 | As Soon As Possible | Complete | 0m | 0m | Brad Meseck |  | True | PTM_CM36_Production Version Conversion | Matt Palastro, Dave Duda | PTM | 1083 | 132.56 132.63 301 301.06 168.44  | 1081 | 1081 132.5625 Load File Staged and Posted "Ready" |
| 1083 | 1.2.1.34.3 | 1.2.1.34.3 | 5 | Simulate Load | 2026-04-20 | 2026-04-20 | 2026-04-16 | 2026-04-16 | 100 | 0.125 | As Soon As Possible | Complete | 0h | 0h | Data Migration Team |  | True | PTM_CM36_Production Version Conversion |  | Data | 1084 | 132.63 132.75 301.06 301.19 168.44  | 1082 | 1082 132.625 Pre Load Validation |
| 1084 | 1.2.1.34.4 | 1.2.1.34.4 | 5 | Error and Defect Mitigation | 2026-04-20 | 2026-04-20 | 2026-04-16 | 2026-04-16 | 100 | 0.25 | As Soon As Possible | Complete | 0h | 0h | Brad Meseck |  | True | PTM_CM36_Production Version Conversion | Matt Palastro, Dave Duda | PTM | 1085 | 132.75 133 301.19 301.44 168.44  | 1083 | 1083 132.75 Simulate Load |
| 1085 | 1.2.1.34.5 | 1.2.1.34.5 | 5 | Load | 2026-04-20 | 2026-04-20 | 2026-04-16 | 2026-04-17 | 100 | 0.25 | As Soon As Possible | Complete | 0h | 0h | Data Migration Team |  | True | PTM_CM36_Production Version Conversion |  | Data | 1086 | 133 133.25 301.44 301.69 168.44  | 1084 | 1084 133 Error and Defect Mitigation |
| 1086 | 1.2.1.34.6 | 1.2.1.34.6 | 5 | Post Load Validation | 2026-04-20 | 2026-04-21 | 2026-04-17 | 2026-04-17 | 100 | 0.375 | Finish No Earlier Than | Complete | 0h | 0h | Brad Meseck |  | True | PTM_CM36_Production Version Conversion | Matt Palastro, Dave Duda | PTM | 1088 | 133.25 133.63 301.69 302.06 168.44  | 1085 | 1085 133.25 Load |
| 710 | 1.2.1.35 | 1.2.1.35 | 4 | PTM_CM35_Inspection Plan | 2026-04-21 | 2026-04-22 | 2026-04-17 | 2026-04-20 | 100 | 1.13 | As Soon As Possible | Complete | 0d | 0d | Brad Meseck; Chip Holder; David Duda; Matt Palastro; Sunil Srinivasa; Aniruddha Sathe; Susan Graham; Eric Heisler; Sam Penrod; Furkan Alko | True | True | ITC1 Data Load Tasks QS5 | Brad Meseck | PTM |  |  |  |  |
| 1088 | 1.2.1.35.1 | 1.2.1.35.1 | 5 | Load File Staged and Posted "Ready" | 2026-04-21 | 2026-04-21 | 2026-04-17 | 2026-04-17 | 100 | 0.0625 | As Soon As Possible | Complete | 0m | 0m | Brad Meseck |  | True | PTM_CM35_Inspection Plan |  | PTM | 10, 891, 196 | 133.63 133.69 302.06 302.13 168.44  | 1086 | 1086 133.625 Post Load Validation |
| 1089 | 1.2.1.35.2 | 1.2.1.35.2 | 5 | Pre Load Validation | 2026-04-21 | 2026-04-21 | 2026-04-17 | 2026-04-17 | 100 | 0.0625 | As Soon As Possible | Complete | 0m | 0m | Brad Meseck |  | True | PTM_CM35_Inspection Plan | Matt Palastro, Dave Duda | PTM | 1090 | 133.69 133.75 302.94 303 169.25  | 1088 | 1088 133.6875 Load File Staged and Posted "Ready" |
| 1090 | 1.2.1.35.3 | 1.2.1.35.3 | 5 | Simulate Load | 2026-04-21 | 2026-04-21 | 2026-04-17 | 2026-04-17 | 100 | 0.125 | As Soon As Possible | Complete | 0h | 0h | Data Migration Team |  | True | PTM_CM35_Inspection Plan |  | Data | 1091 | 133.75 133.88 303 303.13 169.25  | 1089 | 1089 133.75 Pre Load Validation |
| 1091 | 1.2.1.35.4 | 1.2.1.35.4 | 5 | Error and Defect Mitigation | 2026-04-21 | 2026-04-21 | 2026-04-17 | 2026-04-17 | 100 | 0.25 | As Soon As Possible | Complete | 0h | 0h | Brad Meseck |  | True | PTM_CM35_Inspection Plan | Matt Palastro, Dave Duda | PTM | 1092 | 133.88 134.13 303.13 303.38 169.25  | 1090 | 1090 133.875 Simulate Load |
| 1092 | 1.2.1.35.5 | 1.2.1.35.5 | 5 | Load | 2026-04-21 | 2026-04-21 | 2026-04-17 | 2026-04-20 | 100 | 0.25 | Finish No Earlier Than | Complete | 0h | 0h | Data Migration Team |  | True | PTM_CM35_Inspection Plan |  | Data | 1093 | 134.13 134.38 303.38 303.63 169.25  | 1091 | 1091 134.125 Error and Defect Mitigation |
| 1093 | 1.2.1.35.6 | 1.2.1.35.6 | 5 | Post Load Validation | 2026-04-21 | 2026-04-22 | 2026-04-20 | 2026-04-20 | 100 | 0.375 | As Soon As Possible | Complete | 0h | 0h | Brad Meseck |  | True | PTM_CM35_Inspection Plan | Matt Palastro, Dave Duda | PTM |  | 134.38 134.75 303.63 304 169.25  | 1092 | 1092 134.375 Load |
| 1194 | 1.2.1.36 | 1.2.1.36 | 4 | PTM_CM48_Equipment_Master_Serial Numbers | 2026-04-21 | 2026-04-22 | 2026-04-17 | 2026-04-20 | 100 | 1.13 | As Soon As Possible | Complete | 0d | 0d | Brad Meseck; Chip Holder; David Duda; Matt Palastro; Sunil Srinivasa; Aniruddha Sathe; Susan Graham; Eric Heisler; Sam Penrod; Furkan Alko | True | True | ITC1 Data Load Tasks QS5 | Brad Meseck | PTM |  |  |  |  |
| 1196 | 1.2.1.36.1 | 1.2.1.36.1 | 5 | Load File Staged and Posted "Ready" | 2026-04-21 | 2026-04-21 | 2026-04-17 | 2026-04-17 | 100 | 0.0625 | As Soon As Possible | Complete | 0m | 0m | Brad Meseck |  | True | PTM_CM48_Equipment_Master_Serial Numbers |  | PTM | 1197 | 133.69 133.75 302.13 302.19 168.44  | 1088 | 1088 133.6875 Load File Staged and Posted "Ready" |
| 1197 | 1.2.1.36.2 | 1.2.1.36.2 | 5 | Pre Load Validation | 2026-04-21 | 2026-04-21 | 2026-04-17 | 2026-04-17 | 100 | 0.0625 | As Soon As Possible | Complete | 0m | 0m | Brad Meseck |  | True | PTM_CM48_Equipment_Master_Serial Numbers | Matt Palastro, Dave Duda | PTM | 1198 | 133.75 133.81 302.19 302.25 168.44  | 1196 | 1196 133.75 Load File Staged and Posted "Ready" |
| 1198 | 1.2.1.36.3 | 1.2.1.36.3 | 5 | Simulate Load | 2026-04-21 | 2026-04-21 | 2026-04-17 | 2026-04-17 | 100 | 0.125 | As Soon As Possible | Complete | 0h | 0h | Data Migration Team |  | True | PTM_CM48_Equipment_Master_Serial Numbers |  | Data | 1199 | 133.81 133.94 302.25 302.38 168.44  | 1197 | 1197 133.8125 Pre Load Validation |
| 1199 | 1.2.1.36.4 | 1.2.1.36.4 | 5 | Error and Defect Mitigation | 2026-04-21 | 2026-04-21 | 2026-04-17 | 2026-04-17 | 100 | 0.25 | As Soon As Possible | Complete | 0h | 0h | Brad Meseck |  | True | PTM_CM48_Equipment_Master_Serial Numbers | Matt Palastro, Dave Duda | PTM | 1200 | 133.94 134.19 302.38 302.63 168.44  | 1198 | 1198 133.9375 Simulate Load |
| 1200 | 1.2.1.36.5 | 1.2.1.36.5 | 5 | Load | 2026-04-21 | 2026-04-21 | 2026-04-17 | 2026-04-20 | 100 | 0.25 | As Soon As Possible | Complete | 0h | 0h | Data Migration Team |  | True | PTM_CM48_Equipment_Master_Serial Numbers |  | Data | 1201 | 134.19 134.44 302.63 302.88 168.44  | 1199 | 1199 134.1875 Error and Defect Mitigation |
| 1201 | 1.2.1.36.6 | 1.2.1.36.6 | 5 | Post Load Validation | 2026-04-21 | 2026-04-22 | 2026-04-20 | 2026-04-20 | 100 | 0.375 | As Soon As Possible | Complete | 0h | 0h | Brad Meseck |  | True | PTM_CM48_Equipment_Master_Serial Numbers | Matt Palastro, Dave Duda | PTM | 1202 | 134.44 134.81 302.88 303.25 168.44  | 1200 | 1200 134.4375 Load |
| 1195 | 1.2.1.37 | 1.2.1.37 | 4 | PTM_CM48_Equipment_Master_Service | 2026-04-21 | 2026-04-23 | 2026-04-20 | 2026-04-21 | 100 | 2.06 | As Soon As Possible | Complete | 0d | 0d | Brad Meseck; Chip Holder; David Duda; Matt Palastro; Sunil Srinivasa; Aniruddha Sathe; Susan Graham; Eric Heisler; Sam Penrod; Furkan Alko | True | True | ITC1 Data Load Tasks QS5 | Brad Meseck | PTM |  |  |  |  |
| 1202 | 1.2.1.37.1 | 1.2.1.37.1 | 5 | Load File Staged and Posted "Ready" | 2026-04-22 | 2026-04-22 | 2026-04-20 | 2026-04-20 | 100 | 0.0625 | As Soon As Possible | Complete | 0m | 0m | Brad Meseck |  | True | PTM_CM48_Equipment_Master_Service |  | PTM | 1203 | 134.81 134.88 303.25 303.31 168.44  | 1201 | 1201 134.8125 Post Load Validation |
| 1203 | 1.2.1.37.2 | 1.2.1.37.2 | 5 | Pre Load Validation | 2026-04-22 | 2026-04-22 | 2026-04-20 | 2026-04-20 | 100 | 0.0625 | As Soon As Possible | Complete | 0m | 0m | Brad Meseck |  | True | PTM_CM48_Equipment_Master_Service | Matt Palastro, Dave Duda | PTM | 1204 | 134.88 134.94 303.31 303.38 168.44  | 1202 | 1202 134.875 Load File Staged and Posted "Ready" |
| 1204 | 1.2.1.37.3 | 1.2.1.37.3 | 5 | Simulate Load | 2026-04-22 | 2026-04-22 | 2026-04-20 | 2026-04-20 | 100 | 0.125 | As Soon As Possible | Complete | 0h | 0h | Data Migration Team |  | True | PTM_CM48_Equipment_Master_Service |  | Data | 1205 | 134.94 135.06 303.38 303.5 168.44  | 1203 | 1203 134.9375 Pre Load Validation |
| 1205 | 1.2.1.37.4 | 1.2.1.37.4 | 5 | Error and Defect Mitigation | 2026-04-22 | 2026-04-22 | 2026-04-20 | 2026-04-21 | 100 | 0.25 | As Soon As Possible | Complete | 0h | 0h | Brad Meseck |  | True | PTM_CM48_Equipment_Master_Service | Matt Palastro, Dave Duda | PTM | 1206 | 135.06 135.31 303.5 303.75 168.44  | 1204 | 1204 135.0625 Simulate Load |
| 1206 | 1.2.1.37.5 | 1.2.1.37.5 | 5 | Load | 2026-04-22 | 2026-04-23 | 2026-04-21 | 2026-04-21 | 100 | 0.25 | Finish No Earlier Than | Complete | 0h | 0h | Data Migration Team |  | True | PTM_CM48_Equipment_Master_Service |  | Data |  | 135.31 135.56 303.75 304 168.44  | 1205 | 1205 135.3125 Error and Defect Mitigation |
| 1207 | 1.2.1.37.6 | 1.2.1.37.6 | 5 | Post Load Validation | 2026-04-21 | 2026-04-21 | 2026-04-21 | 2026-04-21 | 100 | 0.375 | Start No Earlier Than | Complete | 0h | 0h | Brad Meseck |  | True | PTM_CM48_Equipment_Master_Service | Matt Palastro, Dave Duda | PTM |  | 0 0.38 303.63 304 303.63  |  |  |
| 938 | 1.2.1.38 | 1.2.1.38 | 4 | VC_Object Dependencies | 2026-04-06 | 2026-04-06 | 2026-04-06 | 2026-04-06 | 100 | 0.63 | As Soon As Possible | Complete | 0d | 0d | COULD NOT BE DETERMINED | True | True | ITC1 Data Load Tasks QS5 | Chip Holder |  |  |  |  |  |
| 1151 | 1.2.1.38.1 | 1.2.1.38.1 | 5 | Run ALE Transaction to QS5 from DS4 130 | 2026-04-06 | 2026-04-06 | 2026-04-06 | 2026-04-06 | 100 | 0.25 | As Soon As Possible | Complete | 0h | 0h | Eric Heisler |  | True | VC_Object Dependencies |  | PTM | 1153 | 0.03 0.28 302.13 302.38 302.09  | 956 | 956 0.03125 PMO Authorization to Start Data Loads |
| 1153 | 1.2.1.38.2 | 1.2.1.38.2 | 5 | Post Load Validation | 2026-04-06 | 2026-04-06 | 2026-04-06 | 2026-04-06 | 100 | 0.375 | As Soon As Possible | Complete | 0h | 0h | Eric Heisler |  | True | VC_Object Dependencies | Matt Palastro, Dave Duda | PTM | 1154 | 0.28 0.66 302.38 302.75 302.09  | 1151 | 1151 0.28125 Run ALE Transaction to QS5 from DS4 130 |
| 939 | 1.2.1.39 | 1.2.1.39 | 4 | VC_Characteristics | 2026-04-06 | 2026-04-07 | 2026-04-06 | 2026-04-07 | 100 | 0.63 | As Soon As Possible | Complete | 0d | 0d | COULD NOT BE DETERMINED | True | True | ITC1 Data Load Tasks QS5 | Chip Holder |  |  |  |  |  |
| 1154 | 1.2.1.39.1 | 1.2.1.39.1 | 5 | Run ALE Transaction to QS5 from DS4 130 | 2026-04-06 | 2026-04-06 | 2026-04-06 | 2026-04-06 | 100 | 0.25 | As Soon As Possible | Complete | 0h | 0h | Eric Heisler |  | True | VC_Characteristics |  | PTM | 1155 | 0.66 0.91 302.75 303 302.09  | 1153 | 1153 0.65625 Post Load Validation |
| 1155 | 1.2.1.39.2 | 1.2.1.39.2 | 5 | Post Load Validation | 2026-04-06 | 2026-04-07 | 2026-04-06 | 2026-04-07 | 100 | 0.375 | As Soon As Possible | Complete | 0h | 0h | Eric Heisler |  | True | VC_Characteristics | Matt Palastro, Dave Duda | PTM | 1156 | 0.91 1.28 303 303.38 302.09  | 1154 | 1154 0.90625 Run ALE Transaction to QS5 from DS4 130 |
| 740 | 1.2.1.4 | 1.2.1.4 | 4 | RTR_CM01_GL_Account_Master to CC 1000 | 2026-04-07 | 2026-04-09 | 2026-04-07 | 2026-04-09 | 100 | 1.81 | As Soon As Possible | Complete | 0d | 0d | COULD NOT BE DETERMINED | True | True | ITC1 Data Load Tasks QS5 | Brian Wagner |  | 882, 759 |  | 756 |  |
| 958 | 1.2.1.4.1 | 1.2.1.4.1 | 5 | Load File Staged and Posted "Ready" | 2026-04-07 | 2026-04-07 | 2026-04-07 | 2026-04-07 | 100 | 0.125 | Start No Earlier Than | Complete | 0h | 0h | Kasey Hughes |  | True | RTR_CM01_GL_Account_Master to CC 1000 |  | Finance | 773 | 1.53 1.66 297.81 297.94 296.28  | 787 | 787 1.53125 Post Load Validation |
| 773 | 1.2.1.4.2 | 1.2.1.4.2 | 5 | Pre Load Validation | 2026-04-07 | 2026-04-07 | 2026-04-07 | 2026-04-07 | 100 | 0.25 | As Soon As Possible | Complete | 0h | 0h | Kasey Hughes |  | True | RTR_CM01_GL_Account_Master to CC 1000 | Brian Wagner | Finance | 774 | 1.66 1.91 297.94 298.19 296.28  | 958 | 958 1.65625 Load File Staged and Posted "Ready" |
| 774 | 1.2.1.4.3 | 1.2.1.4.3 | 5 | Simulate Load | 2026-04-07 | 2026-04-08 | 2026-04-07 | 2026-04-08 | 100 | 0.75 | As Soon As Possible | Complete | 0h | 0h | Data Migration Team |  | True | RTR_CM01_GL_Account_Master to CC 1000 |  | Data | 775 | 1.91 2.66 298.19 298.94 296.28  | 773 | 773 1.90625 Pre Load Validation |
| 775 | 1.2.1.4.4 | 1.2.1.4.4 | 5 | Error and Defect Mitigation | 2026-04-08 | 2026-04-08 | 2026-04-08 | 2026-04-08 | 100 | 0.25 | As Soon As Possible | Complete | 0h | 0h | Kasey Hughes |  | True | RTR_CM01_GL_Account_Master to CC 1000 | Brian Wagner | Finance | 795 | 2.66 2.91 298.94 299.19 296.28  | 774 | 774 2.65625 Simulate Load |
| 795 | 1.2.1.4.5 | 1.2.1.4.5 | 5 | Load | 2026-04-08 | 2026-04-08 | 2026-04-08 | 2026-04-08 | 100 | 0.125 | As Soon As Possible | Complete | 0h | 0h | Data Migration Team |  | True | RTR_CM01_GL_Account_Master to CC 1000 |  | Data | 776 | 2.91 3.03 299.19 299.31 296.28  | 775 | 775 2.90625 Error and Defect Mitigation |
| 776 | 1.2.1.4.6 | 1.2.1.4.6 | 5 | Post Load Validation | 2026-04-08 | 2026-04-08 | 2026-04-08 | 2026-04-08 | 100 | 0.25 | As Soon As Possible | Complete | 0h | 0h | Kasey Hughes |  | True | RTR_CM01_GL_Account_Master to CC 1000 | Brian Wagner | Finance | 8, 87, 898, 148, 231, 240 | 3.03 3.28 299.31 299.56 296.28  | 795 | 795 3.03125 Load |
| 1243 | 1.2.1.4.7 | 1.2.1.4.7 | 5 | Extend GL to all Company Codes | 2026-04-08 | 2026-04-09 | 2026-04-08 | 2026-04-09 | 100 | 0.25 | As Soon As Possible | Complete | 0h | 0h | Kasey Hughes |  | True | RTR_CM01_GL_Account_Master to CC 1000 | Brian Wagner | Finance | 1244 | 3.28 3.53 303.5 303.75 300.22  | 776 | 776 3.28125 Post Load Validation |
| 1244 | 1.2.1.4.8 | 1.2.1.4.8 | 5 | Post GL Extention Validation | 2026-04-09 | 2026-04-09 | 2026-04-09 | 2026-04-09 | 100 | 0.25 | As Soon As Possible | Complete | 0h | 0h | COULD NOT BE DETERMINED |  | True | RTR_CM01_GL_Account_Master to CC 1000 | Brian Wagner |  | 819, 883 | 3.53 3.78 303.75 304 300.22  | 1243 | 1243 3.53125 Extend GL to all Company Codes |
| 940 | 1.2.1.40 | 1.2.1.40 | 4 | VC_Classes | 2026-04-07 | 2026-04-07 | 2026-04-07 | 2026-04-07 | 100 | 0.63 | As Soon As Possible | Complete | 0d | 0d | COULD NOT BE DETERMINED | True | True | ITC1 Data Load Tasks QS5 | Chip Holder |  |  |  |  |  |
| 1156 | 1.2.1.40.1 | 1.2.1.40.1 | 5 | Run ALE Transaction to QS5 from DS4 130 | 2026-04-07 | 2026-04-07 | 2026-04-07 | 2026-04-07 | 100 | 0.25 | As Soon As Possible | Complete | 0h | 0h | Eric Heisler |  | True | VC_Classes |  | PTM | 1157 | 1.28 1.53 303.38 303.63 302.09  | 1155 | 1155 1.28125 Post Load Validation |
| 1157 | 1.2.1.40.2 | 1.2.1.40.2 | 5 | Post Load Validation | 2026-04-07 | 2026-04-07 | 2026-04-07 | 2026-04-07 | 100 | 0.375 | As Soon As Possible | Complete | 0h | 0h | Eric Heisler |  | True | VC_Classes | Matt Palastro, Dave Duda | PTM | 1160 | 1.53 1.91 303.63 304 302.09  | 1156 | 1156 1.53125 Run ALE Transaction to QS5 from DS4 130 |
| 941 | 1.2.1.41 | 1.2.1.41 | 4 | VC_Classification (Class Type 200) | 2026-04-15 | 2026-04-16 | 2026-04-15 | 2026-04-16 | 100 | 0.63 | As Soon As Possible | Complete | 0d | 0d | COULD NOT BE DETERMINED | True | True | ITC1 Data Load Tasks QS5 | Chip Holder |  |  |  |  |  |
| 1158 | 1.2.1.41.1 | 1.2.1.41.1 | 5 | Run ALE Transaction to QS5 from DS4 130 | 2026-04-15 | 2026-04-16 | 2026-04-15 | 2026-04-16 | 100 | 0.25 | As Soon As Possible | Complete | 0h | 0h | Eric Heisler |  | True | VC_Classification (Class Type 200) |  | PTM | 1159 | 2.69 2.94 303.38 303.63 300.69  | 1037 | 1037 2.6875 Post Load Validation |
| 1159 | 1.2.1.41.2 | 1.2.1.41.2 | 5 | Post Load Validation | 2026-04-16 | 2026-04-16 | 2026-04-16 | 2026-04-16 | 100 | 0.375 | As Soon As Possible | Complete | 0h | 0h | Eric Heisler |  | True | VC_Classification (Class Type 200) | Matt Palastro, Dave Duda | PTM |  | 2.94 3.31 303.63 304 300.69  | 1158 | 1158 2.9375 Run ALE Transaction to QS5 from DS4 130 |
| 942 | 1.2.1.42 | 1.2.1.42 | 4 | VC_Dependency Nets | 2026-04-15 | 2026-04-16 | 2026-04-15 | 2026-04-16 | 100 | 0.63 | As Soon As Possible | Complete | 0d | 0d | COULD NOT BE DETERMINED | True | True | ITC1 Data Load Tasks QS5 | Chip Holder |  |  |  |  |  |
| 1160 | 1.2.1.42.1 | 1.2.1.42.1 | 5 | Run ALE Transaction to QS5 from DS4 130 | 2026-04-15 | 2026-04-16 | 2026-04-15 | 2026-04-16 | 100 | 0.25 | As Soon As Possible | Complete | 0h | 0h | Eric Heisler |  | True | VC_Dependency Nets |  | PTM | 1161 | 0 0.25 303.38 303.63 303.38  | 1, 157, 749 |  |
| 1161 | 1.2.1.42.2 | 1.2.1.42.2 | 5 | Post Load Validation | 2026-04-16 | 2026-04-16 | 2026-04-16 | 2026-04-16 | 100 | 0.375 | As Soon As Possible | Complete | 0h | 0h | Eric Heisler |  | True | VC_Dependency Nets | Matt Palastro, Dave Duda | PTM |  | 0.25 0.63 303.63 304 303.38  | 1160 | 1160 0.25 Run ALE Transaction to QS5 from DS4 130 |
| 943 | 1.2.1.43 | 1.2.1.43 | 4 | VC_Configuration Profiles | 2026-04-15 | 2026-04-16 | 2026-04-15 | 2026-04-16 | 100 | 0.63 | As Soon As Possible | Complete | 0d | 0d | COULD NOT BE DETERMINED | True | True | ITC1 Data Load Tasks QS5 | Chip Holder |  |  |  |  |  |
| 1162 | 1.2.1.43.1 | 1.2.1.43.1 | 5 | Run ALE Transaction to QS5 from DS4 130 | 2026-04-15 | 2026-04-16 | 2026-04-15 | 2026-04-16 | 100 | 0.25 | As Soon As Possible | Complete | 0h | 0h | Eric Heisler |  | True | VC_Configuration Profiles |  | PTM | 1163 | 0 0.25 301.41 301.66 301.41  | 749 |  |
| 1163 | 1.2.1.43.2 | 1.2.1.43.2 | 5 | Post Load Validation | 2026-04-16 | 2026-04-16 | 2026-04-16 | 2026-04-16 | 100 | 0.375 | As Soon As Possible | Complete | 0h | 0h | Eric Heisler |  | True | VC_Configuration Profiles | Matt Palastro, Dave Duda | PTM | 11, 681, 164 | 0.25 0.63 301.66 302.03 301.41  | 1162 | 1162 0.25 Run ALE Transaction to QS5 from DS4 130 |
| 944 | 1.2.1.44 | 1.2.1.44 | 4 | VC_Variant Tables | 2026-04-16 | 2026-04-17 | 2026-04-16 | 2026-04-17 | 100 | 0.63 | As Soon As Possible | Complete | 0d | 0d | COULD NOT BE DETERMINED | True | True | ITC1 Data Load Tasks QS5 | Chip Holder |  |  |  |  |  |
| 1164 | 1.2.1.44.1 | 1.2.1.44.1 | 5 | Run ALE Transaction to QS5 from DS4 130 | 2026-04-16 | 2026-04-16 | 2026-04-16 | 2026-04-16 | 100 | 0.25 | As Soon As Possible | Complete | 0h | 0h | Eric Heisler |  | True | VC_Variant Tables |  | PTM | 1165 | 0.63 0.88 302.75 303 302.13  | 1163 | 1163 0.625 Post Load Validation |
| 1165 | 1.2.1.44.2 | 1.2.1.44.2 | 5 | Post Load Validation | 2026-04-16 | 2026-04-17 | 2026-04-16 | 2026-04-17 | 100 | 0.375 | As Soon As Possible | Complete | 0h | 0h | Eric Heisler |  | True | VC_Variant Tables | Matt Palastro, Dave Duda | PTM | 1166 | 0.88 1.25 303 303.38 302.13  | 1164 | 1164 0.875 Run ALE Transaction to QS5 from DS4 130 |
| 945 | 1.2.1.45 | 1.2.1.45 | 4 | VC_Variant Tables Content | 2026-04-17 | 2026-04-17 | 2026-04-17 | 2026-04-17 | 100 | 0.63 | As Soon As Possible | Complete | 0d | 0d | COULD NOT BE DETERMINED | True | True | ITC1 Data Load Tasks QS5 | Chip Holder |  |  |  |  |  |
| 1166 | 1.2.1.45.1 | 1.2.1.45.1 | 5 | Run ALE Transaction to QS5 from DS4 130 | 2026-04-17 | 2026-04-17 | 2026-04-17 | 2026-04-17 | 100 | 0.25 | As Soon As Possible | Complete | 0h | 0h | Eric Heisler |  | True | VC_Variant Tables Content |  | PTM | 1167 | 1.25 1.5 303.38 303.63 302.13  | 1165 | 1165 1.25 Post Load Validation |
| 1167 | 1.2.1.45.2 | 1.2.1.45.2 | 5 | Post Load Validation | 2026-04-17 | 2026-04-17 | 2026-04-17 | 2026-04-17 | 100 | 0.375 | As Soon As Possible | Complete | 0h | 0h | Eric Heisler |  | True | VC_Variant Tables Content | Matt Palastro, Dave Duda | PTM |  | 1.5 1.88 303.63 304 302.13  | 1166 | 1166 1.5 Run ALE Transaction to QS5 from DS4 130 |
| 946 | 1.2.1.46 | 1.2.1.46 | 4 | VC_Characteristic Groups | 2026-04-17 | 2026-04-20 | 2026-04-16 | 2026-04-17 | 100 | 1.97 | As Soon As Possible | Complete | 0d | 0d | COULD NOT BE DETERMINED | True | True | ITC1 Data Load Tasks QS5 | Chip Holder |  |  |  |  |  |

| uid | wbs | outlineNumber | outlineLevel | name | start | finish | baselineStart | baselineFinish | percentComplete | durationDays | constraintType | status | totalSlackRaw | freeSlackRaw | resourceNames | summary | active | summaryName | businessValidationOwner | workstream | successors | cpm | predecessors | drivers | milestone |
| --- | --- | --- | --- | --- | --- | --- | --- | --- | --- | --- | --- | --- | --- | --- | --- | --- | --- | --- | --- | --- | --- | --- | --- | --- | --- |
| 1168 | 1.2.1.46.1 | 1.2.1.46.1 | 5 | Run ALE Transaction to QS5 from DS4 130 | 2026-04-17 | 2026-04-20 | 2026-04-16 | 2026-04-16 | 100 | 1.59375 | Finish No Earlier Than | Complete | 0h | 0h | Eric Heisler |  | True | VC_Characteristic Groups |  | PTM | 1169 | 0.63 2.22 302.03 303.63 301.41  | 1163 | 1163 0.625 Post Load Validation |  |
| 1169 | 1.2.1.46.2 | 1.2.1.46.2 | 5 | Post Load Validation | 2026-04-20 | 2026-04-20 | 2026-04-16 | 2026-04-17 | 100 | 0.375 | As Soon As Possible | Complete | 0h | 0h | Eric Heisler |  | True | VC_Characteristic Groups | Matt Palastro, Dave Duda | PTM |  | 2.22 2.59 303.63 304 301.41  | 1168 | 1168 2.21875 Run ALE Transaction to QS5 from DS4 130 |  |
| 713 | 1.2.1.47 | 1.2.1.47 | 4 | PTM_CM52_Super_BOM | 2026-04-15 | 2026-04-21 | 2026-04-15 | 2026-04-16 | 100 | 4.09 | As Soon As Possible | Complete | 0d | 0d | Brad Meseck; Chip Holder; David Duda; Matt Palastro; Sunil Srinivasa; Aniruddha Sathe; Susan Graham; Eric Heisler; Sam Penrod; Furkan Alko | True | True | ITC1 Data Load Tasks QS5 | Brad Meseck | PTM |  |  |  |  |  |
| 1094 | 1.2.1.47.1 | 1.2.1.47.1 | 5 | Load File Staged and Posted "Ready" | 2026-04-15 | 2026-04-15 | 2026-04-15 | 2026-04-15 | 100 | 0.0625 | As Soon As Possible | Complete | 0m | 0m | Eric Heisler |  | True | PTM_CM52_Super_BOM |  | PTM | 1095 | 2.69 2.75 297.78 297.84 295.09  | 1037 | 1037 2.6875 Post Load Validation |  |
| 1095 | 1.2.1.47.2 | 1.2.1.47.2 | 5 | Pre Load Validation | 2026-04-15 | 2026-04-15 | 2026-04-15 | 2026-04-15 | 100 | 0.0625 | As Soon As Possible | Complete | 0m | 0m | Eric Heisler |  | True | PTM_CM52_Super_BOM | Matt Palastro, Dave Duda | PTM | 1096 | 2.75 2.81 297.84 297.91 295.09  | 1094 | 1094 2.75 Load File Staged and Posted "Ready" |  |
| 1096 | 1.2.1.47.3 | 1.2.1.47.3 | 5 | Simulate Load | 2026-04-15 | 2026-04-20 | 2026-04-15 | 2026-04-16 | 100 | 3.09375 | Finish No Earlier Than | Complete | 0h | 0h | Data Migration Team |  | True | PTM_CM52_Super_BOM | Matt Palastro, Dave Duda | Data | 1097 | 2.81 5.91 297.91 301 295.09  | 1095 | 1095 2.8125 Pre Load Validation |  |
| 1097 | 1.2.1.47.4 | 1.2.1.47.4 | 5 | Error and Defect Mitigation | 2026-04-21 | 2026-04-21 | 2026-04-16 | 2026-04-16 | 100 | 0.25 | Finish No Earlier Than | Complete | 0h | 0h | Eric Heisler |  | True | PTM_CM52_Super_BOM | Matt Palastro, Dave Duda | PTM | 1098 | 5.91 6.16 301 301.25 295.09  | 1096 | 1096 5.90625 Simulate Load |  |
| 1098 | 1.2.1.47.5 | 1.2.1.47.5 | 5 | Load | 2026-04-21 | 2026-04-21 | 2026-04-16 | 2026-04-16 | 100 | 0.25 | Start No Earlier Than | Complete | 0h | 0h | Data Migration Team |  | True | PTM_CM52_Super_BOM |  | Data | 1099 | 6.16 6.41 301.25 301.5 295.09  | 1097 | 1097 6.15625 Error and Defect Mitigation |  |
| 1099 | 1.2.1.47.6 | 1.2.1.47.6 | 5 | Post Load Validation | 2026-04-21 | 2026-04-21 | 2026-04-16 | 2026-04-16 | 100 | 0.375 | As Soon As Possible | Complete | 0h | 0h | Eric Heisler |  | True | PTM_CM52_Super_BOM | Matt Palastro, Dave Duda | PTM | 1100 | 6.41 6.78 301.5 301.88 295.09  | 1098 | 1098 6.40625 Load |  |
| 714 | 1.2.1.48 | 1.2.1.48 | 4 | PTM_CM53_Super_Routing | 2026-04-16 | 2026-04-17 | 2026-04-16 | 2026-04-20 | 100 | 2 | As Soon As Possible | Complete | 0d | 0d | Brad Meseck; Chip Holder; David Duda; Matt Palastro; Sunil Srinivasa; Aniruddha Sathe; Susan Graham; Eric Heisler; Sam Penrod; Furkan Alko | True | True | ITC1 Data Load Tasks QS5 | Brad Meseck | PTM |  |  |  |  |  |
| 1100 | 1.2.1.48.1 | 1.2.1.48.1 | 5 | Load File Staged and Posted "Ready" | 2026-04-16 | 2026-04-16 | 2026-04-16 | 2026-04-16 | 100 | 0.0625 | As Soon As Possible | Complete | 0m | 0m | Eric Heisler |  | True | PTM_CM53_Super_Routing |  | PTM | 1101 | 6.78 6.84 301.88 301.94 295.09  | 1099 | 1099 6.78125 Post Load Validation |  |
| 1101 | 1.2.1.48.2 | 1.2.1.48.2 | 5 | Pre Load Validation | 2026-04-16 | 2026-04-17 | 2026-04-16 | 2026-04-17 | 100 | 0.0625 | As Soon As Possible | Complete | 0m | 0m | Eric Heisler |  | True | PTM_CM53_Super_Routing | Matt Palastro, Dave Duda | PTM | 1102 | 6.84 6.91 301.94 302 295.09  | 1100 | 1100 6.84375 Load File Staged and Posted "Ready" |  |
| 1102 | 1.2.1.48.3 | 1.2.1.48.3 | 5 | Simulate Load | 2026-04-16 | 2026-04-17 | 2026-04-17 | 2026-04-17 | 100 | 0.125 | As Soon As Possible | Complete | 0h | 0h | Data Migration Team |  | True | PTM_CM53_Super_Routing |  | Data | 1103 | 6.91 7.03 302 302.13 295.09  | 1101 | 1101 6.90625 Pre Load Validation |  |
| 1103 | 1.2.1.48.4 | 1.2.1.48.4 | 5 | Error and Defect Mitigation | 2026-04-17 | 2026-04-17 | 2026-04-17 | 2026-04-17 | 100 | 0.25 | As Soon As Possible | Complete | 0h | 0h | Eric Heisler |  | True | PTM_CM53_Super_Routing | Matt Palastro, Dave Duda | PTM | 1104 | 7.03 7.28 302.13 302.38 295.09  | 1102 | 1102 7.03125 Simulate Load |  |
| 1104 | 1.2.1.48.5 | 1.2.1.48.5 | 5 | Load | 2026-04-17 | 2026-04-17 | 2026-04-17 | 2026-04-17 | 100 | 0.25 | As Soon As Possible | Complete | 0h | 0h | Data Migration Team |  | True | PTM_CM53_Super_Routing |  | Data | 11, 51, 106 | 7.28 7.53 302.38 302.63 295.09  | 1103 | 1103 7.28125 Error and Defect Mitigation |  |
| 1105 | 1.2.1.48.6 | 1.2.1.48.6 | 5 | Post Load Validation | 2026-04-17 | 2026-04-17 | 2026-04-17 | 2026-04-20 | 100 | 0.375 | As Soon As Possible | Complete | 0h | 0h | Eric Heisler |  | True | PTM_CM53_Super_Routing | Matt Palastro, Dave Duda | PTM |  | 7.53 7.91 303.63 304 296.09  | 1104 | 1104 7.53125 Load |  |
| 949 | 1.2.1.49 | 1.2.1.49 | 4 | VC_VK30 Pricing Variant | 2026-04-16 | 2026-04-16 | 2026-04-17 | 2026-04-20 | 100 | 0.38 | As Soon As Possible | Complete | 0d | 0d | COULD NOT BE DETERMINED | True | True | ITC1 Data Load Tasks QS5 | Chip Holder |  |  |  |  |  |  |
| 1106 | 1.2.1.49.1 | 1.2.1.49.1 | 5 | Manual File Staged and Posted "Ready" | 2026-04-16 | 2026-04-16 | 2026-04-17 | 2026-04-17 | 100 | 0.0625 | Start No Earlier Than | Complete | 0m | 0m | Eric Heisler |  | True | VC_VK30 Pricing Variant | Matt Palastro, Dave Duda | PTM | 1107 | 7.53 7.59 302.63 302.69 295.09  | 1104 | 1104 7.53125 Load |  |
| 1107 | 1.2.1.49.2 | 1.2.1.49.2 | 5 | Load | 2026-04-16 | 2026-04-16 | 2026-04-17 | 2026-04-17 | 100 | 0.25 | As Soon As Possible | Complete | 0h | 0h | Eric Heisler |  | True | VC_VK30 Pricing Variant |  | PTM | 1108 | 7.59 7.84 302.69 302.94 295.09  | 1106 | 1106 7.59375 Manual File Staged and Posted "Ready" |  |
| 1108 | 1.2.1.49.3 | 1.2.1.49.3 | 5 | Post Load Validation | 2026-04-16 | 2026-04-16 | 2026-04-17 | 2026-04-20 | 100 | 0.375 | As Soon As Possible | Complete | 0h | 0h | Eric Heisler |  | True | VC_VK30 Pricing Variant | Matt Palastro, Dave Duda | PTM | 1109 | 7.84 8.22 302.94 303.31 295.09  | 1107 | 1107 7.84375 Load |  |
| 759 | 1.2.1.5 | 1.2.1.5 | 4 | RTR_CM05_Profit_Center | 2026-04-06 | 2026-04-07 | 2026-04-06 | 2026-04-07 | 100 | 1.13 | As Soon As Possible | Complete | 0d | 0d | COULD NOT BE DETERMINED | True | True | ITC1 Data Load Tasks QS5 |  |  | 767 |  | 740 |  |  |
| 802 | 1.2.1.5.1 | 1.2.1.5.1 | 5 | Load File Staged and Posted "Ready" | 2026-04-06 | 2026-04-06 | 2026-04-06 | 2026-04-06 | 100 | 0.125 | As Soon As Possible | Complete | 0h | 0h | Kasey Hughes |  | True | RTR_CM05_Profit_Center |  | Finance | 803 | 0.78 0.91 301.75 301.88 300.97  | 781 | 781 0.78125 Post Load Validation |  |
| 803 | 1.2.1.5.2 | 1.2.1.5.2 | 5 | Pre Load Validation | 2026-04-06 | 2026-04-07 | 2026-04-06 | 2026-04-07 | 100 | 0.25 | As Soon As Possible | Complete | 0h | 0h | Kasey Hughes |  | True | RTR_CM05_Profit_Center | Brian Wagner | Finance | 804 | 0.91 1.16 301.88 302.13 300.97  | 802 | 802 0.90625 Load File Staged and Posted "Ready" |  |
| 804 | 1.2.1.5.3 | 1.2.1.5.3 | 5 | Simulate Load | 2026-04-07 | 2026-04-07 | 2026-04-07 | 2026-04-07 | 100 | 0.125 | As Soon As Possible | Complete | 0h | 0h | Data Migration Team |  | True | RTR_CM05_Profit_Center |  | Data | 805 | 1.16 1.28 302.13 302.25 300.97  | 803 | 803 1.15625 Pre Load Validation |  |
| 805 | 1.2.1.5.4 | 1.2.1.5.4 | 5 | Error and Defect Mitigation | 2026-04-07 | 2026-04-07 | 2026-04-07 | 2026-04-07 | 100 | 0.25 | As Soon As Possible | Complete | 0h | 0h | Kasey Hughes |  | True | RTR_CM05_Profit_Center | Brian Wagner | Finance | 806 | 1.28 1.53 302.25 302.5 300.97  | 804 | 804 1.28125 Simulate Load |  |
| 806 | 1.2.1.5.5 | 1.2.1.5.5 | 5 | Load | 2026-04-07 | 2026-04-07 | 2026-04-07 | 2026-04-07 | 100 | 0.125 | As Soon As Possible | Complete | 0h | 0h | Data Migration Team |  | True | RTR_CM05_Profit_Center |  | Data | 807 | 1.53 1.66 302.5 302.63 300.97  | 805 | 805 1.53125 Error and Defect Mitigation |  |
| 807 | 1.2.1.5.6 | 1.2.1.5.6 | 5 | Post Load Validation | 2026-04-07 | 2026-04-07 | 2026-04-07 | 2026-04-07 | 100 | 0.25 | As Soon As Possible | Complete | 0h | 0h | Kasey Hughes |  | True | RTR_CM05_Profit_Center | Brian Wagner | Finance | 95, 910, 261, 32 | 1.66 1.91 302.63 302.88 300.97  | 806 | 806 1.65625 Load |  |
| 951 | 1.2.1.50 | 1.2.1.50 | 4 | OTC_CM22_Pricing_Condition | 2026-04-15 | 2026-04-16 | 2026-04-20 | 2026-04-21 | 100 | 1.38 | As Soon As Possible | Complete | 0d | 0d | Anitha Jothi; Kim Kolesar; Michele Colombo; Michiko Tomihari; Ric Haraida; Rod Santos; Shibu Mathew; Narendra Kallam; Keith Riley; James Manohar | True | True | ITC1 Data Load Tasks QS5 | Kim Kolesar | OTC |  |  |  |  |  |
| 1109 | 1.2.1.50.1 | 1.2.1.50.1 | 5 | Manual File Staged and Posted "Ready" | 2026-04-15 | 2026-04-15 | 2026-04-20 | 2026-04-20 | 100 | 0.0625 | Start No Earlier Than | Complete | 0m | 0m | Ric Haraida |  | True | OTC_CM22_Pricing_Condition | Matt Palastro, Dave Duda | OTC | 1110 | 8.22 8.28 303.31 303.38 295.09  | 1108 | 1108 8.21875 Post Load Validation |  |
| 1110 | 1.2.1.50.2 | 1.2.1.50.2 | 5 | Load | 2026-04-15 | 2026-04-15 | 2026-04-20 | 2026-04-20 | 100 | 0.25 | As Soon As Possible | Complete | 0h | 0h | Ric Haraida |  | True | OTC_CM22_Pricing_Condition |  | OTC | 11, 111, 112 | 8.28 8.53 303.38 303.63 295.09  | 1109 | 1109 8.28125 Manual File Staged and Posted "Ready" |  |
| 1111 | 1.2.1.50.3 | 1.2.1.50.3 | 5 | Post Load Validation | 2026-04-16 | 2026-04-16 | 2026-04-20 | 2026-04-21 | 100 | 0.375 | As Soon As Possible | Complete | 0h | 0h | Ric Haraida,Kim Kolesar |  | True | OTC_CM22_Pricing_Condition | Matt Palastro, Dave Duda,kim | OTC |  | 8.53 8.91 303.63 304 295.09  | 1110 | 1110 8.53125 Load |  |
| 691 | 1.2.1.51 | 1.2.1.51 | 4 | OTC_CM21_CMIR | 2026-04-16 | 2026-04-20 | 2026-04-20 | 2026-04-21 | 100 | 2.72 | As Soon As Possible | Complete | 0d | 0d | Anitha Jothi; Kim Kolesar; Michele Colombo; Michiko Tomihari; Ric Haraida; Rod Santos; Shibu Mathew; Narendra Kallam; Keith Riley; James Manohar | True | True | ITC1 Data Load Tasks QS5 | Kim Kolesar | OTC |  |  |  |  |  |
| 1112 | 1.2.1.51.1 | 1.2.1.51.1 | 5 | Load File Staged and Posted "Ready" | 2026-04-20 | 2026-04-20 | 2026-04-20 | 2026-04-20 | 100 | 0.0625 | As Soon As Possible | Complete | 0m | 0m | Ric Haraida |  | True | OTC_CM21_CMIR |  | OTC | 1113 | 1.25 1.31 303.5 303.56 302.25  | 11, 101, 119 | 101 1.25 Security Role for Functional Team |  |
| 1113 | 1.2.1.51.2 | 1.2.1.51.2 | 5 | Pre Load Validation | 2026-04-16 | 2026-04-16 | 2026-04-20 | 2026-04-20 | 100 | 0.0625 | As Soon As Possible | Complete | 0m | 0m | Ric Haraida |  | True | OTC_CM21_CMIR | Kim | OTC | 1114 | 1.31 1.38 303.56 303.63 302.25  | 1112 | 1112 1.3125 Load File Staged and Posted "Ready" |  |
| 1114 | 1.2.1.51.3 | 1.2.1.51.3 | 5 | Simulate Load | 2026-04-16 | 2026-04-16 | 2026-04-20 | 2026-04-20 | 100 | 0 | As Soon As Possible | Complete | 0h | 0h | Data Migration Team |  | True | OTC_CM21_CMIR |  | Data | 1115 | 1.38 1.38 303.63 303.63 302.25  | 1113 | 1113 1.375 Pre Load Validation | True |
| 1115 | 1.2.1.51.4 | 1.2.1.51.4 | 5 | Error and Defect Mitigation | 2026-04-16 | 2026-04-16 | 2026-04-20 | 2026-04-21 | 100 | 0 | As Soon As Possible | Complete | 0h | 0h | Ric Haraida |  | True | OTC_CM21_CMIR | Kim | OTC | 1116 | 1.38 1.38 303.63 303.63 302.25  | 1114 | 1114 1.375 Simulate Load | True |
| 1116 | 1.2.1.51.5 | 1.2.1.51.5 | 5 | Load | 2026-04-16 | 2026-04-16 | 2026-04-21 | 2026-04-21 | 100 | 0 | As Soon As Possible | Complete | 0h | 0h | Data Migration Team |  | True | OTC_CM21_CMIR |  | Data | 1117 | 1.38 1.38 303.63 303.63 302.25  | 1115 | 1115 1.375 Error and Defect Mitigation | True |
| 1117 | 1.2.1.51.6 | 1.2.1.51.6 | 5 | Post Load Validation | 2026-04-16 | 2026-04-16 | 2026-04-21 | 2026-04-21 | 100 | 0.375 | As Soon As Possible | Complete | 0h | 0h | Ric Haraida |  | True | OTC_CM21_CMIR | Kim | OTC |  | 1.38 1.75 303.63 304 302.25  | 1116 | 1116 1.375 Load |  |
| 704 | 1.2.1.52 | 1.2.1.52 | 4 | PTP_CM29_Source_List | 2026-04-17 | 2026-04-20 | 2026-04-13 | 2026-04-14 | 100 | 1.41 | As Soon As Possible | Complete | 0d | 0d | Muniraju Surappachari; Nevin Varkey; Samuel Houff; Sarasija Ghosh; Surendra Krishna Acharya; Swetha SethumadhavaRao; James Farmer | True | True | ITC1 Data Load Tasks QS5 | Muniraju Surappachari | PTP |  |  |  |  |  |
| 1118 | 1.2.1.52.1 | 1.2.1.52.1 | 5 | Manual File Staged and Posted "Ready" | 2026-04-17 | 2026-04-17 | 2026-04-14 | 2026-04-14 | 100 | 0.0625 | Start No Earlier Than | Complete | 0m | 0m | Nevin Varkey |  | True | PTP_CM29_Source_List | Sam | PTP |  | 130 130.06 303.94 304 173.94  | 10, 181, 250 | 250 130 Requirement gathering |  |
| 1119 | 1.2.1.52.2 | 1.2.1.52.2 | 5 | Load | 2026-04-17 | 2026-04-20 | 2026-04-13 | 2026-04-13 | 100 | 0.25 | Finish No Earlier Than | Complete | 0h | 0h | Nevin Varkey |  | True | PTP_CM29_Source_List |  | PTP | 11, 201, 112 | 134 134.25 303.38 303.63 169.38  | 998 | 998 134 Post Load Validation |  |
| 1120 | 1.2.1.52.3 | 1.2.1.52.3 | 5 | Post Load Validation | 2026-04-20 | 2026-04-20 | 2026-04-13 | 2026-04-13 | 100 | 0.375 | As Soon As Possible | Complete | 0h | 0h | Nevin Varkey |  | True | PTP_CM29_Source_List | Sam | PTP |  | 134.25 134.63 303.63 304 169.38  | 1119 | 1119 134.25 Load |  |
| 702 | 1.2.1.53 | 1.2.1.53 | 4 | RTR_CM11_Asset_Master | 2026-04-15 | 2026-04-23 | 2026-04-10 | 2026-04-13 | 100 | 6.63 | As Soon As Possible | Complete | 0d | 0d | COULD NOT BE DETERMINED | True | True | ITC1 Data Load Tasks QS5 |  |  |  |  |  |  |  |
| 1121 | 1.2.1.53.1 | 1.2.1.53.1 | 5 | Load File Staged and Posted "Ready" | 2026-04-15 | 2026-04-15 | 2026-04-10 | 2026-04-10 | 100 | 0.0625 | Start No Earlier Than | Complete | 0m | 0m | Kasey Hughes |  | True | RTR_CM11_Asset_Master |  | Finance | 11, 221, 139 | 0 0.06 297.38 297.44 297.38  |  |  |  |
| 1122 | 1.2.1.53.2 | 1.2.1.53.2 | 5 | Pre Load Validation | 2026-04-15 | 2026-04-15 | 2026-04-10 | 2026-04-10 | 100 | 0.0625 | As Soon As Possible | Complete | 0m | 0m | Kasey Hughes,Femi Oguntala |  | True | RTR_CM11_Asset_Master | Brian Wagner | Finance | 1123 | 0.06 0.13 297.44 297.5 297.38  | 1121 | 1121 0.0625 Load File Staged and Posted "Ready" |  |
| 1123 | 1.2.1.53.3 | 1.2.1.53.3 | 5 | Simulate Load | 2026-04-15 | 2026-04-20 | 2026-04-10 | 2026-04-10 | 100 | 3.875 | Finish No Earlier Than | Complete | 0h | 0h | Data Migration Team |  | True | RTR_CM11_Asset_Master |  | Data | 1124 | 0.13 4 297.5 301.38 297.38  | 1122 | 1122 0.125 Pre Load Validation |  |
| 1124 | 1.2.1.53.4 | 1.2.1.53.4 | 5 | Error and Defect Mitigation | 2026-04-21 | 2026-04-22 | 2026-04-10 | 2026-04-10 | 100 | 2 | Finish No Earlier Than | Complete | 0h | 0h | Kasey Hughes |  | True | RTR_CM11_Asset_Master | Brian Wagner | Finance | 1125 | 4 6 301.38 303.38 297.38  | 1123 | 1123 4 Simulate Load |  |
| 1125 | 1.2.1.53.5 | 1.2.1.53.5 | 5 | Load | 2026-04-23 | 2026-04-23 | 2026-04-10 | 2026-04-10 | 100 | 0.25 | Start No Earlier Than | Complete | 0h | 0h | Data Migration Team |  | True | RTR_CM11_Asset_Master |  | Data | 1126 | 6 6.25 303.38 303.63 297.38  | 1124 | 1124 6 Error and Defect Mitigation |  |
| 1126 | 1.2.1.53.6 | 1.2.1.53.6 | 5 | Post Load Validation | 2026-04-23 | 2026-04-23 | 2026-04-10 | 2026-04-13 | 100 | 0.375 | As Soon As Possible | Complete | 0h | 0h | Kasey Hughes |  | True | RTR_CM11_Asset_Master | Brian Wagner | Finance |  | 6.25 6.63 303.63 304 297.38  | 1125 | 1125 6.25 Load |  |
| 712 | 1.2.1.54 | 1.2.1.54 | 4 | PTM_CM50_Material Class | 2026-04-16 | 2026-04-20 | 2026-04-16 | 2026-04-16 | 100 | 2.66 | As Soon As Possible | Complete | 0d | 0d | Brad Meseck; Chip Holder; David Duda; Matt Palastro; Sunil Srinivasa; Aniruddha Sathe; Susan Graham; Eric Heisler; Sam Penrod; Furkan Alko | True | True | ITC1 Data Load Tasks QS5 | Brad Meseck | PTM |  |  |  |  |  |
| 1127 | 1.2.1.54.1 | 1.2.1.54.1 | 5 | Manual File Staged and Posted "Ready" | 2026-04-16 | 2026-04-16 | 2026-04-16 | 2026-04-16 | 100 | 0.0625 | As Soon As Possible | Complete | 0m | 0m | Sam |  | True | PTM_CM50_Material Class |  | PTM | 11, 281, 133 | 132.56 132.63 301.88 301.94 169.31  | 1081 | 1081 132.5625 Load File Staged and Posted "Ready" |  |
| 1128 | 1.2.1.54.2 | 1.2.1.54.2 | 5 | Load | 2026-04-16 | 2026-04-16 | 2026-04-16 | 2026-04-16 | 100 | 0.0625 | As Soon As Possible | Complete | 0m | 0m | Brad Meseck |  | True | PTM_CM50_Material Class | Matt Palastro, Dave Duda | PTM | 1129 | 132.63 132.69 301.94 302 169.31  | 1127 | 1127 132.625 Manual File Staged and Posted "Ready" |  |
| 1129 | 1.2.1.54.3 | 1.2.1.54.3 | 5 | Post Load Validation | 2026-04-17 | 2026-04-20 | 2026-04-16 | 2026-04-16 | 100 | 2 | Finish No Earlier Than | Complete | 0h | 0h | Brad |  | True | PTM_CM50_Material Class | brad | PTM |  | 132.69 134.69 302 304 169.31  | 1128 | 1128 132.6875 Load |  |
| 715 | 1.2.1.55 | 1.2.1.55 | 4 | PTM_CM55_Class assignment to materials | 2026-04-16 | 2026-04-17 | 2026-04-16 | 2026-04-17 | 100 | 1.13 | As Soon As Possible | Complete | 0d | 0d | Brad Meseck; Chip Holder; David Duda; Matt Palastro; Sunil Srinivasa; Aniruddha Sathe; Susan Graham; Eric Heisler; Sam Penrod; Furkan Alko | True | True | ITC1 Data Load Tasks QS5 | Brad Meseck | PTM |  |  |  |  |  |
| 1133 | 1.2.1.55.1 | 1.2.1.55.1 | 5 | Load File Staged and Posted "Ready" | 2026-04-16 | 2026-04-16 | 2026-04-16 | 2026-04-16 | 100 | 0.0625 | As Soon As Possible | Complete | 0m | 0m | Sam |  | True | PTM_CM55_Class assignment to materials |  | PTM | 1134 | 132.63 132.69 302.88 302.94 170.25  | 1127 | 1127 132.625 Manual File Staged and Posted "Ready" |  |
| 1134 | 1.2.1.55.2 | 1.2.1.55.2 | 5 | Pre Load Validation | 2026-04-16 | 2026-04-16 | 2026-04-16 | 2026-04-16 | 100 | 0.0625 | As Soon As Possible | Complete | 0m | 0m | Brad Meseck |  | True | PTM_CM55_Class assignment to materials | Matt Palastro, Dave Duda | PTM | 1135 | 132.69 132.75 302.94 303 170.25  | 1133 | 1133 132.6875 Load File Staged and Posted "Ready" |  |
| 1135 | 1.2.1.55.3 | 1.2.1.55.3 | 5 | Simulate Load | 2026-04-16 | 2026-04-16 | 2026-04-16 | 2026-04-16 | 100 | 0.125 | As Soon As Possible | Complete | 0h | 0h | Data Migration Team |  | True | PTM_CM55_Class assignment to materials |  | Data | 1136 | 132.75 132.88 303 303.13 170.25  | 1134 | 1134 132.75 Pre Load Validation |  |
| 1136 | 1.2.1.55.4 | 1.2.1.55.4 | 5 | Error and Defect Mitigation | 2026-04-16 | 2026-04-16 | 2026-04-16 | 2026-04-16 | 100 | 0.25 | As Soon As Possible | Complete | 0h | 0h | Brad Meseck |  | True | PTM_CM55_Class assignment to materials | Matt Palastro, Dave Duda | PTM | 1137 | 132.88 133.13 303.13 303.38 170.25  | 1135 | 1135 132.875 Simulate Load |  |
| 1137 | 1.2.1.55.5 | 1.2.1.55.5 | 5 | Load | 2026-04-16 | 2026-04-17 | 2026-04-16 | 2026-04-17 | 100 | 0.25 | As Soon As Possible | Complete | 0h | 0h | Data Migration Team |  | True | PTM_CM55_Class assignment to materials |  | Data | 1138 | 133.13 133.38 303.38 303.63 170.25  | 1136 | 1136 133.125 Error and Defect Mitigation |  |
| 1138 | 1.2.1.55.6 | 1.2.1.55.6 | 5 | Post Load Validation | 2026-04-17 | 2026-04-17 | 2026-04-17 | 2026-04-17 | 100 | 0.375 | As Soon As Possible | Complete | 0h | 0h | Brad Meseck |  | True | PTM_CM55_Class assignment to materials | Matt Palastro, Dave Duda | PTM |  | 133.38 133.75 303.63 304 170.25  | 1137 | 1137 133.375 Load |  |
| 952 | 1.2.1.56 | 1.2.1.56 | 4 | GTS - Material initial load from S4 (Run Interface) | 2026-04-16 | 2026-04-20 | 2026-04-16 | 2026-04-16 | 100 | 2.09 | As Soon As Possible | Complete | 0d | 0d | COULD NOT BE DETERMINED | True | True | ITC1 Data Load Tasks QS5 |  |  |  |  |  |  |  |
| 1171 | 1.2.1.56.1 | 1.2.1.56.1 | 5 | Run material interface to GTS | 2026-04-16 | 2026-04-17 | 2026-04-16 | 2026-04-16 | 100 | 1.96875 | Finish No Earlier Than | Complete | 0h | 0h | James Van Riper |  | True | GTS - Material initial load from S4 (Run Interface) |  | OTC | 1173 | 132.25 134.22 298.63 300.59 166.38  | 1052 | 1052 132.25 Simulate Load |  |
| 1173 | 1.2.1.56.2 | 1.2.1.56.2 | 5 | Post Load Validation | 2026-04-20 | 2026-04-20 | 2026-04-16 | 2026-04-16 | 100 | 0.125 | As Soon As Possible | Complete | 0h | 0h | James Van Riper |  | True | GTS - Material initial load from S4 (Run Interface) | Kim Kolesar | OTC | 1180 | 134.22 134.34 300.59 300.72 166.38  | 1171 | 1171 134.21875 Run material interface to GTS |  |
| 953 | 1.2.1.57 | 1.2.1.57 | 4 | GTS - Customers initial load from S4 (Run Interface) | 2026-04-15 | 2026-04-20 | 2026-04-10 | 2026-04-10 | 100 | 4 | As Soon As Possible | Complete | 0d | 0d | COULD NOT BE DETERMINED | True | True | ITC1 Data Load Tasks QS5 |  |  |  |  |  |  |  |
| 1174 | 1.2.1.57.1 | 1.2.1.57.1 | 5 | Run material interface to GTS | 2026-04-15 | 2026-04-15 | 2026-04-10 | 2026-04-10 | 100 | 0.125 | Start No Earlier Than | Complete | 0h | 0h | James Van Riper |  | True | GTS - Customers initial load from S4 (Run Interface) |  | OTC | 1175 | 0 0.13 303.75 303.88 303.75  |  |  |  |
| 1175 | 1.2.1.57.2 | 1.2.1.57.2 | 5 | Post Load Validation | 2026-04-20 | 2026-04-20 | 2026-04-10 | 2026-04-10 | 100 | 0.125 | Finish No Earlier Than | Complete | 0h | 0h | James Van Riper |  | True | GTS - Customers initial load from S4 (Run Interface) | Kim Kolesar | OTC |  | 0.13 0.25 303.88 304 303.75  | 1174 | 1174 0.125 Run material interface to GTS |  |
| 954 | 1.2.1.58 | 1.2.1.58 | 4 | GTS - Vendors initial load from S4 (Run Interface) | 2026-04-16 | 2026-04-17 | 2026-04-15 | 2026-04-15 | 100 | 0.25 | As Soon As Possible | Complete | 0d | 0d | COULD NOT BE DETERMINED | True | True | ITC1 Data Load Tasks QS5 |  |  |  |  |  |  |  |
| 1176 | 1.2.1.58.1 | 1.2.1.58.1 | 5 | Run material interface to GTS | 2026-04-16 | 2026-04-16 | 2026-04-15 | 2026-04-15 | 100 | 0.125 | As Soon As Possible | Complete | 0h | 0h | James Van Riper |  | True | GTS - Vendors initial load from S4 (Run Interface) |  | OTC | 11, 771, 179 | 0.88 1 303.38 303.5 302.5  | 1010 | 1010 0.875 Post Load Validation |  |
| 1177 | 1.2.1.58.2 | 1.2.1.58.2 | 5 | Post Load Validation | 2026-04-17 | 2026-04-17 | 2026-04-15 | 2026-04-15 | 100 | 0.125 | As Soon As Possible | Complete | 0h | 0h | James Van Riper |  | True | GTS - Vendors initial load from S4 (Run Interface) | Kim Kolesar | OTC |  | 1 1.13 303.88 304 302.88  | 1176 | 1176 1 Run material interface to GTS |  |
| 698 | 1.2.1.59 | 1.2.1.59 | 4 | GTS - ECCN - Create | 2026-04-06 | 2026-04-13 | 2026-04-06 | 2026-04-13 | 100 | 5.63 | As Soon As Possible | Complete | 0d | 0d | COULD NOT BE DETERMINED | True | True | ITC1 Data Load Tasks QS5 |  |  |  |  |  |  |  |

| uid | wbs | outlineNumber | outlineLevel | name | start | finish | baselineStart | baselineFinish | percentComplete | durationDays | constraintType | status | totalSlackRaw | freeSlackRaw | resourceNames | summary | criticalFlag | active | flag20 | summaryName | businessValidationOwner | workstream | successors | cpm | predecessors | drivers | milestone |
| --- | --- | --- | --- | --- | --- | --- | --- | --- | --- | --- | --- | --- | --- | --- | --- | --- | --- | --- | --- | --- | --- | --- | --- | --- | --- | --- | --- |
| 1178 | 1.2.1.59.1 | 1.2.1.59.1 | 5 | Load Descartes XML File | 2026-04-06 | 2026-04-06 | 2026-04-06 | 2026-04-06 | 100 | 0.125 | As Soon As Possible | Complete | 0h | 0h | James Van Riper |  |  | True |  | GTS - ECCN - Create | Brian Wagner | OTC |  | 0.03 0.16 303.88 304 303.84  | 956 | 956 0.03125 PMO Authorization to Start Data Loads |  |
| 1179 | 1.2.1.59.2 | 1.2.1.59.2 | 5 | Post Load Validation | 2026-04-13 | 2026-04-13 | 2026-04-13 | 2026-04-13 | 100 | 0.125 | As Soon As Possible | Complete | 0h | 0h | James Van Riper |  |  | True |  | GTS - ECCN - Create | Kim Kolesar | OTC | 1210 | 1 1.13 303.5 303.63 302.5  | 1176 | 1176 1 Run material interface to GTS |  |
| 767 | 1.2.1.6 | 1.2.1.6 | 4 | RTR_CM04_Cost_Center | 2026-04-07 | 2026-04-09 | 2026-04-07 | 2026-04-09 | 100 | 1.13 | As Soon As Possible | Complete | 0d | 0d | COULD NOT BE DETERMINED | True |  | True |  | ITC1 Data Load Tasks QS5 |  |  | 881, 760 |  | 759 |  |  |
| 959 | 1.2.1.6.1 | 1.2.1.6.1 | 5 | Load File Staged and Posted "Ready" | 2026-04-07 | 2026-04-08 | 2026-04-07 | 2026-04-08 | 100 | 0.125 | As Soon As Possible | Complete | 0h | 0h | Kasey Hughes |  |  | True |  | RTR_CM04_Cost_Center |  | Finance | 960 | 1.91 2.03 302.88 303 300.97  | 807 | 807 1.90625 Post Load Validation |  |
| 960 | 1.2.1.6.2 | 1.2.1.6.2 | 5 | Pre Load Validation | 2026-04-08 | 2026-04-08 | 2026-04-08 | 2026-04-08 | 100 | 0.25 | As Soon As Possible | Complete | 0h | 0h | Kasey Hughes |  |  | True |  | RTR_CM04_Cost_Center | Brian Wagner | Finance | 961 | 2.03 2.28 303 303.25 300.97  | 959 | 959 2.03125 Load File Staged and Posted "Ready" |  |
| 961 | 1.2.1.6.3 | 1.2.1.6.3 | 5 | Simulate Load | 2026-04-08 | 2026-04-08 | 2026-04-08 | 2026-04-08 | 100 | 0.125 | As Soon As Possible | Complete | 0h | 0h | Data Migration Team |  |  | True |  | RTR_CM04_Cost_Center |  | Data | 962 | 2.28 2.41 303.25 303.38 300.97  | 960 | 960 2.28125 Pre Load Validation |  |
| 962 | 1.2.1.6.4 | 1.2.1.6.4 | 5 | Error and Defect Mitigation | 2026-04-08 | 2026-04-08 | 2026-04-08 | 2026-04-08 | 100 | 0.25 | As Soon As Possible | Complete | 0h | 0h | Kasey Hughes |  |  | True |  | RTR_CM04_Cost_Center | Brian Wagner | Finance | 963 | 2.41 2.66 303.38 303.63 300.97  | 961 | 961 2.40625 Simulate Load |  |
| 963 | 1.2.1.6.5 | 1.2.1.6.5 | 5 | Load | 2026-04-08 | 2026-04-08 | 2026-04-08 | 2026-04-08 | 100 | 0.125 | As Soon As Possible | Complete | 0h | 0h | Data Migration Team |  |  | True |  | RTR_CM04_Cost_Center |  | Data | 964 | 2.66 2.78 303.63 303.75 300.97  | 962 | 962 2.65625 Error and Defect Mitigation |  |
| 964 | 1.2.1.6.6 | 1.2.1.6.6 | 5 | Post Load Validation | 2026-04-08 | 2026-04-09 | 2026-04-08 | 2026-04-09 | 100 | 0.25 | As Soon As Possible | Complete | 0h | 0h | Kasey Hughes |  |  | True |  | RTR_CM04_Cost_Center | Brian Wagner | Finance |  | 2.78 3.03 303.75 304 300.97  | 963 | 963 2.78125 Load |  |
| 699 | 1.2.1.60 | 1.2.1.60 | 4 | GTS - ECCN - Assign | 2026-04-16 | 2026-04-16 | 2026-04-16 | 2026-04-16 | 100 | 0.25 | As Soon As Possible | Complete | 0d | 0d | COULD NOT BE DETERMINED | True |  | True |  | ITC1 Data Load Tasks QS5 |  |  |  |  |  |  |  |
| 1180 | 1.2.1.60.1 | 1.2.1.60.1 | 5 | Load Descartes XML File | 2026-04-16 | 2026-04-16 | 2026-04-16 | 2026-04-16 | 100 | 0.125 | Finish No Earlier Than | Complete | 0h | 0h | James Van Riper |  |  | True |  | GTS - ECCN - Assign | Brian Wagner | OTC | 1181 | 134.34 134.47 300.72 300.84 166.38  | 1173 | 1173 134.34375 Post Load Validation |  |
| 1181 | 1.2.1.60.2 | 1.2.1.60.2 | 5 | Post Load Validation | 2026-04-16 | 2026-04-16 | 2026-04-16 | 2026-04-16 | 100 | 0.125 | As Soon As Possible | Complete | 0h | 0h | James Van Riper |  |  | True |  | GTS - ECCN - Assign | Kim Kolesar | OTC | 1184 | 134.47 134.59 300.84 300.97 166.38  | 1180 | 1180 134.46875 Load Descartes XML File |  |
| 700 | 1.2.1.61 | 1.2.1.61 | 4 | GTS - HTS - Create | 2026-04-06 | 2026-04-06 | 2026-04-06 | 2026-04-06 | 100 | 0.25 | As Soon As Possible | Complete | 0d | 0d | COULD NOT BE DETERMINED | True |  | True |  | ITC1 Data Load Tasks QS5 |  |  |  |  |  |  |  |
| 1182 | 1.2.1.61.1 | 1.2.1.61.1 | 5 | Load Descartes XML File | 2026-04-06 | 2026-04-06 | 2026-04-06 | 2026-04-06 | 100 | 0.125 | As Soon As Possible | Complete | 0h | 0h | James Van Riper |  |  | True |  | GTS - HTS - Create | Brian Wagner | OTC | 1183 | 0.03 0.16 303.75 303.88 303.72  | 956 | 956 0.03125 PMO Authorization to Start Data Loads |  |
| 1183 | 1.2.1.61.2 | 1.2.1.61.2 | 5 | Post Load Validation | 2026-04-06 | 2026-04-06 | 2026-04-06 | 2026-04-06 | 100 | 0.125 | As Soon As Possible | Complete | 0h | 0h | James Van Riper |  |  | True |  | GTS - HTS - Create | Kim Kolesar | OTC |  | 0.16 0.28 303.88 304 303.72  | 1182 | 1182 0.15625 Load Descartes XML File |  |
| 701 | 1.2.1.62 | 1.2.1.62 | 4 | GTS - HTS - Assign | 2026-04-16 | 2026-04-16 | 2026-04-16 | 2026-04-16 | 100 | 0.25 | As Soon As Possible | Complete | 0d | 0d | COULD NOT BE DETERMINED | True |  | True |  | ITC1 Data Load Tasks QS5 |  |  |  |  |  |  |  |
| 1184 | 1.2.1.62.1 | 1.2.1.62.1 | 5 | Load Descartes XML File | 2026-04-16 | 2026-04-16 | 2026-04-16 | 2026-04-16 | 100 | 0.125 | As Soon As Possible | Complete | 0h | 0h | James Van Riper |  |  | True |  | GTS - HTS - Assign | Brian Wagner | OTC | 118, 511, 861, 217 | 134.59 134.72 300.97 301.09 166.38  | 1181 | 1181 134.59375 Post Load Validation |  |
| 1185 | 1.2.1.62.2 | 1.2.1.62.2 | 5 | Post Load Validation | 2026-04-16 | 2026-04-16 | 2026-04-16 | 2026-04-16 | 100 | 0.125 | As Soon As Possible | Complete | 0h | 0h | James Van Riper |  |  | True |  | GTS - HTS - Assign | Kim Kolesar | OTC | 11, 881, 214 | 134.72 134.84 301.09 301.22 166.38  | 1184 | 1184 134.71875 Load Descartes XML File |  |
| 706 | 1.2.1.63 | 1.2.1.63 | 4 | GTS - License - Create | 2026-04-16 | 2026-04-16 | 2026-04-16 | 2026-04-16 | 100 | 0.25 | As Soon As Possible | Complete | 0d | 0d | COULD NOT BE DETERMINED | True |  | True |  | ITC1 Data Load Tasks QS5 |  |  |  |  |  |  |  |
| 1186 | 1.2.1.63.1 | 1.2.1.63.1 | 5 | Load Descartes XML File | 2026-04-16 | 2026-04-16 | 2026-04-16 | 2026-04-16 | 100 | 0.125 | As Soon As Possible | Complete | 0h | 0h | James Van Riper |  |  | True |  | GTS - License - Create | Brian Wagner | OTC | 1187 | 0 0.13 303.75 303.88 303.75  | 11, 841, 188 |  |  |
| 1187 | 1.2.1.63.2 | 1.2.1.63.2 | 5 | Post Load Validation | 2026-04-16 | 2026-04-16 | 2026-04-16 | 2026-04-16 | 100 | 0.125 | As Soon As Possible | Complete | 0h | 0h | James Van Riper |  |  | True |  | GTS - License - Create | Kim Kolesar | OTC |  | 0.13 0.25 303.88 304 303.75  | 1186 | 1186 0.125 Load Descartes XML File |  |
| 1213 | 1.2.1.64 | 1.2.1.64 | 4 | Commodity Code/Tarif | 2026-04-16 | 2026-04-21 | 2026-04-16 | 2026-04-16 | 100 | 2.78 | As Soon As Possible | Complete | 0d | 0d | COULD NOT BE DETERMINED | True |  | True |  | ITC1 Data Load Tasks QS5 | Brian Wagner |  |  |  |  |  |  |
| 1214 | 1.2.1.64.1 | 1.2.1.64.1 | 5 | Load | 2026-04-16 | 2026-04-20 | 2026-04-16 | 2026-04-16 | 100 | 2.65625 | Finish No Earlier Than | Complete | 0h | 0h | James Van Riper |  |  | True |  | Commodity Code/Tarif |  | OTC | 1215 | 134.84 137.5 301.22 303.88 166.38  | 1185 | 1185 134.84375 Post Load Validation |  |
| 1215 | 1.2.1.64.2 | 1.2.1.64.2 | 5 | Post Load Validation | 2026-04-21 | 2026-04-21 | 2026-04-16 | 2026-04-16 | 100 | 0.125 | Start No Earlier Than | Complete | 0h | 0h | James Van Riper |  |  | True |  | Commodity Code/Tarif | Kim Kolesar | OTC |  | 137.5 137.63 303.88 304 166.38  | 1214 | 1214 137.5 Load |  |
| 1216 | 1.2.1.65 | 1.2.1.65 | 4 | SPL Master File | 2026-04-15 | 2026-04-16 | 2025-03-13 | 2025-03-13 | 100 | 1.34 | As Soon As Possible | Complete | 0d | 0d | COULD NOT BE DETERMINED | True |  | True |  | ITC1 Data Load Tasks QS5 |  |  |  |  |  |  |  |
| 1217 | 1.2.1.65.1 | 1.2.1.65.1 | 5 | Load | 2026-04-16 | 2026-04-16 | 2025-03-13 | 2025-03-13 | 100 | 0.125 | As Soon As Possible | Complete | 0h | 0h | James Van Riper |  |  | True |  | SPL Master File |  | OTC | 1218 | 134.72 134.84 303.75 303.88 169.03  | 1184 | 1184 134.71875 Load Descartes XML File |  |
| 1218 | 1.2.1.65.2 | 1.2.1.65.2 | 5 | Post Load Validation | 2026-04-15 | 2026-04-15 | 2025-03-13 | 2025-03-13 | 100 | 0.125 | As Soon As Possible | Complete | 0h | 0h | James Van Riper |  |  | True |  | SPL Master File | Kim Kolesar | OTC |  | 134.84 134.97 303.88 304 169.03  | 1217 | 1217 134.84375 Load |  |
| 1209 | 1.2.1.66 | 1.2.1.66 | 4 | Initialize Embargo situation | 2026-04-13 | 2026-04-14 | 2026-04-13 | 2026-04-14 | 100 | 0.59 | As Soon As Possible | Complete | 0d | 0d | COULD NOT BE DETERMINED | True |  | True |  | ITC1 Data Load Tasks QS5 | Kishore Kakarla |  |  |  |  |  |  |
| 1210 | 1.2.1.66.1 | 1.2.1.66.1 | 5 | Run report /SAPSLL/EMB_CNTRY_INIT | 2026-04-13 | 2026-04-13 | 2026-04-13 | 2026-04-13 | 100 | 0.125 | As Soon As Possible | Complete | 0h | 0h | James Van Riper |  |  | True |  | Initialize Embargo situation | Brian Wagner | OTC | 1211 | 1.13 1.25 303.63 303.75 302.5  | 1179 | 1179 1.125 Post Load Validation |  |
| 1211 | 1.2.1.66.2 | 1.2.1.66.2 | 5 | Set Embargo situations | 2026-04-14 | 2026-04-14 | 2026-04-13 | 2026-04-13 | 100 | 0.125 | As Soon As Possible | Complete | 0h | 0h | James Van Riper |  |  | True |  | Initialize Embargo situation | Kishore Kakarla | OTC | 1212 | 1.25 1.38 303.75 303.88 302.5  | 1210 | 1210 1.25 Run report /SAPSLL/EMB_CNTRY_INIT |  |
| 1212 | 1.2.1.66.3 | 1.2.1.66.3 | 5 | Post Load Validation | 2026-04-14 | 2026-04-14 | 2026-04-13 | 2026-04-14 | 100 | 0.125 | As Soon As Possible | Complete | 0h | 0h | James Van Riper |  |  | True |  | Initialize Embargo situation | Kim Kolesar | OTC |  | 1.38 1.5 303.88 304 302.5  | 1211 | 1211 1.375 Set Embargo situations |  |
| 955 | 1.2.1.67 | 1.2.1.67 | 4 | GTS - SPL (Sanctioned party list) | 2026-04-16 | 2026-04-16 | 2026-04-16 | 2026-04-16 | 100 | 0.25 | As Soon As Possible | Complete | 0d | 0d | COULD NOT BE DETERMINED | True |  | True |  | ITC1 Data Load Tasks QS5 | Brian Wagner |  |  |  |  |  |  |
| 1188 | 1.2.1.67.1 | 1.2.1.67.1 | 5 | Load Descartes XML File | 2026-04-16 | 2026-04-16 | 2026-04-16 | 2026-04-16 | 100 | 0.125 | As Soon As Possible | Complete | 0h | 0h | James Van Riper |  |  | True |  | GTS - SPL (Sanctioned party list) | Brian Wagner | OTC | 11, 891, 186 | 134.84 134.97 303.75 303.88 168.91  | 1185 | 1185 134.84375 Post Load Validation |  |
| 1189 | 1.2.1.67.2 | 1.2.1.67.2 | 5 | Post Load Validation | 2026-04-16 | 2026-04-16 | 2026-04-16 | 2026-04-16 | 100 | 0.125 | As Soon As Possible | Complete | 0h | 0h | James Van Riper |  |  | True |  | GTS - SPL (Sanctioned party list) | Kim Kolesar | OTC |  | 134.97 135.09 303.88 304 168.91  | 1188 | 1188 134.96875 Load Descartes XML File |  |
| 950 | 1.2.1.68 | 1.2.1.68 | 4 | RTR_CM17_Project Definition / Builder | 2026-04-20 | 2026-04-21 | 2026-04-10 | 2026-04-17 | 100 | 1.13 | As Soon As Possible | Complete | 0d | 0d | COULD NOT BE DETERMINED | True |  | True |  | ITC1 Data Load Tasks QS5 |  |  |  |  |  |  |  |
| 1139 | 1.2.1.68.1 | 1.2.1.68.1 | 5 | Load File Staged and Posted "Ready" | 2026-04-20 | 2026-04-20 | 2026-04-10 | 2026-04-10 | 100 | 0.0625 | Start No Earlier Than | Complete | 0m | 0m | Kasey Hughes |  |  | True |  | RTR_CM17_Project Definition / Builder |  | Finance | 11, 401, 145 | 0.06 0.13 302.81 302.88 302.75  | 1121 | 1121 0.0625 Load File Staged and Posted "Ready" |  |
| 1140 | 1.2.1.68.2 | 1.2.1.68.2 | 5 | Pre Load Validation | 2026-04-20 | 2026-04-20 | 2026-04-10 | 2026-04-10 | 100 | 0.0625 | As Soon As Possible | Complete | 0m | 0m | Kasey Hughes |  |  | True |  | RTR_CM17_Project Definition / Builder | Brian Wagner | Finance | 1141 | 0.13 0.19 302.94 303 302.81  | 1139 | 1139 0.125 Load File Staged and Posted "Ready" |  |
| 1141 | 1.2.1.68.3 | 1.2.1.68.3 | 5 | Simulate Load | 2026-04-20 | 2026-04-20 | 2026-04-16 | 2026-04-16 | 100 | 0.125 | As Soon As Possible | Complete | 0h | 0h | Data Migration Team |  |  | True |  | RTR_CM17_Project Definition / Builder |  | Data | 1142 | 0.19 0.31 303 303.13 302.81  | 1140 | 1140 0.1875 Pre Load Validation |  |
| 1142 | 1.2.1.68.4 | 1.2.1.68.4 | 5 | Error and Defect Mitigation | 2026-04-20 | 2026-04-20 | 2026-04-16 | 2026-04-17 | 100 | 0.25 | As Soon As Possible | Complete | 0h | 0h | Kasey Hughes |  |  | True |  | RTR_CM17_Project Definition / Builder | Brian Wagner | Finance | 1143 | 0.31 0.56 303.13 303.38 302.81  | 1141 | 1141 0.3125 Simulate Load |  |
| 1143 | 1.2.1.68.5 | 1.2.1.68.5 | 5 | Load | 2026-04-20 | 2026-04-20 | 2026-04-17 | 2026-04-17 | 100 | 0.25 | As Soon As Possible | Complete | 0h | 0h | Data Migration Team |  |  | True |  | RTR_CM17_Project Definition / Builder |  | Data | 1144 | 0.56 0.81 303.38 303.63 302.81  | 1142 | 1142 0.5625 Error and Defect Mitigation |  |
| 1144 | 1.2.1.68.6 | 1.2.1.68.6 | 5 | Post Load Validation | 2026-04-20 | 2026-04-21 | 2026-04-17 | 2026-04-17 | 100 | 0.375 | As Soon As Possible | Complete | 0h | 0h | Kasey Hughes |  |  | True |  | RTR_CM17_Project Definition / Builder | Brian Wagner | Finance |  | 0.81 1.19 303.63 304 302.81  | 1143 | 1143 0.8125 Load |  |
| 754 | 1.2.1.69 | 1.2.1.69 | 4 | RTR_CM18_WBS Element | 2026-04-20 | 2026-04-21 | 2026-04-10 | 2026-04-17 | 100 | 1.13 | As Soon As Possible | Complete | 0d | 0d | COULD NOT BE DETERMINED | True |  | True |  | ITC1 Data Load Tasks QS5 |  |  |  |  |  |  |  |
| 1145 | 1.2.1.69.1 | 1.2.1.69.1 | 5 | Load File Staged and Posted "Ready" | 2026-04-20 | 2026-04-20 | 2026-04-10 | 2026-04-10 | 100 | 0.0625 | Start No Earlier Than | Complete | 0m | 0m | Kasey Hughes |  |  | True |  | RTR_CM18_WBS Element |  | Finance | 1146 | 0.13 0.19 302.88 302.94 302.75  | 1139 | 1139 0.125 Load File Staged and Posted "Ready" |  |
| 1146 | 1.2.1.69.2 | 1.2.1.69.2 | 5 | Pre Load Validation | 2026-04-20 | 2026-04-20 | 2026-04-10 | 2026-04-10 | 100 | 0.0625 | As Soon As Possible | Complete | 0m | 0m | Kasey Hughes |  |  | True |  | RTR_CM18_WBS Element | Brian Wagner | Finance | 1147 | 0.19 0.25 302.94 303 302.75  | 1145 | 1145 0.1875 Load File Staged and Posted "Ready" |  |
| 1147 | 1.2.1.69.3 | 1.2.1.69.3 | 5 | Simulate Load | 2026-04-20 | 2026-04-20 | 2026-04-16 | 2026-04-16 | 100 | 0.125 | As Soon As Possible | Complete | 0h | 0h | Data Migration Team |  |  | True |  | RTR_CM18_WBS Element |  | Data | 1148 | 0.25 0.38 303 303.13 302.75  | 1146 | 1146 0.25 Pre Load Validation |  |
| 1148 | 1.2.1.69.4 | 1.2.1.69.4 | 5 | Error and Defect Mitigation | 2026-04-20 | 2026-04-20 | 2026-04-16 | 2026-04-17 | 100 | 0.25 | As Soon As Possible | Complete | 0h | 0h | Kasey Hughes |  |  | True |  | RTR_CM18_WBS Element | Brian Wagner | Finance | 1149 | 0.38 0.63 303.13 303.38 302.75  | 1147 | 1147 0.375 Simulate Load |  |
| 1149 | 1.2.1.69.5 | 1.2.1.69.5 | 5 | Load | 2026-04-20 | 2026-04-20 | 2026-04-17 | 2026-04-17 | 100 | 0.25 | As Soon As Possible | Complete | 0h | 0h | Data Migration Team |  |  | True |  | RTR_CM18_WBS Element |  | Data | 1150 | 0.63 0.88 303.38 303.63 302.75  | 1148 | 1148 0.625 Error and Defect Mitigation |  |
| 1150 | 1.2.1.69.6 | 1.2.1.69.6 | 5 | Post Load Validation | 2026-04-20 | 2026-04-21 | 2026-04-17 | 2026-04-17 | 100 | 0.375 | As Soon As Possible | Complete | 0h | 0h | Kasey Hughes |  |  | True |  | RTR_CM18_WBS Element | Brian Wagner | Finance |  | 0.88 1.25 303.63 304 302.75  | 1149 | 1149 0.875 Load |  |
| 881 | 1.2.1.7 | 1.2.1.7 | 4 | Manual Configuration Activities in QS5 | 2026-04-06 | 2026-04-15 | 2026-04-06 | 2026-04-15 | 100 | 7.16 | As Soon As Possible | Complete | 0d | 0d | COULD NOT BE DETERMINED | True |  | True |  | ITC1 Data Load Tasks QS5 |  |  |  |  | 767 |  |  |
| 1219 | 1.2.1.7.1 | 1.2.1.7.1 | 5 | Open Client | 2026-04-06 | 2026-04-06 | 2026-04-06 | 2026-04-06 | 100 | 0.0625 | As Soon As Possible | Complete | 0m | 0m | Basis |  |  | True |  | Manual Configuration Activities in QS5 |  | Basis |  | 0 0.06 303.94 304 303.94  |  |  |  |
| 882 | 1.2.1.7.2 | 1.2.1.7.2 | 5 | Service Enterprise Setup | 2026-04-08 | 2026-04-15 | 2026-04-08 | 2026-04-15 | 100 | 5 | As Soon As Possible | Complete | 0d | 0d | Keith Riley |  |  | True |  | Manual Configuration Activities in QS5 |  | OTC |  | 0 5 299 304 299  | 740, 755, 756 |  |  |
| 1220 | 1.2.1.7.3 | 1.2.1.7.3 | 5 | Close Client | 2026-04-06 | 2026-04-06 | 2026-04-06 | 2026-04-06 | 100 | 0.0625 | As Soon As Possible | Complete | 0m | 0m | Basis |  |  | True |  | Manual Configuration Activities in QS5 |  | Basis |  | 0 0.06 303.94 304 303.94  |  |  |  |
| 883 | 1.2.1.7.4 | 1.2.1.7.4 | 5 | Intercompany Business Partner Setup | 2026-04-08 | 2026-04-09 | 2026-04-08 | 2026-04-09 | 100 | 0.25 | As Soon As Possible | Complete | 0h | 0h | Functional Leads |  |  | True |  | Manual Configuration Activities in QS5 | Brian Wagner | Development |  | 0 0.25 303.75 304 303.75  | 7, 557, 561, 244 |  |  |
| 1170 | 1.2.1.70 | 1.2.1.70 | 4 | ITC1 Mock Data Loads Complete | 2026-04-23 | 2026-04-23 | 2026-04-21 | 2026-04-21 | 100 | 0.03125 | As Soon As Possible | Complete | 0m | 0m | Mark George |  |  | True |  | ITC1 Data Load Tasks QS5 | Manoj Patel | PMO | 932 | 0 0.03 277.59 277.63 277.59  |  |  | True |
| 760 | 1.2.1.8 | 1.2.1.8 | 4 | RTR_CM09_Activity_Type | 2026-04-08 | 2026-04-09 | 2026-04-08 | 2026-04-09 | 100 | 1.22 | As Soon As Possible | Complete | 0d | 0d | COULD NOT BE DETERMINED | True |  | True |  | ITC1 Data Load Tasks QS5 |  |  | 753 |  | 767 |  |  |
| 808 | 1.2.1.8.1 | 1.2.1.8.1 | 5 | Load File Staged and Posted "Ready" | 2026-04-08 | 2026-04-08 | 2026-04-08 | 2026-04-08 | 100 | 0.125 | As Soon As Possible | Complete | 0h | 0h | Kasey Hughes |  |  | True |  | RTR_CM09_Activity_Type |  | Finance | 809 | 3.28 3.41 302.88 303 299.59  | 776 | 776 3.28125 Post Load Validation |  |
| 809 | 1.2.1.8.2 | 1.2.1.8.2 | 5 | Pre Load Validation | 2026-04-08 | 2026-04-09 | 2026-04-08 | 2026-04-09 | 100 | 0.25 | As Soon As Possible | Complete | 0h | 0h | Kasey Hughes |  |  | True |  | RTR_CM09_Activity_Type | Brian Wagner | Finance | 810 | 3.41 3.66 303 303.25 299.59  | 808 | 808 3.40625 Load File Staged and Posted "Ready" |  |
| 810 | 1.2.1.8.3 | 1.2.1.8.3 | 5 | Simulate Load | 2026-04-09 | 2026-04-09 | 2026-04-09 | 2026-04-09 | 100 | 0.125 | As Soon As Possible | Complete | 0h | 0h | Data Migration Team |  |  | True |  | RTR_CM09_Activity_Type |  | Data | 811 | 3.66 3.78 303.25 303.38 299.59  | 809 | 809 3.65625 Pre Load Validation |  |
| 811 | 1.2.1.8.4 | 1.2.1.8.4 | 5 | Error and Defect Mitigation | 2026-04-09 | 2026-04-09 | 2026-04-09 | 2026-04-09 | 100 | 0.25 | As Soon As Possible | Complete | 0h | 0h | Kasey Hughes |  |  | True |  | RTR_CM09_Activity_Type | Brian Wagner | Finance | 812 | 3.78 4.03 303.38 303.63 299.59  | 810 | 810 3.78125 Simulate Load |  |
| 812 | 1.2.1.8.5 | 1.2.1.8.5 | 5 | Load | 2026-04-09 | 2026-04-09 | 2026-04-09 | 2026-04-09 | 100 | 0.125 | As Soon As Possible | Complete | 0h | 0h | Data Migration Team |  |  | True |  | RTR_CM09_Activity_Type |  | Data | 813 | 4.03 4.16 303.63 303.75 299.59  | 811 | 811 4.03125 Error and Defect Mitigation |  |
| 813 | 1.2.1.8.6 | 1.2.1.8.6 | 5 | Post Load Validation | 2026-04-09 | 2026-04-09 | 2026-04-09 | 2026-04-09 | 100 | 0.25 | As Soon As Possible | Complete | 0h | 0h | Kasey Hughes |  |  | True |  | RTR_CM09_Activity_Type | Brian Wagner | Finance |  | 4.16 4.41 303.75 304 299.59  | 812 | 812 4.15625 Load |  |
| 753 | 1.2.1.9 | 1.2.1.9 | 4 | RTR_CM12_Activity Rates | 2026-04-07 | 2026-04-08 | 2026-04-07 | 2026-04-08 | 100 | 1.13 | As Soon As Possible | Complete | 0d | 0d | COULD NOT BE DETERMINED | True |  | True |  | ITC1 Data Load Tasks QS5 |  |  | 757 |  | 760 |  |  |
| 965 | 1.2.1.9.1 | 1.2.1.9.1 | 5 | Load File Staged and Posted "Ready" | 2026-04-07 | 2026-04-07 | 2026-04-07 | 2026-04-07 | 100 | 0.125 | As Soon As Possible | Complete | 0h | 0h | Kasey Hughes |  |  | True |  | RTR_CM12_Activity Rates |  | Finance | 966 | 1.53 1.66 298.25 298.38 296.72  | 787 | 787 1.53125 Post Load Validation |  |
| 966 | 1.2.1.9.2 | 1.2.1.9.2 | 5 | Pre Load Validation | 2026-04-07 | 2026-04-07 | 2026-04-07 | 2026-04-07 | 100 | 0.25 | As Soon As Possible | Complete | 0h | 0h | Kasey Hughes |  |  | True |  | RTR_CM12_Activity Rates | Brian Wagner | Finance | 967 | 1.66 1.91 298.38 298.63 296.72  | 965 | 965 1.65625 Load File Staged and Posted "Ready" |  |
| 967 | 1.2.1.9.3 | 1.2.1.9.3 | 5 | Simulate Load | 2026-04-07 | 2026-04-08 | 2026-04-07 | 2026-04-08 | 100 | 0.125 | As Soon As Possible | Complete | 0h | 0h | Data Migration Team |  |  | True |  | RTR_CM12_Activity Rates |  | Data | 968 | 1.91 2.03 298.63 298.75 296.72  | 966 | 966 1.90625 Pre Load Validation |  |
| 968 | 1.2.1.9.4 | 1.2.1.9.4 | 5 | Error and Defect Mitigation | 2026-04-08 | 2026-04-08 | 2026-04-08 | 2026-04-08 | 100 | 0.25 | As Soon As Possible | Complete | 0h | 0h | Kasey Hughes |  |  | True |  | RTR_CM12_Activity Rates | Brian Wagner | Finance | 969 | 2.03 2.28 298.75 299 296.72  | 967 | 967 2.03125 Simulate Load |  |
| 969 | 1.2.1.9.5 | 1.2.1.9.5 | 5 | Load | 2026-04-08 | 2026-04-08 | 2026-04-08 | 2026-04-08 | 100 | 0.125 | As Soon As Possible | Complete | 0h | 0h | Data Migration Team |  |  | True |  | RTR_CM12_Activity Rates |  | Data | 970 | 2.28 2.41 303.63 303.75 301.34  | 968 | 968 2.28125 Error and Defect Mitigation |  |
| 970 | 1.2.1.9.6 | 1.2.1.9.6 | 5 | Post Load Validation | 2026-04-08 | 2026-04-08 | 2026-04-08 | 2026-04-08 | 100 | 0.25 | As Soon As Possible | Complete | 0h | 0h | Kasey Hughes |  |  | True |  | RTR_CM12_Activity Rates | Brian Wagner | Finance |  | 2.41 2.66 303.75 304 301.34  | 969 | 969 2.40625 Load |  |
| 2809 | 1.2.2 | 1.2.2 | 3 | ITC2 Data Load Tasks QS4 | 2026-05-18 | 2026-10-12 | 2026-05-18 | 2026-10-12 | 0 | 105.63 | As Soon As Possible | Future Task | -90.75d | 0d | Jyoti Nain; Manoj Patel; Michelle Connnors; Roy John; Shiva Janga; Vishal Pujari; (Curtis) Todd Breithaupt; Jerry Ramos | True | True | True | True | Data Readiness | Manoj Patel | Data |  |  | 425, 849 |  |  |
| 1685 | 1.2.2.1 | 1.2.2.1 | 4 | PMO Authorization to Start Data Loads | 2026-05-18 | 2026-05-18 | 2026-04-06 | 2026-04-06 | 0 | 0.25 | Must Start On | Future Task | 0h | 0h | Mark George |  | True | True |  | ITC2 Data Load Tasks QS4 | Manoj Patel | PMO | 2800 | 0 0.25 303.75 304 303.75  | 849 |  |  |

| uid | wbs | outlineNumber | outlineLevel | name | start | finish | baselineStart | baselineFinish | percentComplete | durationDays | constraintType | status | totalSlackRaw | freeSlackRaw | resourceNames | summary | criticalFlag | active | summaryName | businessValidationOwner | workstream | successors | cpm | predecessors | drivers |
| --- | --- | --- | --- | --- | --- | --- | --- | --- | --- | --- | --- | --- | --- | --- | --- | --- | --- | --- | --- | --- | --- | --- | --- | --- | --- |
| 2800 | 1.2.2.2 | 1.2.2.2 | 4 | Master Data Loads | 2026-05-18 | 2026-05-29 | 2026-05-18 | 2026-05-29 | 0 | 9.63 | As Soon As Possible | Future Task | -9.56d | 0d | Jyoti Nain; Manoj Patel; Michelle Connnors; Roy John; Shiva Janga; Vishal Pujari; (Curtis) Todd Breithaupt; Jerry Ramos | True | True | True | ITC2 Data Load Tasks QS4 | Manoj Patel | Data | 2947 |  | 1685 |  |
| 1686 | 1.2.2.2.1 | 1.2.2.2.1 | 5 | RTR_CM02_Profit Center Hierarchy | 2026-05-18 | 2026-05-18 | 2026-04-06 | 2026-04-06 | 0 | 0.75 | As Soon As Possible | Future Task | -9.56d | 0d | COULD NOT BE DETERMINED | True | True | True | Master Data Loads | Brian Wagner |  | 17, 191, 721 |  |  |  |
| 1687 | 1.2.2.2.1.1 | 1.2.2.2.1.1 | 6 | Manual File Staged and Posted "Ready" | 2026-05-18 | 2026-05-18 | 2026-04-06 | 2026-04-06 | 0 | 0.125 | As Soon As Possible | Future Task | -76.52h | 0h | Kasey Hughes |  | True | True | RTR_CM02_Profit Center Hierarchy |  | Finance | 1688 | 0 0.13 299.25 299.38 299.25  |  |  |
| 1688 | 1.2.2.2.1.2 | 1.2.2.2.1.2 | 6 | Load | 2026-05-18 | 2026-05-18 | 2026-04-06 | 2026-04-06 | 0 | 0.25 | As Soon As Possible | Future Task | -76.52h | 0h | Kasey Hughes |  | True | True | RTR_CM02_Profit Center Hierarchy |  | Finance | 1689 | 0.13 0.38 299.38 299.63 299.25  | 1687 | 1687 0.125 Manual File Staged and Posted "Ready" |
| 1689 | 1.2.2.2.1.3 | 1.2.2.2.1.3 | 6 | Post Load Validation | 2026-05-18 | 2026-05-18 | 2026-04-06 | 2026-04-06 | 0 | 0.375 | As Soon As Possible | Future Task | -76.52h | 0h | Kasey Hughes |  | True | True | RTR_CM02_Profit Center Hierarchy | Brian Wagner | Finance | 16, 911, 704 | 0.38 0.75 299.63 300 299.25  | 1688 | 1688 0.375 Load |
| 1743 | 1.2.2.2.10 | 1.2.2.2.10 | 5 | RTR_CM08_Exchange_Rates | 2026-05-19 | 2026-05-20 | 2026-04-09 | 2026-04-10 | 0 | 1.13 | As Soon As Possible | Future Task | -2.06d | 0d | COULD NOT BE DETERMINED | True | True | True | Master Data Loads |  |  |  |  |  |  |
| 1744 | 1.2.2.2.10.1 | 1.2.2.2.10.1 | 6 | Load File Staged and Posted "Ready" | 2026-05-19 | 2026-05-19 | 2026-04-09 | 2026-04-09 | 0 | 0.125 | As Soon As Possible | Future Task | -16.52h | 0h | Kasey Hughes |  | True | True | RTR_CM08_Exchange_Rates |  | Finance | 1745 | 1 1.13 302.88 303 301.88  | 1741 | 1741 1 Load |
| 1745 | 1.2.2.2.10.2 | 1.2.2.2.10.2 | 6 | Pre Load Validation | 2026-05-19 | 2026-05-19 | 2026-04-09 | 2026-04-10 | 0 | 0.25 | As Soon As Possible | Future Task | -16.52h | 0h | Kasey Hughes |  | True | True | RTR_CM08_Exchange_Rates | Brian Wagner | Finance | 1746 | 1.13 1.38 303 303.25 301.88  | 1744 | 1744 1.125 Load File Staged and Posted "Ready" |
| 1746 | 1.2.2.2.10.3 | 1.2.2.2.10.3 | 6 | Simulate Load | 2026-05-19 | 2026-05-19 | 2026-04-10 | 2026-04-10 | 0 | 0.125 | As Soon As Possible | Future Task | -16.52h | 0h | Data Migration Team |  | True | True | RTR_CM08_Exchange_Rates |  | Data | 1747 | 1.38 1.5 303.25 303.38 301.88  | 1745 | 1745 1.375 Pre Load Validation |
| 1747 | 1.2.2.2.10.4 | 1.2.2.2.10.4 | 6 | Error and Defect Mitigation | 2026-05-19 | 2026-05-19 | 2026-04-10 | 2026-04-10 | 0 | 0.25 | As Soon As Possible | Future Task | -16.52h | 0h | Kasey Hughes |  | True | True | RTR_CM08_Exchange_Rates | Brian Wagner | Finance | 1748 | 1.5 1.75 303.38 303.63 301.88  | 1746 | 1746 1.5 Simulate Load |
| 1748 | 1.2.2.2.10.5 | 1.2.2.2.10.5 | 6 | Load | 2026-05-20 | 2026-05-20 | 2026-04-10 | 2026-04-10 | 0 | 0.125 | As Soon As Possible | Future Task | -16.52h | 0h | Data Migration Team |  | True | True | RTR_CM08_Exchange_Rates |  | Data | 1749 | 1.75 1.88 303.63 303.75 301.88  | 1747 | 1747 1.75 Error and Defect Mitigation |
| 1749 | 1.2.2.2.10.6 | 1.2.2.2.10.6 | 6 | Post Load Validation | 2026-05-20 | 2026-05-20 | 2026-04-10 | 2026-04-10 | 0 | 0.25 | As Soon As Possible | Future Task | -16.52h | 0h | Kasey Hughes |  | True | True | RTR_CM08_Exchange_Rates | Brian Wagner | Finance |  | 1.88 2.13 303.75 304 301.88  | 1748 | 1748 1.875 Load |
| 1750 | 1.2.2.2.11 | 1.2.2.2.11 | 5 | RTR_CM14_Cost Element_Group | 2026-05-21 | 2026-05-25 | 2026-04-08 | 2026-04-15 | 0 | 1.44 | As Soon As Possible | Future Task | -4.81d | 0d | Kasey Hughes | True | True | True | Master Data Loads | Brian Wagner | Finance |  |  |  |  |
| 1751 | 1.2.2.2.11.1 | 1.2.2.2.11.1 | 6 | Manual File Staged and Posted "Ready" | 2026-05-21 | 2026-05-21 | 2026-04-08 | 2026-04-14 | 0 | 0.0625 | As Soon As Possible | Future Task | -2311m | 0m | Kasey Hughes |  | True | True | RTR_CM14_Cost Element_Group |  | Finance | 1752 | 3.25 3.31 302.56 302.63 299.31  | 1700 | 1700 3.25 Post Load Validation |
| 1752 | 1.2.2.2.11.2 | 1.2.2.2.11.2 | 6 | Load | 2026-05-21 | 2026-05-22 | 2026-04-15 | 2026-04-15 | 0 | 1 | As Soon As Possible | Future Task | -38.52h | 0h | Kasey Hughes |  | True | True | RTR_CM14_Cost Element_Group |  | Finance | 1753 | 3.31 4.31 302.63 303.63 299.31  | 1751 | 1751 3.3125 Manual File Staged and Posted "Ready" |
| 1753 | 1.2.2.2.11.3 | 1.2.2.2.11.3 | 6 | Post Load Validation | 2026-05-22 | 2026-05-25 | 2026-04-15 | 2026-04-15 | 0 | 0.375 | Start No Earlier Than | Future Task | -38.52h | 0h | Kasey Hughes |  | True | True | RTR_CM14_Cost Element_Group | Brian Wagner | Finance |  | 4.31 4.69 303.63 304 299.31  | 1752 | 1752 4.3125 Load |
| 1754 | 1.2.2.2.12 | 1.2.2.2.12 | 5 | OTC_CM19_Customer_Master - Bill-To | 2026-05-18 | 2026-05-18 | 2025-04-16 | 2025-04-16 | 0 | 0.25 | As Soon As Possible | Future Task | -1.52h | 0h | Anitha Jothi; Kim Kolesar; Michele Colombo; Michiko Tomihari; Ric Haraida; Rod Santos; Shibu Mathew; Narendra Kallam; Keith Riley; James Manohar |  | True | True | Master Data Loads | Kim Kolesar | OTC |  | 0 0.25 303.75 304 303.75  |  |  |
| 1755 | 1.2.2.2.13 | 1.2.2.2.13 | 5 | OTC_CM19_Customer_Master - Ship-To | 2026-05-21 | 2026-05-25 | 2026-04-08 | 2026-04-13 | 0 | 1.5 | As Soon As Possible | Future Task | -9.31d | 0d | Anitha Jothi; Kim Kolesar; Michele Colombo; Michiko Tomihari; Ric Haraida; Rod Santos; Shibu Mathew; Narendra Kallam; Keith Riley; James Manohar | True | True | True | Master Data Loads | Kim Kolesar | OTC |  |  |  |  |
| 1756 | 1.2.2.2.13.1 | 1.2.2.2.13.1 | 6 | Load File Staged and Posted "Ready" | 2026-05-21 | 2026-05-21 | 2026-04-08 | 2026-04-08 | 0 | 0.0625 | As Soon As Possible | Future Task | -4471m | 0m | Ric Haraida |  | True | True | OTC_CM19_Customer_Master - Ship-To |  | OTC | 1757 | 3.25 3.31 302.5 302.56 299.25  | 1700 | 1700 3.25 Post Load Validation |
| 1757 | 1.2.2.2.13.2 | 1.2.2.2.13.2 | 6 | Pre Load Validation | 2026-05-21 | 2026-05-21 | 2026-04-08 | 2026-04-08 | 0 | 0.0625 | As Soon As Possible | Future Task | -4471m | 0m | Ric Haraida |  | True | True | OTC_CM19_Customer_Master - Ship-To | Kim Kolesar | OTC | 176, 117, 661, 758 | 3.31 3.38 302.56 302.63 299.25  | 1756 | 1756 3.3125 Load File Staged and Posted "Ready" |
| 1758 | 1.2.2.2.13.3 | 1.2.2.2.13.3 | 6 | Open client for BP number range update | 2026-05-21 | 2026-05-21 | 2026-04-08 | 2026-04-09 | 0 | 0.0625 | As Soon As Possible | Future Task | -1756m | 0m | Basis |  | True | True | OTC_CM19_Customer_Master - Ship-To |  | Basis | 1759 | 3.38 3.44 303.84 303.91 300.47  | 1757 | 1757 3.375 Pre Load Validation |
| 1759 | 1.2.2.2.13.4 | 1.2.2.2.13.4 | 6 | Update number range BP02 from Internal to External | 2026-05-21 | 2026-05-21 | 2026-04-09 | 2026-04-10 | 0 | 0.0625 | As Soon As Possible | Future Task | -1756m | 0m | Ric Haraida |  | True | True | OTC_CM19_Customer_Master - Ship-To |  | OTC | 1760 | 3.44 3.5 303.91 303.97 300.47  | 1758 | 1758 3.4375 Open client for BP number range update |
| 1760 | 1.2.2.2.13.5 | 1.2.2.2.13.5 | 6 | Close Client | 2026-05-21 | 2026-05-21 | 2026-04-10 | 2026-04-13 | 0 | 0.03125 | As Soon As Possible | Future Task | -1756m | 0m | Basis |  | True | True | OTC_CM19_Customer_Master - Ship-To |  | Basis |  | 3.5 3.53 303.97 304 300.47  | 1759 | 1759 3.5 Update number range BP02 from Internal to External |
| 1761 | 1.2.2.2.13.6 | 1.2.2.2.13.6 | 6 | Simulate Load | 2026-05-21 | 2026-05-21 | 2026-04-08 | 2026-04-09 | 0 | 0.125 | As Soon As Possible | Future Task | -74.52h | 0h | Data Migration Team |  | True | True | OTC_CM19_Customer_Master - Ship-To |  | Data | 176, 217, 681, 772 | 3.38 3.5 302.63 302.75 299.25  | 1757 | 1757 3.375 Pre Load Validation |
| 1762 | 1.2.2.2.13.7 | 1.2.2.2.13.7 | 6 | Error and Defect Mitigation | 2026-05-21 | 2026-05-22 | 2026-04-09 | 2026-04-09 | 0 | 0.5 | As Soon As Possible | Future Task | -39.02h | 0h | Ric Haraida |  | True | True | OTC_CM19_Customer_Master - Ship-To | Kim Kolesar | OTC | 1763 | 3.5 4 302.75 303.25 299.25  | 1761 | 1761 3.5 Simulate Load |
| 1763 | 1.2.2.2.13.8 | 1.2.2.2.13.8 | 6 | Load | 2026-05-22 | 2026-05-22 | 2026-04-09 | 2026-04-09 | 0 | 0.375 | As Soon As Possible | Future Task | -39.02h | 0h | Data Migration Team |  | True | True | OTC_CM19_Customer_Master - Ship-To |  | Data | 1764 | 4 4.38 303.25 303.63 299.25  | 1762 | 1762 4 Error and Defect Mitigation |
| 1764 | 1.2.2.2.13.9 | 1.2.2.2.13.9 | 6 | Post Load Validation | 2026-05-22 | 2026-05-25 | 2026-04-09 | 2026-04-10 | 0 | 0.375 | As Soon As Possible | Future Task | -39.02h | 0h | Ric Haraida |  | True | True | OTC_CM19_Customer_Master - Ship-To | Kim Kolesar | OTC |  | 4.38 4.75 303.63 304 299.25  | 1763 | 1763 4.375 Load |
| 1765 | 1.2.2.2.14 | 1.2.2.2.14 | 5 | OTC_CM19_Customer_Master - Sold-To | 2026-05-21 | 2026-05-25 | 2026-04-08 | 2026-04-10 | 0 | 1.63 | As Soon As Possible | Future Task | -9.19d | 0d | Anitha Jothi; Kim Kolesar; Michele Colombo; Michiko Tomihari; Ric Haraida; Rod Santos; Shibu Mathew; Narendra Kallam; Keith Riley; James Manohar | True | True | True | Master Data Loads | Kim Kolesar | OTC |  |  |  |  |
| 1766 | 1.2.2.2.14.1 | 1.2.2.2.14.1 | 6 | Load File Staged and Posted "Ready" | 2026-05-21 | 2026-05-21 | 2026-04-08 | 2026-04-09 | 0 | 0.0625 | As Soon As Possible | Future Task | -1741m | 0m | Ric Haraida |  | True | True | OTC_CM19_Customer_Master - Sold-To |  | OTC | 1767 | 3.38 3.44 303.88 303.94 300.5  | 1757 | 1757 3.375 Pre Load Validation |
| 1767 | 1.2.2.2.14.2 | 1.2.2.2.14.2 | 6 | Pre Load Validation | 2026-05-21 | 2026-05-21 | 2026-04-09 | 2026-04-09 | 0 | 0.0625 | As Soon As Possible | Future Task | -1741m | 0m | Ric Haraida |  | True | True | OTC_CM19_Customer_Master - Sold-To | Kim Kolesar | OTC |  | 3.44 3.5 303.94 304 300.5  | 1766 | 1766 3.4375 Load File Staged and Posted "Ready" |
| 1768 | 1.2.2.2.14.3 | 1.2.2.2.14.3 | 6 | Simulate Load | 2026-05-22 | 2026-05-22 | 2026-04-09 | 2026-04-09 | 0 | 0.125 | As Soon As Possible | Future Task | -76.52h | 0h | Data Migration Team |  | True | True | OTC_CM19_Customer_Master - Sold-To |  | Data | 1769 | 0 0.13 301.38 301.5 301.38  | 17, 21, 761 |  |
| 1769 | 1.2.2.2.14.4 | 1.2.2.2.14.4 | 6 | Error and Defect Mitigation | 2026-05-22 | 2026-05-22 | 2026-04-09 | 2026-04-09 | 0 | 0.375 | As Soon As Possible | Future Task | -76.52h | 0h | Ric Haraida |  | True | True | OTC_CM19_Customer_Master - Sold-To | Kim Kolesar | OTC | 1770 | 0.13 0.5 301.5 301.88 301.38  | 1768 | 1768 0.125 Simulate Load |
| 1770 | 1.2.2.2.14.5 | 1.2.2.2.14.5 | 6 | Load | 2026-05-22 | 2026-05-25 | 2026-04-09 | 2026-04-10 | 0 | 0.375 | As Soon As Possible | Future Task | -76.52h | 0h | Data Migration Team |  | True | True | OTC_CM19_Customer_Master - Sold-To |  | Data | 17, 711, 776, 178, 317, 800, 0 | 0.5 0.88 301.88 302.25 301.38  | 1769 | 1769 0.5 Error and Defect Mitigation |
| 1771 | 1.2.2.2.14.6 | 1.2.2.2.14.6 | 6 | Post Load Validation | 2026-05-25 | 2026-05-25 | 2026-04-10 | 2026-04-10 | 0 | 0.375 | As Soon As Possible | Future Task | -41.02h | 0h | Ric Haraida |  | True | True | OTC_CM19_Customer_Master - Sold-To | Kim Kolesar | OTC |  | 0.88 1.25 303.63 304 302.75  | 1770 | 1770 0.875 Load |
| 1772 | 1.2.2.2.14.7 | 1.2.2.2.14.7 | 6 | Open client for BP number range update | 2026-05-21 | 2026-05-21 | 2026-04-09 | 2026-04-09 | 0 | 0.03125 | As Soon As Possible | Future Task | -1786m | 0m | Basis |  | True | True | OTC_CM19_Customer_Master - Sold-To |  | Basis | 1773 | 3.5 3.53 303.91 303.94 300.41  | 1761 | 1761 3.5 Simulate Load |
| 1773 | 1.2.2.2.14.8 | 1.2.2.2.14.8 | 6 | Update number range BP02 from Internal to External | 2026-05-21 | 2026-05-21 | 2026-04-09 | 2026-04-09 | 0 | 0.03125 | As Soon As Possible | Future Task | -1786m | 0m | Ric Haraida |  | True | True | OTC_CM19_Customer_Master - Sold-To |  | OTC | 1774 | 3.53 3.56 303.94 303.97 300.41  | 1772 | 1772 3.53125 Open client for BP number range update |
| 1774 | 1.2.2.2.14.9 | 1.2.2.2.14.9 | 6 | Close Client | 2026-05-22 | 2026-05-22 | 2026-04-09 | 2026-04-09 | 0 | 0.03125 | As Soon As Possible | Future Task | -1786m | 0m | Basis |  | True | True | OTC_CM19_Customer_Master - Sold-To |  | Basis |  | 3.56 3.59 303.97 304 300.41  | 1773 | 1773 3.5625 Update number range BP02 from Internal to External |
| 1775 | 1.2.2.2.15 | 1.2.2.2.15 | 5 | PTP_CM27_Vendor Master as Customer - FLCU01 | 2026-05-25 | 2026-05-29 | 2026-04-10 | 2026-04-14 | 0 | 4.81 | As Soon As Possible | Future Task | -9.56d | 0d | Muniraju Surappachari; Nevin Varkey; Samuel Houff; Sarasija Ghosh; Surendra Krishna Acharya; Swetha SethumadhavaRao; James Farmer | True | True | True | Master Data Loads | Muniraju Surappachari | PTP |  |  |  |  |
| 1776 | 1.2.2.2.15.1 | 1.2.2.2.15.1 | 6 | Extract File | 2026-05-25 | 2026-05-25 | 2026-04-10 | 2026-04-10 | 0 | 0.125 | As Soon As Possible | Future Task | -76.52h | 0h | Data Migration Team |  | True | True | PTP_CM27_Vendor Master as Customer - FLCU01 |  | Data | 1777 | 0.88 1 303.63 303.75 302.75  | 1770 | 1770 0.875 Load |
| 1777 | 1.2.2.2.15.2 | 1.2.2.2.15.2 | 6 | Pre Load Validation | 2026-05-25 | 2026-05-25 | 2026-04-10 | 2026-04-10 | 0 | 0.25 | As Soon As Possible | Future Task | -76.52h | 0h | Nevin Varkey |  | True | True | PTP_CM27_Vendor Master as Customer - FLCU01 | Sam Houff | PTP | 1778 | 1 1.25 303.75 304 302.75  | 1776 | 1776 1 Extract File |
| 1778 | 1.2.2.2.15.3 | 1.2.2.2.15.3 | 6 | Simulate Load | 2026-05-25 | 2026-05-26 | 2026-04-10 | 2026-04-13 | 0 | 1.40625 | As Soon As Possible | Future Task | -76.52h | 0h | Data Migration Team |  | True | True | PTP_CM27_Vendor Master as Customer - FLCU01 |  | Data | 1779 | 0.16 1.56 301.97 303.38 301.81  | 17, 421, 777 | 777 0.15625 Manual File Staged and Posted "Ready" |
| 1779 | 1.2.2.2.15.4 | 1.2.2.2.15.4 | 6 | Error and Defect Mitigation | 2026-05-26 | 2026-05-28 | 2026-04-10 | 2026-04-14 | 0 | 0.25 | As Soon As Possible | Future Task | -76.52h | 0h | Nevin Varkey |  | True | True | PTP_CM27_Vendor Master as Customer - FLCU01 | Sam Houff | PTP | 1780 | 1.56 1.81 303.38 303.63 301.81  | 1778 | 1778 1.5625 Simulate Load |
| 1780 | 1.2.2.2.15.5 | 1.2.2.2.15.5 | 6 | Load | 2026-05-28 | 2026-05-29 | 2026-04-10 | 2026-04-14 | 0 | 0.125 | As Soon As Possible | Future Task | -76.52h | 0h | Data Migration Team |  | True | True | PTP_CM27_Vendor Master as Customer - FLCU01 |  | Data | 1781 | 1.81 1.94 303.63 303.75 301.81  | 1779 | 1779 1.8125 Error and Defect Mitigation |
| 1781 | 1.2.2.2.15.6 | 1.2.2.2.15.6 | 6 | Post Load Validation | 2026-05-29 | 2026-05-29 | 2026-04-14 | 2026-04-14 | 0 | 0.25 | As Soon As Possible | Future Task | -76.52h | 0h | Nevin Varkey |  | True | True | PTP_CM27_Vendor Master as Customer - FLCU01 | Sam Houff | PTP |  | 1.94 2.19 303.75 304 301.81  | 1780 | 1780 1.9375 Load |
| 1782 | 1.2.2.2.16 | 1.2.2.2.16 | 5 | OTC_CM23_Customer_Hierarchy | 2026-05-25 | 2026-05-25 | 2026-04-10 | 2026-04-10 | 0 | 0.69 | As Soon As Possible | Future Task | -5.44d | 0d | Anitha Jothi; Kim Kolesar; Michele Colombo; Michiko Tomihari; Ric Haraida; Rod Santos; Shibu Mathew; Narendra Kallam; Keith Riley; James Manohar | True | True | True | Master Data Loads | Kim Kolesar | OTC |  |  |  |  |
| 1783 | 1.2.2.2.16.1 | 1.2.2.2.16.1 | 6 | Manual File Staged and Posted "Ready" | 2026-05-25 | 2026-05-25 | 2026-04-10 | 2026-04-10 | 0 | 0.0625 | As Soon As Possible | Future Task | -2611m | 0m | Ric Haraida |  | True | True | OTC_CM23_Customer_Hierarchy | Kim Kolesar | OTC | 1784 | 0.88 0.94 303.31 303.38 302.44  | 1770 | 1770 0.875 Load |
| 1784 | 1.2.2.2.16.2 | 1.2.2.2.16.2 | 6 | Load | 2026-05-25 | 2026-05-25 | 2026-04-10 | 2026-04-10 | 0 | 0.25 | As Soon As Possible | Future Task | -43.52h | 0h | Ric Haraida |  | True | True | OTC_CM23_Customer_Hierarchy |  | OTC | 1785 | 0.94 1.19 303.38 303.63 302.44  | 1783 | 1783 0.9375 Manual File Staged and Posted "Ready" |
| 1785 | 1.2.2.2.16.3 | 1.2.2.2.16.3 | 6 | Post Load Validation | 2026-05-25 | 2026-05-25 | 2026-04-10 | 2026-04-10 | 0 | 0.375 | As Soon As Possible | Future Task | -43.52h | 0h | Ric Haraida |  | True | True | OTC_CM23_Customer_Hierarchy | Kim Kolesar | OTC |  | 1.19 1.56 303.63 304 302.44  | 1784 | 1784 1.1875 Load |
| 1786 | 1.2.2.2.17 | 1.2.2.2.17 | 5 | PTP_CM27_Vendor Master - Z001 - External Sales Rep | 2026-05-25 | 2026-05-28 | 2026-04-10 | 2026-04-13 | 0 | 3.38 | As Soon As Possible | Future Task | -8.13d | 0d | Muniraju Surappachari; Nevin Varkey; Samuel Houff; Sarasija Ghosh; Surendra Krishna Acharya; Swetha SethumadhavaRao; James Farmer | True | True | True | Master Data Loads | Kim Kolesar | PTP |  |  |  |  |
| 1787 | 1.2.2.2.17.1 | 1.2.2.2.17.1 | 6 | Extract File | 2026-05-25 | 2026-05-25 | 2026-04-10 | 2026-04-10 | 0 | 0.125 | As Soon As Possible | Future Task | -65.02h | 0h | Data Migration Team |  | True | True | PTP_CM27_Vendor Master - Z001 - External Sales Rep |  | Data | 17, 881, 801 | 0.88 1 302.97 303.09 302.09  | 1770 | 1770 0.875 Load |
| 1788 | 1.2.2.2.17.2 | 1.2.2.2.17.2 | 6 | Pre Load Validation | 2026-05-25 | 2026-05-25 | 2026-04-10 | 2026-04-10 | 0 | 0.25 | As Soon As Possible | Future Task | -65.02h | 0h | Nevin Varkey |  | True | True | PTP_CM27_Vendor Master - Z001 - External Sales Rep | Sam Houff | PTP | 1789 | 1 1.25 303.75 304 302.75  | 1787 | 1787 1 Extract File |
| 1789 | 1.2.2.2.17.3 | 1.2.2.2.17.3 | 6 | Simulate Load | 2026-05-25 | 2026-05-25 | 2026-04-10 | 2026-04-10 | 0 | 0.125 | As Soon As Possible | Future Task | -65.02h | 0h | Data Migration Team |  | True | True | PTP_CM27_Vendor Master - Z001 - External Sales Rep |  | Data | 1790 | 0 0.13 303.25 303.38 303.25  | 17, 421, 788 |  |
| 1790 | 1.2.2.2.17.4 | 1.2.2.2.17.4 | 6 | Error and Defect Mitigation | 2026-05-25 | 2026-05-25 | 2026-04-10 | 2026-04-10 | 0 | 0.25 | As Soon As Possible | Future Task | -65.02h | 0h | Nevin Varkey |  | True | True | PTP_CM27_Vendor Master - Z001 - External Sales Rep | Sam Houff | PTP | 1791 | 0.13 0.38 303.38 303.63 303.25  | 1789 | 1789 0.125 Simulate Load |
| 1791 | 1.2.2.2.17.5 | 1.2.2.2.17.5 | 6 | Load | 2026-05-25 | 2026-05-28 | 2026-04-10 | 2026-04-13 | 0 | 0.125 | As Soon As Possible | Future Task | -65.02h | 0h | Data Migration Team |  | True | True | PTP_CM27_Vendor Master - Z001 - External Sales Rep |  | Data | 1792 | 0.38 0.5 303.63 303.75 303.25  | 1790 | 1790 0.375 Error and Defect Mitigation |
| 1792 | 1.2.2.2.17.6 | 1.2.2.2.17.6 | 6 | Post Load Validation | 2026-05-28 | 2026-05-28 | 2026-04-13 | 2026-04-13 | 0 | 0.25 | As Soon As Possible | Future Task | -65.02h | 0h | Nevin Varkey |  | True | True | PTP_CM27_Vendor Master - Z001 - External Sales Rep | Sam Houff | PTP |  | 0.5 0.75 303.75 304 303.25  | 1791 | 1791 0.5 Load |
| 1793 | 1.2.2.2.18 | 1.2.2.2.18 | 5 | RTR_CM10_Credit_Management_Role | 2026-05-25 | 2026-05-26 | 2026-04-10 | 2026-04-13 | 0 | 1.84 | As Soon As Possible | Future Task | -7.35d | 0d | COULD NOT BE DETERMINED | True | True | True | Master Data Loads | Manjunatha Umesha |  |  |  |  |  |
| 1794 | 1.2.2.2.18.1 | 1.2.2.2.18.1 | 6 | Load File Staged and Posted "Ready" | 2026-05-25 | 2026-05-25 | 2026-04-10 | 2026-04-10 | 0 | 0.0625 | As Soon As Possible | Future Task | -3526m | 0m | Kasey Hughes |  | True | True | RTR_CM10_Credit_Management_Role |  | Finance | 1795 | 0.88 0.94 302.25 302.31 301.38  | 1770 | 1770 0.875 Load |
| 1795 | 1.2.2.2.18.2 | 1.2.2.2.18.2 | 6 | Pre Load Validation | 2026-05-25 | 2026-05-25 | 2026-04-10 | 2026-04-10 | 0 | 0.0625 | As Soon As Possible | Future Task | -3526m | 0m | Kasey Hughes |  | True | True | RTR_CM10_Credit_Management_Role | Brian Wagner | Finance | 1796 | 0.94 1 302.31 302.38 301.38  | 1794 | 1794 0.9375 Load File Staged and Posted "Ready" |
| 1796 | 1.2.2.2.18.3 | 1.2.2.2.18.3 | 6 | Simulate Load | 2026-05-25 | 2026-05-25 | 2026-04-10 | 2026-04-10 | 0 | 0.125 | As Soon As Possible | Future Task | -58.77h | 0h | Data Migration Team |  | True | True | RTR_CM10_Credit_Management_Role |  | Data | 1797 | 1 1.13 302.38 302.5 301.38  | 1795 | 1795 1 Pre Load Validation |
| 1797 | 1.2.2.2.18.4 | 1.2.2.2.18.4 | 6 | Error and Defect Mitigation | 2026-05-25 | 2026-05-25 | 2026-04-10 | 2026-04-10 | 0 | 0.25 | As Soon As Possible | Future Task | -58.77h | 0h | Kasey Hughes |  | True | True | RTR_CM10_Credit_Management_Role | Brian Wagner | Finance | 17, 981, 815 | 1.13 1.38 302.5 302.75 301.38  | 1796 | 1796 1.125 Simulate Load |
| 1798 | 1.2.2.2.18.5 | 1.2.2.2.18.5 | 6 | Load | 2026-05-25 | 2026-05-26 | 2026-04-10 | 2026-04-10 | 0 | 0.25 | As Soon As Possible | Future Task | -58.77h | 0h | Data Migration Team |  | True | True | RTR_CM10_Credit_Management_Role |  | Data | 1799 | 1.38 1.63 302.75 303 301.38  | 1797 | 1797 1.375 Error and Defect Mitigation |
| 1799 | 1.2.2.2.18.6 | 1.2.2.2.18.6 | 6 | Post Load Validation | 2026-05-26 | 2026-05-26 | 2026-04-10 | 2026-04-13 | 0 | 0.375 | As Soon As Possible | Future Task | -58.77h | 0h | Kasey Hughes |  | True | True | RTR_CM10_Credit_Management_Role | Brian Wagner | Finance | 18, 161, 981 | 1.63 2 303 303.38 301.38  | 1798 | 1798 1.625 Load |
| 1800 | 1.2.2.2.19 | 1.2.2.2.19 | 5 | PTP_CM27_Vendor Master | 2026-05-18 | 2026-05-26 | 2026-04-10 | 2026-04-15 | 0 | 6.28 | As Soon As Possible | Future Task | -8.78d | 0d | Muniraju Surappachari; Nevin Varkey; Samuel Houff; Sarasija Ghosh; Surendra Krishna Acharya; Swetha SethumadhavaRao; James Farmer | True | True | True | Master Data Loads | Muniraju Surappachari | PTP |  |  |  |  |
| 1801 | 1.2.2.2.19.1 | 1.2.2.2.19.1 | 6 | Extract File | 2026-05-25 | 2026-05-25 | 2026-04-10 | 2026-04-10 | 0 | 0.125 | As Soon As Possible | Future Task | -49.77h | 0h | Data Migration Team |  | True | True | PTP_CM27_Vendor Master |  | Data | 1802 | 1 1.13 303.09 303.22 302.09  | 1787 | 1787 1 Extract File |
| 1802 | 1.2.2.2.19.2 | 1.2.2.2.19.2 | 6 | Pre Load Validation | 2026-05-25 | 2026-05-25 | 2026-04-10 | 2026-04-10 | 0 | 0.25 | As Soon As Possible | Future Task | -49.77h | 0h | Nevin Varkey |  | True | True | PTP_CM27_Vendor Master | Sam Houff | PTP | 1803 | 1.13 1.38 303.22 303.47 302.09  | 1801 | 1801 1.125 Extract File |
| 1803 | 1.2.2.2.19.3 | 1.2.2.2.19.3 | 6 | Simulate Load | 2026-05-25 | 2026-05-25 | 2026-04-10 | 2026-04-14 | 0 | 0.28125 | As Soon As Possible | Future Task | -49.77h | 0h | Data Migration Team |  | True | True | PTP_CM27_Vendor Master |  | Data | 1804 | 1.38 1.66 303.47 303.75 302.09  | 1802 | 1802 1.375 Pre Load Validation |
| 1804 | 1.2.2.2.19.4 | 1.2.2.2.19.4 | 6 | Error and Defect Mitigation | 2026-05-25 | 2026-05-26 | 2026-04-14 | 2026-04-14 | 0 | 0.25 | As Soon As Possible | Future Task | -49.77h | 0h | Nevin Varkey |  | True | True | PTP_CM27_Vendor Master | Sam Houff | PTP |  | 1.66 1.91 303.75 304 302.09  | 1803 | 1803 1.65625 Simulate Load |
| 1805 | 1.2.2.2.19.5 | 1.2.2.2.19.5 | 6 | Load | 2026-05-18 | 2026-05-18 | 2026-04-14 | 2026-04-14 | 0 | 0.125 | As Soon As Possible | Future Task | -70.27h | 0h | Data Migration Team |  | True | True | PTP_CM27_Vendor Master |  | Data | 1806 | 0 0.13 297.19 297.31 297.19  |  |  |
| 1806 | 1.2.2.2.19.6 | 1.2.2.2.19.6 | 6 | Post Load Validation | 2026-05-18 | 2026-05-18 | 2026-04-15 | 2026-04-15 | 0 | 0.25 | As Soon As Possible | Future Task | -70.27h | 0h | Nevin Varkey |  | True | True | PTP_CM27_Vendor Master | Sam Houff | PTP | 181, 918, 341, 858 | 0.13 0.38 297.31 297.56 297.19  | 1805 | 1805 0.125 Load |
| 1690 | 1.2.2.2.2 | 1.2.2.2.2 | 5 | RTR_CM03_Cost Center Hierarchy | 2026-05-19 | 2026-05-19 | 2026-04-06 | 2026-04-07 | 0 | 0.75 | As Soon As Possible | Future Task | -9.56d | 0d | COULD NOT BE DETERMINED | True | True | True | Master Data Loads | Brian Wagner |  | 17, 191, 721 |  |  |  |

| uid | wbs | outlineNumber | outlineLevel | name | start | finish | baselineStart | baselineFinish | percentComplete | durationDays | constraintType | status | totalSlackRaw | freeSlackRaw | resourceNames | summary | criticalFlag | active | summaryName | businessValidationOwner | workstream | successors | cpm | predecessors | drivers |
| --- | --- | --- | --- | --- | --- | --- | --- | --- | --- | --- | --- | --- | --- | --- | --- | --- | --- | --- | --- | --- | --- | --- | --- | --- | --- |
| 1691 | 1.2.2.2.2.1 | 1.2.2.2.2.1 | 6 | Manual File Staged and Posted "Ready" | 2026-05-19 | 2026-05-19 | 2026-04-06 | 2026-04-06 | 0 | 0.125 | As Soon As Possible | Future Task | -76.52h | 0h | Kasey Hughes |  | True | True | RTR_CM03_Cost Center Hierarchy |  | Finance | 1692 | 0.75 0.88 300 300.13 299.25  | 1689 | 1689 0.75 Post Load Validation |
| 1692 | 1.2.2.2.2.2 | 1.2.2.2.2.2 | 6 | Load | 2026-05-19 | 2026-05-19 | 2026-04-06 | 2026-04-07 | 0 | 0.25 | As Soon As Possible | Future Task | -76.52h | 0h | Kasey Hughes |  | True | True | RTR_CM03_Cost Center Hierarchy |  | Finance | 1693 | 0.88 1.13 300.13 300.38 299.25  | 1691 | 1691 0.875 Manual File Staged and Posted "Ready" |
| 1693 | 1.2.2.2.2.3 | 1.2.2.2.2.3 | 6 | Post Load Validation | 2026-05-19 | 2026-05-19 | 2026-04-07 | 2026-04-07 | 0 | 0.375 | As Soon As Possible | Future Task | -76.52h | 0h | Kasey Hughes |  | True | True | RTR_CM03_Cost Center Hierarchy | Brian Wagner | Finance | 16, 951, 730 | 1.13 1.5 300.38 300.75 299.25  | 1692 | 1692 1.125 Load |
| 1807 | 1.2.2.2.20 | 1.2.2.2.20 | 5 | PTP_CM27_Vendor Master - Mass Maintenance - LFA1-WERKR | 2026-05-18 | 2026-05-19 | 2026-04-10 | 2026-04-15 | 0 | 0.88 | As Soon As Possible | Future Task | -1.44d | 0d | Muniraju Surappachari; Nevin Varkey; Samuel Houff; Sarasija Ghosh; Surendra Krishna Acharya; Swetha SethumadhavaRao; James Farmer | True | True | True | Master Data Loads | Muniraju Surappachari | PTP |  |  |  |  |
| 1808 | 1.2.2.2.20.1 | 1.2.2.2.20.1 | 6 | Extract File(Will Extract from LFA1) | 2026-05-18 | 2026-05-18 | 2026-04-10 | 2026-04-10 | 0 | 0.125 | As Soon As Possible | Future Task | -11.52h | 0h | Nevin Varkey |  | True | True | PTP_CM27_Vendor Master - Mass Maintenance - LFA1-WERKR |  | PTP | 18, 91, 833 | 0 0.13 302.5 302.63 302.5  |  |  |
| 1809 | 1.2.2.2.20.2 | 1.2.2.2.20.2 | 6 | Pre Load Validation | 2026-05-18 | 2026-05-18 | 2026-04-10 | 2026-04-10 | 0 | 0.25 | As Soon As Possible | Future Task | -11.52h | 0h | Nevin Varkey |  | True | True | PTP_CM27_Vendor Master - Mass Maintenance - LFA1-WERKR | Sam Houff | PTP | 1810 | 0.13 0.38 302.63 302.88 302.5  | 1808 | 1808 0.125 Extract File(Will Extract from LFA1) |
| 1810 | 1.2.2.2.20.3 | 1.2.2.2.20.3 | 6 | Simulate Load/ Not Needed | 2026-05-18 | 2026-05-18 | 2026-04-10 | 2026-04-10 | 0 | 0.125 | As Soon As Possible | Future Task | -11.52h | 0h | Nevin Varkey |  | True | True | PTP_CM27_Vendor Master - Mass Maintenance - LFA1-WERKR |  | PTP | 18, 111, 812 | 0.38 0.5 302.88 303 302.5  | 1809 | 1809 0.375 Pre Load Validation |
| 1811 | 1.2.2.2.20.4 | 1.2.2.2.20.4 | 6 | Error and Defect Mitigation | 2026-05-18 | 2026-05-18 | 2026-04-10 | 2026-04-13 | 0 | 0.25 | As Soon As Possible | Future Task | -5.52h | 0h | Nevin Varkey |  | True | True | PTP_CM27_Vendor Master - Mass Maintenance - LFA1-WERKR | Sam Houff | PTP |  | 0.5 0.75 303.75 304 303.25  | 1810 | 1810 0.5 Simulate Load/ Not Needed |
| 1812 | 1.2.2.2.20.5 | 1.2.2.2.20.5 | 6 | Load | 2026-05-18 | 2026-05-18 | 2026-04-15 | 2026-04-15 | 0 | 0.125 | As Soon As Possible | Future Task | -11.52h | 0h | Nevin Varkkey |  | True | True | PTP_CM27_Vendor Master - Mass Maintenance - LFA1-WERKR |  | PTP | 1813 | 0.5 0.63 303 303.13 302.5  | 1810 | 1810 0.5 Simulate Load/ Not Needed |
| 1813 | 1.2.2.2.20.6 | 1.2.2.2.20.6 | 6 | Post Load Validation | 2026-05-18 | 2026-05-19 | 2026-04-15 | 2026-04-15 | 0 | 0.25 | As Soon As Possible | Future Task | -11.52h | 0h | Nevin Varkey |  | True | True | PTP_CM27_Vendor Master - Mass Maintenance - LFA1-WERKR | Sam Houff | PTP | 2008 | 0.63 0.88 303.13 303.38 302.5  | 1812 | 1812 0.625 Load |
| 1814 | 1.2.2.2.21 | 1.2.2.2.21 | 5 | RTR_****_Credit Hierarchy | 2026-05-25 | 2026-05-27 | 2026-04-10 | 2026-04-13 | 0 | 1.91 | As Soon As Possible | Future Task | -7.22d | 0d | COULD NOT BE DETERMINED | True | True | True | Master Data Loads | Brian Wagner |  |  |  |  |  |
| 1815 | 1.2.2.2.21.1 | 1.2.2.2.21.1 | 6 | Manual File Staged and Posted "Ready" | 2026-05-25 | 2026-05-25 | 2026-04-10 | 2026-04-10 | 0 | 0.0625 | As Soon As Possible | Future Task | -2581m | 0m | Kasey Hughes |  | True | True | RTR_****_Credit Hierarchy | Brian Wagner | Finance |  | 1.38 1.44 303.94 304 302.56  | 1797 | 1797 1.375 Error and Defect Mitigation |
| 1816 | 1.2.2.2.21.2 | 1.2.2.2.21.2 | 6 | Load | 2026-05-26 | 2026-05-27 | 2026-04-13 | 2026-04-13 | 0 | 0.25 | As Soon As Possible | Future Task | -57.77h | 0h | Kasey Hughes |  | True | True | RTR_****_Credit Hierarchy |  | Finance | 1817 | 2 2.25 303.38 303.63 301.38  | 1799 | 1799 2 Post Load Validation |
| 1817 | 1.2.2.2.21.3 | 1.2.2.2.21.3 | 6 | Post Load Validation | 2026-05-27 | 2026-05-27 | 2026-04-13 | 2026-04-13 | 0 | 0.375 | As Soon As Possible | Future Task | -57.77h | 0h | Kasey Hughes |  | True | True | RTR_****_Credit Hierarchy | Brian Wagner | Finance |  | 2.25 2.63 303.63 304 301.38  | 1816 | 1816 2.25 Load |
| 1818 | 1.2.2.2.22 | 1.2.2.2.22 | 5 | PTP_CM27_BP_Intercompany Supplier | 2026-05-18 | 2026-05-19 | 2026-04-13 | 2026-04-14 | 0 | 1.13 | As Soon As Possible | Future Task | -1.44d | 0d | Muniraju Surappachari; Nevin Varkey; Samuel Houff; Sarasija Ghosh; Surendra Krishna Acharya; Swetha SethumadhavaRao; James Farmer | True | True | True | Master Data Loads | Muniraju Surappachari | PTP |  |  |  |  |
| 1819 | 1.2.2.2.22.1 | 1.2.2.2.22.1 | 6 | Load File Staged and Posted "Ready" | 2026-05-18 | 2026-05-18 | 2026-04-13 | 2026-04-13 | 0 | 0.0625 | As Soon As Possible | Future Task | -691m | 0m | Nevin Varkey,Ric Haraida |  | True | True | PTP_CM27_BP_Intercompany Supplier |  | PTP | 1820 | 0.38 0.44 302.88 302.94 302.5  | 1806 | 1806 0.375 Post Load Validation |
| 1820 | 1.2.2.2.22.2 | 1.2.2.2.22.2 | 6 | Pre Load Validation | 2026-05-18 | 2026-05-18 | 2026-04-13 | 2026-04-13 | 0 | 0.0625 | As Soon As Possible | Future Task | -691m | 0m | Nevin Varkey,Ric Haraida |  | True | True | PTP_CM27_BP_Intercompany Supplier | Sam Houff,Kim Kolesar | PTP | 1821 | 0.44 0.5 302.94 303 302.5  | 1819 | 1819 0.4375 Load File Staged and Posted "Ready" |
| 1821 | 1.2.2.2.22.3 | 1.2.2.2.22.3 | 6 | Simulate Load | 2026-05-18 | 2026-05-18 | 2026-04-13 | 2026-04-13 | 0 | 0.125 | As Soon As Possible | Future Task | -11.52h | 0h | Data Migration Team |  | True | True | PTP_CM27_BP_Intercompany Supplier |  | Data | 1822 | 0.5 0.63 303 303.13 302.5  | 1820 | 1820 0.5 Pre Load Validation |
| 1822 | 1.2.2.2.22.4 | 1.2.2.2.22.4 | 6 | Error and Defect Mitigation | 2026-05-18 | 2026-05-19 | 2026-04-13 | 2026-04-13 | 0 | 0.25 | As Soon As Possible | Future Task | -11.52h | 0h | Nevin Varkey,Ric Haraida |  | True | True | PTP_CM27_BP_Intercompany Supplier | Sam Houff,Kim Kolesar | PTP | 1823 | 0.63 0.88 303.13 303.38 302.5  | 1821 | 1821 0.625 Simulate Load |
| 1823 | 1.2.2.2.22.5 | 1.2.2.2.22.5 | 6 | Load | 2026-05-19 | 2026-05-19 | 2026-04-13 | 2026-04-14 | 0 | 0.25 | As Soon As Possible | Future Task | -11.52h | 0h | Data Migration Team |  | True | True | PTP_CM27_BP_Intercompany Supplier |  | Data | 18, 241, 980 | 0.88 1.13 303.38 303.63 302.5  | 1822 | 1822 0.875 Error and Defect Mitigation |
| 1824 | 1.2.2.2.22.6 | 1.2.2.2.22.6 | 6 | Post Load Validation | 2026-05-19 | 2026-05-19 | 2026-04-14 | 2026-04-14 | 0 | 0.375 | As Soon As Possible | Future Task | -11.52h | 0h | Nevin Varkey,Ric Haraida |  | True | True | PTP_CM27_BP_Intercompany Supplier | Sam Houff,Kim Kolesar | PTP |  | 1.13 1.5 303.63 304 302.5  | 1823 | 1823 1.125 Load |
| 1825 | 1.2.2.2.23 | 1.2.2.2.23 | 5 | PTP_CM27_BP_Intercompany Customer | 2026-05-18 | 2026-05-19 | 2026-04-13 | 2026-04-14 | 0 | 1.06 | As Soon As Possible | Future Task | -1d | 0d | Muniraju Surappachari; Nevin Varkey; Samuel Houff; Sarasija Ghosh; Surendra Krishna Acharya; Swetha SethumadhavaRao; James Farmer | True | True | True | Master Data Loads | Muniraju Surappachari | PTP |  |  |  |  |
| 1826 | 1.2.2.2.23.1 | 1.2.2.2.23.1 | 6 | Load File Staged and Posted "Ready" | 2026-05-18 | 2026-05-18 | 2026-04-13 | 2026-04-13 | 0 | 0.0625 | As Soon As Possible | Future Task | -1m | 0m | Nevin Varkey,Ric Haraida |  | True | True | PTP_CM27_BP_Intercompany Customer |  | PTP |  | 0 0.06 303.94 304 303.94  |  |  |
| 1827 | 1.2.2.2.23.2 | 1.2.2.2.23.2 | 6 | Pre Load Validation | 2026-05-18 | 2026-05-18 | 2026-04-13 | 2026-04-13 | 0 | 0.0625 | As Soon As Possible | Future Task | -481m | 0m | Nevin Varkey,Ric Haraida |  | True | True | PTP_CM27_BP_Intercompany Customer | Sam Houff,Kim Kolesar | PTP | 1828 | 0 0.06 302.94 303 302.94  |  |  |
| 1828 | 1.2.2.2.23.3 | 1.2.2.2.23.3 | 6 | Simulate Load | 2026-05-18 | 2026-05-18 | 2026-04-13 | 2026-04-13 | 0 | 0.125 | As Soon As Possible | Future Task | -8.02h | 0h | Data Migration Team |  | True | True | PTP_CM27_BP_Intercompany Customer |  | Data | 1829 | 0.06 0.19 303 303.13 302.94  | 1827 | 1827 0.0625 Pre Load Validation |
| 1829 | 1.2.2.2.23.4 | 1.2.2.2.23.4 | 6 | Error and Defect Mitigation | 2026-05-18 | 2026-05-18 | 2026-04-13 | 2026-04-13 | 0 | 0.25 | As Soon As Possible | Future Task | -8.02h | 0h | Nevin Varkey,Ric Haraida |  | True | True | PTP_CM27_BP_Intercompany Customer | Sam Houff,Kim Kolesar | PTP | 1830 | 0.19 0.44 303.13 303.38 302.94  | 1828 | 1828 0.1875 Simulate Load |
| 1830 | 1.2.2.2.23.5 | 1.2.2.2.23.5 | 6 | Load | 2026-05-18 | 2026-05-18 | 2026-04-13 | 2026-04-14 | 0 | 0.25 | As Soon As Possible | Future Task | -8.02h | 0h | Data Migration Team |  | True | True | PTP_CM27_BP_Intercompany Customer |  | Data | 18, 311, 980 | 0.44 0.69 303.38 303.63 302.94  | 1829 | 1829 0.4375 Error and Defect Mitigation |
| 1831 | 1.2.2.2.23.6 | 1.2.2.2.23.6 | 6 | Post Load Validation | 2026-05-18 | 2026-05-19 | 2026-04-14 | 2026-04-14 | 0 | 0.375 | As Soon As Possible | Future Task | -8.02h | 0h | Nevin Varkey,Ric Haraida |  | True | True | PTP_CM27_BP_Intercompany Customer | Sam Houff,Kim Kolesar | PTP |  | 0.69 1.06 303.63 304 302.94  | 1830 | 1830 0.6875 Load |
| 1832 | 1.2.2.2.24 | 1.2.2.2.24 | 5 | PTP_CM26_Material_Master - All Types | 2026-05-18 | 2026-05-20 | 2026-04-10 | 2026-04-15 | 0 | 2.28 | As Soon As Possible | Future Task | -8.53d | 0d | Muniraju Surappachari; Nevin Varkey; Samuel Houff; Sarasija Ghosh; Surendra Krishna Acharya; Swetha SethumadhavaRao; James Farmer | True | True | True | Master Data Loads | Muniraju Surappachari | PTP |  |  |  |  |
| 1833 | 1.2.2.2.24.1 | 1.2.2.2.24.1 | 6 | Extract File | 2026-05-18 | 2026-05-19 | 2026-04-10 | 2026-04-13 | 0 | 0.625 | As Soon As Possible | Future Task | -7.27h | 0h | Data Migration Team |  | True | True | PTP_CM26_Material_Master - All Types |  | Data |  | 0.13 0.75 303.38 304 303.25  | 1808 | 1808 0.125 Extract File(Will Extract from LFA1) |
| 1834 | 1.2.2.2.24.2 | 1.2.2.2.24.2 | 6 | Pre Load Validation | 2026-05-18 | 2026-05-19 | 2026-04-13 | 2026-04-14 | 0 | 0.25 | As Soon As Possible | Future Task | -70.27h | 0h | Nevin Varkey,Ric Haraida |  | True | True | PTP_CM26_Material_Master - All Types | Sam Houff,Kim Kolesar,Matt | PTP | 1835 | 0.38 0.63 297.56 297.81 297.19  | 1806 | 1806 0.375 Post Load Validation |
| 1835 | 1.2.2.2.24.3 | 1.2.2.2.24.3 | 6 | Simulate Load | 2026-05-19 | 2026-05-19 | 2026-04-14 | 2026-04-14 | 0 | 0.125 | As Soon As Possible | Future Task | -70.27h | 0h | Data Migration Team |  | True | True | PTP_CM26_Material_Master - All Types |  | Data | 1836 | 0.63 0.75 297.81 297.94 297.19  | 1834 | 1834 0.625 Pre Load Validation |
| 1836 | 1.2.2.2.24.4 | 1.2.2.2.24.4 | 6 | Error and Defect Mitigation | 2026-05-19 | 2026-05-20 | 2026-04-14 | 2026-04-14 | 0 | 0.5 | As Soon As Possible | Future Task | -70.27h | 0h | Nevin Varkey |  | True | True | PTP_CM26_Material_Master - All Types | Sam Houff,Kim Kolesar,Matt | PTP | 1837 | 0.75 1.25 297.94 298.44 297.19  | 1835 | 1835 0.75 Simulate Load |
| 1837 | 1.2.2.2.24.5 | 1.2.2.2.24.5 | 6 | Load | 2026-05-20 | 2026-05-20 | 2026-04-14 | 2026-04-15 | 0 | 0.375 | As Soon As Possible | Future Task | -70.27h | 0h | Data Migration Team |  | True | True | PTP_CM26_Material_Master - All Types |  | Data | 183, 818, 411, 848 | 1.25 1.63 298.44 298.81 297.19  | 1836 | 1836 1.25 Error and Defect Mitigation |
| 1838 | 1.2.2.2.24.6 | 1.2.2.2.24.6 | 6 | Post Load Validation | 2026-05-20 | 2026-05-20 | 2026-04-15 | 2026-04-15 | 0 | 0.25 | As Soon As Possible | Future Task | -63.77h | 0h | Nevin Varkey |  | True | True | PTP_CM26_Material_Master - All Types | Sam Houff,Kim Kolesar,Matt | PTP | 185, 418, 611, 868 | 1.63 1.88 303.75 304 302.13  | 1837 | 1837 1.625 Load |
| 1839 | 1.2.2.2.25 | 1.2.2.2.25 | 5 | PTP_CM26_Material_Master - SERV - Service Materials | 2026-05-20 | 2026-05-21 | 2026-04-07 | 2026-04-15 | 0 | 1.34 | As Soon As Possible | Future Task | -3.16d | 0d | Muniraju Surappachari; Nevin Varkey; Samuel Houff; Sarasija Ghosh; Surendra Krishna Acharya; Swetha SethumadhavaRao; James Farmer | True | True | True | Master Data Loads | Muniraju Surappachari | PTP |  |  |  |  |
| 1840 | 1.2.2.2.25.1 | 1.2.2.2.25.1 | 6 | Load File Staged and Posted "Ready" | 2026-05-20 | 2026-05-20 | 2026-04-07 | 2026-04-07 | 0 | 0.0625 | As Soon As Possible | Future Task | -901m | 0m | Nevin Varkey,Ric Haraida |  | True | True | PTP_CM26_Material_Master - SERV - Service Materials |  | PTP |  | 1.88 1.94 303.94 304 302.06  | 1709 | 1709 1.875 Post Load Validation |
| 1841 | 1.2.2.2.25.2 | 1.2.2.2.25.2 | 6 | Pre Load Validation | 2026-05-20 | 2026-05-20 | 2026-04-14 | 2026-04-14 | 0 | 0.0625 | As Soon As Possible | Future Task | -1516m | 0m | Nevin Varkey,Ric Haraida |  | True | True | PTP_CM26_Material_Master - SERV - Service Materials | Sam Houff,Kim Kolesar | PTP | 1842 | 1.63 1.69 302.94 303 301.31  | 1837 | 1837 1.625 Load |
| 1842 | 1.2.2.2.25.3 | 1.2.2.2.25.3 | 6 | Simulate Load | 2026-05-20 | 2026-05-20 | 2026-04-14 | 2026-04-14 | 0 | 0.125 | As Soon As Possible | Future Task | -25.27h | 0h | Data Migration Team |  | True | True | PTP_CM26_Material_Master - SERV - Service Materials |  | Data | 1843 | 1.69 1.81 303 303.13 301.31  | 1841 | 1841 1.6875 Pre Load Validation |
| 1843 | 1.2.2.2.25.4 | 1.2.2.2.25.4 | 6 | Error and Defect Mitigation | 2026-05-20 | 2026-05-20 | 2026-04-14 | 2026-04-15 | 0 | 0.25 | As Soon As Possible | Future Task | -25.27h | 0h | Nevin Varkey,Ric Haraida |  | True | True | PTP_CM26_Material_Master - SERV - Service Materials | Sam Houff,Kim Kolesar | PTP | 1844 | 1.81 2.06 303.13 303.38 301.31  | 1842 | 1842 1.8125 Simulate Load |
| 1844 | 1.2.2.2.25.5 | 1.2.2.2.25.5 | 6 | Load | 2026-05-20 | 2026-05-21 | 2026-04-15 | 2026-04-15 | 0 | 0.25 | As Soon As Possible | Future Task | -25.27h | 0h | Data Migration Team |  | True | True | PTP_CM26_Material_Master - SERV - Service Materials |  | Data | 1845 | 2.06 2.31 303.38 303.63 301.31  | 1843 | 1843 2.0625 Error and Defect Mitigation |
| 1845 | 1.2.2.2.25.6 | 1.2.2.2.25.6 | 6 | Post Load Validation | 2026-05-21 | 2026-05-21 | 2026-04-15 | 2026-04-15 | 0 | 0.375 | As Soon As Possible | Future Task | -25.27h | 0h | Nevin Varkey,Ric Haraida |  | True | True | PTP_CM26_Material_Master - SERV - Service Materials | Sam Houff,Kim Kolesar | PTP |  | 2.31 2.69 303.63 304 301.31  | 1844 | 1844 2.3125 Load |
| 1846 | 1.2.2.2.26 | 1.2.2.2.26 | 5 | PTP_CM26_Material_Master - KMAT - Configurable Materials | 2026-05-20 | 2026-05-21 | 2026-04-07 | 2026-04-15 | 0 | 1.34 | As Soon As Possible | Future Task | -8.5d | 0d | Muniraju Surappachari; Nevin Varkey; Samuel Houff; Sarasija Ghosh; Surendra Krishna Acharya; Swetha SethumadhavaRao; James Farmer | True | True | True | Master Data Loads | Muniraju Surappachari | PTP | 19, 391, 936 |  |  |  |
| 1847 | 1.2.2.2.26.1 | 1.2.2.2.26.1 | 6 | Load File Staged and Posted "Ready" | 2026-05-20 | 2026-05-20 | 2026-04-07 | 2026-04-07 | 0 | 0.0625 | As Soon As Possible | Future Task | -2146m | 0m | Eric Heisler |  | True | True | PTP_CM26_Material_Master - KMAT - Configurable Materials |  | PTM |  | 1.88 1.94 303.94 304 302.06  | 1709 | 1709 1.875 Post Load Validation |
| 1848 | 1.2.2.2.26.2 | 1.2.2.2.26.2 | 6 | Pre Load Validation | 2026-05-20 | 2026-05-20 | 2026-04-14 | 2026-04-14 | 0 | 0.0625 | As Soon As Possible | Future Task | -4216m | 0m | Eric Heisler |  | True | True | PTP_CM26_Material_Master - KMAT - Configurable Materials | Sam Houff,Kim Kolesar,Matt | PTM | 1849 | 1.63 1.69 298.81 298.88 297.19  | 1837 | 1837 1.625 Load |
| 1849 | 1.2.2.2.26.3 | 1.2.2.2.26.3 | 6 | Simulate Load | 2026-05-20 | 2026-05-20 | 2026-04-14 | 2026-04-14 | 0 | 0.125 | As Soon As Possible | Future Task | -70.27h | 0h | Data Migration Team |  | True | True | PTP_CM26_Material_Master - KMAT - Configurable Materials |  | Data | 1850 | 1.69 1.81 298.88 299 297.19  | 1848 | 1848 1.6875 Pre Load Validation |
| 1850 | 1.2.2.2.26.4 | 1.2.2.2.26.4 | 6 | Error and Defect Mitigation | 2026-05-20 | 2026-05-20 | 2026-04-14 | 2026-04-15 | 0 | 0.25 | As Soon As Possible | Future Task | -70.27h | 0h | Eric Heisler |  | True | True | PTP_CM26_Material_Master - KMAT - Configurable Materials | Sam Houff,Kim Kolesar,Matt | PTM | 1851 | 1.81 2.06 299 299.25 297.19  | 1849 | 1849 1.8125 Simulate Load |
| 1851 | 1.2.2.2.26.5 | 1.2.2.2.26.5 | 6 | Load | 2026-05-20 | 2026-05-21 | 2026-04-15 | 2026-04-15 | 0 | 0.25 | As Soon As Possible | Future Task | -70.27h | 0h | Data Migration Team |  | True | True | PTP_CM26_Material_Master - KMAT - Configurable Materials |  | Data | 1852 | 2.06 2.31 299.25 299.5 297.19  | 1850 | 1850 2.0625 Error and Defect Mitigation |
| 1852 | 1.2.2.2.26.6 | 1.2.2.2.26.6 | 6 | Post Load Validation | 2026-05-21 | 2026-05-21 | 2026-04-15 | 2026-04-15 | 0 | 0.375 | As Soon As Possible | Future Task | -70.27h | 0h | Eric Heisler |  | True | True | PTP_CM26_Material_Master - KMAT - Configurable Materials | Sam Houff,Kim Kolesar,Matt | PTM | 18, 541, 861, 186, 819, 300, 0 | 2.31 2.69 299.5 299.88 297.19  | 1851 | 1851 2.3125 Load |
| 1853 | 1.2.2.2.27 | 1.2.2.2.27 | 5 | PTP_CM28_Purchase_Info_Records | 2026-05-18 | 2026-05-22 | 2026-04-15 | 2026-04-16 | 0 | 3.59 | As Soon As Possible | Future Task | -4.96d | 0d | Muniraju Surappachari; Nevin Varkey; Samuel Houff; Sarasija Ghosh; Surendra Krishna Acharya; Swetha SethumadhavaRao; James Farmer | True | True | True | Master Data Loads | Muniraju Surappachari | PTP |  |  |  |  |
| 1854 | 1.2.2.2.27.1 | 1.2.2.2.27.1 | 6 | Extract File | 2026-05-21 | 2026-05-21 | 2026-04-15 | 2026-04-15 | 0 | 0.125 | As Soon As Possible | Future Task | -62.39h | 0h | Data Migration Team |  | True | True | PTP_CM28_Purchase_Info_Records |  | Data | 18, 551, 875 | 0 0.13 299.53 299.66 299.53  | 18, 381, 852 |  |
| 1855 | 1.2.2.2.27.2 | 1.2.2.2.27.2 | 6 | Pre Load Validation | 2026-05-21 | 2026-05-21 | 2026-04-15 | 2026-04-16 | 0 | 0.25 | As Soon As Possible | Future Task | -31.27h | 0h | Nevin Varkey |  | True | True | PTP_CM28_Purchase_Info_Records | Sam Houff | PTP | 1856 | 0.13 0.38 303.38 303.63 303.25  | 1854 | 1854 0.125 Extract File |
| 1856 | 1.2.2.2.27.3 | 1.2.2.2.27.3 | 6 | Simulate Load | 2026-05-21 | 2026-05-21 | 2026-04-16 | 2026-04-16 | 0 | 0.125 | As Soon As Possible | Future Task | -31.27h | 0h | Data Migration Team |  | True | True | PTP_CM28_Purchase_Info_Records |  | Data | 1857 | 0.38 0.5 303.63 303.75 303.25  | 1855 | 1855 0.375 Pre Load Validation |
| 1857 | 1.2.2.2.27.4 | 1.2.2.2.27.4 | 6 | Error and Defect Mitigation | 2026-05-21 | 2026-05-22 | 2026-04-16 | 2026-04-16 | 0 | 0.25 | As Soon As Possible | Future Task | -31.27h | 0h | Nevin Varkey |  | True | True | PTP_CM28_Purchase_Info_Records | Sam Houff | PTP |  | 0.5 0.75 303.75 304 303.25  | 1856 | 1856 0.5 Simulate Load |
| 1858 | 1.2.2.2.27.5 | 1.2.2.2.27.5 | 6 | Load | 2026-05-18 | 2026-05-18 | 2026-04-15 | 2026-04-15 | 0 | 0.125 | As Soon As Possible | Future Task | -5.52h | 0h | Data Migration Team |  | True | True | PTP_CM28_Purchase_Info_Records |  | Data | 1859 | 0.38 0.5 303.63 303.75 303.25  | 1806 | 1806 0.375 Post Load Validation |
| 1859 | 1.2.2.2.27.6 | 1.2.2.2.27.6 | 6 | Post Load Validation | 2026-05-18 | 2026-05-18 | 2026-04-15 | 2026-04-15 | 0 | 0.25 | As Soon As Possible | Future Task | -5.52h | 0h | Nevin Varkey |  | True | True | PTP_CM28_Purchase_Info_Records | Sam Houff | PTP |  | 0.5 0.75 303.75 304 303.25  | 1858 | 1858 0.5 Load |
| 1860 | 1.2.2.2.28 | 1.2.2.2.28 | 5 | PTP_CM28_Purchase_Info_Record External Processing | 2026-05-21 | 2026-05-22 | 2026-04-15 | 2026-04-16 | 0 | 1.13 | As Soon As Possible | Future Task | -4.28d | 0d | Muniraju Surappachari; Nevin Varkey; Samuel Houff; Sarasija Ghosh; Surendra Krishna Acharya; Swetha SethumadhavaRao; James Farmer | True | True | True | Master Data Loads | Muniraju Surappachari | PTP |  |  |  |  |
| 1861 | 1.2.2.2.28.1 | 1.2.2.2.28.1 | 6 | Load File Staged and Posted "Ready" | 2026-05-21 | 2026-05-21 | 2026-04-15 | 2026-04-15 | 0 | 0.0625 | As Soon As Possible | Future Task | -2056m | 0m | Nevin Varkey |  | True | True | PTP_CM28_Purchase_Info_Record External Processing |  | PTP | 1862 | 0 0.06 302.88 302.94 302.88  | 18, 381, 852 |  |
| 1862 | 1.2.2.2.28.2 | 1.2.2.2.28.2 | 6 | Pre Load Validation | 2026-05-21 | 2026-05-21 | 2026-04-15 | 2026-04-15 | 0 | 0.0625 | As Soon As Possible | Future Task | -2056m | 0m | Nevin Varkey |  | True | True | PTP_CM28_Purchase_Info_Record External Processing | Sam Houff | PTP | 1863 | 0.06 0.13 302.94 303 302.88  | 1861 | 1861 0.0625 Load File Staged and Posted "Ready" |
| 1863 | 1.2.2.2.28.3 | 1.2.2.2.28.3 | 6 | Simulate Load | 2026-05-21 | 2026-05-21 | 2026-04-15 | 2026-04-16 | 0 | 0.125 | As Soon As Possible | Future Task | -34.27h | 0h | Data Migration Team |  | True | True | PTP_CM28_Purchase_Info_Record External Processing |  | Data | 1864 | 0.13 0.25 303 303.13 302.88  | 1862 | 1862 0.125 Pre Load Validation |
| 1864 | 1.2.2.2.28.4 | 1.2.2.2.28.4 | 6 | Error and Defect Mitigation | 2026-05-21 | 2026-05-21 | 2026-04-16 | 2026-04-16 | 0 | 0.25 | As Soon As Possible | Future Task | -34.27h | 0h | Nevin Varkey |  | True | True | PTP_CM28_Purchase_Info_Record External Processing | Sam Houff | PTP | 1865 | 0.25 0.5 303.13 303.38 302.88  | 1863 | 1863 0.25 Simulate Load |
| 1865 | 1.2.2.2.28.5 | 1.2.2.2.28.5 | 6 | Load | 2026-05-21 | 2026-05-22 | 2026-04-16 | 2026-04-16 | 0 | 0.25 | As Soon As Possible | Future Task | -34.27h | 0h | Data Migration Team |  | True | True | PTP_CM28_Purchase_Info_Record External Processing |  | Data | 1866 | 0.5 0.75 303.38 303.63 302.88  | 1864 | 1864 0.5 Error and Defect Mitigation |
| 1866 | 1.2.2.2.28.6 | 1.2.2.2.28.6 | 6 | Post Load Validation | 2026-05-22 | 2026-05-22 | 2026-04-16 | 2026-04-16 | 0 | 0.375 | As Soon As Possible | Future Task | -34.27h | 0h | Nevin Varkey |  | True | True | PTP_CM28_Purchase_Info_Record External Processing | Sam Houff | PTP |  | 0.75 1.13 303.63 304 302.88  | 1865 | 1865 0.75 Load |
| 1867 | 1.2.2.2.29 | 1.2.2.2.29 | 5 | PTP_CM28_Purchase_Info_Record Subcontracting and Consignment | 2026-05-21 | 2026-05-22 | 2026-04-15 | 2026-04-16 | 0 | 1.13 | As Soon As Possible | Future Task | -8.78d | 0d | Muniraju Surappachari; Nevin Varkey; Samuel Houff; Sarasija Ghosh; Surendra Krishna Acharya; Swetha SethumadhavaRao; James Farmer | True | True | True | Master Data Loads | Muniraju Surappachari | PTP |  |  |  |  |
| 1868 | 1.2.2.2.29.1 | 1.2.2.2.29.1 | 6 | Load File Staged and Posted "Ready" | 2026-05-21 | 2026-05-21 | 2026-04-15 | 2026-04-15 | 0 | 0.0625 | As Soon As Possible | Future Task | -4216m | 0m | Nevin Varkey |  | True | True | PTP_CM28_Purchase_Info_Record Subcontracting and Consignment |  | PTP | 1869 | 0 0.06 298.38 298.44 298.38  | 18, 381, 852 |  |
| 1869 | 1.2.2.2.29.2 | 1.2.2.2.29.2 | 6 | Pre Load Validation | 2026-05-21 | 2026-05-21 | 2026-04-15 | 2026-04-15 | 0 | 0.0625 | As Soon As Possible | Future Task | -4216m | 0m | Nevin Varkey |  | True | True | PTP_CM28_Purchase_Info_Record Subcontracting and Consignment | Sam Houff | PTP | 1870 | 0.06 0.13 298.44 298.5 298.38  | 1868 | 1868 0.0625 Load File Staged and Posted "Ready" |
| 1870 | 1.2.2.2.29.3 | 1.2.2.2.29.3 | 6 | Simulate Load | 2026-05-21 | 2026-05-21 | 2026-04-15 | 2026-04-16 | 0 | 0.125 | As Soon As Possible | Future Task | -70.27h | 0h | Data Migration Team |  | True | True | PTP_CM28_Purchase_Info_Record Subcontracting and Consignment |  | Data | 18, 712, 2 | 0.13 0.25 298.5 298.63 298.38  | 1869 | 1869 0.125 Pre Load Validation |
| 1871 | 1.2.2.2.29.4 | 1.2.2.2.29.4 | 6 | Error and Defect Mitigation | 2026-05-21 | 2026-05-21 | 2026-04-16 | 2026-04-16 | 0 | 0.25 | As Soon As Possible | Future Task | -34.27h | 0h | Nevin Varkey |  | True | True | PTP_CM28_Purchase_Info_Record Subcontracting and Consignment | Sam Houff | PTP | 1872 | 0.25 0.5 303.13 303.38 302.88  | 1870 | 1870 0.25 Simulate Load |
| 1872 | 1.2.2.2.29.5 | 1.2.2.2.29.5 | 6 | Load | 2026-05-21 | 2026-05-22 | 2026-04-16 | 2026-04-16 | 0 | 0.25 | As Soon As Possible | Future Task | -34.27h | 0h | Data Migration Team |  | True | True | PTP_CM28_Purchase_Info_Record Subcontracting and Consignment |  | Data | 1873 | 0.5 0.75 303.38 303.63 302.88  | 1871 | 1871 0.5 Error and Defect Mitigation |
| 1873 | 1.2.2.2.29.6 | 1.2.2.2.29.6 | 6 | Post Load Validation | 2026-05-22 | 2026-05-22 | 2026-04-16 | 2026-04-16 | 0 | 0.375 | As Soon As Possible | Future Task | -34.27h | 0h | Nevin Varkey |  | True | True | PTP_CM28_Purchase_Info_Record Subcontracting and Consignment | Sam Houff | PTP |  | 0.75 1.13 303.63 304 302.88  | 1872 | 1872 0.75 Load |

| uid | wbs | outlineNumber | outlineLevel | name | start | finish | baselineStart | baselineFinish | percentComplete | durationDays | constraintType | status | totalSlackRaw | freeSlackRaw | resourceNames | summary | criticalFlag | active | summaryName | businessValidationOwner | workstream | successors | cpm | predecessors | drivers |
| --- | --- | --- | --- | --- | --- | --- | --- | --- | --- | --- | --- | --- | --- | --- | --- | --- | --- | --- | --- | --- | --- | --- | --- | --- | --- |
| 1694 | 1.2.2.2.3 | 1.2.2.2.3 | 5 | RTR_CM01_GL_Account_Master to CC 1000 | 2026-05-19 | 2026-05-22 | 2026-04-07 | 2026-04-09 | 0 | 2.44 | As Soon As Possible | Future Task | -9.56d | 0d | COULD NOT BE DETERMINED | True | True | True | Master Data Loads | Brian Wagner |  | 1719 |  |  |  |
| 1695 | 1.2.2.2.3.1 | 1.2.2.2.3.1 | 6 | Load File Staged and Posted "Ready" | 2026-05-19 | 2026-05-19 | 2026-04-07 | 2026-04-07 | 0 | 0.125 | As Soon As Possible | Future Task | -76.52h | 0h | Kasey Hughes |  | True | True | RTR_CM01_GL_Account_Master to CC 1000 |  | Finance | 1696 | 1.5 1.63 300.75 300.88 299.25  | 1693 | 1693 1.5 Post Load Validation |
| 1696 | 1.2.2.2.3.2 | 1.2.2.2.3.2 | 6 | Pre Load Validation | 2026-05-19 | 2026-05-20 | 2026-04-07 | 2026-04-07 | 0 | 0.25 | As Soon As Possible | Future Task | -76.52h | 0h | Kasey Hughes |  | True | True | RTR_CM01_GL_Account_Master to CC 1000 | Brian Wagner | Finance | 1697 | 1.63 1.88 300.88 301.13 299.25  | 1695 | 1695 1.625 Load File Staged and Posted "Ready" |
| 1697 | 1.2.2.2.3.3 | 1.2.2.2.3.3 | 6 | Simulate Load | 2026-05-20 | 2026-05-20 | 2026-04-07 | 2026-04-08 | 0 | 0.75 | As Soon As Possible | Future Task | -76.52h | 0h | Data Migration Team |  | True | True | RTR_CM01_GL_Account_Master to CC 1000 |  | Data | 1698 | 1.88 2.63 301.13 301.88 299.25  | 1696 | 1696 1.875 Pre Load Validation |
| 1698 | 1.2.2.2.3.4 | 1.2.2.2.3.4 | 6 | Error and Defect Mitigation | 2026-05-20 | 2026-05-21 | 2026-04-08 | 2026-04-08 | 0 | 0.25 | As Soon As Possible | Future Task | -76.52h | 0h | Kasey Hughes |  | True | True | RTR_CM01_GL_Account_Master to CC 1000 | Brian Wagner | Finance | 1699 | 2.63 2.88 301.88 302.13 299.25  | 1697 | 1697 2.625 Simulate Load |
| 1699 | 1.2.2.2.3.5 | 1.2.2.2.3.5 | 6 | Load | 2026-05-21 | 2026-05-21 | 2026-04-08 | 2026-04-08 | 0 | 0.125 | As Soon As Possible | Future Task | -76.52h | 0h | Data Migration Team |  | True | True | RTR_CM01_GL_Account_Master to CC 1000 |  | Data | 1700 | 2.88 3 302.13 302.25 299.25  | 1698 | 1698 2.875 Error and Defect Mitigation |
| 1700 | 1.2.2.2.3.6 | 1.2.2.2.3.6 | 6 | Post Load Validation | 2026-05-21 | 2026-05-21 | 2026-04-08 | 2026-04-08 | 0 | 0.25 | As Soon As Possible | Future Task | -76.52h | 0h | Kasey Hughes |  | True | True | RTR_CM01_GL_Account_Master to CC 1000 | Brian Wagner | Finance | 17, 231, 737, 175, 117, 500, 0 | 3 3.25 302.25 302.5 299.25  | 1699 | 1699 3 Load |
| 1701 | 1.2.2.2.3.7 | 1.2.2.2.3.7 | 6 | Extend GL to all Company Codes | 2026-05-21 | 2026-05-21 | 2026-04-08 | 2026-04-09 | 0 | 0.25 | As Soon As Possible | Future Task | -76.52h | 0h | Kasey Hughes |  | True | True | RTR_CM01_GL_Account_Master to CC 1000 | Brian Wagner | Finance | 1702 | 3.25 3.5 303.5 303.75 300.25  | 1700 | 1700 3.25 Post Load Validation |
| 1702 | 1.2.2.2.3.8 | 1.2.2.2.3.8 | 6 | Post GL Extention Validation | 2026-05-21 | 2026-05-22 | 2026-04-09 | 2026-04-09 | 0 | 0.25 | As Soon As Possible | Future Task | -76.52h | 0h | Chandrababu Boyapati |  | True | True | RTR_CM01_GL_Account_Master to CC 1000 | Brian Wagner | Finance | 17, 681, 721 | 3.5 3.75 303.75 304 300.25  | 1701 | 1701 3.5 Extend GL to all Company Codes |
| 1874 | 1.2.2.2.30 | 1.2.2.2.30 | 5 | PTM_CM31_BOM Conversion | 2026-05-21 | 2026-05-26 | 2026-04-15 | 2026-04-17 | 0 | 2.48 | As Soon As Possible | Future Task | -7.8d | 0d | Brad Meseck; Chip Holder; David Duda; Matt Palastro; Sunil Srinivasa; Aniruddha Sathe; Susan Graham; Eric Heisler; Sam Penrod; Furkan Alko | True | True | True | Master Data Loads | Manoj Patel | PTM |  |  |  |  |
| 1875 | 1.2.2.2.30.1 | 1.2.2.2.30.1 | 6 | Extract File | 2026-05-21 | 2026-05-21 | 2026-04-15 | 2026-04-16 | 0 | 0.125 | As Soon As Possible | Future Task | -62.39h | 0h | Data Migration Team |  | True | True | PTM_CM31_BOM Conversion |  | Data | 18, 761, 882 | 0.13 0.25 299.66 299.78 299.53  | 1854 | 1854 0.125 Extract File |
| 1876 | 1.2.2.2.30.2 | 1.2.2.2.30.2 | 6 | Pre Load Validation | 2026-05-21 | 2026-05-21 | 2026-04-16 | 2026-04-16 | 0 | 0.0625 | As Soon As Possible | Future Task | -62.39h | 0h | Brad Meseck |  | True | True | PTM_CM31_BOM Conversion | Matt Palastro, Dave Duda | PTM | 1877 | 0.25 0.31 299.78 299.84 299.53  | 1875 | 1875 0.25 Extract File |
| 1877 | 1.2.2.2.30.3 | 1.2.2.2.30.3 | 6 | Simulate Load | 2026-05-21 | 2026-05-25 | 2026-04-16 | 2026-04-16 | 0 | 1.9375 | As Soon As Possible | Future Task | -62.39h | 0h | Data Migration Team |  | True | True | PTM_CM31_BOM Conversion |  | Data | 1878 | 0.31 2.25 299.84 301.78 299.53  | 1876 | 1876 0.3125 Pre Load Validation |
| 1878 | 1.2.2.2.30.4 | 1.2.2.2.30.4 | 6 | Error and Defect Mitigation | 2026-05-25 | 2026-05-25 | 2026-04-16 | 2026-04-16 | 0 | 0.0625 | As Soon As Possible | Future Task | -62.39h | 0h | Brad Meseck |  | True | True | PTM_CM31_BOM Conversion | Matt Palastro, Dave Duda | PTM | 1879 | 2.25 2.31 301.78 301.84 299.53  | 1877 | 1877 2.25 Simulate Load |
| 1879 | 1-Apr | 1.2.2.2.30.5 | 6 | Load | 2026-05-25 | 2026-05-25 | 2026-04-16 | 2026-04-16 | 0 | 0.125 | As Soon As Possible | Future Task | -62.39h | 0h | Data Migration Team |  | True | True | PTM_CM31_BOM Conversion |  | Data | 1880 | 2.31 2.44 301.84 301.97 299.53  | 1878 | 1878 2.3125 Error and Defect Mitigation |
| 1880 | 1.2.2.2.30.6 | 1.2.2.2.30.6 | 6 | Post Load Validation | 2026-05-26 | 2026-05-26 | 2026-04-16 | 2026-04-17 | 0 | 0.0625 | As Soon As Possible | Future Task | -62.39h | 0h | Brad Meseck |  | True | True | PTM_CM31_BOM Conversion | Matt Palastro, Dave Duda | PTM | 1883 | 2.44 2.5 301.97 302.03 299.53  | 1879 | 1879 2.4375 Load |
| 1881 | 1.2.2.2.31 | 1.2.2.2.31 | 5 | PTM_CM40_Work Center Conversion | 2026-05-21 | 2026-05-26 | 2026-04-16 | 2026-04-20 | 0 | 3.08 | As Soon As Possible | Future Task | -7.8d | 0d | Brad Meseck; Chip Holder; David Duda; Matt Palastro; Sunil Srinivasa; Aniruddha Sathe; Susan Graham; Eric Heisler; Sam Penrod; Furkan Alko | True | True | True | Master Data Loads | Manoj Patel | PTM |  |  |  |  |
| 1882 | 1.2.2.2.31.1 | 1.2.2.2.31.1 | 6 | Extract File | 2026-05-21 | 2026-05-21 | 2026-04-16 | 2026-04-16 | 0 | 0.125 | As Soon As Possible | Future Task | -53.77h | 0h | Data Migration Team |  | True | True | PTM_CM40_Work Center Conversion |  | Data | 1889 | 0.25 0.38 300.69 300.81 300.44  | 1875 | 1875 0.25 Extract File |
| 1883 | 1.2.2.2.31.2 | 1.2.2.2.31.2 | 6 | Pre Load Validation | 2026-05-26 | 2026-05-26 | 2026-04-17 | 2026-04-17 | 0 | 0.25 | As Soon As Possible | Future Task | -62.39h | 0h | Brad Meseck |  | True | True | PTM_CM40_Work Center Conversion | Matt Palastro, Dave Duda | PTM | 1884 | 2.5 2.75 302.03 302.28 299.53  | 1880 | 1880 2.5 Post Load Validation |
| 1884 | 1.2.2.2.31.3 | 1.2.2.2.31.3 | 6 | Simulate Load | 2026-05-26 | 2026-05-26 | 2026-04-17 | 2026-04-17 | 0 | 0.03125 | As Soon As Possible | Future Task | -62.39h | 0h | Data Migration Team |  | True | True | PTM_CM40_Work Center Conversion |  | Data | 1885 | 2.75 2.78 302.28 302.31 299.53  | 1883 | 1883 2.75 Pre Load Validation |
| 1885 | 1.2.2.2.31.4 | 1.2.2.2.31.4 | 6 | Error and Defect Mitigation | 2026-05-26 | 2026-05-26 | 2026-04-17 | 2026-04-17 | 0 | 0.0625 | As Soon As Possible | Future Task | -62.39h | 0h | Brad Meseck |  | True | True | PTM_CM40_Work Center Conversion | Matt Palastro, Dave Duda | PTM | 1886 | 2.78 2.84 302.31 302.38 299.53  | 1884 | 1884 2.78125 Simulate Load |
| 1886 | 1.2.2.2.31.5 | 1.2.2.2.31.5 | 6 | Load | 2026-05-26 | 2026-05-26 | 2026-04-17 | 2026-04-17 | 0 | 0.125 | As Soon As Possible | Future Task | -62.39h | 0h | Data Migration Team |  | True | True | PTM_CM40_Work Center Conversion |  | Data | 1887 | 2.84 2.97 302.38 302.5 299.53  | 1885 | 1885 2.84375 Error and Defect Mitigation |
| 1887 | 1.2.2.2.31.6 | 1.2.2.2.31.6 | 6 | Post Load Validation | 2026-05-26 | 2026-05-26 | 2026-04-17 | 2026-04-20 | 0 | 0.25 | As Soon As Possible | Future Task | -62.39h | 0h | Brad Meseck |  | True | True | PTM_CM40_Work Center Conversion | Matt Palastro, Dave Duda | PTM | 1890 | 2.97 3.22 302.5 302.75 299.53  | 1886 | 1886 2.96875 Load |
| 1888 | 1.2.2.2.32 | 1.2.2.2.32 | 5 | PTM_CM38_Routing Conversion | 2026-05-21 | 2026-05-28 | 2026-04-16 | 2026-04-21 | 0 | 4.27 | As Soon As Possible | Future Task | -7.8d | 0d | Brad Meseck; Chip Holder; David Duda; Matt Palastro; Sunil Srinivasa; Aniruddha Sathe; Susan Graham; Eric Heisler; Sam Penrod; Furkan Alko | True | True | True | Master Data Loads | Manoj Patel | PTM |  |  |  |  |
| 1889 | 1.2.2.2.32.1 | 1.2.2.2.32.1 | 6 | Extract File | 2026-05-21 | 2026-05-21 | 2026-04-16 | 2026-04-16 | 0 | 0.125 | As Soon As Possible | Future Task | -53.77h | 0h | Data Migration Team |  | True | True | PTM_CM38_Routing Conversion |  | Data | 1896 | 0.38 0.5 300.81 300.94 300.44  | 1882 | 1882 0.375 Extract File |
| 1890 | 1.2.2.2.32.2 | 1.2.2.2.32.2 | 6 | Pre Load Validation | 2026-05-26 | 2026-05-27 | 2026-04-20 | 2026-04-20 | 0 | 0.25 | As Soon As Possible | Future Task | -62.39h | 0h | Brad Meseck |  | True | True | PTM_CM38_Routing Conversion | Matt Palastro, Dave Duda | PTM | 1891 | 3.22 3.47 302.75 303 299.53  | 1887 | 1887 3.21875 Post Load Validation |
| 1891 | 1.2.2.2.32.3 | 1.2.2.2.32.3 | 6 | Simulate Load | 2026-05-27 | 2026-05-27 | 2026-04-20 | 2026-04-20 | 0 | 0.25 | As Soon As Possible | Future Task | -62.39h | 0h | Data Migration Team |  | True | True | PTM_CM38_Routing Conversion |  | Data | 1892 | 3.47 3.72 303 303.25 299.53  | 1890 | 1890 3.46875 Pre Load Validation |
| 1892 | 1.2.2.2.32.4 | 1.2.2.2.32.4 | 6 | Error and Defect Mitigation | 2026-05-27 | 2026-05-27 | 2026-04-20 | 2026-04-20 | 0 | 0.375 | As Soon As Possible | Future Task | -62.39h | 0h | Brad Meseck |  | True | True | PTM_CM38_Routing Conversion | Matt Palastro, Dave Duda | PTM | 1893 | 3.72 4.09 303.25 303.63 299.53  | 1891 | 1891 3.71875 Simulate Load |
| 1893 | 1.2.2.2.32.5 | 1.2.2.2.32.5 | 6 | Load | 2026-05-27 | 2026-05-27 | 2026-04-20 | 2026-04-20 | 0 | 0.125 | As Soon As Possible | Future Task | -62.39h | 0h | Data Migration Team |  | True | True | PTM_CM38_Routing Conversion |  | Data | 1894 | 4.09 4.22 303.63 303.75 299.53  | 1892 | 1892 4.09375 Error and Defect Mitigation |
| 1894 | 1.2.2.2.32.6 | 1.2.2.2.32.6 | 6 | Post Load Validation | 2026-05-27 | 2026-05-28 | 2026-04-20 | 2026-04-21 | 0 | 0.25 | As Soon As Possible | Future Task | -62.39h | 0h | Brad Meseck |  | True | True | PTM_CM38_Routing Conversion | Matt Palastro, Dave Duda | PTM |  | 4.22 4.47 303.75 304 299.53  | 1893 | 1893 4.21875 Load |
| 1895 | 1.2.2.2.33 | 1.2.2.2.33 | 5 | PTM_CM36_Production Version Conversion | 2026-05-21 | 2026-05-25 | 2026-04-16 | 2026-04-17 | 0 | 1.13 | As Soon As Possible | Future Task | -6.72d | 0d | Brad Meseck; Chip Holder; David Duda; Matt Palastro; Sunil Srinivasa; Aniruddha Sathe; Susan Graham; Eric Heisler; Sam Penrod; Furkan Alko | True | True | True | Master Data Loads | Brad Meseck | PTM |  |  |  |  |
| 1896 | 1.2.2.2.33.1 | 1.2.2.2.33.1 | 6 | Load File Staged and Posted "Ready" | 2026-05-21 | 2026-05-22 | 2026-04-16 | 2026-04-16 | 0 | 0.0625 | As Soon As Possible | Future Task | -3226m | 0m | Brad Meseck |  | True | True | PTM_CM36_Production Version Conversion |  | PTM | 18, 971, 991 | 0.5 0.56 300.94 301 300.44  | 1889 | 1889 0.5 Extract File |
| 1897 | 1.2.2.2.33.2 | 1.2.2.2.33.2 | 6 | Pre Load Validation | 2026-05-22 | 2026-05-22 | 2026-04-16 | 2026-04-16 | 0 | 0.0625 | As Soon As Possible | Future Task | -3226m | 0m | Brad Meseck |  | True | True | PTM_CM36_Production Version Conversion | Matt Palastro, Dave Duda | PTM | 1898 | 0.56 0.63 301 301.06 300.44  | 1896 | 1896 0.5625 Load File Staged and Posted "Ready" |
| 1898 | 1.2.2.2.33.3 | 1.2.2.2.33.3 | 6 | Simulate Load | 2026-05-22 | 2026-05-22 | 2026-04-16 | 2026-04-16 | 0 | 0.125 | As Soon As Possible | Future Task | -53.77h | 0h | Data Migration Team |  | True | True | PTM_CM36_Production Version Conversion |  | Data | 1899 | 0.63 0.75 301.06 301.19 300.44  | 1897 | 1897 0.625 Pre Load Validation |
| 1899 | 1.2.2.2.33.4 | 1.2.2.2.33.4 | 6 | Error and Defect Mitigation | 2026-05-22 | 2026-05-22 | 2026-04-16 | 2026-04-16 | 0 | 0.25 | As Soon As Possible | Future Task | -53.77h | 0h | Brad Meseck |  | True | True | PTM_CM36_Production Version Conversion | Matt Palastro, Dave Duda | PTM | 1900 | 0.75 1 301.19 301.44 300.44  | 1898 | 1898 0.75 Simulate Load |
| 1900 | 1.2.2.2.33.5 | 1.2.2.2.33.5 | 6 | Load | 2026-05-22 | 2026-05-22 | 2026-04-16 | 2026-04-17 | 0 | 0.25 | As Soon As Possible | Future Task | -53.77h | 0h | Data Migration Team |  | True | True | PTM_CM36_Production Version Conversion |  | Data | 1901 | 1 1.25 301.44 301.69 300.44  | 1899 | 1899 1 Error and Defect Mitigation |
| 1901 | 1.2.2.2.33.6 | 1.2.2.2.33.6 | 6 | Post Load Validation | 2026-05-22 | 2026-05-25 | 2026-04-17 | 2026-04-17 | 0 | 0.375 | As Soon As Possible | Future Task | -53.77h | 0h | Brad Meseck |  | True | True | PTM_CM36_Production Version Conversion | Matt Palastro, Dave Duda | PTM | 1903 | 1.25 1.63 301.69 302.06 300.44  | 1900 | 1900 1.25 Load |
| 1902 | 1.2.2.2.34 | 1.2.2.2.34 | 5 | PTM_CM35_Inspection Plan | 2026-05-25 | 2026-05-26 | 2026-04-17 | 2026-04-20 | 0 | 1.13 | As Soon As Possible | Future Task | -6.72d | 0d | Brad Meseck; Chip Holder; David Duda; Matt Palastro; Sunil Srinivasa; Aniruddha Sathe; Susan Graham; Eric Heisler; Sam Penrod; Furkan Alko | True | True | True | Master Data Loads | Brad Meseck | PTM |  |  |  |  |
| 1903 | 1.2.2.2.34.1 | 1.2.2.2.34.1 | 6 | Load File Staged and Posted "Ready" | 2026-05-25 | 2026-05-25 | 2026-04-17 | 2026-04-17 | 0 | 0.0625 | As Soon As Possible | Future Task | -3226m | 0m | Brad Meseck |  | True | True | PTM_CM35_Inspection Plan |  | PTM | 19, 41, 910 | 1.63 1.69 302.06 302.13 300.44  | 1901 | 1901 1.625 Post Load Validation |
| 1904 | 1.2.2.2.34.2 | 1.2.2.2.34.2 | 6 | Pre Load Validation | 2026-05-25 | 2026-05-25 | 2026-04-17 | 2026-04-17 | 0 | 0.0625 | As Soon As Possible | Future Task | -2836m | 0m | Brad Meseck |  | True | True | PTM_CM35_Inspection Plan | Matt Palastro, Dave Duda | PTM | 1905 | 1.69 1.75 302.94 303 301.25  | 1903 | 1903 1.6875 Load File Staged and Posted "Ready" |
| 1905 | 1.2.2.2.34.3 | 1.2.2.2.34.3 | 6 | Simulate Load | 2026-05-25 | 2026-05-25 | 2026-04-17 | 2026-04-17 | 0 | 0.125 | As Soon As Possible | Future Task | -47.27h | 0h | Data Migration Team |  | True | True | PTM_CM35_Inspection Plan |  | Data | 1906 | 1.75 1.88 303 303.13 301.25  | 1904 | 1904 1.75 Pre Load Validation |
| 1906 | 1.2.2.2.34.4 | 1.2.2.2.34.4 | 6 | Error and Defect Mitigation | 2026-05-25 | 2026-05-25 | 2026-04-17 | 2026-04-17 | 0 | 0.25 | As Soon As Possible | Future Task | -47.27h | 0h | Brad Meseck |  | True | True | PTM_CM35_Inspection Plan | Matt Palastro, Dave Duda | PTM | 1907 | 1.88 2.13 303.13 303.38 301.25  | 1905 | 1905 1.875 Simulate Load |
| 1907 | 1.2.2.2.34.5 | 1.2.2.2.34.5 | 6 | Load | 2026-05-25 | 2026-05-25 | 2026-04-17 | 2026-04-20 | 0 | 0.25 | As Soon As Possible | Future Task | -47.27h | 0h | Data Migration Team |  | True | True | PTM_CM35_Inspection Plan |  | Data | 1908 | 2.13 2.38 303.38 303.63 301.25  | 1906 | 1906 2.125 Error and Defect Mitigation |
| 1908 | 1.2.2.2.34.6 | 1.2.2.2.34.6 | 6 | Post Load Validation | 2026-05-25 | 2026-05-26 | 2026-04-20 | 2026-04-20 | 0 | 0.375 | As Soon As Possible | Future Task | -47.27h | 0h | Brad Meseck |  | True | True | PTM_CM35_Inspection Plan | Matt Palastro, Dave Duda | PTM |  | 2.38 2.75 303.63 304 301.25  | 1907 | 1907 2.375 Load |
| 1909 | 1.2.2.2.35 | 1.2.2.2.35 | 5 | PTM_CM48_Equipment_Master_Serial Numbers | 2026-05-25 | 2026-05-26 | 2026-04-17 | 2026-04-20 | 0 | 1.13 | As Soon As Possible | Future Task | -6.72d | 0d | Brad Meseck; Chip Holder; David Duda; Matt Palastro; Sunil Srinivasa; Aniruddha Sathe; Susan Graham; Eric Heisler; Sam Penrod; Furkan Alko | True | True | True | Master Data Loads | Brad Meseck | PTM |  |  |  |  |
| 1910 | 1.2.2.2.35.1 | 1.2.2.2.35.1 | 6 | Load File Staged and Posted "Ready" | 2026-05-25 | 2026-05-25 | 2026-04-17 | 2026-04-17 | 0 | 0.0625 | As Soon As Possible | Future Task | -3226m | 0m | Brad Meseck |  | True | True | PTM_CM48_Equipment_Master_Serial Numbers |  | PTM | 1911 | 1.69 1.75 302.13 302.19 300.44  | 1903 | 1903 1.6875 Load File Staged and Posted "Ready" |
| 1911 | 1.2.2.2.35.2 | 1.2.2.2.35.2 | 6 | Pre Load Validation | 2026-05-25 | 2026-05-25 | 2026-04-17 | 2026-04-17 | 0 | 0.0625 | As Soon As Possible | Future Task | -3226m | 0m | Brad Meseck |  | True | True | PTM_CM48_Equipment_Master_Serial Numbers | Matt Palastro, Dave Duda | PTM | 1912 | 1.75 1.81 302.19 302.25 300.44  | 1910 | 1910 1.75 Load File Staged and Posted "Ready" |
| 1912 | 1.2.2.2.35.3 | 1.2.2.2.35.3 | 6 | Simulate Load | 2026-05-25 | 2026-05-25 | 2026-04-17 | 2026-04-17 | 0 | 0.125 | As Soon As Possible | Future Task | -53.77h | 0h | Data Migration Team |  | True | True | PTM_CM48_Equipment_Master_Serial Numbers |  | Data | 1913 | 1.81 1.94 302.25 302.38 300.44  | 1911 | 1911 1.8125 Pre Load Validation |
| 1913 | 1.2.2.2.35.4 | 1.2.2.2.35.4 | 6 | Error and Defect Mitigation | 2026-05-25 | 2026-05-25 | 2026-04-17 | 2026-04-17 | 0 | 0.25 | As Soon As Possible | Future Task | -53.77h | 0h | Brad Meseck |  | True | True | PTM_CM48_Equipment_Master_Serial Numbers | Matt Palastro, Dave Duda | PTM | 1914 | 1.94 2.19 302.38 302.63 300.44  | 1912 | 1912 1.9375 Simulate Load |
| 1914 | 1.2.2.2.35.5 | 1.2.2.2.35.5 | 6 | Load | 2026-05-25 | 2026-05-25 | 2026-04-17 | 2026-04-20 | 0 | 0.25 | As Soon As Possible | Future Task | -53.77h | 0h | Data Migration Team |  | True | True | PTM_CM48_Equipment_Master_Serial Numbers |  | Data | 1915 | 2.19 2.44 302.63 302.88 300.44  | 1913 | 1913 2.1875 Error and Defect Mitigation |
| 1915 | 1.2.2.2.35.6 | 1.2.2.2.35.6 | 6 | Post Load Validation | 2026-05-25 | 2026-05-26 | 2026-04-20 | 2026-04-20 | 0 | 0.375 | As Soon As Possible | Future Task | -53.77h | 0h | Brad Meseck |  | True | True | PTM_CM48_Equipment_Master_Serial Numbers | Matt Palastro, Dave Duda | PTM | 1917 | 2.44 2.81 302.88 303.25 300.44  | 1914 | 1914 2.4375 Load |
| 1916 | 1.2.2.2.36 | 1.2.2.2.36 | 5 | PTM_CM48_Equipment_Master_Service | 2026-05-18 | 2026-05-27 | 2026-04-20 | 2026-04-21 | 0 | 6.78 | As Soon As Possible | Future Task | -6.72d | 0d | Brad Meseck; Chip Holder; David Duda; Matt Palastro; Sunil Srinivasa; Aniruddha Sathe; Susan Graham; Eric Heisler; Sam Penrod; Furkan Alko | True | True | True | Master Data Loads | Brad Meseck | PTM |  |  |  |  |
| 1917 | 1.2.2.2.36.1 | 1.2.2.2.36.1 | 6 | Load File Staged and Posted "Ready" | 2026-05-26 | 2026-05-26 | 2026-04-20 | 2026-04-20 | 0 | 0.0625 | As Soon As Possible | Future Task | -3226m | 0m | Brad Meseck |  | True | True | PTM_CM48_Equipment_Master_Service |  | PTM | 1918 | 2.81 2.88 303.25 303.31 300.44  | 1915 | 1915 2.8125 Post Load Validation |
| 1918 | 1.2.2.2.36.2 | 1.2.2.2.36.2 | 6 | Pre Load Validation | 2026-05-26 | 2026-05-26 | 2026-04-20 | 2026-04-20 | 0 | 0.0625 | As Soon As Possible | Future Task | -3226m | 0m | Brad Meseck |  | True | True | PTM_CM48_Equipment_Master_Service | Matt Palastro, Dave Duda | PTM | 1919 | 2.88 2.94 303.31 303.38 300.44  | 1917 | 1917 2.875 Load File Staged and Posted "Ready" |
| 1919 | 1.2.2.2.36.3 | 1.2.2.2.36.3 | 6 | Simulate Load | 2026-05-26 | 2026-05-26 | 2026-04-20 | 2026-04-20 | 0 | 0.125 | As Soon As Possible | Future Task | -53.77h | 0h | Data Migration Team |  | True | True | PTM_CM48_Equipment_Master_Service |  | Data | 1920 | 2.94 3.06 303.38 303.5 300.44  | 1918 | 1918 2.9375 Pre Load Validation |
| 1920 | 1.2.2.2.36.4 | 1.2.2.2.36.4 | 6 | Error and Defect Mitigation | 2026-05-26 | 2026-05-26 | 2026-04-20 | 2026-04-21 | 0 | 0.25 | As Soon As Possible | Future Task | -53.77h | 0h | Brad Meseck |  | True | True | PTM_CM48_Equipment_Master_Service | Matt Palastro, Dave Duda | PTM | 1921 | 3.06 3.31 303.5 303.75 300.44  | 1919 | 1919 3.0625 Simulate Load |
| 1921 | 1.2.2.2.36.5 | 1.2.2.2.36.5 | 6 | Load | 2026-05-26 | 2026-05-27 | 2026-04-21 | 2026-04-21 | 0 | 0.25 | As Soon As Possible | Future Task | -53.77h | 0h | Data Migration Team |  | True | True | PTM_CM48_Equipment_Master_Service |  | Data |  | 3.31 3.56 303.75 304 300.44  | 1920 | 1920 3.3125 Error and Defect Mitigation |
| 1922 | 1.2.2.2.36.6 | 1.2.2.2.36.6 | 6 | Post Load Validation | 2026-05-18 | 2026-05-18 | 2026-04-21 | 2026-04-21 | 0 | 0.375 | Start No Earlier Than | Future Task | -2.52h | 0h | Brad Meseck |  | True | True | PTM_CM48_Equipment_Master_Service | Matt Palastro, Dave Duda | PTM |  | 0 0.38 303.63 304 303.63  |  |  |
| 1923 | 1.2.2.2.37 | 1.2.2.2.37 | 5 | VC_Object Dependencies | 2026-05-18 | 2026-05-18 | 2026-04-06 | 2026-04-06 | 0 | 0.63 | As Soon As Possible | Future Task | -2.44d | 0d | COULD NOT BE DETERMINED | True | True | True | Master Data Loads | Chip Holder |  |  |  |  |  |
| 1924 | 1.2.2.2.37.1 | 1.2.2.2.37.1 | 6 | Run ALE Transaction to QS5 from DS4 130 | 2026-05-18 | 2026-05-18 | 2026-04-06 | 2026-04-06 | 0 | 0.25 | As Soon As Possible | Future Task | -19.52h | 0h | Eric Heisler |  | True | True | VC_Object Dependencies |  | PTM | 1925 | 0 0.25 302.13 302.38 302.13  |  |  |
| 1925 | 1.2.2.2.37.2 | 1.2.2.2.37.2 | 6 | Post Load Validation | 2026-05-18 | 2026-05-18 | 2026-04-06 | 2026-04-06 | 0 | 0.375 | As Soon As Possible | Future Task | -19.52h | 0h | Eric Heisler |  | True | True | VC_Object Dependencies | Matt Palastro, Dave Duda | PTM | 1927 | 0.25 0.63 302.38 302.75 302.13  | 1924 | 1924 0.25 Run ALE Transaction to QS5 from DS4 130 |
| 1926 | 1.2.2.2.38 | 1.2.2.2.38 | 5 | VC_Characteristics | 2026-05-18 | 2026-05-19 | 2026-04-06 | 2026-04-07 | 0 | 0.63 | As Soon As Possible | Future Task | -2.44d | 0d | COULD NOT BE DETERMINED | True | True | True | Master Data Loads | Chip Holder |  |  |  |  |  |
| 1927 | 1.2.2.2.38.1 | 1.2.2.2.38.1 | 6 | Run ALE Transaction to QS5 from DS4 130 | 2026-05-18 | 2026-05-19 | 2026-04-06 | 2026-04-06 | 0 | 0.25 | As Soon As Possible | Future Task | -19.52h | 0h | Eric Heisler |  | True | True | VC_Characteristics |  | PTM | 1928 | 0.63 0.88 302.75 303 302.13  | 1925 | 1925 0.625 Post Load Validation |
| 1928 | 1.2.2.2.38.2 | 1.2.2.2.38.2 | 6 | Post Load Validation | 2026-05-19 | 2026-05-19 | 2026-04-06 | 2026-04-07 | 0 | 0.375 | As Soon As Possible | Future Task | -19.52h | 0h | Eric Heisler |  | True | True | VC_Characteristics | Matt Palastro, Dave Duda | PTM | 1930 | 0.88 1.25 303 303.38 302.13  | 1927 | 1927 0.875 Run ALE Transaction to QS5 from DS4 130 |
| 1929 | 1.2.2.2.39 | 1.2.2.2.39 | 5 | VC_Classes | 2026-05-19 | 2026-05-20 | 2026-04-07 | 2026-04-07 | 0 | 0.63 | As Soon As Possible | Future Task | -2.44d | 0d | COULD NOT BE DETERMINED | True | True | True | Master Data Loads | Chip Holder |  |  |  |  |  |
| 1930 | 1.2.2.2.39.1 | 1.2.2.2.39.1 | 6 | Run ALE Transaction to QS5 from DS4 130 | 2026-05-19 | 2026-05-19 | 2026-04-07 | 2026-04-07 | 0 | 0.25 | As Soon As Possible | Future Task | -19.52h | 0h | Eric Heisler |  | True | True | VC_Classes |  | PTM | 1931 | 1.25 1.5 303.38 303.63 302.13  | 1928 | 1928 1.25 Post Load Validation |
| 1931 | 1.2.2.2.39.2 | 1.2.2.2.39.2 | 6 | Post Load Validation | 2026-05-19 | 2026-05-20 | 2026-04-07 | 2026-04-07 | 0 | 0.375 | As Soon As Possible | Future Task | -19.52h | 0h | Eric Heisler |  | True | True | VC_Classes | Matt Palastro, Dave Duda | PTM | 1936 | 1.5 1.88 303.63 304 302.13  | 1930 | 1930 1.5 Run ALE Transaction to QS5 from DS4 130 |
| 1703 | 1.2.2.2.4 | 1.2.2.2.4 | 5 | RTR_CM05_Profit_Center | 2026-05-19 | 2026-05-20 | 2026-04-06 | 2026-04-07 | 0 | 1.13 | As Soon As Possible | Future Task | -7.94d | 0d | COULD NOT BE DETERMINED | True | True | True | Master Data Loads |  |  |  |  |  |  |
| 1704 | 1.2.2.2.4.1 | 1.2.2.2.4.1 | 6 | Load File Staged and Posted "Ready" | 2026-05-19 | 2026-05-19 | 2026-04-06 | 2026-04-06 | 0 | 0.125 | As Soon As Possible | Future Task | -63.52h | 0h | Kasey Hughes |  | True | True | RTR_CM05_Profit_Center |  | Finance | 1705 | 0.75 0.88 301.75 301.88 301  | 1689 | 1689 0.75 Post Load Validation |
| 1705 | 1.2.2.2.4.2 | 1.2.2.2.4.2 | 6 | Pre Load Validation | 2026-05-19 | 2026-05-19 | 2026-04-06 | 2026-04-07 | 0 | 0.25 | As Soon As Possible | Future Task | -63.52h | 0h | Kasey Hughes |  | True | True | RTR_CM05_Profit_Center | Brian Wagner | Finance | 1706 | 0.88 1.13 301.88 302.13 301  | 1704 | 1704 0.875 Load File Staged and Posted "Ready" |

| uid | wbs | outlineNumber | outlineLevel | name | start | finish | baselineStart | baselineFinish | percentComplete | durationDays | constraintType | status | totalSlackRaw | freeSlackRaw | resourceNames | summary | criticalFlag | active | summaryName | businessValidationOwner | workstream | successors | cpm | predecessors | drivers | milestone |
| --- | --- | --- | --- | --- | --- | --- | --- | --- | --- | --- | --- | --- | --- | --- | --- | --- | --- | --- | --- | --- | --- | --- | --- | --- | --- | --- |
| 1706 | 1.2.2.2.4.3 | 1.2.2.2.4.3 | 6 | Simulate Load | 2026-05-19 | 2026-05-19 | 2026-04-07 | 2026-04-07 | 0 | 0.125 | As Soon As Possible | Future Task | -63.52h | 0h | Data Migration Team |  | True | True | RTR_CM05_Profit_Center |  | Data | 1707 | 1.13 1.25 302.13 302.25 301  | 1705 | 1705 1.125 Pre Load Validation |  |
| 1707 | 1.2.2.2.4.4 | 1.2.2.2.4.4 | 6 | Error and Defect Mitigation | 2026-05-19 | 2026-05-19 | 2026-04-07 | 2026-04-07 | 0 | 0.25 | As Soon As Possible | Future Task | -63.52h | 0h | Kasey Hughes |  | True | True | RTR_CM05_Profit_Center | Brian Wagner | Finance | 1708 | 1.25 1.5 302.25 302.5 301  | 1706 | 1706 1.25 Simulate Load |  |
| 1708 | 1.2.2.2.4.5 | 1.2.2.2.4.5 | 6 | Load | 2026-05-19 | 2026-05-19 | 2026-04-07 | 2026-04-07 | 0 | 0.125 | As Soon As Possible | Future Task | -63.52h | 0h | Data Migration Team |  | True | True | RTR_CM05_Profit_Center |  | Data | 1709 | 1.5 1.63 302.5 302.63 301  | 1707 | 1707 1.5 Error and Defect Mitigation |  |
| 1709 | 1.2.2.2.4.6 | 1.2.2.2.4.6 | 6 | Post Load Validation | 2026-05-19 | 2026-05-20 | 2026-04-07 | 2026-04-07 | 0 | 0.25 | As Soon As Possible | Future Task | -63.52h | 0h | Kasey Hughes |  | True | True | RTR_CM05_Profit_Center | Brian Wagner | Finance | 171, 118, 401, 847 | 1.63 1.88 302.63 302.88 301  | 1708 | 1708 1.625 Load |  |
| 1932 | 1.2.2.2.40 | 1.2.2.2.40 | 5 | VC_Classification (Class Type 200) | 2026-05-21 | 2026-05-22 | 2026-04-15 | 2026-04-16 | 0 | 0.63 | As Soon As Possible | Future Task | -3.78d | 0d | COULD NOT BE DETERMINED | True | True | True | Master Data Loads | Chip Holder |  |  |  |  |  |  |
| 1933 | 1.2.2.2.40.1 | 1.2.2.2.40.1 | 6 | Run ALE Transaction to QS5 from DS4 130 | 2026-05-21 | 2026-05-21 | 2026-04-15 | 2026-04-16 | 0 | 0.25 | As Soon As Possible | Future Task | -30.27h | 0h | Eric Heisler |  | True | True | VC_Classification (Class Type 200) |  | PTM | 1934 | 2.69 2.94 303.38 303.63 300.69  | 1852 | 1852 2.6875 Post Load Validation |  |
| 1934 | 1.2.2.2.40.2 | 1.2.2.2.40.2 | 6 | Post Load Validation | 2026-05-21 | 2026-05-22 | 2026-04-16 | 2026-04-16 | 0 | 0.375 | As Soon As Possible | Future Task | -30.27h | 0h | Eric Heisler |  | True | True | VC_Classification (Class Type 200) | Matt Palastro, Dave Duda | PTM |  | 2.94 3.31 303.63 304 300.69  | 1933 | 1933 2.9375 Run ALE Transaction to QS5 from DS4 130 |  |
| 1935 | 1.2.2.2.41 | 1.2.2.2.41 | 5 | VC_Dependency Nets | 2026-05-21 | 2026-05-22 | 2026-04-15 | 2026-04-16 | 0 | 0.63 | As Soon As Possible | Future Task | -3.78d | 0d | COULD NOT BE DETERMINED | True | True | True | Master Data Loads | Chip Holder |  |  |  |  |  |  |
| 1936 | 1.2.2.2.41.1 | 1.2.2.2.41.1 | 6 | Run ALE Transaction to QS5 from DS4 130 | 2026-05-21 | 2026-05-21 | 2026-04-15 | 2026-04-16 | 0 | 0.25 | As Soon As Possible | Future Task | -30.27h | 0h | Eric Heisler |  | True | True | VC_Dependency Nets |  | PTM | 1937 | 0.13 0.38 303.38 303.63 303.25  | 18, 461, 931 | 931 0.125 Test Readiness Review (TRR) - ITC 3 |  |
| 1937 | 1.2.2.2.41.2 | 1.2.2.2.41.2 | 6 | Post Load Validation | 2026-05-21 | 2026-05-22 | 2026-04-16 | 2026-04-16 | 0 | 0.375 | As Soon As Possible | Future Task | -30.27h | 0h | Eric Heisler |  | True | True | VC_Dependency Nets | Matt Palastro, Dave Duda | PTM |  | 0.38 0.75 303.63 304 303.25  | 1936 | 1936 0.375 Run ALE Transaction to QS5 from DS4 130 |  |
| 1938 | 1.2.2.2.42 | 1.2.2.2.42 | 5 | VC_Configuration Profiles | 2026-05-21 | 2026-05-22 | 2026-04-15 | 2026-04-16 | 0 | 0.63 | As Soon As Possible | Future Task | -5.75d | 0d | COULD NOT BE DETERMINED | True | True | True | Master Data Loads | Chip Holder |  |  |  |  |  |  |
| 1939 | 1.2.2.2.42.1 | 1.2.2.2.42.1 | 6 | Run ALE Transaction to QS5 from DS4 130 | 2026-05-21 | 2026-05-21 | 2026-04-15 | 2026-04-16 | 0 | 0.25 | As Soon As Possible | Future Task | -46.02h | 0h | Eric Heisler |  | True | True | VC_Configuration Profiles |  | PTM | 1940 | 0 0.25 301.41 301.66 301.41  | 1846 |  |  |
| 1940 | 1.2.2.2.42.2 | 1.2.2.2.42.2 | 6 | Post Load Validation | 2026-05-21 | 2026-05-22 | 2026-04-16 | 2026-04-16 | 0 | 0.375 | As Soon As Possible | Future Task | -46.02h | 0h | Eric Heisler |  | True | True | VC_Configuration Profiles | Matt Palastro, Dave Duda | PTM | 19, 481, 942 | 0.25 0.63 301.66 302.03 301.41  | 1939 | 1939 0.25 Run ALE Transaction to QS5 from DS4 130 |  |
| 1941 | 1.2.2.2.43 | 1.2.2.2.43 | 5 | VC_Variant Tables | 2026-05-22 | 2026-05-22 | 2026-04-16 | 2026-04-17 | 0 | 0.63 | As Soon As Possible | Future Task | -5.03d | 0d | COULD NOT BE DETERMINED | True | True | True | Master Data Loads | Chip Holder |  |  |  |  |  |  |
| 1942 | 1.2.2.2.43.1 | 1.2.2.2.43.1 | 6 | Run ALE Transaction to QS5 from DS4 130 | 2026-05-22 | 2026-05-22 | 2026-04-16 | 2026-04-16 | 0 | 0.25 | As Soon As Possible | Future Task | -40.27h | 0h | Eric Heisler |  | True | True | VC_Variant Tables |  | PTM | 1943 | 0.63 0.88 302.75 303 302.13  | 1940 | 1940 0.625 Post Load Validation |  |
| 1943 | 1.2.2.2.43.2 | 1.2.2.2.43.2 | 6 | Post Load Validation | 2026-05-22 | 2026-05-22 | 2026-04-16 | 2026-04-17 | 0 | 0.375 | As Soon As Possible | Future Task | -40.27h | 0h | Eric Heisler |  | True | True | VC_Variant Tables | Matt Palastro, Dave Duda | PTM | 1945 | 0.88 1.25 303 303.38 302.13  | 1942 | 1942 0.875 Run ALE Transaction to QS5 from DS4 130 |  |
| 1944 | 1.2.2.2.44 | 1.2.2.2.44 | 5 | VC_Variant Tables Content | 2026-05-22 | 2026-05-25 | 2026-04-17 | 2026-04-17 | 0 | 0.63 | As Soon As Possible | Future Task | -5.03d | 0d | COULD NOT BE DETERMINED | True | True | True | Master Data Loads | Chip Holder |  |  |  |  |  |  |
| 1945 | 1.2.2.2.44.1 | 1.2.2.2.44.1 | 6 | Run ALE Transaction to QS5 from DS4 130 | 2026-05-22 | 2026-05-22 | 2026-04-17 | 2026-04-17 | 0 | 0.25 | As Soon As Possible | Future Task | -40.27h | 0h | Eric Heisler |  | True | True | VC_Variant Tables Content |  | PTM | 1946 | 1.25 1.5 303.38 303.63 302.13  | 1943 | 1943 1.25 Post Load Validation |  |
| 1946 | 1.2.2.2.44.2 | 1.2.2.2.44.2 | 6 | Post Load Validation | 2026-05-22 | 2026-05-25 | 2026-04-17 | 2026-04-17 | 0 | 0.375 | As Soon As Possible | Future Task | -40.27h | 0h | Eric Heisler |  | True | True | VC_Variant Tables Content | Matt Palastro, Dave Duda | PTM |  | 1.5 1.88 303.63 304 302.13  | 1945 | 1945 1.5 Run ALE Transaction to QS5 from DS4 130 |  |
| 1947 | 1.2.2.2.45 | 1.2.2.2.45 | 5 | VC_Characteristic Groups | 2026-05-22 | 2026-05-26 | 2026-04-16 | 2026-04-17 | 0 | 1.97 | As Soon As Possible | Future Task | -5.75d | 0d | COULD NOT BE DETERMINED | True | True | True | Master Data Loads | Chip Holder |  |  |  |  |  |  |
| 1948 | 1.2.2.2.45.1 | 1.2.2.2.45.1 | 6 | Run ALE Transaction to QS5 from DS4 130 | 2026-05-22 | 2026-05-25 | 2026-04-16 | 2026-04-16 | 0 | 1.59375 | As Soon As Possible | Future Task | -46.02h | 0h | Eric Heisler |  | True | True | VC_Characteristic Groups |  | PTM | 1949 | 0.63 2.22 302.03 303.63 301.41  | 1940 | 1940 0.625 Post Load Validation |  |
| 1949 | 1.2.2.2.45.2 | 1.2.2.2.45.2 | 6 | Post Load Validation | 2026-05-25 | 2026-05-26 | 2026-04-16 | 2026-04-17 | 0 | 0.375 | As Soon As Possible | Future Task | -46.02h | 0h | Eric Heisler |  | True | True | VC_Characteristic Groups | Matt Palastro, Dave Duda | PTM |  | 2.22 2.59 303.63 304 301.41  | 1948 | 1948 2.21875 Run ALE Transaction to QS5 from DS4 130 |  |
| 1950 | 1.2.2.2.46 | 1.2.2.2.46 | 5 | PTM_CM52_Super_BOM | 2026-05-21 | 2026-05-25 | 2026-04-15 | 2026-04-16 | 0 | 2 | As Soon As Possible | Future Task | -8.41d | 0d | Brad Meseck; Chip Holder; David Duda; Matt Palastro; Sunil Srinivasa; Aniruddha Sathe; Susan Graham; Eric Heisler; Sam Penrod; Furkan Alko | True | True | True | Master Data Loads | Brad Meseck | PTM |  |  |  |  |  |
| 1951 | 1.2.2.2.46.1 | 1.2.2.2.46.1 | 6 | Load File Staged and Posted "Ready" | 2026-05-21 | 2026-05-21 | 2026-04-15 | 2026-04-15 | 0 | 0.0625 | As Soon As Possible | Future Task | -4036m | 0m | Eric Heisler |  | True | True | PTM_CM52_Super_BOM |  | PTM | 1952 | 2.69 2.75 299.88 299.94 297.19  | 1852 | 1852 2.6875 Post Load Validation |  |
| 1952 | 1.2.2.2.46.2 | 1.2.2.2.46.2 | 6 | Pre Load Validation | 2026-05-21 | 2026-05-21 | 2026-04-15 | 2026-04-15 | 0 | 0.0625 | As Soon As Possible | Future Task | -4036m | 0m | Eric Heisler |  | True | True | PTM_CM52_Super_BOM | Matt Palastro, Dave Duda | PTM | 1953 | 2.75 2.81 299.94 300 297.19  | 1951 | 1951 2.75 Load File Staged and Posted "Ready" |  |
| 1953 | 1.2.2.2.46.3 | 1.2.2.2.46.3 | 6 | Simulate Load | 2026-05-21 | 2026-05-22 | 2026-04-15 | 2026-04-16 | 0 | 1 | As Soon As Possible | Future Task | -67.27h | 0h | Data Migration Team |  | True | True | PTM_CM52_Super_BOM | Matt Palastro, Dave Duda | Data | 1954 | 2.81 3.81 300 301 297.19  | 1952 | 1952 2.8125 Pre Load Validation |  |
| 1954 | 1.2.2.2.46.4 | 1.2.2.2.46.4 | 6 | Error and Defect Mitigation | 2026-05-22 | 2026-05-22 | 2026-04-16 | 2026-04-16 | 0 | 0.25 | As Soon As Possible | Future Task | -67.27h | 0h | Eric Heisler |  | True | True | PTM_CM52_Super_BOM | Matt Palastro, Dave Duda | PTM | 1955 | 3.81 4.06 301 301.25 297.19  | 1953 | 1953 3.8125 Simulate Load |  |
| 1955 | 1.2.2.2.46.5 | 1.2.2.2.46.5 | 6 | Load | 2026-05-22 | 2026-05-25 | 2026-04-16 | 2026-04-16 | 0 | 0.25 | As Soon As Possible | Future Task | -67.27h | 0h | Data Migration Team |  | True | True | PTM_CM52_Super_BOM |  | Data | 1956 | 4.06 4.31 301.25 301.5 297.19  | 1954 | 1954 4.0625 Error and Defect Mitigation |  |
| 1956 | 1.2.2.2.46.6 | 1.2.2.2.46.6 | 6 | Post Load Validation | 2026-05-25 | 2026-05-25 | 2026-04-16 | 2026-04-16 | 0 | 0.375 | As Soon As Possible | Future Task | -67.27h | 0h | Eric Heisler |  | True | True | PTM_CM52_Super_BOM | Matt Palastro, Dave Duda | PTM | 1958 | 4.31 4.69 301.5 301.88 297.19  | 1955 | 1955 4.3125 Load |  |
| 1957 | 1.2.2.2.47 | 1.2.2.2.47 | 5 | PTM_CM53_Super_Routing | 2026-05-25 | 2026-05-27 | 2026-04-16 | 2026-04-20 | 0 | 2.13 | As Soon As Possible | Future Task | -8.41d | 0d | Brad Meseck; Chip Holder; David Duda; Matt Palastro; Sunil Srinivasa; Aniruddha Sathe; Susan Graham; Eric Heisler; Sam Penrod; Furkan Alko | True | True | True | Master Data Loads | Brad Meseck | PTM |  |  |  |  |  |
| 1958 | 1.2.2.2.47.1 | 1.2.2.2.47.1 | 6 | Load File Staged and Posted "Ready" | 2026-05-25 | 2026-05-25 | 2026-04-16 | 2026-04-16 | 0 | 0.0625 | As Soon As Possible | Future Task | -4036m | 0m | Eric Heisler |  | True | True | PTM_CM53_Super_Routing |  | PTM | 1959 | 4.69 4.75 301.88 301.94 297.19  | 1956 | 1956 4.6875 Post Load Validation |  |
| 1959 | 1.2.2.2.47.2 | 1.2.2.2.47.2 | 6 | Pre Load Validation | 2026-05-25 | 2026-05-25 | 2026-04-16 | 2026-04-17 | 0 | 0.0625 | As Soon As Possible | Future Task | -4036m | 0m | Eric Heisler |  | True | True | PTM_CM53_Super_Routing | Matt Palastro, Dave Duda | PTM | 1960 | 4.75 4.81 301.94 302 297.19  | 1958 | 1958 4.75 Load File Staged and Posted "Ready" |  |
| 1960 | 1.2.2.2.47.3 | 1.2.2.2.47.3 | 6 | Simulate Load | 2026-05-25 | 2026-05-26 | 2026-04-17 | 2026-04-17 | 0 | 0.125 | As Soon As Possible | Future Task | -67.27h | 0h | Data Migration Team |  | True | True | PTM_CM53_Super_Routing |  | Data | 1961 | 4.81 4.94 302 302.13 297.19  | 1959 | 1959 4.8125 Pre Load Validation |  |
| 1961 | 1.2.2.2.47.4 | 1.2.2.2.47.4 | 6 | Error and Defect Mitigation | 2026-05-26 | 2026-05-26 | 2026-04-17 | 2026-04-17 | 0 | 0.25 | As Soon As Possible | Future Task | -67.27h | 0h | Eric Heisler |  | True | True | PTM_CM53_Super_Routing | Matt Palastro, Dave Duda | PTM | 1962 | 4.94 5.19 302.13 302.38 297.19  | 1960 | 1960 4.9375 Simulate Load |  |
| 1962 | 1.2.2.2.47.5 | 1.2.2.2.47.5 | 6 | Load | 2026-05-26 | 2026-05-27 | 2026-04-17 | 2026-04-17 | 0 | 0.25 | As Soon As Possible | Future Task | -67.27h | 0h | Data Migration Team |  | True | True | PTM_CM53_Super_Routing |  | Data | 19, 631, 965 | 5.19 5.44 302.38 302.63 297.19  | 1961 | 1961 5.1875 Error and Defect Mitigation |  |
| 1963 | 1.2.2.2.47.6 | 1.2.2.2.47.6 | 6 | Post Load Validation | 2026-05-27 | 2026-05-27 | 2026-04-17 | 2026-04-20 | 0 | 0.375 | As Soon As Possible | Future Task | -58.27h | 0h | Eric Heisler |  | True | True | PTM_CM53_Super_Routing | Matt Palastro, Dave Duda | PTM |  | 5.44 5.81 303.63 304 298.19  | 1962 | 1962 5.4375 Load |  |
| 1964 | 1.2.2.2.48 | 1.2.2.2.48 | 5 | VC_VK30 Pricing Variant | 2026-05-27 | 2026-05-27 | 2026-04-17 | 2026-04-20 | 0 | 0.69 | As Soon As Possible | Future Task | -8.41d | 0d | COULD NOT BE DETERMINED | True | True | True | Master Data Loads | Chip Holder |  |  |  |  |  |  |
| 1965 | 1.2.2.2.48.1 | 1.2.2.2.48.1 | 6 | Manual File Staged and Posted "Ready" | 2026-05-27 | 2026-05-27 | 2026-04-17 | 2026-04-17 | 0 | 0.0625 | As Soon As Possible | Future Task | -4036m | 0m | Eric Heisler |  | True | True | VC_VK30 Pricing Variant | Matt Palastro, Dave Duda | PTM | 1966 | 5.44 5.5 302.63 302.69 297.19  | 1962 | 1962 5.4375 Load |  |
| 1966 | 1.2.2.2.48.2 | 1.2.2.2.48.2 | 6 | Load | 2026-05-27 | 2026-05-27 | 2026-04-17 | 2026-04-17 | 0 | 0.25 | As Soon As Possible | Future Task | -67.27h | 0h | Eric Heisler |  | True | True | VC_VK30 Pricing Variant |  | PTM | 1967 | 5.5 5.75 302.69 302.94 297.19  | 1965 | 1965 5.5 Manual File Staged and Posted "Ready" |  |
| 1967 | 1.2.2.2.48.3 | 1.2.2.2.48.3 | 6 | Post Load Validation | 2026-05-27 | 2026-05-27 | 2026-04-17 | 2026-04-20 | 0 | 0.375 | As Soon As Possible | Future Task | -67.27h | 0h | Eric Heisler |  | True | True | VC_VK30 Pricing Variant | Matt Palastro, Dave Duda | PTM | 1969 | 5.75 6.13 302.94 303.31 297.19  | 1966 | 1966 5.75 Load |  |
| 1968 | 1.2.2.2.49 | 1.2.2.2.49 | 5 | OTC_CM22_Pricing_Condition | 2026-05-27 | 2026-05-28 | 2026-04-20 | 2026-04-21 | 0 | 0.69 | As Soon As Possible | Future Task | -8.41d | 0d | Anitha Jothi; Kim Kolesar; Michele Colombo; Michiko Tomihari; Ric Haraida; Rod Santos; Shibu Mathew; Narendra Kallam; Keith Riley; James Manohar | True | True | True | Master Data Loads | Kim Kolesar | OTC |  |  |  |  |  |
| 1969 | 1.2.2.2.49.1 | 1.2.2.2.49.1 | 6 | Manual File Staged and Posted "Ready" | 2026-05-27 | 2026-05-27 | 2026-04-20 | 2026-04-20 | 0 | 0.0625 | As Soon As Possible | Future Task | -4036m | 0m | Ric Haraida |  | True | True | OTC_CM22_Pricing_Condition | Matt Palastro, Dave Duda | OTC | 1970 | 6.13 6.19 303.31 303.38 297.19  | 1967 | 1967 6.125 Post Load Validation |  |
| 1970 | 1.2.2.2.49.2 | 1.2.2.2.49.2 | 6 | Load | 2026-05-27 | 2026-05-28 | 2026-04-20 | 2026-04-20 | 0 | 0.25 | As Soon As Possible | Future Task | -67.27h | 0h | Ric Haraida |  | True | True | OTC_CM22_Pricing_Condition |  | OTC | 19, 711, 973 | 6.19 6.44 303.38 303.63 297.19  | 1969 | 1969 6.1875 Manual File Staged and Posted "Ready" |  |
| 1971 | 1.2.2.2.49.3 | 1.2.2.2.49.3 | 6 | Post Load Validation | 2026-05-28 | 2026-05-28 | 2026-04-20 | 2026-04-21 | 0 | 0.375 | As Soon As Possible | Future Task | -66.27h | 0h | Ric Haraida,Kim Kolesar |  | True | True | OTC_CM22_Pricing_Condition | Matt Palastro, Dave Duda,kim | OTC |  | 6.44 6.81 303.63 304 297.19  | 1970 | 1970 6.4375 Load |  |
| 1710 | 1.2.2.2.5 | 1.2.2.2.5 | 5 | RTR_CM04_Cost_Center | 2026-05-20 | 2026-05-21 | 2026-04-07 | 2026-04-09 | 0 | 1.13 | As Soon As Possible | Future Task | -7.94d | 0d | COULD NOT BE DETERMINED | True | True | True | Master Data Loads |  |  | 1717 |  |  |  |  |
| 1711 | 1.2.2.2.5.1 | 1.2.2.2.5.1 | 6 | Load File Staged and Posted "Ready" | 2026-05-20 | 2026-05-20 | 2026-04-07 | 2026-04-08 | 0 | 0.125 | As Soon As Possible | Future Task | -63.52h | 0h | Kasey Hughes |  | True | True | RTR_CM04_Cost_Center |  | Finance | 1712 | 1.88 2 302.88 303 301  | 1709 | 1709 1.875 Post Load Validation |  |
| 1712 | 1.2.2.2.5.2 | 1.2.2.2.5.2 | 6 | Pre Load Validation | 2026-05-20 | 2026-05-20 | 2026-04-08 | 2026-04-08 | 0 | 0.25 | As Soon As Possible | Future Task | -63.52h | 0h | Kasey Hughes |  | True | True | RTR_CM04_Cost_Center | Brian Wagner | Finance | 1713 | 2 2.25 303 303.25 301  | 1711 | 1711 2 Load File Staged and Posted "Ready" |  |
| 1713 | 1.2.2.2.5.3 | 1.2.2.2.5.3 | 6 | Simulate Load | 2026-05-20 | 2026-05-20 | 2026-04-08 | 2026-04-08 | 0 | 0.125 | As Soon As Possible | Future Task | -63.52h | 0h | Data Migration Team |  | True | True | RTR_CM04_Cost_Center |  | Data | 1714 | 2.25 2.38 303.25 303.38 301  | 1712 | 1712 2.25 Pre Load Validation |  |
| 1714 | 1.2.2.2.5.4 | 1.2.2.2.5.4 | 6 | Error and Defect Mitigation | 2026-05-20 | 2026-05-20 | 2026-04-08 | 2026-04-08 | 0 | 0.25 | As Soon As Possible | Future Task | -63.52h | 0h | Kasey Hughes |  | True | True | RTR_CM04_Cost_Center | Brian Wagner | Finance | 1715 | 2.38 2.63 303.38 303.63 301  | 1713 | 1713 2.375 Simulate Load |  |
| 1715 | 1.2.2.2.5.5 | 1.2.2.2.5.5 | 6 | Load | 2026-05-20 | 2026-05-20 | 2026-04-08 | 2026-04-08 | 0 | 0.125 | As Soon As Possible | Future Task | -63.52h | 0h | Data Migration Team |  | True | True | RTR_CM04_Cost_Center |  | Data | 1716 | 2.63 2.75 303.63 303.75 301  | 1714 | 1714 2.625 Error and Defect Mitigation |  |
| 1716 | 1.2.2.2.5.6 | 1.2.2.2.5.6 | 6 | Post Load Validation | 2026-05-21 | 2026-05-21 | 2026-04-08 | 2026-04-09 | 0 | 0.25 | As Soon As Possible | Future Task | -63.52h | 0h | Kasey Hughes |  | True | True | RTR_CM04_Cost_Center | Brian Wagner | Finance |  | 2.75 3 303.75 304 301  | 1715 | 1715 2.75 Load |  |
| 1972 | 1.2.2.2.50 | 1.2.2.2.50 | 5 | OTC_CM21_CMIR | 2026-05-28 | 2026-05-28 | 2026-04-20 | 2026-04-21 | 0 | 0.5 | As Soon As Possible | Future Task | -8.41d | 0d | Anitha Jothi; Kim Kolesar; Michele Colombo; Michiko Tomihari; Ric Haraida; Rod Santos; Shibu Mathew; Narendra Kallam; Keith Riley; James Manohar | True | True | True | Master Data Loads | Kim Kolesar | OTC |  |  |  |  |  |
| 1973 | 1.2.2.2.50.1 | 1.2.2.2.50.1 | 6 | Load File Staged and Posted "Ready" | 2026-05-28 | 2026-05-28 | 2026-04-20 | 2026-04-20 | 0 | 0.0625 | As Soon As Possible | Future Task | -4036m | 0m | Ric Haraida |  | True | True | OTC_CM21_CMIR |  | OTC | 1974 | 0 0.06 303.5 303.56 303.5  | 19, 701, 981 |  |  |
| 1974 | 1.2.2.2.50.2 | 1.2.2.2.50.2 | 6 | Pre Load Validation | 2026-05-28 | 2026-05-28 | 2026-04-20 | 2026-04-20 | 0 | 0.0625 | As Soon As Possible | Future Task | -4036m | 0m | Ric Haraida |  | True | True | OTC_CM21_CMIR | Kim | OTC | 1975 | 0.06 0.13 303.56 303.63 303.5  | 1973 | 1973 0.0625 Load File Staged and Posted "Ready" |  |
| 1975 | 1.2.2.2.50.3 | 1.2.2.2.50.3 | 6 | Simulate Load | 2026-05-28 | 2026-05-28 | 2026-04-20 | 2026-04-20 | 0 | 0 | As Soon As Possible | Future Task | -67.27h | 0h | Data Migration Team |  | True | True | OTC_CM21_CMIR |  | Data | 1976 | 0.13 0.13 303.63 303.63 303.5  | 1974 | 1974 0.125 Pre Load Validation | True |
| 1976 | 1.2.2.2.50.4 | 1.2.2.2.50.4 | 6 | Error and Defect Mitigation | 2026-05-28 | 2026-05-28 | 2026-04-20 | 2026-04-21 | 0 | 0 | As Soon As Possible | Future Task | -67.27h | 0h | Ric Haraida |  | True | True | OTC_CM21_CMIR | Kim | OTC | 1977 | 0.13 0.13 303.63 303.63 303.5  | 1975 | 1975 0.125 Simulate Load | True |
| 1977 | 1.2.2.2.50.5 | 1.2.2.2.50.5 | 6 | Load | 2026-05-28 | 2026-05-28 | 2026-04-21 | 2026-04-21 | 0 | 0 | As Soon As Possible | Future Task | -67.27h | 0h | Data Migration Team |  | True | True | OTC_CM21_CMIR |  | Data | 1978 | 0.13 0.13 303.63 303.63 303.5  | 1976 | 1976 0.125 Error and Defect Mitigation | True |
| 1978 | 1.2.2.2.50.6 | 1.2.2.2.50.6 | 6 | Post Load Validation | 2026-05-28 | 2026-05-28 | 2026-04-21 | 2026-04-21 | 0 | 0.375 | As Soon As Possible | Future Task | -67.27h | 0h | Ric Haraida |  | True | True | OTC_CM21_CMIR | Kim | OTC |  | 0.13 0.5 303.63 304 303.5  | 1977 | 1977 0.125 Load |  |
| 1979 | 1.2.2.2.51 | 1.2.2.2.51 | 5 | PTP_CM29_Source_List | 2026-05-19 | 2026-05-27 | 2026-04-13 | 2026-04-14 | 0 | 6.16 | As Soon As Possible | Future Task | -7.22d | 0d | Muniraju Surappachari; Nevin Varkey; Samuel Houff; Sarasija Ghosh; Surendra Krishna Acharya; Swetha SethumadhavaRao; James Farmer | True | True | True | Master Data Loads | Muniraju Surappachari | PTP |  |  |  |  |  |
| 1980 | 1.2.2.2.51.1 | 1.2.2.2.51.1 | 6 | Manual File Staged and Posted "Ready" | 2026-05-19 | 2026-05-19 | 2026-04-14 | 2026-04-14 | 0 | 0.0625 | As Soon As Possible | Future Task | -541m | 0m | Nevin Varkey |  | True | True | PTP_CM29_Source_List | Sam | PTP |  | 0.13 0.19 303.94 304 303.81  | 18, 231, 830 | 830 0.125 Change Request to NS2 |  |
| 1981 | 1.2.2.2.51.2 | 1.2.2.2.51.2 | 6 | Load | 2026-05-26 | 2026-05-27 | 2026-04-13 | 2026-04-13 | 0 | 0.25 | As Soon As Possible | Future Task | -58.77h | 0h | Nevin Varkey |  | True | True | PTP_CM29_Source_List |  | PTP | 19, 731, 982 | 2 2.25 303.38 303.63 301.38  | 1799 | 1799 2 Post Load Validation |  |
| 1982 | 1.2.2.2.51.3 | 1.2.2.2.51.3 | 6 | Post Load Validation | 2026-05-27 | 2026-05-27 | 2026-04-13 | 2026-04-13 | 0 | 0.375 | As Soon As Possible | Future Task | -57.77h | 0h | Nevin Varkey |  | True | True | PTP_CM29_Source_List | Sam | PTP |  | 2.25 2.63 303.63 304 301.38  | 1981 | 1981 2.25 Load |  |
| 1983 | 1.2.2.2.52 | 1.2.2.2.52 | 5 | RTR_CM11_Asset_Master | 2026-05-18 | 2026-05-21 | 2026-04-10 | 2026-04-13 | 0 | 3.75 | As Soon As Possible | Future Task | -3.69d | 0d | COULD NOT BE DETERMINED | True | True | True | Master Data Loads |  |  |  |  |  |  |  |
| 1984 | 1.2.2.2.52.1 | 1.2.2.2.52.1 | 6 | Load File Staged and Posted "Ready" | 2026-05-18 | 2026-05-18 | 2026-04-10 | 2026-04-10 | 0 | 0.0625 | As Soon As Possible | Future Task | -1771m | 0m | Kasey Hughes |  | True | True | RTR_CM11_Asset_Master |  | Finance | 19, 852, 39 | 0 0.06 300.25 300.31 300.25  |  |  |  |
| 1985 | 1.2.2.2.52.2 | 1.2.2.2.52.2 | 6 | Pre Load Validation | 2026-05-18 | 2026-05-18 | 2026-04-10 | 2026-04-10 | 0 | 0.0625 | As Soon As Possible | Future Task | -1771m | 0m | Kasey Hughes,Femi Oguntala |  | True | True | RTR_CM11_Asset_Master | Brian Wagner | Finance | 1986 | 0.06 0.13 300.31 300.38 300.25  | 1984 | 1984 0.0625 Load File Staged and Posted "Ready" |  |
| 1986 | 1.2.2.2.52.3 | 1.2.2.2.52.3 | 6 | Simulate Load | 2026-05-18 | 2026-05-19 | 2026-04-10 | 2026-04-10 | 0 | 1 | As Soon As Possible | Future Task | -29.52h | 0h | Data Migration Team |  | True | True | RTR_CM11_Asset_Master |  | Data | 1987 | 0.13 1.13 300.38 301.38 300.25  | 1985 | 1985 0.125 Pre Load Validation |  |
| 1987 | 1.2.2.2.52.4 | 1.2.2.2.52.4 | 6 | Error and Defect Mitigation | 2026-05-19 | 2026-05-21 | 2026-04-10 | 2026-04-10 | 0 | 2 | As Soon As Possible | Future Task | -29.52h | 0h | Kasey Hughes |  | True | True | RTR_CM11_Asset_Master | Brian Wagner | Finance | 1988 | 1.13 3.13 301.38 303.38 300.25  | 1986 | 1986 1.125 Simulate Load |  |
| 1988 | 1.2.2.2.52.5 | 1.2.2.2.52.5 | 6 | Load | 2026-05-21 | 2026-05-21 | 2026-04-10 | 2026-04-10 | 0 | 0.25 | As Soon As Possible | Future Task | -29.52h | 0h | Data Migration Team |  | True | True | RTR_CM11_Asset_Master |  | Data | 1989 | 3.13 3.38 303.38 303.63 300.25  | 1987 | 1987 3.125 Error and Defect Mitigation |  |
| 1989 | 1.2.2.2.52.6 | 1.2.2.2.52.6 | 6 | Post Load Validation | 2026-05-21 | 2026-05-21 | 2026-04-10 | 2026-04-13 | 0 | 0.375 | As Soon As Possible | Future Task | -29.52h | 0h | Kasey Hughes |  | True | True | RTR_CM11_Asset_Master | Brian Wagner | Finance |  | 3.38 3.75 303.63 304 300.25  | 1988 | 1988 3.375 Load |  |
| 1990 | 1.2.2.2.53 | 1.2.2.2.53 | 5 | PTM_CM50_Material Class | 2026-05-22 | 2026-05-26 | 2026-04-16 | 2026-04-16 | 0 | 2.13 | As Soon As Possible | Future Task | -5.85d | 0d | Brad Meseck; Chip Holder; David Duda; Matt Palastro; Sunil Srinivasa; Aniruddha Sathe; Susan Graham; Eric Heisler; Sam Penrod; Furkan Alko | True | True | True | Master Data Loads | Brad Meseck | PTM |  |  |  |  |  |

| uid | wbs | outlineNumber | outlineLevel | name | start | finish | baselineStart | baselineFinish | percentComplete | durationDays | constraintType | status | totalSlackRaw | freeSlackRaw | resourceNames | summary | criticalFlag | active | summaryName | businessValidationOwner | workstream | successors | cpm | predecessors | drivers |
| --- | --- | --- | --- | --- | --- | --- | --- | --- | --- | --- | --- | --- | --- | --- | --- | --- | --- | --- | --- | --- | --- | --- | --- | --- | --- |
| 1991 | 1.2.2.2.53.1 | 1.2.2.2.53.1 | 6 | Manual File Staged and Posted "Ready" | 2026-05-22 | 2026-05-22 | 2026-04-16 | 2026-04-16 | 0 | 0.0625 | As Soon As Possible | Future Task | -2806m | 0m | Sam |  | True | True | PTM_CM50_Material Class |  | PTM | 19, 921, 995 | 0.56 0.63 301.88 301.94 301.31  | 1896 | 1896 0.5625 Load File Staged and Posted "Ready" |
| 1992 | 1.2.2.2.53.2 | 1.2.2.2.53.2 | 6 | Load | 2026-05-22 | 2026-05-22 | 2026-04-16 | 2026-04-16 | 0 | 0.0625 | As Soon As Possible | Future Task | -2806m | 0m | Brad Meseck |  | True | True | PTM_CM50_Material Class | Matt Palastro, Dave Duda | PTM | 1993 | 0.63 0.69 301.94 302 301.31  | 1991 | 1991 0.625 Manual File Staged and Posted "Ready" |
| 1993 | 1.2.2.2.53.3 | 1.2.2.2.53.3 | 6 | Post Load Validation | 2026-05-22 | 2026-05-26 | 2026-04-16 | 2026-04-16 | 0 | 2 | As Soon As Possible | Future Task | -46.77h | 0h | Brad |  | True | True | PTM_CM50_Material Class | brad | PTM |  | 0.69 2.69 302 304 301.31  | 1992 | 1992 0.6875 Load |
| 1994 | 1.2.2.2.54 | 1.2.2.2.54 | 5 | PTM_CM55_Class assignment to materials | 2026-05-22 | 2026-05-25 | 2026-04-16 | 2026-04-17 | 0 | 1.13 | As Soon As Possible | Future Task | -4.91d | 0d | Brad Meseck; Chip Holder; David Duda; Matt Palastro; Sunil Srinivasa; Aniruddha Sathe; Susan Graham; Eric Heisler; Sam Penrod; Furkan Alko | True | True | True | Master Data Loads | Brad Meseck | PTM |  |  |  |  |
| 1995 | 1.2.2.2.54.1 | 1.2.2.2.54.1 | 6 | Load File Staged and Posted "Ready" | 2026-05-22 | 2026-05-22 | 2026-04-16 | 2026-04-16 | 0 | 0.0625 | As Soon As Possible | Future Task | -2356m | 0m | Sam |  | True | True | PTM_CM55_Class assignment to materials |  | PTM | 1996 | 0.63 0.69 302.88 302.94 302.25  | 1991 | 1991 0.625 Manual File Staged and Posted "Ready" |
| 1996 | 1.2.2.2.54.2 | 1.2.2.2.54.2 | 6 | Pre Load Validation | 2026-05-22 | 2026-05-22 | 2026-04-16 | 2026-04-16 | 0 | 0.0625 | As Soon As Possible | Future Task | -2356m | 0m | Brad Meseck |  | True | True | PTM_CM55_Class assignment to materials | Matt Palastro, Dave Duda | PTM | 1997 | 0.69 0.75 302.94 303 302.25  | 1995 | 1995 0.6875 Load File Staged and Posted "Ready" |
| 1997 | 1.2.2.2.54.3 | 1.2.2.2.54.3 | 6 | Simulate Load | 2026-05-22 | 2026-05-22 | 2026-04-16 | 2026-04-16 | 0 | 0.125 | As Soon As Possible | Future Task | -39.27h | 0h | Data Migration Team |  | True | True | PTM_CM55_Class assignment to materials |  | Data | 1998 | 0.75 0.88 303 303.13 302.25  | 1996 | 1996 0.75 Pre Load Validation |
| 1998 | 1.2.2.2.54.4 | 1.2.2.2.54.4 | 6 | Error and Defect Mitigation | 2026-05-22 | 2026-05-22 | 2026-04-16 | 2026-04-16 | 0 | 0.25 | As Soon As Possible | Future Task | -39.27h | 0h | Brad Meseck |  | True | True | PTM_CM55_Class assignment to materials | Matt Palastro, Dave Duda | PTM | 1999 | 0.88 1.13 303.13 303.38 302.25  | 1997 | 1997 0.875 Simulate Load |
| 1999 | 1.2.2.2.54.5 | 1.2.2.2.54.5 | 6 | Load | 2026-05-22 | 2026-05-22 | 2026-04-16 | 2026-04-17 | 0 | 0.25 | As Soon As Possible | Future Task | -39.27h | 0h | Data Migration Team |  | True | True | PTM_CM55_Class assignment to materials |  | Data | 2000 | 1.13 1.38 303.38 303.63 302.25  | 1998 | 1998 1.125 Error and Defect Mitigation |
| 2000 | 1.2.2.2.54.6 | 1.2.2.2.54.6 | 6 | Post Load Validation | 2026-05-22 | 2026-05-25 | 2026-04-17 | 2026-04-17 | 0 | 0.375 | As Soon As Possible | Future Task | -39.27h | 0h | Brad Meseck |  | True | True | PTM_CM55_Class assignment to materials | Matt Palastro, Dave Duda | PTM |  | 1.38 1.75 303.63 304 302.25  | 1999 | 1999 1.375 Load |
| 2001 | 1.2.2.2.55 | 1.2.2.2.55 | 5 | GTS - Material initial load from S4 (Run Interface) | 2026-05-21 | 2026-05-25 | 2026-04-16 | 2026-04-16 | 0 | 2.09 | As Soon As Possible | Future Task | -8.78d | 0d | COULD NOT BE DETERMINED | True | True | True | Master Data Loads |  |  |  |  |  |  |
| 2002 | 1.2.2.2.55.1 | 1.2.2.2.55.1 | 6 | Run material interface to GTS | 2026-05-21 | 2026-05-25 | 2026-04-16 | 2026-04-16 | 0 | 1.96875 | As Soon As Possible | Future Task | -70.27h | 0h | James Van Riper |  | True | True | GTS - Material initial load from S4 (Run Interface) |  | OTC | 2003 | 0.25 2.22 298.63 300.59 298.38  | 1870 | 1870 0.25 Simulate Load |
| 2003 | 1.2.2.2.55.2 | 1.2.2.2.55.2 | 6 | Post Load Validation | 2026-05-25 | 2026-05-25 | 2026-04-16 | 2026-04-16 | 0 | 0.125 | As Soon As Possible | Future Task | -70.27h | 0h | James Van Riper |  | True | True | GTS - Material initial load from S4 (Run Interface) | Kim Kolesar | OTC | 2014 | 2.22 2.34 300.59 300.72 298.38  | 2002 | 2002 2.21875 Run material interface to GTS |
| 2004 | 1.2.2.2.56 | 1.2.2.2.56 | 5 | GTS - Customers initial load from S4 (Run Interface) | 2026-05-18 | 2026-05-18 | 2026-04-10 | 2026-04-10 | 0 | 0.25 | As Soon As Possible | Future Task | -0.19d | 0d | COULD NOT BE DETERMINED | True | True | True | Master Data Loads |  |  |  |  |  |  |
| 2005 | 1.2.2.2.56.1 | 1.2.2.2.56.1 | 6 | Run material interface to GTS | 2026-05-18 | 2026-05-18 | 2026-04-10 | 2026-04-10 | 0 | 0.125 | As Soon As Possible | Future Task | -1.52h | 0h | James Van Riper |  | True | True | GTS - Customers initial load from S4 (Run Interface) |  | OTC | 2006 | 0 0.13 303.75 303.88 303.75  |  |  |
| 2006 | 1.2.2.2.56.2 | 1.2.2.2.56.2 | 6 | Post Load Validation | 2026-05-18 | 2026-05-18 | 2026-04-10 | 2026-04-10 | 0 | 0.125 | As Soon As Possible | Future Task | -1.52h | 0h | James Van Riper |  | True | True | GTS - Customers initial load from S4 (Run Interface) | Kim Kolesar | OTC |  | 0.13 0.25 303.88 304 303.75  | 2005 | 2005 0.125 Run material interface to GTS |
| 2007 | 1.2.2.2.57 | 1.2.2.2.57 | 5 | GTS - Vendors initial load from S4 (Run Interface) | 2026-05-19 | 2026-05-19 | 2026-04-15 | 2026-04-15 | 0 | 0.25 | As Soon As Possible | Future Task | -1.44d | 0d | COULD NOT BE DETERMINED | True | True | True | Master Data Loads |  |  |  |  |  |  |
| 2008 | 1.2.2.2.57.1 | 1.2.2.2.57.1 | 6 | Run material interface to GTS | 2026-05-19 | 2026-05-19 | 2026-04-15 | 2026-04-15 | 0 | 0.125 | As Soon As Possible | Future Task | -11.52h | 0h | James Van Riper |  | True | True | GTS - Vendors initial load from S4 (Run Interface) |  | OTC | 20, 92, 12 | 0.88 1 303.38 303.5 302.5  | 1813 | 1813 0.875 Post Load Validation |
| 2009 | 1.2.2.2.57.2 | 1.2.2.2.57.2 | 6 | Post Load Validation | 2026-05-19 | 2026-05-19 | 2026-04-15 | 2026-04-15 | 0 | 0.125 | As Soon As Possible | Future Task | -8.52h | 0h | James Van Riper |  | True | True | GTS - Vendors initial load from S4 (Run Interface) | Kim Kolesar | OTC |  | 1 1.13 303.88 304 302.88  | 2008 | 2008 1 Run material interface to GTS |
| 2010 | 1.2.2.2.58 | 1.2.2.2.58 | 5 | GTS - ECCN - Create | 2026-05-18 | 2026-05-19 | 2026-04-06 | 2026-04-13 | 0 | 1.13 | As Soon As Possible | Future Task | -1.06d | 0d | COULD NOT BE DETERMINED | True | True | True | Master Data Loads |  |  |  |  |  |  |
| 2011 | 1.2.2.2.58.1 | 1.2.2.2.58.1 | 6 | Load Descartes XML File | 2026-05-18 | 2026-05-18 | 2026-04-06 | 2026-04-06 | 0 | 0.125 | As Soon As Possible | Future Task | -0.52h | 0h | James Van Riper |  | True | True | GTS - ECCN - Create | Brian Wagner | OTC |  | 0 0.13 303.88 304 303.88  |  |  |
| 2012 | 1.2.2.2.58.2 | 1.2.2.2.58.2 | 6 | Post Load Validation | 2026-05-19 | 2026-05-19 | 2026-04-13 | 2026-04-13 | 0 | 0.125 | As Soon As Possible | Future Task | -11.52h | 0h | James Van Riper |  | True | True | GTS - ECCN - Create | Kim Kolesar | OTC | 2032 | 1 1.13 303.5 303.63 302.5  | 2008 | 2008 1 Run material interface to GTS |
| 2013 | 1.2.2.2.59 | 1.2.2.2.59 | 5 | GTS - ECCN - Assign | 2026-05-25 | 2026-05-26 | 2026-04-16 | 2026-04-16 | 0 | 0.25 | As Soon As Possible | Future Task | -8.78d | 0d | COULD NOT BE DETERMINED | True | True | True | Master Data Loads |  |  |  |  |  |  |
| 2014 | 1.2.2.2.59.1 | 1.2.2.2.59.1 | 6 | Load Descartes XML File | 2026-05-25 | 2026-05-25 | 2026-04-16 | 2026-04-16 | 0 | 0.125 | As Soon As Possible | Future Task | -70.27h | 0h | James Van Riper |  | True | True | GTS - ECCN - Assign | Brian Wagner | OTC | 2015 | 2.34 2.47 300.72 300.84 298.38  | 2003 | 2003 2.34375 Post Load Validation |
| 2015 | 1.2.2.2.59.2 | 1.2.2.2.59.2 | 6 | Post Load Validation | 2026-05-25 | 2026-05-26 | 2026-04-16 | 2026-04-16 | 0 | 0.125 | As Soon As Possible | Future Task | -70.27h | 0h | James Van Riper |  | True | True | GTS - ECCN - Assign | Kim Kolesar | OTC | 2020 | 2.47 2.59 300.84 300.97 298.38  | 2014 | 2014 2.46875 Load Descartes XML File |
| 1717 | 1.2.2.2.6 | 1.2.2.2.6 | 5 | Manual Configuration Activities in QS5 | 2026-05-21 | 2026-05-29 | 2026-04-06 | 2026-04-15 | 0 | 5.94 | As Soon As Possible | Future Task | -8.88d | 0d | COULD NOT BE DETERMINED | True | True | True | Master Data Loads |  |  |  |  | 1710 |  |
| 1718 | 1.2.2.2.6.1 | 1.2.2.2.6.1 | 6 | Open Client | 2026-05-21 | 2026-05-21 | 2026-04-06 | 2026-04-06 | 0 | 0.0625 | As Soon As Possible | Future Task | -1441m | 0m | Basis |  | True | True | Manual Configuration Activities in QS5 |  | Basis |  | 0 0.06 303.94 304 303.94  |  |  |
| 1719 | 1.2.2.2.6.2 | 1.2.2.2.6.2 | 6 | Service Enterprise Setup | 2026-05-22 | 2026-05-29 | 2026-04-08 | 2026-04-15 | 0 | 5 | As Soon As Possible | Future Task | -8.88d | 0d | Keith Riley |  | True | True | Manual Configuration Activities in QS5 |  | OTC |  | 9.13 14.13 299 304 289.88  | 168, 616, 901, 694 | 901 9.125 Release Security roles to Functional Team |
| 1720 | 1.2.2.2.6.3 | 1.2.2.2.6.3 | 6 | Close Client | 2026-05-21 | 2026-05-21 | 2026-04-06 | 2026-04-06 | 0 | 0.0625 | As Soon As Possible | Future Task | -1441m | 0m | Basis |  | True | True | Manual Configuration Activities in QS5 |  | Basis |  | 0 0.06 303.94 304 303.94  |  |  |
| 1721 | 1.2.2.2.6.4 | 1.2.2.2.6.4 | 6 | Intercompany Business Partner Setup | 2026-05-22 | 2026-05-22 | 2026-04-08 | 2026-04-09 | 0 | 0.25 | As Soon As Possible | Future Task | -33.02h | 0h | Functional Leads |  | True | True | Manual Configuration Activities in QS5 | Brian Wagner | Development |  | 9.13 9.38 303.75 304 294.63  | 168, 616, 901, 702 | 901 9.125 Release Security roles to Functional Team |
| 2016 | 1.2.2.2.60 | 1.2.2.2.60 | 5 | GTS - HTS - Create | 2026-05-18 | 2026-05-18 | 2026-04-06 | 2026-04-06 | 0 | 0.25 | As Soon As Possible | Future Task | -0.19d | 0d | COULD NOT BE DETERMINED | True | True | True | Master Data Loads |  |  |  |  |  |  |
| 2017 | 1.2.2.2.60.1 | 1.2.2.2.60.1 | 6 | Load Descartes XML File | 2026-05-18 | 2026-05-18 | 2026-04-06 | 2026-04-06 | 0 | 0.125 | As Soon As Possible | Future Task | -1.52h | 0h | James Van Riper |  | True | True | GTS - HTS - Create | Brian Wagner | OTC | 2018 | 0 0.13 303.75 303.88 303.75  |  |  |
| 2018 | 1.2.2.2.60.2 | 1.2.2.2.60.2 | 6 | Post Load Validation | 2026-05-18 | 2026-05-18 | 2026-04-06 | 2026-04-06 | 0 | 0.125 | As Soon As Possible | Future Task | -1.52h | 0h | James Van Riper |  | True | True | GTS - HTS - Create | Kim Kolesar | OTC |  | 0.13 0.25 303.88 304 303.75  | 2017 | 2017 0.125 Load Descartes XML File |
| 2019 | 1.2.2.2.61 | 1.2.2.2.61 | 5 | GTS - HTS - Assign | 2026-05-26 | 2026-05-26 | 2026-04-16 | 2026-04-16 | 0 | 0.25 | As Soon As Possible | Future Task | -8.78d | 0d | COULD NOT BE DETERMINED | True | True | True | Master Data Loads |  |  |  |  |  |  |
| 2020 | 1.2.2.2.61.1 | 1.2.2.2.61.1 | 6 | Load Descartes XML File | 2026-05-26 | 2026-05-26 | 2026-04-16 | 2026-04-16 | 0 | 0.125 | As Soon As Possible | Future Task | -70.27h | 0h | James Van Riper |  | True | True | GTS - HTS - Assign | Brian Wagner | OTC | 202, 120, 232, 29 | 2.59 2.72 300.97 301.09 298.38  | 2015 | 2015 2.59375 Post Load Validation |
| 2021 | 1.2.2.2.61.2 | 1.2.2.2.61.2 | 6 | Post Load Validation | 2026-05-26 | 2026-05-26 | 2026-04-16 | 2026-04-16 | 0 | 0.125 | As Soon As Possible | Future Task | -70.27h | 0h | James Van Riper |  | True | True | GTS - HTS - Assign | Kim Kolesar | OTC | 20, 362, 26 | 2.72 2.84 301.09 301.22 298.38  | 2020 | 2020 2.71875 Load Descartes XML File |
| 2022 | 1.2.2.2.62 | 1.2.2.2.62 | 5 | GTS - License - Create | 2026-05-26 | 2026-05-26 | 2026-04-16 | 2026-04-16 | 0 | 0.25 | As Soon As Possible | Future Task | -6.38d | 0d | COULD NOT BE DETERMINED | True | True | True | Master Data Loads |  |  |  |  |  |  |
| 2023 | 1.2.2.2.62.1 | 1.2.2.2.62.1 | 6 | Load Descartes XML File | 2026-05-26 | 2026-05-26 | 2026-04-16 | 2026-04-16 | 0 | 0.125 | As Soon As Possible | Future Task | -51.02h | 0h | James Van Riper |  | True | True | GTS - License - Create | Brian Wagner | OTC | 2024 | 95 95.13 303.75 303.88 208.75  | 20, 202, 36 | 36 95 Complete - Ready for Security Review |
| 2024 | 1.2.2.2.62.2 | 1.2.2.2.62.2 | 6 | Post Load Validation | 2026-05-26 | 2026-05-26 | 2026-04-16 | 2026-04-16 | 0 | 0.125 | As Soon As Possible | Future Task | -51.02h | 0h | James Van Riper |  | True | True | GTS - License - Create | Kim Kolesar | OTC |  | 95.13 95.25 303.88 304 208.75  | 2023 | 2023 95.125 Load Descartes XML File |
| 2025 | 1.2.2.2.63 | 1.2.2.2.63 | 5 | Commodity Code/Tarif | 2026-05-26 | 2026-05-29 | 2026-04-16 | 2026-04-16 | 0 | 2.78 | As Soon As Possible | Future Task | -8.78d | 0d | COULD NOT BE DETERMINED | True | True | True | Master Data Loads | Brian Wagner |  |  |  |  |  |
| 2026 | 1.2.2.2.63.1 | 1.2.2.2.63.1 | 6 | Load | 2026-05-26 | 2026-05-28 | 2026-04-16 | 2026-04-16 | 0 | 2.65625 | As Soon As Possible | Future Task | -70.27h | 0h | James Van Riper |  | True | True | Commodity Code/Tarif |  | OTC | 2027 | 2.84 5.5 301.22 303.88 298.38  | 2021 | 2021 2.84375 Post Load Validation |
| 2027 | 1.2.2.2.63.2 | 1.2.2.2.63.2 | 6 | Post Load Validation | 2026-05-28 | 2026-05-29 | 2026-04-16 | 2026-04-16 | 0 | 0.125 | As Soon As Possible | Future Task | -70.27h | 0h | James Van Riper |  | True | True | Commodity Code/Tarif | Kim Kolesar | OTC |  | 5.5 5.63 303.88 304 298.38  | 2026 | 2026 5.5 Load |
| 2028 | 1.2.2.2.64 | 1.2.2.2.64 | 5 | SPL Master File | 2026-05-26 | 2026-05-26 | 2025-03-13 | 2025-03-13 | 0 | 0.25 | As Soon As Possible | Future Task | -6.13d | 0d | COULD NOT BE DETERMINED | True | True | True | Master Data Loads |  |  |  |  |  |  |
| 2029 | 1.2.2.2.64.1 | 1.2.2.2.64.1 | 6 | Load | 2026-05-26 | 2026-05-26 | 2025-03-13 | 2025-03-13 | 0 | 0.125 | As Soon As Possible | Future Task | -49.02h | 0h | James Van Riper |  | True | True | SPL Master File |  | OTC | 2030 | 2.72 2.84 303.75 303.88 301.03  | 2020 | 2020 2.71875 Load Descartes XML File |
| 2030 | 1.2.2.2.64.2 | 1.2.2.2.64.2 | 6 | Post Load Validation | 2026-05-26 | 2026-05-26 | 2025-03-13 | 2025-03-13 | 0 | 0.125 | As Soon As Possible | Future Task | -49.02h | 0h | James Van Riper |  | True | True | SPL Master File | Kim Kolesar | OTC |  | 2.84 2.97 303.88 304 301.03  | 2029 | 2029 2.84375 Load |
| 2031 | 1.2.2.2.65 | 1.2.2.2.65 | 5 | Initialize Embargo situation | 2026-05-19 | 2026-05-19 | 2026-04-13 | 2026-04-14 | 0 | 0.38 | As Soon As Possible | Future Task | -1.44d | 0d | COULD NOT BE DETERMINED | True | True | True | Master Data Loads | Kishore Kakarla |  |  |  |  |  |
| 2032 | 1.2.2.2.65.1 | 1.2.2.2.65.1 | 6 | Run report /SAPSLL/EMB_CNTRY_INIT | 2026-05-19 | 2026-05-19 | 2026-04-13 | 2026-04-13 | 0 | 0.125 | As Soon As Possible | Future Task | -11.52h | 0h | James Van Riper |  | True | True | Initialize Embargo situation | Brian Wagner | OTC | 2033 | 1.13 1.25 303.63 303.75 302.5  | 2012 | 2012 1.125 Post Load Validation |
| 2033 | 1.2.2.2.65.2 | 1.2.2.2.65.2 | 6 | Set Embargo situations | 2026-05-19 | 2026-05-19 | 2026-04-13 | 2026-04-13 | 0 | 0.125 | As Soon As Possible | Future Task | -11.52h | 0h | James Van Riper |  | True | True | Initialize Embargo situation | Kishore Kakarla | OTC | 2034 | 1.25 1.38 303.75 303.88 302.5  | 2032 | 2032 1.25 Run report /SAPSLL/EMB_CNTRY_INIT |
| 2034 | 1.2.2.2.65.3 | 1.2.2.2.65.3 | 6 | Post Load Validation | 2026-05-19 | 2026-05-19 | 2026-04-13 | 2026-04-14 | 0 | 0.125 | As Soon As Possible | Future Task | -11.52h | 0h | James Van Riper |  | True | True | Initialize Embargo situation | Kim Kolesar | OTC |  | 1.38 1.5 303.88 304 302.5  | 2033 | 2033 1.375 Set Embargo situations |
| 2035 | 1.2.2.2.66 | 1.2.2.2.66 | 5 | GTS - SPL (Sanctioned party list) | 2026-05-26 | 2026-05-26 | 2026-04-16 | 2026-04-16 | 0 | 0.25 | As Soon As Possible | Future Task | -6.38d | 0d | COULD NOT BE DETERMINED | True | True | True | Master Data Loads | Brian Wagner |  |  |  |  |  |
| 2036 | 1.2.2.2.66.1 | 1.2.2.2.66.1 | 6 | Load Descartes XML File | 2026-05-26 | 2026-05-26 | 2026-04-16 | 2026-04-16 | 0 | 0.125 | As Soon As Possible | Future Task | -51.02h | 0h | James Van Riper |  | True | True | GTS - SPL (Sanctioned party list) | Brian Wagner | OTC | 20, 232, 37 | 2.84 2.97 303.75 303.88 300.91  | 2021 | 2021 2.84375 Post Load Validation |
| 2037 | 1.2.2.2.66.2 | 1.2.2.2.66.2 | 6 | Post Load Validation | 2026-05-26 | 2026-05-26 | 2026-04-16 | 2026-04-16 | 0 | 0.125 | As Soon As Possible | Future Task | -50.02h | 0h | James Van Riper |  | True | True | GTS - SPL (Sanctioned party list) | Kim Kolesar | OTC |  | 2.97 3.09 303.88 304 300.91  | 2036 | 2036 2.96875 Load Descartes XML File |
| 2038 | 1.2.2.2.67 | 1.2.2.2.67 | 5 | RTR_CM17_Project Definition / Builder | 2026-05-18 | 2026-05-19 | 2026-04-10 | 2026-04-17 | 0 | 1.13 | As Soon As Possible | Future Task | -1.19d | 0d | COULD NOT BE DETERMINED | True | True | True | Master Data Loads |  |  |  |  |  |  |
| 2039 | 1.2.2.2.67.1 | 1.2.2.2.67.1 | 6 | Load File Staged and Posted "Ready" | 2026-05-18 | 2026-05-18 | 2026-04-10 | 2026-04-10 | 0 | 0.0625 | As Soon As Possible | Future Task | -571m | 0m | Kasey Hughes |  | True | True | RTR_CM17_Project Definition / Builder |  | Finance | 20, 402, 46 | 0.06 0.13 302.81 302.88 302.75  | 1984 | 1984 0.0625 Load File Staged and Posted "Ready" |
| 2040 | 1.2.2.2.67.2 | 1.2.2.2.67.2 | 6 | Pre Load Validation | 2026-05-18 | 2026-05-18 | 2026-04-10 | 2026-04-10 | 0 | 0.0625 | As Soon As Possible | Future Task | -541m | 0m | Kasey Hughes |  | True | True | RTR_CM17_Project Definition / Builder | Brian Wagner | Finance | 2041 | 0.13 0.19 302.94 303 302.81  | 2039 | 2039 0.125 Load File Staged and Posted "Ready" |
| 2041 | 1.2.2.2.67.3 | 1.2.2.2.67.3 | 6 | Simulate Load | 2026-05-18 | 2026-05-18 | 2026-04-16 | 2026-04-16 | 0 | 0.125 | As Soon As Possible | Future Task | -9.02h | 0h | Data Migration Team |  | True | True | RTR_CM17_Project Definition / Builder |  | Data | 2042 | 0.19 0.31 303 303.13 302.81  | 2040 | 2040 0.1875 Pre Load Validation |
| 2042 | 1.2.2.2.67.4 | 1.2.2.2.67.4 | 6 | Error and Defect Mitigation | 2026-05-18 | 2026-05-18 | 2026-04-16 | 2026-04-17 | 0 | 0.25 | As Soon As Possible | Future Task | -9.02h | 0h | Kasey Hughes |  | True | True | RTR_CM17_Project Definition / Builder | Brian Wagner | Finance | 2043 | 0.31 0.56 303.13 303.38 302.81  | 2041 | 2041 0.3125 Simulate Load |
| 2043 | 1.2.2.2.67.5 | 1.2.2.2.67.5 | 6 | Load | 2026-05-18 | 2026-05-19 | 2026-04-17 | 2026-04-17 | 0 | 0.25 | As Soon As Possible | Future Task | -9.02h | 0h | Data Migration Team |  | True | True | RTR_CM17_Project Definition / Builder |  | Data | 2044 | 0.56 0.81 303.38 303.63 302.81  | 2042 | 2042 0.5625 Error and Defect Mitigation |
| 2044 | 1.2.2.2.67.6 | 1.2.2.2.67.6 | 6 | Post Load Validation | 2026-05-19 | 2026-05-19 | 2026-04-17 | 2026-04-17 | 0 | 0.375 | As Soon As Possible | Future Task | -9.02h | 0h | Kasey Hughes |  | True | True | RTR_CM17_Project Definition / Builder | Brian Wagner | Finance |  | 0.81 1.19 303.63 304 302.81  | 2043 | 2043 0.8125 Load |
| 2045 | 1.2.2.2.68 | 1.2.2.2.68 | 5 | RTR_CM18_WBS Element | 2026-05-18 | 2026-05-19 | 2026-04-10 | 2026-04-17 | 0 | 1.13 | As Soon As Possible | Future Task | -1.19d | 0d | COULD NOT BE DETERMINED | True | True | True | Master Data Loads |  |  |  |  |  |  |
| 2046 | 1.2.2.2.68.1 | 1.2.2.2.68.1 | 6 | Load File Staged and Posted "Ready" | 2026-05-18 | 2026-05-18 | 2026-04-10 | 2026-04-10 | 0 | 0.0625 | As Soon As Possible | Future Task | -571m | 0m | Kasey Hughes |  | True | True | RTR_CM18_WBS Element |  | Finance | 2047 | 0.13 0.19 302.88 302.94 302.75  | 2039 | 2039 0.125 Load File Staged and Posted "Ready" |
| 2047 | 1.2.2.2.68.2 | 1.2.2.2.68.2 | 6 | Pre Load Validation | 2026-05-18 | 2026-05-18 | 2026-04-10 | 2026-04-10 | 0 | 0.0625 | As Soon As Possible | Future Task | -571m | 0m | Kasey Hughes |  | True | True | RTR_CM18_WBS Element | Brian Wagner | Finance | 2048 | 0.19 0.25 302.94 303 302.75  | 2046 | 2046 0.1875 Load File Staged and Posted "Ready" |
| 2048 | 1.2.2.2.68.3 | 1.2.2.2.68.3 | 6 | Simulate Load | 2026-05-18 | 2026-05-18 | 2026-04-16 | 2026-04-16 | 0 | 0.125 | As Soon As Possible | Future Task | -9.52h | 0h | Data Migration Team |  | True | True | RTR_CM18_WBS Element |  | Data | 2049 | 0.25 0.38 303 303.13 302.75  | 2047 | 2047 0.25 Pre Load Validation |
| 2049 | 1.2.2.2.68.4 | 1.2.2.2.68.4 | 6 | Error and Defect Mitigation | 2026-05-18 | 2026-05-18 | 2026-04-16 | 2026-04-17 | 0 | 0.25 | As Soon As Possible | Future Task | -9.52h | 0h | Kasey Hughes |  | True | True | RTR_CM18_WBS Element | Brian Wagner | Finance | 2050 | 0.38 0.63 303.13 303.38 302.75  | 2048 | 2048 0.375 Simulate Load |
| 2050 | 1.2.2.2.68.5 | 1.2.2.2.68.5 | 6 | Load | 2026-05-18 | 2026-05-19 | 2026-04-17 | 2026-04-17 | 0 | 0.25 | As Soon As Possible | Future Task | -9.52h | 0h | Data Migration Team |  | True | True | RTR_CM18_WBS Element |  | Data | 2051 | 0.63 0.88 303.38 303.63 302.75  | 2049 | 2049 0.625 Error and Defect Mitigation |
| 2051 | 1.2.2.2.68.6 | 1.2.2.2.68.6 | 6 | Post Load Validation | 2026-05-19 | 2026-05-19 | 2026-04-17 | 2026-04-17 | 0 | 0.375 | As Soon As Possible | Future Task | -9.52h | 0h | Kasey Hughes |  | True | True | RTR_CM18_WBS Element | Brian Wagner | Finance |  | 0.88 1.25 303.63 304 302.75  | 2050 | 2050 0.875 Load |
| 1722 | 1.2.2.2.7 | 1.2.2.2.7 | 5 | RTR_CM09_Activity_Type | 2026-05-21 | 2026-05-25 | 2026-04-08 | 2026-04-09 | 0 | 1.38 | As Soon As Possible | Future Task | -4.75d | 0d | COULD NOT BE DETERMINED | True | True | True | Master Data Loads |  |  |  |  |  |  |
| 1723 | 1.2.2.2.7.1 | 1.2.2.2.7.1 | 6 | Load File Staged and Posted "Ready" | 2026-05-21 | 2026-05-21 | 2026-04-08 | 2026-04-08 | 0 | 0.125 | As Soon As Possible | Future Task | -38.02h | 0h | Kasey Hughes |  | True | True | RTR_CM09_Activity_Type |  | Finance | 1724 | 3.25 3.38 302.88 303 299.63  | 1700 | 1700 3.25 Post Load Validation |
| 1724 | 1.2.2.2.7.2 | 1.2.2.2.7.2 | 6 | Pre Load Validation | 2026-05-21 | 2026-05-22 | 2026-04-08 | 2026-04-09 | 0 | 0.25 | As Soon As Possible | Future Task | -38.02h | 0h | Kasey Hughes |  | True | True | RTR_CM09_Activity_Type | Brian Wagner | Finance | 1725 | 3.38 3.63 303 303.25 299.63  | 1723 | 1723 3.375 Load File Staged and Posted "Ready" |
| 1725 | 1.2.2.2.7.3 | 1.2.2.2.7.3 | 6 | Simulate Load | 2026-05-22 | 2026-05-22 | 2026-04-09 | 2026-04-09 | 0 | 0.125 | As Soon As Possible | Future Task | -38.02h | 0h | Data Migration Team |  | True | True | RTR_CM09_Activity_Type |  | Data | 1726 | 3.63 3.75 303.25 303.38 299.63  | 1724 | 1724 3.625 Pre Load Validation |

| uid | wbs | outlineNumber | outlineLevel | name | start | finish | baselineStart | baselineFinish | percentComplete | durationDays | constraintType | status | totalSlackRaw | freeSlackRaw | resourceNames | summary | criticalFlag | active | flag20 | summaryName | businessValidationOwner | workstream | successors | cpm | predecessors | drivers | milestone |
| --- | --- | --- | --- | --- | --- | --- | --- | --- | --- | --- | --- | --- | --- | --- | --- | --- | --- | --- | --- | --- | --- | --- | --- | --- | --- | --- | --- |
| 1726 | 1.2.2.2.7.4 | 1.2.2.2.7.4 | 6 | Error and Defect Mitigation | 2026-05-22 | 2026-05-22 | 2026-04-09 | 2026-04-09 | 0 | 0.25 | As Soon As Possible | Future Task | -38.02h | 0h | Kasey Hughes |  | True | True |  | RTR_CM09_Activity_Type | Brian Wagner | Finance | 1727 | 3.75 4 303.38 303.63 299.63  | 1725 | 1725 3.75 Simulate Load |  |
| 1727 | 1.2.2.2.7.5 | 1.2.2.2.7.5 | 6 | Load | 2026-05-22 | 2026-05-22 | 2026-04-09 | 2026-04-09 | 0 | 0.125 | As Soon As Possible | Future Task | -38.02h | 0h | Data Migration Team |  | True | True |  | RTR_CM09_Activity_Type |  | Data | 1728 | 4 4.13 303.63 303.75 299.63  | 1726 | 1726 4 Error and Defect Mitigation |  |
| 1728 | 1.2.2.2.7.6 | 1.2.2.2.7.6 | 6 | Post Load Validation | 2026-05-22 | 2026-05-25 | 2026-04-09 | 2026-04-09 | 0 | 0.25 | As Soon As Possible | Future Task | -38.02h | 0h | Kasey Hughes |  | True | True |  | RTR_CM09_Activity_Type | Brian Wagner | Finance |  | 4.13 4.38 303.75 304 299.63  | 1727 | 1727 4.125 Load |  |
| 1729 | 1.2.2.2.8 | 1.2.2.2.8 | 5 | RTR_CM12_Activity Rates | 2026-05-19 | 2026-05-20 | 2026-04-07 | 2026-04-08 | 0 | 1.13 | As Soon As Possible | Future Task | -2.56d | 0d | COULD NOT BE DETERMINED | True | True | True |  | Master Data Loads |  |  |  |  |  |  |  |
| 1730 | 1.2.2.2.8.1 | 1.2.2.2.8.1 | 6 | Load File Staged and Posted "Ready" | 2026-05-19 | 2026-05-19 | 2026-04-07 | 2026-04-07 | 0 | 0.125 | As Soon As Possible | Future Task | -20.52h | 0h | Kasey Hughes |  | True | True |  | RTR_CM12_Activity Rates |  | Finance | 1731 | 1.5 1.63 302.88 303 301.38  | 1693 | 1693 1.5 Post Load Validation |  |
| 1731 | 1.2.2.2.8.2 | 1.2.2.2.8.2 | 6 | Pre Load Validation | 2026-05-19 | 2026-05-20 | 2026-04-07 | 2026-04-07 | 0 | 0.25 | As Soon As Possible | Future Task | -20.52h | 0h | Kasey Hughes |  | True | True |  | RTR_CM12_Activity Rates | Brian Wagner | Finance | 1732 | 1.63 1.88 303 303.25 301.38  | 1730 | 1730 1.625 Load File Staged and Posted "Ready" |  |
| 1732 | 1.2.2.2.8.3 | 1.2.2.2.8.3 | 6 | Simulate Load | 2026-05-20 | 2026-05-20 | 2026-04-07 | 2026-04-08 | 0 | 0.125 | As Soon As Possible | Future Task | -20.52h | 0h | Data Migration Team |  | True | True |  | RTR_CM12_Activity Rates |  | Data | 1733 | 1.88 2 303.25 303.38 301.38  | 1731 | 1731 1.875 Pre Load Validation |  |
| 1733 | 1.2.2.2.8.4 | 1.2.2.2.8.4 | 6 | Error and Defect Mitigation | 2026-05-20 | 2026-05-20 | 2026-04-08 | 2026-04-08 | 0 | 0.25 | As Soon As Possible | Future Task | -20.52h | 0h | Kasey Hughes |  | True | True |  | RTR_CM12_Activity Rates | Brian Wagner | Finance | 1734 | 2 2.25 303.38 303.63 301.38  | 1732 | 1732 2 Simulate Load |  |
| 1734 | 1.2.2.2.8.5 | 1.2.2.2.8.5 | 6 | Load | 2026-05-20 | 2026-05-20 | 2026-04-08 | 2026-04-08 | 0 | 0.125 | As Soon As Possible | Future Task | -20.52h | 0h | Data Migration Team |  | True | True |  | RTR_CM12_Activity Rates |  | Data | 1735 | 2.25 2.38 303.63 303.75 301.38  | 1733 | 1733 2.25 Error and Defect Mitigation |  |
| 1735 | 1.2.2.2.8.6 | 1.2.2.2.8.6 | 6 | Post Load Validation | 2026-05-20 | 2026-05-20 | 2026-04-08 | 2026-04-08 | 0 | 0.25 | As Soon As Possible | Future Task | -20.52h | 0h | Kasey Hughes |  | True | True |  | RTR_CM12_Activity Rates | Brian Wagner | Finance |  | 2.38 2.63 303.75 304 301.38  | 1734 | 1734 2.375 Load |  |
| 1736 | 1.2.2.2.9 | 1.2.2.2.9 | 5 | RTR_CM06_Bank_master | 2026-05-18 | 2026-05-22 | 2026-04-08 | 2026-04-09 | 0 | 3.81 | As Soon As Possible | Future Task | -6.06d | 0d | COULD NOT BE DETERMINED | True | True | True |  | Master Data Loads |  |  |  |  |  |  |  |
| 1737 | 1.2.2.2.9.1 | 1.2.2.2.9.1 | 6 | Load File Staged and Posted "Ready" | 2026-05-21 | 2026-05-21 | 2026-04-08 | 2026-04-08 | 0 | 0.125 | As Soon As Possible | Future Task | -30.02h | 0h | Data Migration Team |  | True | True |  | RTR_CM06_Bank_master |  | Data | 1738 | 3.25 3.38 303.63 303.75 300.38  | 1700 | 1700 3.25 Post Load Validation |  |
| 1738 | 1.2.2.2.9.2 | 1.2.2.2.9.2 | 6 | Pre Load Validation | 2026-05-21 | 2026-05-22 | 2026-04-08 | 2026-04-09 | 0 | 0.25 | As Soon As Possible | Future Task | -30.02h | 0h | Kasey Hughes |  | True | True |  | RTR_CM06_Bank_master | Brian Wagner | Finance |  | 3.38 3.63 303.75 304 300.38  | 1737 | 1737 3.375 Load File Staged and Posted "Ready" |  |
| 1739 | 1.2.2.2.9.3 | 1.2.2.2.9.3 | 6 | Simulate Load | 2026-05-18 | 2026-05-18 | 2026-04-09 | 2026-04-09 | 0 | 0.125 | Start No Earlier Than | Future Task | -48.52h | 0h | Data Migration Team |  | True | True |  | RTR_CM06_Bank_master |  | Data | 1740 | 0 0.13 301.88 302 301.88  |  |  |  |
| 1740 | 1.2.2.2.9.4 | 1.2.2.2.9.4 | 6 | Error and Defect Mitigation | 2026-05-18 | 2026-05-18 | 2026-04-09 | 2026-04-09 | 0 | 0.25 | As Soon As Possible | Future Task | -48.52h | 0h | Kasey Hughes |  | True | True |  | RTR_CM06_Bank_master | Brian Wagner | Finance | 1741 | 0.13 0.38 302 302.25 301.88  | 1739 | 1739 0.125 Simulate Load |  |
| 1741 | 1.2.2.2.9.5 | 1.2.2.2.9.5 | 6 | Load | 2026-05-18 | 2026-05-19 | 2026-04-09 | 2026-04-09 | 0 | 0.625 | Finish No Earlier Than | Future Task | -48.52h | 0h | Data Migration Team |  | True | True |  | RTR_CM06_Bank_master |  | Data | 17, 421, 744 | 0.38 1 302.25 302.88 301.88  | 1740 | 1740 0.375 Error and Defect Mitigation |  |
| 1742 | 1.2.2.2.9.6 | 1.2.2.2.9.6 | 6 | Post Load Validation | 2026-05-19 | 2026-05-19 | 2026-04-09 | 2026-04-09 | 0 | 0.25 | Finish No Earlier Than | Future Task | -48.52h | 0h | Kasey Hughes |  | True | True |  | RTR_CM06_Bank_master | Brian Wagner | Finance | 17, 781, 789 | 1 1.25 303.75 304 302.75  | 1741 | 1741 1 Load |  |
| 2947 | 1.2.2.3 | 1.2.2.3 | 4 | ITC2 Master Data Loads Complete | 2026-05-29 | 2026-05-29 | 2026-05-29 | 2026-05-29 | 0 | 0 | As Soon As Possible | Future Task | -4591m | 0m | Jyoti Nain; Manoj Patel; Michelle Connnors; Roy John; Shiva Janga; Vishal Pujari; (Curtis) Todd Breithaupt; Jerry Ramos |  | True | True |  | ITC2 Data Load Tasks QS4 | Manoj Patel | Data | 2945, 2792, 3330, 2801, 3351, 4532 | 0 0 297 297 297  | 2800 |  | True |
| 2801 | 1.2.2.4 | 1.2.2.4 | 4 | Mock Transactional Data | 2026-10-08 | 2026-10-12 | 2026-10-08 | 2026-10-12 | 0 | 2 | As Soon As Possible | Future Task | -90.75d | 0d | Jyoti Nain; Manoj Patel; Michelle Connnors; Roy John; Shiva Janga; Vishal Pujari; (Curtis) Todd Breithaupt; Jerry Ramos | True | True | True |  | ITC2 Data Load Tasks QS4 | Manoj Patel | Data | 2052 |  | 294, 733, 604, 530 |  |  |
| 2945 | 1.2.2.4.1 | 1.2.2.4.1 | 5 | Inventory | 2026-10-08 | 2026-10-09 | 2026-10-08 | 2026-10-09 | 0 | 0.5 | As Soon As Possible | Future Task | -726h | 0h | (Curtis) Todd Breithaupt; Ambrish Patel; Jerry Ramos |  | True | True |  | Mock Transactional Data |  | Data | 28, 292, 944, 283, 828, 600, 0 | 0 0.5 302 302.5 302  | 2947, 3360, 4530 | 2947 0 ITC2 Master Data Loads Complete, 4530 0 PROD Master Data Loads Complete, 3360 0 UAT Master Data Loads Complete |  |
| 2829 | 1.2.2.4.2 | 1.2.2.4.2 | 5 | Open AR | 2026-10-09 | 2026-10-09 | 2026-10-09 | 2026-10-09 | 0 | 0.5 | As Soon As Possible | Future Task | -726h | 0h | (Curtis) Todd Breithaupt; Ambrish Patel; Jerry Ramos |  | True | True |  | Mock Transactional Data | Brian Wagner | Data | 2824 | 0.5 1 302.5 303 302  | 2945 | 2945 0.5 Inventory |  |
| 2824 | 1.2.2.4.3 | 1.2.2.4.3 | 5 | Open AP | 2026-10-09 | 2026-10-12 | 2026-10-09 | 2026-10-12 | 0 | 0.5 | As Soon As Possible | Future Task | -726h | 0h | (Curtis) Todd Breithaupt; Ambrish Patel; Jerry Ramos |  | True | True |  | Mock Transactional Data | Brian Wagner | Data | 2821 | 1 1.5 303 303.5 302  | 2829 | 2829 1 Open AR |  |
| 2821 | 1.2.2.4.4 | 1.2.2.4.4 | 5 | Bank and Cash | 2026-10-12 | 2026-10-12 | 2026-10-12 | 2026-10-12 | 0 | 0.5 | As Soon As Possible | Future Task | -726h | 0h | (Curtis) Todd Breithaupt; Ambrish Patel; Jerry Ramos |  | True | True |  | Mock Transactional Data |  | Data |  | 1.5 2 303.5 304 302  | 2824 | 2824 1.5 Open AP |  |
| 2944 | 1.2.2.4.5 | 1.2.2.4.5 | 5 | Open Purchase Orders(Manual) | 2026-10-09 | 2026-10-12 | 2026-10-09 | 2026-10-12 | 0 | 1 | As Soon As Possible | Future Task | -90.25d | 0d | (Curtis) Todd Breithaupt; Ambrish Patel; Jerry Ramos |  | True | True |  | Mock Transactional Data |  | Data |  | 0.5 1.5 303 304 302.5  | 2945 | 2945 0.5 Inventory |  |
| 2838 | 1.2.2.4.6 | 1.2.2.4.6 | 5 | Open Sales Orders(Manual) | 2026-10-09 | 2026-10-12 | 2026-10-09 | 2026-10-12 | 0 | 1 | As Soon As Possible | Future Task | -90.25d | 0d | (Curtis) Todd Breithaupt; Ambrish Patel; Jerry Ramos |  | True | True |  | Mock Transactional Data | Kim Kolesar | Data |  | 0.5 1.5 303 304 302.5  | 2945 | 2945 0.5 Inventory |  |
| 2860 | 1.2.2.4.7 | 1.2.2.4.7 | 5 | Service Orders(Manual) | 2026-10-09 | 2026-10-09 | 2026-10-09 | 2026-10-09 | 0 | 0.5 | As Soon As Possible | Future Task | -89.75d | 0d | (Curtis) Todd Breithaupt; Ambrish Patel; Jerry Ramos |  | True | True |  | Mock Transactional Data |  | Data |  | 0.5 1 303.5 304 303  | 2945 | 2945 0.5 Inventory |  |
| 2858 | 1.2.2.4.8 | 1.2.2.4.8 | 5 | Open Production Orders(Manual) | 2026-10-09 | 2026-10-12 | 2026-10-09 | 2026-10-12 | 0 | 1 | As Soon As Possible | Future Task | -90.25d | 0d | (Curtis) Todd Breithaupt; Ambrish Patel; Jerry Ramos |  | True | True |  | Mock Transactional Data | Brad Meseck | Data |  | 0.5 1.5 303 304 302.5  | 2945 | 2945 0.5 Inventory |  |
| 2052 | 1.2.2.5 | 1.2.2.5 | 4 | ITC2 Mock Data Loads Complete | 2026-10-12 | 2026-10-12 | 2026-04-21 | 2026-04-21 | 0 | 0 | As Soon As Possible | Future Task | -43560m | 0m | Mark George |  | True | True |  | ITC2 Data Load Tasks QS4 | Manoj Patel | PMO | 2799 | 0 0 304 304 304  | 2801 |  | True |
| 2053 | 1.2.3 | 1.2.3 | 3 | ITC3 Data Load Tasks QS5 | 2026-06-08 | 2026-06-23 | 2025-03-13 | 2026-04-21 | 0 | 11.88 | As Soon As Possible | Future Task | -24.31d | 0d | Jyoti Nain; Manoj Patel; Michelle Connnors; Roy John; Shiva Janga; Vishal Pujari; (Curtis) Todd Breithaupt; Jerry Ramos | True | True | True | True | Data Readiness | Manoj Patel | Data | 2422 |  |  |  |  |
| 2054 | 1.2.3.1 | 1.2.3.1 | 4 | PMO Authorization to Start Data Loads | 2026-06-08 | 2026-06-08 | 2026-04-06 | 2026-04-06 | 0 | 0.25 | Must Start On | Future Task | 0h | 0h | Mark George |  | True | True |  | ITC3 Data Load Tasks QS5 | Manoj Patel | PMO | 2959 | 0 0.25 303.75 304 303.75  | 1284 |  |  |
| 2959 | 1.2.3.2 | 1.2.3.2 | 4 | Master Data Loads | 2026-06-08 | 2026-06-19 | 2026-06-08 | 2026-06-19 | 0 | 9.63 | As Soon As Possible | Future Task | -24.56d | 0d | Jyoti Nain; Manoj Patel; Michelle Connnors; Roy John; Shiva Janga; Vishal Pujari; (Curtis) Todd Breithaupt; Jerry Ramos | True | True | True |  | ITC3 Data Load Tasks QS5 | Manoj Patel | Data | 2958 |  | 2054 |  |  |
| 2960 | 1.2.3.2.1 | 1.2.3.2.1 | 5 | RTR_CM02_Profit Center Hierarchy | 2026-06-08 | 2026-06-08 | 2026-04-06 | 2026-04-06 | 0 | 0.75 | As Soon As Possible | Future Task | -24.56d | 0d | COULD NOT BE DETERMINED | True | True | True |  | Master Data Loads | Brian Wagner |  | 29, 932, 995 |  |  |  |  |
| 2961 | 1.2.3.2.1.1 | 1.2.3.2.1.1 | 6 | Manual File Staged and Posted "Ready" | 2026-06-08 | 2026-06-08 | 2026-04-06 | 2026-04-06 | 0 | 0.125 | As Soon As Possible | Future Task | -196.52h | 0h | Kasey Hughes |  | True | True |  | RTR_CM02_Profit Center Hierarchy |  | Finance | 2962 | 0 0.13 299.25 299.38 299.25  |  |  |  |
| 2962 | 1.2.3.2.1.2 | 1.2.3.2.1.2 | 6 | Load | 2026-06-08 | 2026-06-08 | 2026-04-06 | 2026-04-06 | 0 | 0.25 | As Soon As Possible | Future Task | -196.52h | 0h | Kasey Hughes |  | True | True |  | RTR_CM02_Profit Center Hierarchy |  | Finance | 2963 | 0.13 0.38 299.38 299.63 299.25  | 2961 | 2961 0.125 Manual File Staged and Posted "Ready" |  |
| 2963 | 1.2.3.2.1.3 | 1.2.3.2.1.3 | 6 | Post Load Validation | 2026-06-08 | 2026-06-08 | 2026-04-06 | 2026-04-06 | 0 | 0.375 | As Soon As Possible | Future Task | -196.52h | 0h | Kasey Hughes |  | True | True |  | RTR_CM02_Profit Center Hierarchy | Brian Wagner | Finance | 29, 652, 978 | 0.38 0.75 299.63 300 299.25  | 2962 | 2962 0.375 Load |  |
| 3017 | 1.2.3.2.10 | 1.2.3.2.10 | 5 | RTR_CM08_Exchange_Rates | 2026-06-09 | 2026-06-10 | 2026-04-09 | 2026-04-10 | 0 | 1.13 | As Soon As Possible | Future Task | -17.06d | 0d | COULD NOT BE DETERMINED | True | True | True |  | Master Data Loads |  |  |  |  |  |  |  |
| 3018 | 1.2.3.2.10.1 | 1.2.3.2.10.1 | 6 | Load File Staged and Posted "Ready" | 2026-06-09 | 2026-06-09 | 2026-04-09 | 2026-04-09 | 0 | 0.125 | As Soon As Possible | Future Task | -136.52h | 0h | Kasey Hughes |  | True | True |  | RTR_CM08_Exchange_Rates |  | Finance | 3019 | 1 1.13 302.88 303 301.88  | 3015 | 3015 1 Load |  |
| 3019 | 1.2.3.2.10.2 | 1.2.3.2.10.2 | 6 | Pre Load Validation | 2026-06-09 | 2026-06-09 | 2026-04-09 | 2026-04-10 | 0 | 0.25 | As Soon As Possible | Future Task | -136.52h | 0h | Kasey Hughes |  | True | True |  | RTR_CM08_Exchange_Rates | Brian Wagner | Finance | 3020 | 1.13 1.38 303 303.25 301.88  | 3018 | 3018 1.125 Load File Staged and Posted "Ready" |  |
| 3020 | 1.2.3.2.10.3 | 1.2.3.2.10.3 | 6 | Simulate Load | 2026-06-09 | 2026-06-09 | 2026-04-10 | 2026-04-10 | 0 | 0.125 | As Soon As Possible | Future Task | -136.52h | 0h | Data Migration Team |  | True | True |  | RTR_CM08_Exchange_Rates |  | Data | 3021 | 1.38 1.5 303.25 303.38 301.88  | 3019 | 3019 1.375 Pre Load Validation |  |
| 3021 | 1.2.3.2.10.4 | 1.2.3.2.10.4 | 6 | Error and Defect Mitigation | 2026-06-09 | 2026-06-09 | 2026-04-10 | 2026-04-10 | 0 | 0.25 | As Soon As Possible | Future Task | -136.52h | 0h | Kasey Hughes |  | True | True |  | RTR_CM08_Exchange_Rates | Brian Wagner | Finance | 3022 | 1.5 1.75 303.38 303.63 301.88  | 3020 | 3020 1.5 Simulate Load |  |
| 3022 | 1.2.3.2.10.5 | 1.2.3.2.10.5 | 6 | Load | 2026-06-10 | 2026-06-10 | 2026-04-10 | 2026-04-10 | 0 | 0.125 | As Soon As Possible | Future Task | -136.52h | 0h | Data Migration Team |  | True | True |  | RTR_CM08_Exchange_Rates |  | Data | 3023 | 1.75 1.88 303.63 303.75 301.88  | 3021 | 3021 1.75 Error and Defect Mitigation |  |
| 3023 | 1.2.3.2.10.6 | 1.2.3.2.10.6 | 6 | Post Load Validation | 2026-06-10 | 2026-06-10 | 2026-04-10 | 2026-04-10 | 0 | 0.25 | As Soon As Possible | Future Task | -136.52h | 0h | Kasey Hughes |  | True | True |  | RTR_CM08_Exchange_Rates | Brian Wagner | Finance |  | 1.88 2.13 303.75 304 301.88  | 3022 | 3022 1.875 Load |  |
| 3024 | 1.2.3.2.11 | 1.2.3.2.11 | 5 | RTR_CM14_Cost Element_Group | 2026-06-11 | 2026-06-15 | 2026-04-08 | 2026-04-15 | 0 | 1.44 | As Soon As Possible | Future Task | -19.81d | 0d | Kasey Hughes | True | True | True |  | Master Data Loads | Brian Wagner | Finance |  |  |  |  |  |
| 3025 | 1.2.3.2.11.1 | 1.2.3.2.11.1 | 6 | Manual File Staged and Posted "Ready" | 2026-06-11 | 2026-06-11 | 2026-04-08 | 2026-04-14 | 0 | 0.0625 | As Soon As Possible | Future Task | -9511m | 0m | Kasey Hughes |  | True | True |  | RTR_CM14_Cost Element_Group |  | Finance | 3026 | 3.25 3.31 302.56 302.63 299.31  | 2974 | 2974 3.25 Post Load Validation |  |
| 3026 | 1.2.3.2.11.2 | 1.2.3.2.11.2 | 6 | Load | 2026-06-11 | 2026-06-12 | 2026-04-15 | 2026-04-15 | 0 | 1 | As Soon As Possible | Future Task | -158.52h | 0h | Kasey Hughes |  | True | True |  | RTR_CM14_Cost Element_Group |  | Finance | 3027 | 3.31 4.31 302.63 303.63 299.31  | 3025 | 3025 3.3125 Manual File Staged and Posted "Ready" |  |
| 3027 | 1.2.3.2.11.3 | 1.2.3.2.11.3 | 6 | Post Load Validation | 2026-06-12 | 2026-06-15 | 2026-04-15 | 2026-04-15 | 0 | 0.375 | As Soon As Possible | Future Task | -158.52h | 0h | Kasey Hughes |  | True | True |  | RTR_CM14_Cost Element_Group | Brian Wagner | Finance |  | 4.31 4.69 303.63 304 299.31  | 3026 | 3026 4.3125 Load |  |
| 3028 | 1.2.3.2.12 | 1.2.3.2.12 | 5 | OTC_CM19_Customer_Master - Bill-To | 2026-06-08 | 2026-06-08 | 2025-04-16 | 2025-04-16 | 0 | 0.25 | As Soon As Possible | Future Task | -121.52h | 0h | Anitha Jothi; Kim Kolesar; Michele Colombo; Michiko Tomihari; Ric Haraida; Rod Santos; Shibu Mathew; Narendra Kallam; Keith Riley; James Manohar |  | True | True |  | Master Data Loads | Kim Kolesar | OTC |  | 0 0.25 303.75 304 303.75  |  |  |  |
| 3029 | 1.2.3.2.13 | 1.2.3.2.13 | 5 | OTC_CM19_Customer_Master - Ship-To | 2026-06-11 | 2026-06-15 | 2026-04-08 | 2026-04-13 | 0 | 1.5 | As Soon As Possible | Future Task | -24.31d | 0d | Anitha Jothi; Kim Kolesar; Michele Colombo; Michiko Tomihari; Ric Haraida; Rod Santos; Shibu Mathew; Narendra Kallam; Keith Riley; James Manohar | True | True | True |  | Master Data Loads | Kim Kolesar | OTC |  |  |  |  |  |
| 3030 | 1.2.3.2.13.1 | 1.2.3.2.13.1 | 6 | Load File Staged and Posted "Ready" | 2026-06-11 | 2026-06-11 | 2026-04-08 | 2026-04-08 | 0 | 0.0625 | As Soon As Possible | Future Task | -11671m | 0m | Ric Haraida |  | True | True |  | OTC_CM19_Customer_Master - Ship-To |  | OTC | 3031 | 3.25 3.31 302.5 302.56 299.25  | 2974 | 2974 3.25 Post Load Validation |  |
| 3031 | 1.2.3.2.13.2 | 1.2.3.2.13.2 | 6 | Pre Load Validation | 2026-06-11 | 2026-06-11 | 2026-04-08 | 2026-04-08 | 0 | 0.0625 | As Soon As Possible | Future Task | -11671m | 0m | Ric Haraida |  | True | True |  | OTC_CM19_Customer_Master - Ship-To | Kim Kolesar | OTC | 303, 530, 403, 32 | 3.31 3.38 302.56 302.63 299.25  | 3030 | 3030 3.3125 Load File Staged and Posted "Ready" |  |
| 3032 | 1.2.3.2.13.3 | 1.2.3.2.13.3 | 6 | Open client for BP number range update | 2026-06-11 | 2026-06-11 | 2026-04-08 | 2026-04-09 | 0 | 0.0625 | As Soon As Possible | Future Task | -8956m | 0m | Basis |  | True | True |  | OTC_CM19_Customer_Master - Ship-To |  | Basis | 3033 | 3.38 3.44 303.84 303.91 300.47  | 3031 | 3031 3.375 Pre Load Validation |  |
| 3033 | 1.2.3.2.13.4 | 1.2.3.2.13.4 | 6 | Update number range BP02 from Internal to External | 2026-06-11 | 2026-06-11 | 2026-04-09 | 2026-04-10 | 0 | 0.0625 | As Soon As Possible | Future Task | -8956m | 0m | Ric Haraida |  | True | True |  | OTC_CM19_Customer_Master - Ship-To |  | OTC | 3034 | 3.44 3.5 303.91 303.97 300.47  | 3032 | 3032 3.4375 Open client for BP number range update |  |
| 3034 | 1.2.3.2.13.5 | 1.2.3.2.13.5 | 6 | Close Client | 2026-06-11 | 2026-06-11 | 2026-04-10 | 2026-04-13 | 0 | 0.03125 | As Soon As Possible | Future Task | -8956m | 0m | Basis |  | True | True |  | OTC_CM19_Customer_Master - Ship-To |  | Basis |  | 3.5 3.53 303.97 304 300.47  | 3033 | 3033 3.5 Update number range BP02 from Internal to External |  |
| 3035 | 1.2.3.2.13.6 | 1.2.3.2.13.6 | 6 | Simulate Load | 2026-06-11 | 2026-06-11 | 2026-04-08 | 2026-04-09 | 0 | 0.125 | As Soon As Possible | Future Task | -194.52h | 0h | Data Migration Team |  | True | True |  | OTC_CM19_Customer_Master - Ship-To |  | Data | 303, 630, 423, 46 | 3.38 3.5 302.63 302.75 299.25  | 3031 | 3031 3.375 Pre Load Validation |  |
| 3036 | 1.2.3.2.13.7 | 1.2.3.2.13.7 | 6 | Error and Defect Mitigation | 2026-06-11 | 2026-06-12 | 2026-04-09 | 2026-04-09 | 0 | 0.5 | As Soon As Possible | Future Task | -159.02h | 0h | Ric Haraida |  | True | True |  | OTC_CM19_Customer_Master - Ship-To | Kim Kolesar | OTC | 3037 | 3.5 4 302.75 303.25 299.25  | 3035 | 3035 3.5 Simulate Load |  |
| 3037 | 1.2.3.2.13.8 | 1.2.3.2.13.8 | 6 | Load | 2026-06-12 | 2026-06-12 | 2026-04-09 | 2026-04-09 | 0 | 0.375 | As Soon As Possible | Future Task | -159.02h | 0h | Data Migration Team |  | True | True |  | OTC_CM19_Customer_Master - Ship-To |  | Data | 3038 | 4 4.38 303.25 303.63 299.25  | 3036 | 3036 4 Error and Defect Mitigation |  |
| 3038 | 1.2.3.2.13.9 | 1.2.3.2.13.9 | 6 | Post Load Validation | 2026-06-12 | 2026-06-15 | 2026-04-09 | 2026-04-10 | 0 | 0.375 | As Soon As Possible | Future Task | -159.02h | 0h | Ric Haraida |  | True | True |  | OTC_CM19_Customer_Master - Ship-To | Kim Kolesar | OTC |  | 4.38 4.75 303.63 304 299.25  | 3037 | 3037 4.375 Load |  |
| 3039 | 1.2.3.2.14 | 1.2.3.2.14 | 5 | OTC_CM19_Customer_Master - Sold-To | 2026-06-11 | 2026-06-15 | 2026-04-08 | 2026-04-10 | 0 | 1.63 | As Soon As Possible | Future Task | -24.19d | 0d | Anitha Jothi; Kim Kolesar; Michele Colombo; Michiko Tomihari; Ric Haraida; Rod Santos; Shibu Mathew; Narendra Kallam; Keith Riley; James Manohar | True | True | True |  | Master Data Loads | Kim Kolesar | OTC |  |  |  |  |  |
| 3040 | 1.2.3.2.14.1 | 1.2.3.2.14.1 | 6 | Load File Staged and Posted "Ready" | 2026-06-11 | 2026-06-11 | 2026-04-08 | 2026-04-09 | 0 | 0.0625 | As Soon As Possible | Future Task | -8941m | 0m | Ric Haraida |  | True | True |  | OTC_CM19_Customer_Master - Sold-To |  | OTC | 3041 | 3.38 3.44 303.88 303.94 300.5  | 3031 | 3031 3.375 Pre Load Validation |  |
| 3041 | 1.2.3.2.14.2 | 1.2.3.2.14.2 | 6 | Pre Load Validation | 2026-06-11 | 2026-06-11 | 2026-04-09 | 2026-04-09 | 0 | 0.0625 | As Soon As Possible | Future Task | -8941m | 0m | Ric Haraida |  | True | True |  | OTC_CM19_Customer_Master - Sold-To | Kim Kolesar | OTC |  | 3.44 3.5 303.94 304 300.5  | 3040 | 3040 3.4375 Load File Staged and Posted "Ready" |  |
| 3042 | 1.2.3.2.14.3 | 1.2.3.2.14.3 | 6 | Simulate Load | 2026-06-12 | 2026-06-12 | 2026-04-09 | 2026-04-09 | 0 | 0.125 | As Soon As Possible | Future Task | -196.52h | 0h | Data Migration Team |  | True | True |  | OTC_CM19_Customer_Master - Sold-To |  | Data | 3043 | 96 96.13 301.38 301.5 205.38  | 29, 763, 35 | 35 96 In Draft |  |
| 3043 | 1.2.3.2.14.4 | 1.2.3.2.14.4 | 6 | Error and Defect Mitigation | 2026-06-12 | 2026-06-12 | 2026-04-09 | 2026-04-09 | 0 | 0.375 | As Soon As Possible | Future Task | -196.52h | 0h | Ric Haraida |  | True | True |  | OTC_CM19_Customer_Master - Sold-To | Kim Kolesar | OTC | 3044 | 96.13 96.5 301.5 301.88 205.38  | 3042 | 3042 96.125 Simulate Load |  |
| 3044 | 1.2.3.2.14.5 | 1.2.3.2.14.5 | 6 | Load | 2026-06-12 | 2026-06-15 | 2026-04-09 | 2026-04-10 | 0 | 0.375 | As Soon As Possible | Future Task | -196.52h | 0h | Data Migration Team |  | True | True |  | OTC_CM19_Customer_Master - Sold-To |  | Data | 30, 453, 50, 305, 730, 600, 0 | 96.5 96.88 301.88 302.25 205.38  | 3043 | 3043 96.5 Error and Defect Mitigation |  |
| 3045 | 1.2.3.2.14.6 | 1.2.3.2.14.6 | 6 | Post Load Validation | 2026-06-15 | 2026-06-15 | 2026-04-10 | 2026-04-10 | 0 | 0.375 | As Soon As Possible | Future Task | -161.02h | 0h | Ric Haraida |  | True | True |  | OTC_CM19_Customer_Master - Sold-To | Kim Kolesar | OTC |  | 96.88 97.25 303.63 304 206.75  | 3044 | 3044 96.875 Load |  |
| 3046 | 1.2.3.2.14.7 | 1.2.3.2.14.7 | 6 | Open client for BP number range update | 2026-06-11 | 2026-06-11 | 2026-04-09 | 2026-04-09 | 0 | 0.03125 | As Soon As Possible | Future Task | -8986m | 0m | Basis |  | True | True |  | OTC_CM19_Customer_Master - Sold-To |  | Basis | 3047 | 3.5 3.53 303.91 303.94 300.41  | 3035 | 3035 3.5 Simulate Load |  |
| 3047 | 1.2.3.2.14.8 | 1.2.3.2.14.8 | 6 | Update number range BP02 from Internal to External | 2026-06-11 | 2026-06-11 | 2026-04-09 | 2026-04-09 | 0 | 0.03125 | As Soon As Possible | Future Task | -8986m | 0m | Ric Haraida |  | True | True |  | OTC_CM19_Customer_Master - Sold-To |  | OTC | 3048 | 3.53 3.56 303.94 303.97 300.41  | 3046 | 3046 3.53125 Open client for BP number range update |  |
| 3048 | 1.2.3.2.14.9 | 1.2.3.2.14.9 | 6 | Close Client | 2026-06-12 | 2026-06-12 | 2026-04-09 | 2026-04-09 | 0 | 0.03125 | As Soon As Possible | Future Task | -8986m | 0m | Basis |  | True | True |  | OTC_CM19_Customer_Master - Sold-To |  | Basis |  | 3.56 3.59 303.97 304 300.41  | 3047 | 3047 3.5625 Update number range BP02 from Internal to External |  |
| 3049 | 1.2.3.2.15 | 1.2.3.2.15 | 5 | PTP_CM27_Vendor Master as Customer - FLCU01 | 2026-06-15 | 2026-06-19 | 2026-04-10 | 2026-04-14 | 0 | 4.81 | As Soon As Possible | Future Task | -24.56d | 0d | Muniraju Surappachari; Nevin Varkey; Samuel Houff; Sarasija Ghosh; Surendra Krishna Acharya; Swetha SethumadhavaRao; James Farmer | True | True | True |  | Master Data Loads | Muniraju Surappachari | PTP |  |  |  |  |  |
| 3050 | 1.2.3.2.15.1 | 1.2.3.2.15.1 | 6 | Extract File | 2026-06-15 | 2026-06-15 | 2026-04-10 | 2026-04-10 | 0 | 0.125 | As Soon As Possible | Future Task | -196.52h | 0h | Data Migration Team |  | True | True |  | PTP_CM27_Vendor Master as Customer - FLCU01 |  | Data | 3051 | 96.88 97 303.63 303.75 206.75  | 3044 | 3044 96.875 Load |  |
| 3051 | 1.2.3.2.15.2 | 1.2.3.2.15.2 | 6 | Pre Load Validation | 2026-06-15 | 2026-06-15 | 2026-04-10 | 2026-04-10 | 0 | 0.25 | As Soon As Possible | Future Task | -196.52h | 0h | Nevin Varkey |  | True | True |  | PTP_CM27_Vendor Master as Customer - FLCU01 | Sam Houff | PTP | 3052 | 97 97.25 303.75 304 206.75  | 3050 | 3050 97 Extract File |  |

| uid | wbs | outlineNumber | outlineLevel | name | start | finish | baselineStart | baselineFinish | percentComplete | durationDays | constraintType | status | totalSlackRaw | freeSlackRaw | resourceNames | summary | criticalFlag | active | summaryName | businessValidationOwner | workstream | successors | cpm | predecessors | drivers |
| --- | --- | --- | --- | --- | --- | --- | --- | --- | --- | --- | --- | --- | --- | --- | --- | --- | --- | --- | --- | --- | --- | --- | --- | --- | --- |
| 3052 | 1.2.3.2.15.3 | 1.2.3.2.15.3 | 6 | Simulate Load | 2026-06-15 | 2026-06-16 | 2026-04-10 | 2026-04-13 | 0 | 1.40625 | As Soon As Possible | Future Task | -196.52h | 0h | Data Migration Team |  | True | True | PTP_CM27_Vendor Master as Customer - FLCU01 |  | Data | 3053 | 0 1.41 301.97 303.38 301.97  | 30, 163, 51 |  |
| 3053 | 1.2.3.2.15.4 | 1.2.3.2.15.4 | 6 | Error and Defect Mitigation | 2026-06-16 | 2026-06-18 | 2026-04-10 | 2026-04-14 | 0 | 0.25 | As Soon As Possible | Future Task | -196.52h | 0h | Nevin Varkey |  | True | True | PTP_CM27_Vendor Master as Customer - FLCU01 | Sam Houff | PTP | 3054 | 1.41 1.66 303.38 303.63 301.97  | 3052 | 3052 1.40625 Simulate Load |
| 3054 | 1.2.3.2.15.5 | 1.2.3.2.15.5 | 6 | Load | 2026-06-18 | 2026-06-19 | 2026-04-10 | 2026-04-14 | 0 | 0.125 | As Soon As Possible | Future Task | -196.52h | 0h | Data Migration Team |  | True | True | PTP_CM27_Vendor Master as Customer - FLCU01 |  | Data | 3055 | 1.66 1.78 303.63 303.75 301.97  | 3053 | 3053 1.65625 Error and Defect Mitigation |
| 3055 | 1.2.3.2.15.6 | 1.2.3.2.15.6 | 6 | Post Load Validation | 2026-06-19 | 2026-06-19 | 2026-04-14 | 2026-04-14 | 0 | 0.25 | As Soon As Possible | Future Task | -196.52h | 0h | Nevin Varkey |  | True | True | PTP_CM27_Vendor Master as Customer - FLCU01 | Sam Houff | PTP |  | 1.78 2.03 303.75 304 301.97  | 3054 | 3054 1.78125 Load |
| 3056 | 1.2.3.2.16 | 1.2.3.2.16 | 5 | OTC_CM23_Customer_Hierarchy | 2026-06-15 | 2026-06-15 | 2026-04-10 | 2026-04-10 | 0 | 0.69 | As Soon As Possible | Future Task | -20.44d | 0d | Anitha Jothi; Kim Kolesar; Michele Colombo; Michiko Tomihari; Ric Haraida; Rod Santos; Shibu Mathew; Narendra Kallam; Keith Riley; James Manohar | True | True | True | Master Data Loads | Kim Kolesar | OTC |  |  |  |  |
| 3057 | 1.2.3.2.16.1 | 1.2.3.2.16.1 | 6 | Manual File Staged and Posted "Ready" | 2026-06-15 | 2026-06-15 | 2026-04-10 | 2026-04-10 | 0 | 0.0625 | As Soon As Possible | Future Task | -9811m | 0m | Ric Haraida |  | True | True | OTC_CM23_Customer_Hierarchy | Kim Kolesar | OTC | 3058 | 96.88 96.94 303.31 303.38 206.44  | 3044 | 3044 96.875 Load |
| 3058 | 1.2.3.2.16.2 | 1.2.3.2.16.2 | 6 | Load | 2026-06-15 | 2026-06-15 | 2026-04-10 | 2026-04-10 | 0 | 0.25 | As Soon As Possible | Future Task | -163.52h | 0h | Ric Haraida |  | True | True | OTC_CM23_Customer_Hierarchy |  | OTC | 3059 | 96.94 97.19 303.38 303.63 206.44  | 3057 | 3057 96.9375 Manual File Staged and Posted "Ready" |
| 3059 | 1.2.3.2.16.3 | 1.2.3.2.16.3 | 6 | Post Load Validation | 2026-06-15 | 2026-06-15 | 2026-04-10 | 2026-04-10 | 0 | 0.375 | As Soon As Possible | Future Task | -163.52h | 0h | Ric Haraida |  | True | True | OTC_CM23_Customer_Hierarchy | Kim Kolesar | OTC |  | 97.19 97.56 303.63 304 206.44  | 3058 | 3058 97.1875 Load |
| 3060 | 1.2.3.2.17 | 1.2.3.2.17 | 5 | PTP_CM27_Vendor Master - Z001 - External Sales Rep | 2026-06-15 | 2026-06-18 | 2026-04-10 | 2026-04-13 | 0 | 3.38 | As Soon As Possible | Future Task | -23.13d | 0d | Muniraju Surappachari; Nevin Varkey; Samuel Houff; Sarasija Ghosh; Surendra Krishna Acharya; Swetha SethumadhavaRao; James Farmer | True | True | True | Master Data Loads | Kim Kolesar | PTP |  |  |  |  |
| 3061 | 1.2.3.2.17.1 | 1.2.3.2.17.1 | 6 | Extract File | 2026-06-15 | 2026-06-15 | 2026-04-10 | 2026-04-10 | 0 | 0.125 | As Soon As Possible | Future Task | -185.02h | 0h | Data Migration Team |  | True | True | PTP_CM27_Vendor Master - Z001 - External Sales Rep |  | Data | 30, 623, 75 | 96.88 97 302.97 303.09 206.09  | 3044 | 3044 96.875 Load |
| 3062 | 1.2.3.2.17.2 | 1.2.3.2.17.2 | 6 | Pre Load Validation | 2026-06-15 | 2026-06-15 | 2026-04-10 | 2026-04-10 | 0 | 0.25 | As Soon As Possible | Future Task | -185.02h | 0h | Nevin Varkey |  | True | True | PTP_CM27_Vendor Master - Z001 - External Sales Rep | Sam Houff | PTP | 3063 | 97 97.25 303.75 304 206.75  | 3061 | 3061 97 Extract File |
| 3063 | 1.2.3.2.17.3 | 1.2.3.2.17.3 | 6 | Simulate Load | 2026-06-15 | 2026-06-15 | 2026-04-10 | 2026-04-10 | 0 | 0.125 | As Soon As Possible | Future Task | -185.02h | 0h | Data Migration Team |  | True | True | PTP_CM27_Vendor Master - Z001 - External Sales Rep |  | Data | 3064 | 0 0.13 303.25 303.38 303.25  | 30, 163, 62 |  |
| 3064 | 1.2.3.2.17.4 | 1.2.3.2.17.4 | 6 | Error and Defect Mitigation | 2026-06-15 | 2026-06-15 | 2026-04-10 | 2026-04-10 | 0 | 0.25 | As Soon As Possible | Future Task | -185.02h | 0h | Nevin Varkey |  | True | True | PTP_CM27_Vendor Master - Z001 - External Sales Rep | Sam Houff | PTP | 3065 | 0.13 0.38 303.38 303.63 303.25  | 3063 | 3063 0.125 Simulate Load |
| 3065 | 1.2.3.2.17.5 | 1.2.3.2.17.5 | 6 | Load | 2026-06-15 | 2026-06-18 | 2026-04-10 | 2026-04-13 | 0 | 0.125 | As Soon As Possible | Future Task | -185.02h | 0h | Data Migration Team |  | True | True | PTP_CM27_Vendor Master - Z001 - External Sales Rep |  | Data | 3066 | 0.38 0.5 303.63 303.75 303.25  | 3064 | 3064 0.375 Error and Defect Mitigation |
| 3066 | 1.2.3.2.17.6 | 1.2.3.2.17.6 | 6 | Post Load Validation | 2026-06-18 | 2026-06-18 | 2026-04-13 | 2026-04-13 | 0 | 0.25 | As Soon As Possible | Future Task | -185.02h | 0h | Nevin Varkey |  | True | True | PTP_CM27_Vendor Master - Z001 - External Sales Rep | Sam Houff | PTP |  | 0.5 0.75 303.75 304 303.25  | 3065 | 3065 0.5 Load |
| 3067 | 1.2.3.2.18 | 1.2.3.2.18 | 5 | RTR_CM10_Credit_Management_Role | 2026-06-15 | 2026-06-16 | 2026-04-10 | 2026-04-13 | 0 | 1.84 | As Soon As Possible | Future Task | -22.35d | 0d | COULD NOT BE DETERMINED | True | True | True | Master Data Loads | Manjunatha Umesha |  |  |  |  |  |
| 3068 | 1.2.3.2.18.1 | 1.2.3.2.18.1 | 6 | Load File Staged and Posted "Ready" | 2026-06-15 | 2026-06-15 | 2026-04-10 | 2026-04-10 | 0 | 0.0625 | As Soon As Possible | Future Task | -10726m | 0m | Kasey Hughes |  | True | True | RTR_CM10_Credit_Management_Role |  | Finance | 3069 | 96.88 96.94 302.25 302.31 205.38  | 3044 | 3044 96.875 Load |
| 3069 | 1.2.3.2.18.2 | 1.2.3.2.18.2 | 6 | Pre Load Validation | 2026-06-15 | 2026-06-15 | 2026-04-10 | 2026-04-10 | 0 | 0.0625 | As Soon As Possible | Future Task | -10726m | 0m | Kasey Hughes |  | True | True | RTR_CM10_Credit_Management_Role | Brian Wagner | Finance | 3070 | 96.94 97 302.31 302.38 205.38  | 3068 | 3068 96.9375 Load File Staged and Posted "Ready" |
| 3070 | 1.2.3.2.18.3 | 1.2.3.2.18.3 | 6 | Simulate Load | 2026-06-15 | 2026-06-15 | 2026-04-10 | 2026-04-10 | 0 | 0.125 | As Soon As Possible | Future Task | -178.77h | 0h | Data Migration Team |  | True | True | RTR_CM10_Credit_Management_Role |  | Data | 3071 | 97 97.13 302.38 302.5 205.38  | 3069 | 3069 97 Pre Load Validation |
| 3071 | 1.2.3.2.18.4 | 1.2.3.2.18.4 | 6 | Error and Defect Mitigation | 2026-06-15 | 2026-06-15 | 2026-04-10 | 2026-04-10 | 0 | 0.25 | As Soon As Possible | Future Task | -178.77h | 0h | Kasey Hughes |  | True | True | RTR_CM10_Credit_Management_Role | Brian Wagner | Finance | 30, 723, 89 | 97.13 97.38 302.5 302.75 205.38  | 3070 | 3070 97.125 Simulate Load |
| 3072 | 1.2.3.2.18.5 | 1.2.3.2.18.5 | 6 | Load | 2026-06-15 | 2026-06-16 | 2026-04-10 | 2026-04-10 | 0 | 0.25 | As Soon As Possible | Future Task | -178.77h | 0h | Data Migration Team |  | True | True | RTR_CM10_Credit_Management_Role |  | Data | 3073 | 97.38 97.63 302.75 303 205.38  | 3071 | 3071 97.375 Error and Defect Mitigation |
| 3073 | 1.2.3.2.18.6 | 1.2.3.2.18.6 | 6 | Post Load Validation | 2026-06-16 | 2026-06-16 | 2026-04-10 | 2026-04-13 | 0 | 0.375 | As Soon As Possible | Future Task | -178.77h | 0h | Kasey Hughes |  | True | True | RTR_CM10_Credit_Management_Role | Brian Wagner | Finance | 30, 903, 255 | 97.63 98 303 303.38 205.38  | 3072 | 3072 97.625 Load |
| 3074 | 1.2.3.2.19 | 1.2.3.2.19 | 5 | PTP_CM27_Vendor Master | 2026-06-08 | 2026-06-16 | 2026-04-10 | 2026-04-15 | 0 | 6.28 | As Soon As Possible | Future Task | -23.78d | 0d | Muniraju Surappachari; Nevin Varkey; Samuel Houff; Sarasija Ghosh; Surendra Krishna Acharya; Swetha SethumadhavaRao; James Farmer | True | True | True | Master Data Loads | Muniraju Surappachari | PTP |  |  |  |  |
| 3075 | 1.2.3.2.19.1 | 1.2.3.2.19.1 | 6 | Extract File | 2026-06-15 | 2026-06-15 | 2026-04-10 | 2026-04-10 | 0 | 0.125 | As Soon As Possible | Future Task | -169.77h | 0h | Data Migration Team |  | True | True | PTP_CM27_Vendor Master |  | Data | 3076 | 97 97.13 303.09 303.22 206.09  | 3061 | 3061 97 Extract File |
| 3076 | 1.2.3.2.19.2 | 1.2.3.2.19.2 | 6 | Pre Load Validation | 2026-06-15 | 2026-06-15 | 2026-04-10 | 2026-04-10 | 0 | 0.25 | As Soon As Possible | Future Task | -169.77h | 0h | Nevin Varkey |  | True | True | PTP_CM27_Vendor Master | Sam Houff | PTP | 3077 | 97.13 97.38 303.22 303.47 206.09  | 3075 | 3075 97.125 Extract File |
| 3077 | 1.2.3.2.19.3 | 1.2.3.2.19.3 | 6 | Simulate Load | 2026-06-15 | 2026-06-15 | 2026-04-10 | 2026-04-14 | 0 | 0.28125 | As Soon As Possible | Future Task | -169.77h | 0h | Data Migration Team |  | True | True | PTP_CM27_Vendor Master |  | Data | 3078 | 97.38 97.66 303.47 303.75 206.09  | 3076 | 3076 97.375 Pre Load Validation |
| 3078 | 1.2.3.2.19.4 | 1.2.3.2.19.4 | 6 | Error and Defect Mitigation | 2026-06-15 | 2026-06-16 | 2026-04-14 | 2026-04-14 | 0 | 0.25 | As Soon As Possible | Future Task | -169.77h | 0h | Nevin Varkey |  | True | True | PTP_CM27_Vendor Master | Sam Houff | PTP |  | 97.66 97.91 303.75 304 206.09  | 3077 | 3077 97.65625 Simulate Load |
| 3079 | 1.2.3.2.19.5 | 1.2.3.2.19.5 | 6 | Load | 2026-06-08 | 2026-06-08 | 2026-04-14 | 2026-04-14 | 0 | 0.125 | As Soon As Possible | Future Task | -190.27h | 0h | Data Migration Team |  | True | True | PTP_CM27_Vendor Master |  | Data | 3080 | 0 0.13 297.19 297.31 297.19  |  |  |
| 3080 | 1.2.3.2.19.6 | 1.2.3.2.19.6 | 6 | Post Load Validation | 2026-06-08 | 2026-06-08 | 2026-04-15 | 2026-04-15 | 0 | 0.25 | As Soon As Possible | Future Task | -190.27h | 0h | Nevin Varkey |  | True | True | PTP_CM27_Vendor Master | Sam Houff | PTP | 309, 331, 83, 132 | 0.13 0.38 297.31 297.56 297.19  | 3079 | 3079 0.125 Load |
| 2964 | 1.2.3.2.2 | 1.2.3.2.2 | 5 | RTR_CM03_Cost Center Hierarchy | 2026-06-09 | 2026-06-09 | 2026-04-06 | 2026-04-07 | 0 | 0.75 | As Soon As Possible | Future Task | -24.56d | 0d | COULD NOT BE DETERMINED | True | True | True | Master Data Loads | Brian Wagner |  | 29, 932, 995 |  |  |  |
| 2965 | 1.2.3.2.2.1 | 1.2.3.2.2.1 | 6 | Manual File Staged and Posted "Ready" | 2026-06-09 | 2026-06-09 | 2026-04-06 | 2026-04-06 | 0 | 0.125 | As Soon As Possible | Future Task | -196.52h | 0h | Kasey Hughes |  | True | True | RTR_CM03_Cost Center Hierarchy |  | Finance | 2966 | 0.75 0.88 300 300.13 299.25  | 2963 | 2963 0.75 Post Load Validation |
| 2966 | 1.2.3.2.2.2 | 1.2.3.2.2.2 | 6 | Load | 2026-06-09 | 2026-06-09 | 2026-04-06 | 2026-04-07 | 0 | 0.25 | As Soon As Possible | Future Task | -196.52h | 0h | Kasey Hughes |  | True | True | RTR_CM03_Cost Center Hierarchy |  | Finance | 2967 | 0.88 1.13 300.13 300.38 299.25  | 2965 | 2965 0.875 Manual File Staged and Posted "Ready" |
| 2967 | 1.2.3.2.2.3 | 1.2.3.2.2.3 | 6 | Post Load Validation | 2026-06-09 | 2026-06-09 | 2026-04-07 | 2026-04-07 | 0 | 0.375 | As Soon As Possible | Future Task | -196.52h | 0h | Kasey Hughes |  | True | True | RTR_CM03_Cost Center Hierarchy | Brian Wagner | Finance | 29, 693, 4 | 1.13 1.5 300.38 300.75 299.25  | 2966 | 2966 1.125 Load |
| 3081 | 1.2.3.2.20 | 1.2.3.2.20 | 5 | PTP_CM27_Vendor Master - Mass Maintenance - LFA1-WERKR | 2026-06-08 | 2026-06-09 | 2026-04-10 | 2026-04-15 | 0 | 0.88 | As Soon As Possible | Future Task | -16.44d | 0d | Muniraju Surappachari; Nevin Varkey; Samuel Houff; Sarasija Ghosh; Surendra Krishna Acharya; Swetha SethumadhavaRao; James Farmer | True | True | True | Master Data Loads | Muniraju Surappachari | PTP |  |  |  |  |
| 3082 | 1.2.3.2.20.1 | 1.2.3.2.20.1 | 6 | Extract File(Will Extract from LFA1) | 2026-06-08 | 2026-06-08 | 2026-04-10 | 2026-04-10 | 0 | 0.125 | As Soon As Possible | Future Task | -131.52h | 0h | Nevin Varkey |  | True | True | PTP_CM27_Vendor Master - Mass Maintenance - LFA1-WERKR |  | PTP | 30, 833, 107 | 0 0.13 302.5 302.63 302.5  |  |  |
| 3083 | 1.2.3.2.20.2 | 1.2.3.2.20.2 | 6 | Pre Load Validation | 2026-06-08 | 2026-06-08 | 2026-04-10 | 2026-04-10 | 0 | 0.25 | As Soon As Possible | Future Task | -131.52h | 0h | Nevin Varkey |  | True | True | PTP_CM27_Vendor Master - Mass Maintenance - LFA1-WERKR | Sam Houff | PTP | 3084 | 0.13 0.38 302.63 302.88 302.5  | 3082 | 3082 0.125 Extract File(Will Extract from LFA1) |
| 3084 | 1.2.3.2.20.3 | 1.2.3.2.20.3 | 6 | Simulate Load/ Not Needed | 2026-06-08 | 2026-06-08 | 2026-04-10 | 2026-04-10 | 0 | 0.125 | As Soon As Possible | Future Task | -131.52h | 0h | Nevin Varkey |  | True | True | PTP_CM27_Vendor Master - Mass Maintenance - LFA1-WERKR |  | PTP | 30, 853, 86 | 0.38 0.5 302.88 303 302.5  | 3083 | 3083 0.375 Pre Load Validation |
| 3085 | 1.2.3.2.20.4 | 1.2.3.2.20.4 | 6 | Error and Defect Mitigation | 2026-06-08 | 2026-06-08 | 2026-04-10 | 2026-04-13 | 0 | 0.25 | As Soon As Possible | Future Task | -125.52h | 0h | Nevin Varkey |  | True | True | PTP_CM27_Vendor Master - Mass Maintenance - LFA1-WERKR | Sam Houff | PTP |  | 0.5 0.75 303.75 304 303.25  | 3084 | 3084 0.5 Simulate Load/ Not Needed |
| 3086 | 1.2.3.2.20.5 | 1.2.3.2.20.5 | 6 | Load | 2026-06-08 | 2026-06-08 | 2026-04-15 | 2026-04-15 | 0 | 0.125 | As Soon As Possible | Future Task | -131.52h | 0h | Nevin Varkkey |  | True | True | PTP_CM27_Vendor Master - Mass Maintenance - LFA1-WERKR |  | PTP | 3087 | 0.5 0.63 303 303.13 302.5  | 3084 | 3084 0.5 Simulate Load/ Not Needed |
| 3087 | 1.2.3.2.20.6 | 1.2.3.2.20.6 | 6 | Post Load Validation | 2026-06-08 | 2026-06-09 | 2026-04-15 | 2026-04-15 | 0 | 0.25 | As Soon As Possible | Future Task | -131.52h | 0h | Nevin Varkey |  | True | True | PTP_CM27_Vendor Master - Mass Maintenance - LFA1-WERKR | Sam Houff | PTP | 3282 | 0.63 0.88 303.13 303.38 302.5  | 3086 | 3086 0.625 Load |
| 3088 | 1.2.3.2.21 | 1.2.3.2.21 | 5 | RTR_****_Credit Hierarchy | 2026-06-15 | 2026-06-17 | 2026-04-10 | 2026-04-13 | 0 | 1.91 | As Soon As Possible | Future Task | -22.22d | 0d | COULD NOT BE DETERMINED | True | True | True | Master Data Loads | Brian Wagner |  |  |  |  |  |
| 3089 | 1.2.3.2.21.1 | 1.2.3.2.21.1 | 6 | Manual File Staged and Posted "Ready" | 2026-06-15 | 2026-06-15 | 2026-04-10 | 2026-04-10 | 0 | 0.0625 | As Soon As Possible | Future Task | -9781m | 0m | Kasey Hughes |  | True | True | RTR_****_Credit Hierarchy | Brian Wagner | Finance |  | 97.38 97.44 303.94 304 206.56  | 3071 | 3071 97.375 Error and Defect Mitigation |
| 3090 | 1.2.3.2.21.2 | 1.2.3.2.21.2 | 6 | Load | 2026-06-16 | 2026-06-17 | 2026-04-13 | 2026-04-13 | 0 | 0.25 | As Soon As Possible | Future Task | -177.77h | 0h | Kasey Hughes |  | True | True | RTR_****_Credit Hierarchy |  | Finance | 3091 | 98 98.25 303.38 303.63 205.38  | 3073 | 3073 98 Post Load Validation |
| 3091 | 1.2.3.2.21.3 | 1.2.3.2.21.3 | 6 | Post Load Validation | 2026-06-17 | 2026-06-17 | 2026-04-13 | 2026-04-13 | 0 | 0.375 | As Soon As Possible | Future Task | -177.77h | 0h | Kasey Hughes |  | True | True | RTR_****_Credit Hierarchy | Brian Wagner | Finance |  | 98.25 98.63 303.63 304 205.38  | 3090 | 3090 98.25 Load |
| 3092 | 1.2.3.2.22 | 1.2.3.2.22 | 5 | PTP_CM27_BP_Intercompany Supplier | 2026-06-08 | 2026-06-09 | 2026-04-13 | 2026-04-14 | 0 | 1.13 | As Soon As Possible | Future Task | -16.44d | 0d | Muniraju Surappachari; Nevin Varkey; Samuel Houff; Sarasija Ghosh; Surendra Krishna Acharya; Swetha SethumadhavaRao; James Farmer | True | True | True | Master Data Loads | Muniraju Surappachari | PTP |  |  |  |  |
| 3093 | 1.2.3.2.22.1 | 1.2.3.2.22.1 | 6 | Load File Staged and Posted "Ready" | 2026-06-08 | 2026-06-08 | 2026-04-13 | 2026-04-13 | 0 | 0.0625 | As Soon As Possible | Future Task | -7891m | 0m | Nevin Varkey,Ric Haraida |  | True | True | PTP_CM27_BP_Intercompany Supplier |  | PTP | 3094 | 0.38 0.44 302.88 302.94 302.5  | 3080 | 3080 0.375 Post Load Validation |
| 3094 | 1.2.3.2.22.2 | 1.2.3.2.22.2 | 6 | Pre Load Validation | 2026-06-08 | 2026-06-08 | 2026-04-13 | 2026-04-13 | 0 | 0.0625 | As Soon As Possible | Future Task | -7891m | 0m | Nevin Varkey,Ric Haraida |  | True | True | PTP_CM27_BP_Intercompany Supplier | Sam Houff,Kim Kolesar | PTP | 3095 | 0.44 0.5 302.94 303 302.5  | 3093 | 3093 0.4375 Load File Staged and Posted "Ready" |
| 3095 | 1.2.3.2.22.3 | 1.2.3.2.22.3 | 6 | Simulate Load | 2026-06-08 | 2026-06-08 | 2026-04-13 | 2026-04-13 | 0 | 0.125 | As Soon As Possible | Future Task | -131.52h | 0h | Data Migration Team |  | True | True | PTP_CM27_BP_Intercompany Supplier |  | Data | 3096 | 0.5 0.63 303 303.13 302.5  | 3094 | 3094 0.5 Pre Load Validation |
| 3096 | 1.2.3.2.22.4 | 1.2.3.2.22.4 | 6 | Error and Defect Mitigation | 2026-06-08 | 2026-06-09 | 2026-04-13 | 2026-04-13 | 0 | 0.25 | As Soon As Possible | Future Task | -131.52h | 0h | Nevin Varkey,Ric Haraida |  | True | True | PTP_CM27_BP_Intercompany Supplier | Sam Houff,Kim Kolesar | PTP | 3097 | 0.63 0.88 303.13 303.38 302.5  | 3095 | 3095 0.625 Simulate Load |
| 3097 | 1.2.3.2.22.5 | 1.2.3.2.22.5 | 6 | Load | 2026-06-09 | 2026-06-09 | 2026-04-13 | 2026-04-14 | 0 | 0.25 | As Soon As Possible | Future Task | -131.52h | 0h | Data Migration Team |  | True | True | PTP_CM27_BP_Intercompany Supplier |  | Data | 30, 983, 254 | 0.88 1.13 303.38 303.63 302.5  | 3096 | 3096 0.875 Error and Defect Mitigation |
| 3098 | 1.2.3.2.22.6 | 1.2.3.2.22.6 | 6 | Post Load Validation | 2026-06-09 | 2026-06-09 | 2026-04-14 | 2026-04-14 | 0 | 0.375 | As Soon As Possible | Future Task | -131.52h | 0h | Nevin Varkey,Ric Haraida |  | True | True | PTP_CM27_BP_Intercompany Supplier | Sam Houff,Kim Kolesar | PTP |  | 1.13 1.5 303.63 304 302.5  | 3097 | 3097 1.125 Load |
| 3099 | 1.2.3.2.23 | 1.2.3.2.23 | 5 | PTP_CM27_BP_Intercompany Customer | 2026-06-08 | 2026-06-09 | 2026-04-13 | 2026-04-14 | 0 | 1.06 | As Soon As Possible | Future Task | -16d | 0d | Muniraju Surappachari; Nevin Varkey; Samuel Houff; Sarasija Ghosh; Surendra Krishna Acharya; Swetha SethumadhavaRao; James Farmer | True | True | True | Master Data Loads | Muniraju Surappachari | PTP |  |  |  |  |
| 3100 | 1.2.3.2.23.1 | 1.2.3.2.23.1 | 6 | Load File Staged and Posted "Ready" | 2026-06-08 | 2026-06-08 | 2026-04-13 | 2026-04-13 | 0 | 0.0625 | As Soon As Possible | Future Task | -7201m | 0m | Nevin Varkey,Ric Haraida |  | True | True | PTP_CM27_BP_Intercompany Customer |  | PTP |  | 0 0.06 303.94 304 303.94  |  |  |
| 3101 | 1.2.3.2.23.2 | 1.2.3.2.23.2 | 6 | Pre Load Validation | 2026-06-08 | 2026-06-08 | 2026-04-13 | 2026-04-13 | 0 | 0.0625 | As Soon As Possible | Future Task | -7681m | 0m | Nevin Varkey,Ric Haraida |  | True | True | PTP_CM27_BP_Intercompany Customer | Sam Houff,Kim Kolesar | PTP | 3102 | 0 0.06 302.94 303 302.94  |  |  |
| 3102 | 1.2.3.2.23.3 | 1.2.3.2.23.3 | 6 | Simulate Load | 2026-06-08 | 2026-06-08 | 2026-04-13 | 2026-04-13 | 0 | 0.125 | As Soon As Possible | Future Task | -128.02h | 0h | Data Migration Team |  | True | True | PTP_CM27_BP_Intercompany Customer |  | Data | 3103 | 0.06 0.19 303 303.13 302.94  | 3101 | 3101 0.0625 Pre Load Validation |
| 3103 | 1.2.3.2.23.4 | 1.2.3.2.23.4 | 6 | Error and Defect Mitigation | 2026-06-08 | 2026-06-08 | 2026-04-13 | 2026-04-13 | 0 | 0.25 | As Soon As Possible | Future Task | -128.02h | 0h | Nevin Varkey,Ric Haraida |  | True | True | PTP_CM27_BP_Intercompany Customer | Sam Houff,Kim Kolesar | PTP | 3104 | 0.19 0.44 303.13 303.38 302.94  | 3102 | 3102 0.1875 Simulate Load |
| 3104 | 1.2.3.2.23.5 | 1.2.3.2.23.5 | 6 | Load | 2026-06-08 | 2026-06-08 | 2026-04-13 | 2026-04-14 | 0 | 0.25 | As Soon As Possible | Future Task | -128.02h | 0h | Data Migration Team |  | True | True | PTP_CM27_BP_Intercompany Customer |  | Data | 31, 53, 254 | 0.44 0.69 303.38 303.63 302.94  | 3103 | 3103 0.4375 Error and Defect Mitigation |
| 3105 | 1.2.3.2.23.6 | 1.2.3.2.23.6 | 6 | Post Load Validation | 2026-06-08 | 2026-06-09 | 2026-04-14 | 2026-04-14 | 0 | 0.375 | As Soon As Possible | Future Task | -128.02h | 0h | Nevin Varkey,Ric Haraida |  | True | True | PTP_CM27_BP_Intercompany Customer | Sam Houff,Kim Kolesar | PTP |  | 0.69 1.06 303.63 304 302.94  | 3104 | 3104 0.6875 Load |
| 3106 | 1.2.3.2.24 | 1.2.3.2.24 | 5 | PTP_CM26_Material_Master - All Types | 2026-06-08 | 2026-06-10 | 2026-04-10 | 2026-04-15 | 0 | 2.28 | As Soon As Possible | Future Task | -23.53d | 0d | Muniraju Surappachari; Nevin Varkey; Samuel Houff; Sarasija Ghosh; Surendra Krishna Acharya; Swetha SethumadhavaRao; James Farmer | True | True | True | Master Data Loads | Muniraju Surappachari | PTP |  |  |  |  |
| 3107 | 1.2.3.2.24.1 | 1.2.3.2.24.1 | 6 | Extract File | 2026-06-08 | 2026-06-09 | 2026-04-10 | 2026-04-13 | 0 | 0.625 | As Soon As Possible | Future Task | -127.27h | 0h | Data Migration Team |  | True | True | PTP_CM26_Material_Master - All Types |  | Data |  | 0.13 0.75 303.38 304 303.25  | 3082 | 3082 0.125 Extract File(Will Extract from LFA1) |
| 3108 | 1.2.3.2.24.2 | 1.2.3.2.24.2 | 6 | Pre Load Validation | 2026-06-08 | 2026-06-09 | 2026-04-13 | 2026-04-14 | 0 | 0.25 | As Soon As Possible | Future Task | -190.27h | 0h | Nevin Varkey,Ric Haraida |  | True | True | PTP_CM26_Material_Master - All Types | Sam Houff,Kim Kolesar,Matt | PTP | 3109 | 0.38 0.63 297.56 297.81 297.19  | 3080 | 3080 0.375 Post Load Validation |
| 3109 | 1.2.3.2.24.3 | 1.2.3.2.24.3 | 6 | Simulate Load | 2026-06-09 | 2026-06-09 | 2026-04-14 | 2026-04-14 | 0 | 0.125 | As Soon As Possible | Future Task | -190.27h | 0h | Data Migration Team |  | True | True | PTP_CM26_Material_Master - All Types |  | Data | 3110 | 0.63 0.75 297.81 297.94 297.19  | 3108 | 3108 0.625 Pre Load Validation |
| 3110 | 1.2.3.2.24.4 | 1.2.3.2.24.4 | 6 | Error and Defect Mitigation | 2026-06-09 | 2026-06-10 | 2026-04-14 | 2026-04-14 | 0 | 0.5 | As Soon As Possible | Future Task | -190.27h | 0h | Nevin Varkey |  | True | True | PTP_CM26_Material_Master - All Types | Sam Houff,Kim Kolesar,Matt | PTP | 3111 | 0.75 1.25 297.94 298.44 297.19  | 3109 | 3109 0.75 Simulate Load |
| 3111 | 1.2.3.2.24.5 | 1.2.3.2.24.5 | 6 | Load | 2026-06-10 | 2026-06-10 | 2026-04-14 | 2026-04-15 | 0 | 0.375 | As Soon As Possible | Future Task | -190.27h | 0h | Data Migration Team |  | True | True | PTP_CM26_Material_Master - All Types |  | Data | 311, 231, 153, 122 | 1.25 1.63 298.44 298.81 297.19  | 3110 | 3110 1.25 Error and Defect Mitigation |
| 3112 | 1.2.3.2.24.6 | 1.2.3.2.24.6 | 6 | Post Load Validation | 2026-06-10 | 2026-06-10 | 2026-04-15 | 2026-04-15 | 0 | 0.25 | As Soon As Possible | Future Task | -183.77h | 0h | Nevin Varkey |  | True | True | PTP_CM26_Material_Master - All Types | Sam Houff,Kim Kolesar,Matt | PTP | 312, 831, 353, 142 | 1.63 1.88 303.75 304 302.13  | 3111 | 3111 1.625 Load |
| 3113 | 1.2.3.2.25 | 1.2.3.2.25 | 5 | PTP_CM26_Material_Master - SERV - Service Materials | 2026-06-10 | 2026-06-11 | 2026-04-07 | 2026-04-15 | 0 | 1.34 | As Soon As Possible | Future Task | -18.16d | 0d | Muniraju Surappachari; Nevin Varkey; Samuel Houff; Sarasija Ghosh; Surendra Krishna Acharya; Swetha SethumadhavaRao; James Farmer | True | True | True | Master Data Loads | Muniraju Surappachari | PTP |  |  |  |  |
| 3114 | 1.2.3.2.25.1 | 1.2.3.2.25.1 | 6 | Load File Staged and Posted "Ready" | 2026-06-10 | 2026-06-10 | 2026-04-07 | 2026-04-07 | 0 | 0.0625 | As Soon As Possible | Future Task | -8101m | 0m | Nevin Varkey,Ric Haraida |  | True | True | PTP_CM26_Material_Master - SERV - Service Materials |  | PTP |  | 1.88 1.94 303.94 304 302.06  | 2983 | 2983 1.875 Post Load Validation |
| 3115 | 1.2.3.2.25.2 | 1.2.3.2.25.2 | 6 | Pre Load Validation | 2026-06-10 | 2026-06-10 | 2026-04-14 | 2026-04-14 | 0 | 0.0625 | As Soon As Possible | Future Task | -8716m | 0m | Nevin Varkey,Ric Haraida |  | True | True | PTP_CM26_Material_Master - SERV - Service Materials | Sam Houff,Kim Kolesar | PTP | 3116 | 1.63 1.69 302.94 303 301.31  | 3111 | 3111 1.625 Load |
| 3116 | 1.2.3.2.25.3 | 1.2.3.2.25.3 | 6 | Simulate Load | 2026-06-10 | 2026-06-10 | 2026-04-14 | 2026-04-14 | 0 | 0.125 | As Soon As Possible | Future Task | -145.27h | 0h | Data Migration Team |  | True | True | PTP_CM26_Material_Master - SERV - Service Materials |  | Data | 3117 | 1.69 1.81 303 303.13 301.31  | 3115 | 3115 1.6875 Pre Load Validation |
| 3117 | 1.2.3.2.25.4 | 1.2.3.2.25.4 | 6 | Error and Defect Mitigation | 2026-06-10 | 2026-06-10 | 2026-04-14 | 2026-04-15 | 0 | 0.25 | As Soon As Possible | Future Task | -145.27h | 0h | Nevin Varkey,Ric Haraida |  | True | True | PTP_CM26_Material_Master - SERV - Service Materials | Sam Houff,Kim Kolesar | PTP | 3118 | 1.81 2.06 303.13 303.38 301.31  | 3116 | 3116 1.8125 Simulate Load |

| uid | wbs | outlineNumber | outlineLevel | name | start | finish | baselineStart | baselineFinish | percentComplete | durationDays | constraintType | status | totalSlackRaw | freeSlackRaw | resourceNames | summary | criticalFlag | active | summaryName | businessValidationOwner | workstream | successors | cpm | predecessors | drivers |
| --- | --- | --- | --- | --- | --- | --- | --- | --- | --- | --- | --- | --- | --- | --- | --- | --- | --- | --- | --- | --- | --- | --- | --- | --- | --- |
| 3118 | 1.2.3.2.25.5 | 1.2.3.2.25.5 | 6 | Load | 2026-06-10 | 2026-06-11 | 2026-04-15 | 2026-04-15 | 0 | 0.25 | As Soon As Possible | Future Task | -145.27h | 0h | Data Migration Team |  | True | True | PTP_CM26_Material_Master - SERV - Service Materials |  | Data | 3119 | 2.06 2.31 303.38 303.63 301.31  | 3117 | 3117 2.0625 Error and Defect Mitigation |
| 3119 | 1.2.3.2.25.6 | 1.2.3.2.25.6 | 6 | Post Load Validation | 2026-06-11 | 2026-06-11 | 2026-04-15 | 2026-04-15 | 0 | 0.375 | As Soon As Possible | Future Task | -145.27h | 0h | Nevin Varkey,Ric Haraida |  | True | True | PTP_CM26_Material_Master - SERV - Service Materials | Sam Houff,Kim Kolesar | PTP |  | 2.31 2.69 303.63 304 301.31  | 3118 | 3118 2.3125 Load |
| 3120 | 1.2.3.2.26 | 1.2.3.2.26 | 5 | PTP_CM26_Material_Master - KMAT - Configurable Materials | 2026-06-10 | 2026-06-11 | 2026-04-07 | 2026-04-15 | 0 | 1.34 | As Soon As Possible | Future Task | -23.5d | 0d | Muniraju Surappachari; Nevin Varkey; Samuel Houff; Sarasija Ghosh; Surendra Krishna Acharya; Swetha SethumadhavaRao; James Farmer | True | True | True | Master Data Loads | Muniraju Surappachari | PTP | 32, 133, 210 |  |  |  |
| 3121 | 1.2.3.2.26.1 | 1.2.3.2.26.1 | 6 | Load File Staged and Posted "Ready" | 2026-06-10 | 2026-06-10 | 2026-04-07 | 2026-04-07 | 0 | 0.0625 | As Soon As Possible | Future Task | -9346m | 0m | Eric Heisler |  | True | True | PTP_CM26_Material_Master - KMAT - Configurable Materials |  | PTM |  | 1.88 1.94 303.94 304 302.06  | 2983 | 2983 1.875 Post Load Validation |
| 3122 | 1.2.3.2.26.2 | 1.2.3.2.26.2 | 6 | Pre Load Validation | 2026-06-10 | 2026-06-10 | 2026-04-14 | 2026-04-14 | 0 | 0.0625 | As Soon As Possible | Future Task | -11416m | 0m | Eric Heisler |  | True | True | PTP_CM26_Material_Master - KMAT - Configurable Materials | Sam Houff,Kim Kolesar,Matt | PTM | 3123 | 1.63 1.69 298.81 298.88 297.19  | 3111 | 3111 1.625 Load |
| 3123 | 1.2.3.2.26.3 | 1.2.3.2.26.3 | 6 | Simulate Load | 2026-06-10 | 2026-06-10 | 2026-04-14 | 2026-04-14 | 0 | 0.125 | As Soon As Possible | Future Task | -190.27h | 0h | Data Migration Team |  | True | True | PTP_CM26_Material_Master - KMAT - Configurable Materials |  | Data | 3124 | 1.69 1.81 298.88 299 297.19  | 3122 | 3122 1.6875 Pre Load Validation |
| 3124 | 1.2.3.2.26.4 | 1.2.3.2.26.4 | 6 | Error and Defect Mitigation | 2026-06-10 | 2026-06-10 | 2026-04-14 | 2026-04-15 | 0 | 0.25 | As Soon As Possible | Future Task | -190.27h | 0h | Eric Heisler |  | True | True | PTP_CM26_Material_Master - KMAT - Configurable Materials | Sam Houff,Kim Kolesar,Matt | PTM | 3125 | 1.81 2.06 299 299.25 297.19  | 3123 | 3123 1.8125 Simulate Load |
| 3125 | 1.2.3.2.26.5 | 1.2.3.2.26.5 | 6 | Load | 2026-06-10 | 2026-06-11 | 2026-04-15 | 2026-04-15 | 0 | 0.25 | As Soon As Possible | Future Task | -190.27h | 0h | Data Migration Team |  | True | True | PTP_CM26_Material_Master - KMAT - Configurable Materials |  | Data | 3126 | 2.06 2.31 299.25 299.5 297.19  | 3124 | 3124 2.0625 Error and Defect Mitigation |
| 3126 | 1.2.3.2.26.6 | 1.2.3.2.26.6 | 6 | Post Load Validation | 2026-06-11 | 2026-06-11 | 2026-04-15 | 2026-04-15 | 0 | 0.375 | As Soon As Possible | Future Task | -190.27h | 0h | Eric Heisler |  | True | True | PTP_CM26_Material_Master - KMAT - Configurable Materials | Sam Houff,Kim Kolesar,Matt | PTM | 31, 283, 135, 314, 232, 0 | 2.31 2.69 299.5 299.88 297.19  | 3125 | 3125 2.3125 Load |
| 3127 | 1.2.3.2.27 | 1.2.3.2.27 | 5 | PTP_CM28_Purchase_Info_Records | 2026-06-08 | 2026-06-12 | 2026-04-15 | 2026-04-16 | 0 | 3.59 | As Soon As Possible | Future Task | -19.96d | 0d | Muniraju Surappachari; Nevin Varkey; Samuel Houff; Sarasija Ghosh; Surendra Krishna Acharya; Swetha SethumadhavaRao; James Farmer | True | True | True | Master Data Loads | Muniraju Surappachari | PTP |  |  |  |  |
| 3128 | 1.2.3.2.27.1 | 1.2.3.2.27.1 | 6 | Extract File | 2026-06-11 | 2026-06-11 | 2026-04-15 | 2026-04-15 | 0 | 0.125 | As Soon As Possible | Future Task | -182.39h | 0h | Data Migration Team |  | True | True | PTP_CM28_Purchase_Info_Records |  | Data | 31, 293, 149 | 60 60.13 299.53 299.66 239.53  | 31, 123, 126 | 31 60 In Draft |
| 3129 | 1.2.3.2.27.2 | 1.2.3.2.27.2 | 6 | Pre Load Validation | 2026-06-11 | 2026-06-11 | 2026-04-15 | 2026-04-16 | 0 | 0.25 | As Soon As Possible | Future Task | -151.27h | 0h | Nevin Varkey |  | True | True | PTP_CM28_Purchase_Info_Records | Sam Houff | PTP | 3130 | 60.13 60.38 303.38 303.63 243.25  | 3128 | 3128 60.125 Extract File |
| 3130 | 1.2.3.2.27.3 | 1.2.3.2.27.3 | 6 | Simulate Load | 2026-06-11 | 2026-06-11 | 2026-04-16 | 2026-04-16 | 0 | 0.125 | As Soon As Possible | Future Task | -151.27h | 0h | Data Migration Team |  | True | True | PTP_CM28_Purchase_Info_Records |  | Data | 3131 | 60.38 60.5 303.63 303.75 243.25  | 3129 | 3129 60.375 Pre Load Validation |
| 3131 | 1.2.3.2.27.4 | 1.2.3.2.27.4 | 6 | Error and Defect Mitigation | 2026-06-11 | 2026-06-12 | 2026-04-16 | 2026-04-16 | 0 | 0.25 | As Soon As Possible | Future Task | -151.27h | 0h | Nevin Varkey |  | True | True | PTP_CM28_Purchase_Info_Records | Sam Houff | PTP |  | 60.5 60.75 303.75 304 243.25  | 3130 | 3130 60.5 Simulate Load |
| 3132 | 1.2.3.2.27.5 | 1.2.3.2.27.5 | 6 | Load | 2026-06-08 | 2026-06-08 | 2026-04-15 | 2026-04-15 | 0 | 0.125 | As Soon As Possible | Future Task | -125.52h | 0h | Data Migration Team |  | True | True | PTP_CM28_Purchase_Info_Records |  | Data | 3133 | 0.38 0.5 303.63 303.75 303.25  | 3080 | 3080 0.375 Post Load Validation |
| 3133 | 1.2.3.2.27.6 | 1.2.3.2.27.6 | 6 | Post Load Validation | 2026-06-08 | 2026-06-08 | 2026-04-15 | 2026-04-15 | 0 | 0.25 | As Soon As Possible | Future Task | -125.52h | 0h | Nevin Varkey |  | True | True | PTP_CM28_Purchase_Info_Records | Sam Houff | PTP |  | 0.5 0.75 303.75 304 303.25  | 3132 | 3132 0.5 Load |
| 3134 | 1.2.3.2.28 | 1.2.3.2.28 | 5 | PTP_CM28_Purchase_Info_Record External Processing | 2026-06-11 | 2026-06-12 | 2026-04-15 | 2026-04-16 | 0 | 1.13 | As Soon As Possible | Future Task | -19.28d | 0d | Muniraju Surappachari; Nevin Varkey; Samuel Houff; Sarasija Ghosh; Surendra Krishna Acharya; Swetha SethumadhavaRao; James Farmer | True | True | True | Master Data Loads | Muniraju Surappachari | PTP |  |  |  |  |
| 3135 | 1.2.3.2.28.1 | 1.2.3.2.28.1 | 6 | Load File Staged and Posted "Ready" | 2026-06-11 | 2026-06-11 | 2026-04-15 | 2026-04-15 | 0 | 0.0625 | As Soon As Possible | Future Task | -9256m | 0m | Nevin Varkey |  | True | True | PTP_CM28_Purchase_Info_Record External Processing |  | PTP | 3136 | 60 60.06 302.88 302.94 242.88  | 31, 123, 126 | 31 60 In Draft |
| 3136 | 1.2.3.2.28.2 | 1.2.3.2.28.2 | 6 | Pre Load Validation | 2026-06-11 | 2026-06-11 | 2026-04-15 | 2026-04-15 | 0 | 0.0625 | As Soon As Possible | Future Task | -9256m | 0m | Nevin Varkey |  | True | True | PTP_CM28_Purchase_Info_Record External Processing | Sam Houff | PTP | 3137 | 60.06 60.13 302.94 303 242.88  | 3135 | 3135 60.0625 Load File Staged and Posted "Ready" |
| 3137 | 1.2.3.2.28.3 | 1.2.3.2.28.3 | 6 | Simulate Load | 2026-06-11 | 2026-06-11 | 2026-04-15 | 2026-04-16 | 0 | 0.125 | As Soon As Possible | Future Task | -154.27h | 0h | Data Migration Team |  | True | True | PTP_CM28_Purchase_Info_Record External Processing |  | Data | 3138 | 60.13 60.25 303 303.13 242.88  | 3136 | 3136 60.125 Pre Load Validation |
| 3138 | 1.2.3.2.28.4 | 1.2.3.2.28.4 | 6 | Error and Defect Mitigation | 2026-06-11 | 2026-06-11 | 2026-04-16 | 2026-04-16 | 0 | 0.25 | As Soon As Possible | Future Task | -154.27h | 0h | Nevin Varkey |  | True | True | PTP_CM28_Purchase_Info_Record External Processing | Sam Houff | PTP | 3139 | 60.25 60.5 303.13 303.38 242.88  | 3137 | 3137 60.25 Simulate Load |
| 3139 | 1.2.3.2.28.5 | 1.2.3.2.28.5 | 6 | Load | 2026-06-11 | 2026-06-12 | 2026-04-16 | 2026-04-16 | 0 | 0.25 | As Soon As Possible | Future Task | -154.27h | 0h | Data Migration Team |  | True | True | PTP_CM28_Purchase_Info_Record External Processing |  | Data | 3140 | 60.5 60.75 303.38 303.63 242.88  | 3138 | 3138 60.5 Error and Defect Mitigation |
| 3140 | 1.2.3.2.28.6 | 1.2.3.2.28.6 | 6 | Post Load Validation | 2026-06-12 | 2026-06-12 | 2026-04-16 | 2026-04-16 | 0 | 0.375 | As Soon As Possible | Future Task | -154.27h | 0h | Nevin Varkey |  | True | True | PTP_CM28_Purchase_Info_Record External Processing | Sam Houff | PTP |  | 60.75 61.13 303.63 304 242.88  | 3139 | 3139 60.75 Load |
| 3141 | 1.2.3.2.29 | 1.2.3.2.29 | 5 | PTP_CM28_Purchase_Info_Record Subcontracting and Consignment | 2026-06-11 | 2026-06-12 | 2026-04-15 | 2026-04-16 | 0 | 1.13 | As Soon As Possible | Future Task | -23.78d | 0d | Muniraju Surappachari; Nevin Varkey; Samuel Houff; Sarasija Ghosh; Surendra Krishna Acharya; Swetha SethumadhavaRao; James Farmer | True | True | True | Master Data Loads | Muniraju Surappachari | PTP |  |  |  |  |
| 3142 | 1.2.3.2.29.1 | 1.2.3.2.29.1 | 6 | Load File Staged and Posted "Ready" | 2026-06-11 | 2026-06-11 | 2026-04-15 | 2026-04-15 | 0 | 0.0625 | As Soon As Possible | Future Task | -11416m | 0m | Nevin Varkey |  | True | True | PTP_CM28_Purchase_Info_Record Subcontracting and Consignment |  | PTP | 3143 | 60 60.06 298.38 298.44 238.38  | 31, 123, 126 | 31 60 In Draft |
| 3143 | 1.2.3.2.29.2 | 1.2.3.2.29.2 | 6 | Pre Load Validation | 2026-06-11 | 2026-06-11 | 2026-04-15 | 2026-04-15 | 0 | 0.0625 | As Soon As Possible | Future Task | -11416m | 0m | Nevin Varkey |  | True | True | PTP_CM28_Purchase_Info_Record Subcontracting and Consignment | Sam Houff | PTP | 3144 | 60.06 60.13 298.44 298.5 238.38  | 3142 | 3142 60.0625 Load File Staged and Posted "Ready" |
| 3144 | 1.2.3.2.29.3 | 1.2.3.2.29.3 | 6 | Simulate Load | 2026-06-11 | 2026-06-11 | 2026-04-15 | 2026-04-16 | 0 | 0.125 | As Soon As Possible | Future Task | -190.27h | 0h | Data Migration Team |  | True | True | PTP_CM28_Purchase_Info_Record Subcontracting and Consignment |  | Data | 31, 453, 276 | 60.13 60.25 298.5 298.63 238.38  | 3143 | 3143 60.125 Pre Load Validation |
| 3145 | 1.2.3.2.29.4 | 1.2.3.2.29.4 | 6 | Error and Defect Mitigation | 2026-06-11 | 2026-06-11 | 2026-04-16 | 2026-04-16 | 0 | 0.25 | As Soon As Possible | Future Task | -154.27h | 0h | Nevin Varkey |  | True | True | PTP_CM28_Purchase_Info_Record Subcontracting and Consignment | Sam Houff | PTP | 3146 | 60.25 60.5 303.13 303.38 242.88  | 3144 | 3144 60.25 Simulate Load |
| 3146 | 1.2.3.2.29.5 | 1.2.3.2.29.5 | 6 | Load | 2026-06-11 | 2026-06-12 | 2026-04-16 | 2026-04-16 | 0 | 0.25 | As Soon As Possible | Future Task | -154.27h | 0h | Data Migration Team |  | True | True | PTP_CM28_Purchase_Info_Record Subcontracting and Consignment |  | Data | 3147 | 60.5 60.75 303.38 303.63 242.88  | 3145 | 3145 60.5 Error and Defect Mitigation |
| 3147 | 1.2.3.2.29.6 | 1.2.3.2.29.6 | 6 | Post Load Validation | 2026-06-12 | 2026-06-12 | 2026-04-16 | 2026-04-16 | 0 | 0.375 | As Soon As Possible | Future Task | -154.27h | 0h | Nevin Varkey |  | True | True | PTP_CM28_Purchase_Info_Record Subcontracting and Consignment | Sam Houff | PTP |  | 60.75 61.13 303.63 304 242.88  | 3146 | 3146 60.75 Load |
| 2968 | 1.2.3.2.3 | 1.2.3.2.3 | 5 | RTR_CM01_GL_Account_Master to CC 1000 | 2026-06-09 | 2026-06-12 | 2026-04-07 | 2026-04-09 | 0 | 2.44 | As Soon As Possible | Future Task | -24.56d | 0d | COULD NOT BE DETERMINED | True | True | True | Master Data Loads | Brian Wagner |  | 2993 |  |  |  |
| 2969 | 1.2.3.2.3.1 | 1.2.3.2.3.1 | 6 | Load File Staged and Posted "Ready" | 2026-06-09 | 2026-06-09 | 2026-04-07 | 2026-04-07 | 0 | 0.125 | As Soon As Possible | Future Task | -196.52h | 0h | Kasey Hughes |  | True | True | RTR_CM01_GL_Account_Master to CC 1000 |  | Finance | 2970 | 1.5 1.63 300.75 300.88 299.25  | 2967 | 2967 1.5 Post Load Validation |
| 2970 | 1.2.3.2.3.2 | 1.2.3.2.3.2 | 6 | Pre Load Validation | 2026-06-09 | 2026-06-10 | 2026-04-07 | 2026-04-07 | 0 | 0.25 | As Soon As Possible | Future Task | -196.52h | 0h | Kasey Hughes |  | True | True | RTR_CM01_GL_Account_Master to CC 1000 | Brian Wagner | Finance | 2971 | 1.63 1.88 300.88 301.13 299.25  | 2969 | 2969 1.625 Load File Staged and Posted "Ready" |
| 2971 | 1.2.3.2.3.3 | 1.2.3.2.3.3 | 6 | Simulate Load | 2026-06-10 | 2026-06-10 | 2026-04-07 | 2026-04-08 | 0 | 0.75 | As Soon As Possible | Future Task | -196.52h | 0h | Data Migration Team |  | True | True | RTR_CM01_GL_Account_Master to CC 1000 |  | Data | 2972 | 1.88 2.63 301.13 301.88 299.25  | 2970 | 2970 1.875 Pre Load Validation |
| 2972 | 1.2.3.2.3.4 | 1.2.3.2.3.4 | 6 | Error and Defect Mitigation | 2026-06-10 | 2026-06-11 | 2026-04-08 | 2026-04-08 | 0 | 0.25 | As Soon As Possible | Future Task | -196.52h | 0h | Kasey Hughes |  | True | True | RTR_CM01_GL_Account_Master to CC 1000 | Brian Wagner | Finance | 2973 | 2.63 2.88 301.88 302.13 299.25  | 2971 | 2971 2.625 Simulate Load |
| 2973 | 1.2.3.2.3.5 | 1.2.3.2.3.5 | 6 | Load | 2026-06-11 | 2026-06-11 | 2026-04-08 | 2026-04-08 | 0 | 0.125 | As Soon As Possible | Future Task | -196.52h | 0h | Data Migration Team |  | True | True | RTR_CM01_GL_Account_Master to CC 1000 |  | Data | 2974 | 2.88 3 302.13 302.25 299.25  | 2972 | 2972 2.875 Error and Defect Mitigation |
| 2974 | 1.2.3.2.3.6 | 1.2.3.2.3.6 | 6 | Post Load Validation | 2026-06-11 | 2026-06-11 | 2026-04-08 | 2026-04-08 | 0 | 0.25 | As Soon As Possible | Future Task | -196.52h | 0h | Kasey Hughes |  | True | True | RTR_CM01_GL_Account_Master to CC 1000 | Brian Wagner | Finance | 29, 973, 11, 302, 530, 300, 0 | 3 3.25 302.25 302.5 299.25  | 2973 | 2973 3 Load |
| 2975 | 1.2.3.2.3.7 | 1.2.3.2.3.7 | 6 | Extend GL to all Company Codes | 2026-06-11 | 2026-06-11 | 2026-04-08 | 2026-04-09 | 0 | 0.25 | As Soon As Possible | Future Task | -196.52h | 0h | Kasey Hughes |  | True | True | RTR_CM01_GL_Account_Master to CC 1000 | Brian Wagner | Finance | 2976 | 3.25 3.5 303.5 303.75 300.25  | 2974 | 2974 3.25 Post Load Validation |
| 2976 | 1.2.3.2.3.8 | 1.2.3.2.3.8 | 6 | Post GL Extention Validation | 2026-06-11 | 2026-06-12 | 2026-04-09 | 2026-04-09 | 0 | 0.25 | As Soon As Possible | Future Task | -196.52h | 0h | Chandrababu Boyapati |  | True | True | RTR_CM01_GL_Account_Master to CC 1000 | Brian Wagner | Finance | 30, 422, 995 | 3.5 3.75 303.75 304 300.25  | 2975 | 2975 3.5 Extend GL to all Company Codes |
| 3148 | 1.2.3.2.30 | 1.2.3.2.30 | 5 | PTM_CM31_BOM Conversion | 2026-06-11 | 2026-06-16 | 2026-04-15 | 2026-04-17 | 0 | 2.48 | As Soon As Possible | Future Task | -22.8d | 0d | Brad Meseck; Chip Holder; David Duda; Matt Palastro; Sunil Srinivasa; Aniruddha Sathe; Susan Graham; Eric Heisler; Sam Penrod; Furkan Alko | True | True | True | Master Data Loads | Manoj Patel | PTM |  |  |  |  |
| 3149 | 1.2.3.2.30.1 | 1.2.3.2.30.1 | 6 | Extract File | 2026-06-11 | 2026-06-11 | 2026-04-15 | 2026-04-16 | 0 | 0.125 | As Soon As Possible | Future Task | -182.39h | 0h | Data Migration Team |  | True | True | PTM_CM31_BOM Conversion |  | Data | 31, 503, 156 | 60.13 60.25 299.66 299.78 239.53  | 3128 | 3128 60.125 Extract File |
| 3150 | 1.2.3.2.30.2 | 1.2.3.2.30.2 | 6 | Pre Load Validation | 2026-06-11 | 2026-06-11 | 2026-04-16 | 2026-04-16 | 0 | 0.0625 | As Soon As Possible | Future Task | -182.39h | 0h | Brad Meseck |  | True | True | PTM_CM31_BOM Conversion | Matt Palastro, Dave Duda | PTM | 3151 | 60.25 60.31 299.78 299.84 239.53  | 3149 | 3149 60.25 Extract File |
| 3151 | 1.2.3.2.30.3 | 1.2.3.2.30.3 | 6 | Simulate Load | 2026-06-11 | 2026-06-15 | 2026-04-16 | 2026-04-16 | 0 | 1.9375 | As Soon As Possible | Future Task | -182.39h | 0h | Data Migration Team |  | True | True | PTM_CM31_BOM Conversion |  | Data | 3152 | 60.31 62.25 299.84 301.78 239.53  | 3150 | 3150 60.3125 Pre Load Validation |
| 3152 | 1.2.3.2.30.4 | 1.2.3.2.30.4 | 6 | Error and Defect Mitigation | 2026-06-15 | 2026-06-15 | 2026-04-16 | 2026-04-16 | 0 | 0.0625 | As Soon As Possible | Future Task | -182.39h | 0h | Brad Meseck |  | True | True | PTM_CM31_BOM Conversion | Matt Palastro, Dave Duda | PTM | 3153 | 62.25 62.31 301.78 301.84 239.53  | 3151 | 3151 62.25 Simulate Load |
| 3153 | 1-Apr | 1.2.3.2.30.5 | 6 | Load | 2026-06-15 | 2026-06-15 | 2026-04-16 | 2026-04-16 | 0 | 0.125 | As Soon As Possible | Future Task | -182.39h | 0h | Data Migration Team |  | True | True | PTM_CM31_BOM Conversion |  | Data | 3154 | 62.31 62.44 301.84 301.97 239.53  | 3152 | 3152 62.3125 Error and Defect Mitigation |
| 3154 | 1.2.3.2.30.6 | 1.2.3.2.30.6 | 6 | Post Load Validation | 2026-06-16 | 2026-06-16 | 2026-04-16 | 2026-04-17 | 0 | 0.0625 | As Soon As Possible | Future Task | -182.39h | 0h | Brad Meseck |  | True | True | PTM_CM31_BOM Conversion | Matt Palastro, Dave Duda | PTM | 3157 | 62.44 62.5 301.97 302.03 239.53  | 3153 | 3153 62.4375 Load |
| 3155 | 1.2.3.2.31 | 1.2.3.2.31 | 5 | PTM_CM40_Work Center Conversion | 2026-06-11 | 2026-06-16 | 2026-04-16 | 2026-04-20 | 0 | 3.08 | As Soon As Possible | Future Task | -22.8d | 0d | Brad Meseck; Chip Holder; David Duda; Matt Palastro; Sunil Srinivasa; Aniruddha Sathe; Susan Graham; Eric Heisler; Sam Penrod; Furkan Alko | True | True | True | Master Data Loads | Manoj Patel | PTM |  |  |  |  |
| 3156 | 1.2.3.2.31.1 | 1.2.3.2.31.1 | 6 | Extract File | 2026-06-11 | 2026-06-11 | 2026-04-16 | 2026-04-16 | 0 | 0.125 | As Soon As Possible | Future Task | -173.77h | 0h | Data Migration Team |  | True | True | PTM_CM40_Work Center Conversion |  | Data | 3163 | 60.25 60.38 300.69 300.81 240.44  | 3149 | 3149 60.25 Extract File |
| 3157 | 1.2.3.2.31.2 | 1.2.3.2.31.2 | 6 | Pre Load Validation | 2026-06-16 | 2026-06-16 | 2026-04-17 | 2026-04-17 | 0 | 0.25 | As Soon As Possible | Future Task | -182.39h | 0h | Brad Meseck |  | True | True | PTM_CM40_Work Center Conversion | Matt Palastro, Dave Duda | PTM | 3158 | 62.5 62.75 302.03 302.28 239.53  | 3154 | 3154 62.5 Post Load Validation |
| 3158 | 1.2.3.2.31.3 | 1.2.3.2.31.3 | 6 | Simulate Load | 2026-06-16 | 2026-06-16 | 2026-04-17 | 2026-04-17 | 0 | 0.03125 | As Soon As Possible | Future Task | -182.39h | 0h | Data Migration Team |  | True | True | PTM_CM40_Work Center Conversion |  | Data | 3159 | 62.75 62.78 302.28 302.31 239.53  | 3157 | 3157 62.75 Pre Load Validation |
| 3159 | 1.2.3.2.31.4 | 1.2.3.2.31.4 | 6 | Error and Defect Mitigation | 2026-06-16 | 2026-06-16 | 2026-04-17 | 2026-04-17 | 0 | 0.0625 | As Soon As Possible | Future Task | -182.39h | 0h | Brad Meseck |  | True | True | PTM_CM40_Work Center Conversion | Matt Palastro, Dave Duda | PTM | 3160 | 62.78 62.84 302.31 302.38 239.53  | 3158 | 3158 62.78125 Simulate Load |
| 3160 | 1.2.3.2.31.5 | 1.2.3.2.31.5 | 6 | Load | 2026-06-16 | 2026-06-16 | 2026-04-17 | 2026-04-17 | 0 | 0.125 | As Soon As Possible | Future Task | -182.39h | 0h | Data Migration Team |  | True | True | PTM_CM40_Work Center Conversion |  | Data | 3161 | 62.84 62.97 302.38 302.5 239.53  | 3159 | 3159 62.84375 Error and Defect Mitigation |
| 3161 | 1.2.3.2.31.6 | 1.2.3.2.31.6 | 6 | Post Load Validation | 2026-06-16 | 2026-06-16 | 2026-04-17 | 2026-04-20 | 0 | 0.25 | As Soon As Possible | Future Task | -182.39h | 0h | Brad Meseck |  | True | True | PTM_CM40_Work Center Conversion | Matt Palastro, Dave Duda | PTM | 3164 | 62.97 63.22 302.5 302.75 239.53  | 3160 | 3160 62.96875 Load |
| 3162 | 1.2.3.2.32 | 1.2.3.2.32 | 5 | PTM_CM38_Routing Conversion | 2026-06-11 | 2026-06-18 | 2026-04-16 | 2026-04-21 | 0 | 4.27 | As Soon As Possible | Future Task | -22.8d | 0d | Brad Meseck; Chip Holder; David Duda; Matt Palastro; Sunil Srinivasa; Aniruddha Sathe; Susan Graham; Eric Heisler; Sam Penrod; Furkan Alko | True | True | True | Master Data Loads | Manoj Patel | PTM |  |  |  |  |
| 3163 | 1.2.3.2.32.1 | 1.2.3.2.32.1 | 6 | Extract File | 2026-06-11 | 2026-06-11 | 2026-04-16 | 2026-04-16 | 0 | 0.125 | As Soon As Possible | Future Task | -173.77h | 0h | Data Migration Team |  | True | True | PTM_CM38_Routing Conversion |  | Data | 3170 | 60.38 60.5 300.81 300.94 240.44  | 3156 | 3156 60.375 Extract File |
| 3164 | 1.2.3.2.32.2 | 1.2.3.2.32.2 | 6 | Pre Load Validation | 2026-06-16 | 2026-06-17 | 2026-04-20 | 2026-04-20 | 0 | 0.25 | As Soon As Possible | Future Task | -182.39h | 0h | Brad Meseck |  | True | True | PTM_CM38_Routing Conversion | Matt Palastro, Dave Duda | PTM | 3165 | 63.22 63.47 302.75 303 239.53  | 3161 | 3161 63.21875 Post Load Validation |
| 3165 | 1.2.3.2.32.3 | 1.2.3.2.32.3 | 6 | Simulate Load | 2026-06-17 | 2026-06-17 | 2026-04-20 | 2026-04-20 | 0 | 0.25 | As Soon As Possible | Future Task | -182.39h | 0h | Data Migration Team |  | True | True | PTM_CM38_Routing Conversion |  | Data | 3166 | 63.47 63.72 303 303.25 239.53  | 3164 | 3164 63.46875 Pre Load Validation |
| 3166 | 1.2.3.2.32.4 | 1.2.3.2.32.4 | 6 | Error and Defect Mitigation | 2026-06-17 | 2026-06-17 | 2026-04-20 | 2026-04-20 | 0 | 0.375 | As Soon As Possible | Future Task | -182.39h | 0h | Brad Meseck |  | True | True | PTM_CM38_Routing Conversion | Matt Palastro, Dave Duda | PTM | 3167 | 63.72 64.09 303.25 303.63 239.53  | 3165 | 3165 63.71875 Simulate Load |
| 3167 | 1.2.3.2.32.5 | 1.2.3.2.32.5 | 6 | Load | 2026-06-17 | 2026-06-17 | 2026-04-20 | 2026-04-20 | 0 | 0.125 | As Soon As Possible | Future Task | -182.39h | 0h | Data Migration Team |  | True | True | PTM_CM38_Routing Conversion |  | Data | 3168 | 64.09 64.22 303.63 303.75 239.53  | 3166 | 3166 64.09375 Error and Defect Mitigation |
| 3168 | 1.2.3.2.32.6 | 1.2.3.2.32.6 | 6 | Post Load Validation | 2026-06-17 | 2026-06-18 | 2026-04-20 | 2026-04-21 | 0 | 0.25 | As Soon As Possible | Future Task | -182.39h | 0h | Brad Meseck |  | True | True | PTM_CM38_Routing Conversion | Matt Palastro, Dave Duda | PTM |  | 64.22 64.47 303.75 304 239.53  | 3167 | 3167 64.21875 Load |
| 3169 | 1.2.3.2.33 | 1.2.3.2.33 | 5 | PTM_CM36_Production Version Conversion | 2026-06-11 | 2026-06-15 | 2026-04-16 | 2026-04-17 | 0 | 1.13 | As Soon As Possible | Future Task | -21.72d | 0d | Brad Meseck; Chip Holder; David Duda; Matt Palastro; Sunil Srinivasa; Aniruddha Sathe; Susan Graham; Eric Heisler; Sam Penrod; Furkan Alko | True | True | True | Master Data Loads | Brad Meseck | PTM |  |  |  |  |
| 3170 | 1.2.3.2.33.1 | 1.2.3.2.33.1 | 6 | Load File Staged and Posted "Ready" | 2026-06-11 | 2026-06-12 | 2026-04-16 | 2026-04-16 | 0 | 0.0625 | Start No Earlier Than | Future Task | -10426m | 0m | Brad Meseck |  | True | True | PTM_CM36_Production Version Conversion |  | PTM | 31, 713, 265 | 60.5 60.56 300.94 301 240.44  | 3163 | 3163 60.5 Extract File |
| 3171 | 1.2.3.2.33.2 | 1.2.3.2.33.2 | 6 | Pre Load Validation | 2026-06-12 | 2026-06-12 | 2026-04-16 | 2026-04-16 | 0 | 0.0625 | As Soon As Possible | Future Task | -10426m | 0m | Brad Meseck |  | True | True | PTM_CM36_Production Version Conversion | Matt Palastro, Dave Duda | PTM | 3172 | 60.56 60.63 301 301.06 240.44  | 3170 | 3170 60.5625 Load File Staged and Posted "Ready" |
| 3172 | 1.2.3.2.33.3 | 1.2.3.2.33.3 | 6 | Simulate Load | 2026-06-12 | 2026-06-12 | 2026-04-16 | 2026-04-16 | 0 | 0.125 | As Soon As Possible | Future Task | -173.77h | 0h | Data Migration Team |  | True | True | PTM_CM36_Production Version Conversion |  | Data | 3173 | 60.63 60.75 301.06 301.19 240.44  | 3171 | 3171 60.625 Pre Load Validation |
| 3173 | 1.2.3.2.33.4 | 1.2.3.2.33.4 | 6 | Error and Defect Mitigation | 2026-06-12 | 2026-06-12 | 2026-04-16 | 2026-04-16 | 0 | 0.25 | As Soon As Possible | Future Task | -173.77h | 0h | Brad Meseck |  | True | True | PTM_CM36_Production Version Conversion | Matt Palastro, Dave Duda | PTM | 3174 | 60.75 61 301.19 301.44 240.44  | 3172 | 3172 60.75 Simulate Load |
| 3174 | 1.2.3.2.33.5 | 1.2.3.2.33.5 | 6 | Load | 2026-06-12 | 2026-06-12 | 2026-04-16 | 2026-04-17 | 0 | 0.25 | As Soon As Possible | Future Task | -173.77h | 0h | Data Migration Team |  | True | True | PTM_CM36_Production Version Conversion |  | Data | 3175 | 61 61.25 301.44 301.69 240.44  | 3173 | 3173 61 Error and Defect Mitigation |
| 3175 | 1.2.3.2.33.6 | 1.2.3.2.33.6 | 6 | Post Load Validation | 2026-06-12 | 2026-06-15 | 2026-04-17 | 2026-04-17 | 0 | 0.375 | As Soon As Possible | Future Task | -173.77h | 0h | Brad Meseck |  | True | True | PTM_CM36_Production Version Conversion | Matt Palastro, Dave Duda | PTM | 3177 | 61.25 61.63 301.69 302.06 240.44  | 3174 | 3174 61.25 Load |
| 3176 | 1.2.3.2.34 | 1.2.3.2.34 | 5 | PTM_CM35_Inspection Plan | 2026-06-15 | 2026-06-16 | 2026-04-17 | 2026-04-20 | 0 | 1.13 | As Soon As Possible | Future Task | -21.72d | 0d | Brad Meseck; Chip Holder; David Duda; Matt Palastro; Sunil Srinivasa; Aniruddha Sathe; Susan Graham; Eric Heisler; Sam Penrod; Furkan Alko | True | True | True | Master Data Loads | Brad Meseck | PTM |  |  |  |  |
| 3177 | 1.2.3.2.34.1 | 1.2.3.2.34.1 | 6 | Load File Staged and Posted "Ready" | 2026-06-15 | 2026-06-15 | 2026-04-17 | 2026-04-17 | 0 | 0.0625 | As Soon As Possible | Future Task | -10426m | 0m | Brad Meseck |  | True | True | PTM_CM35_Inspection Plan |  | PTM | 31, 783, 184 | 61.63 61.69 302.06 302.13 240.44  | 3175 | 3175 61.625 Post Load Validation |
| 3178 | 1.2.3.2.34.2 | 1.2.3.2.34.2 | 6 | Pre Load Validation | 2026-06-15 | 2026-06-15 | 2026-04-17 | 2026-04-17 | 0 | 0.0625 | As Soon As Possible | Future Task | -10036m | 0m | Brad Meseck |  | True | True | PTM_CM35_Inspection Plan | Matt Palastro, Dave Duda | PTM | 3179 | 61.69 61.75 302.94 303 241.25  | 3177 | 3177 61.6875 Load File Staged and Posted "Ready" |

| uid | wbs | outlineNumber | outlineLevel | name | start | finish | baselineStart | baselineFinish | percentComplete | durationDays | constraintType | status | totalSlackRaw | freeSlackRaw | resourceNames | summary | criticalFlag | active | summaryName | businessValidationOwner | workstream | successors | cpm | predecessors | drivers |
| --- | --- | --- | --- | --- | --- | --- | --- | --- | --- | --- | --- | --- | --- | --- | --- | --- | --- | --- | --- | --- | --- | --- | --- | --- | --- |
| 3179 | 1.2.3.2.34.3 | 1.2.3.2.34.3 | 6 | Simulate Load | 2026-06-15 | 2026-06-15 | 2026-04-17 | 2026-04-17 | 0 | 0.125 | As Soon As Possible | Future Task | -167.27h | 0h | Data Migration Team |  | True | True | PTM_CM35_Inspection Plan |  | Data | 3180 | 61.75 61.88 303 303.13 241.25  | 3178 | 3178 61.75 Pre Load Validation |
| 3180 | 1.2.3.2.34.4 | 1.2.3.2.34.4 | 6 | Error and Defect Mitigation | 2026-06-15 | 2026-06-15 | 2026-04-17 | 2026-04-17 | 0 | 0.25 | As Soon As Possible | Future Task | -167.27h | 0h | Brad Meseck |  | True | True | PTM_CM35_Inspection Plan | Matt Palastro, Dave Duda | PTM | 3181 | 61.88 62.13 303.13 303.38 241.25  | 3179 | 3179 61.875 Simulate Load |
| 3181 | 1.2.3.2.34.5 | 1.2.3.2.34.5 | 6 | Load | 2026-06-15 | 2026-06-15 | 2026-04-17 | 2026-04-20 | 0 | 0.25 | As Soon As Possible | Future Task | -167.27h | 0h | Data Migration Team |  | True | True | PTM_CM35_Inspection Plan |  | Data | 3182 | 62.13 62.38 303.38 303.63 241.25  | 3180 | 3180 62.125 Error and Defect Mitigation |
| 3182 | 1.2.3.2.34.6 | 1.2.3.2.34.6 | 6 | Post Load Validation | 2026-06-15 | 2026-06-16 | 2026-04-20 | 2026-04-20 | 0 | 0.375 | As Soon As Possible | Future Task | -167.27h | 0h | Brad Meseck |  | True | True | PTM_CM35_Inspection Plan | Matt Palastro, Dave Duda | PTM |  | 62.38 62.75 303.63 304 241.25  | 3181 | 3181 62.375 Load |
| 3183 | 1.2.3.2.35 | 1.2.3.2.35 | 5 | PTM_CM48_Equipment_Master_Serial Numbers | 2026-06-15 | 2026-06-16 | 2026-04-17 | 2026-04-20 | 0 | 1.13 | As Soon As Possible | Future Task | -21.72d | 0d | Brad Meseck; Chip Holder; David Duda; Matt Palastro; Sunil Srinivasa; Aniruddha Sathe; Susan Graham; Eric Heisler; Sam Penrod; Furkan Alko | True | True | True | Master Data Loads | Brad Meseck | PTM |  |  |  |  |
| 3184 | 1.2.3.2.35.1 | 1.2.3.2.35.1 | 6 | Load File Staged and Posted "Ready" | 2026-06-15 | 2026-06-15 | 2026-04-17 | 2026-04-17 | 0 | 0.0625 | As Soon As Possible | Future Task | -10426m | 0m | Brad Meseck |  | True | True | PTM_CM48_Equipment_Master_Serial Numbers |  | PTM | 3185 | 61.69 61.75 302.13 302.19 240.44  | 3177 | 3177 61.6875 Load File Staged and Posted "Ready" |
| 3185 | 1.2.3.2.35.2 | 1.2.3.2.35.2 | 6 | Pre Load Validation | 2026-06-15 | 2026-06-15 | 2026-04-17 | 2026-04-17 | 0 | 0.0625 | As Soon As Possible | Future Task | -10426m | 0m | Brad Meseck |  | True | True | PTM_CM48_Equipment_Master_Serial Numbers | Matt Palastro, Dave Duda | PTM | 3186 | 61.75 61.81 302.19 302.25 240.44  | 3184 | 3184 61.75 Load File Staged and Posted "Ready" |
| 3186 | 1.2.3.2.35.3 | 1.2.3.2.35.3 | 6 | Simulate Load | 2026-06-15 | 2026-06-15 | 2026-04-17 | 2026-04-17 | 0 | 0.125 | As Soon As Possible | Future Task | -173.77h | 0h | Data Migration Team |  | True | True | PTM_CM48_Equipment_Master_Serial Numbers |  | Data | 3187 | 61.81 61.94 302.25 302.38 240.44  | 3185 | 3185 61.8125 Pre Load Validation |
| 3187 | 1.2.3.2.35.4 | 1.2.3.2.35.4 | 6 | Error and Defect Mitigation | 2026-06-15 | 2026-06-15 | 2026-04-17 | 2026-04-17 | 0 | 0.25 | As Soon As Possible | Future Task | -173.77h | 0h | Brad Meseck |  | True | True | PTM_CM48_Equipment_Master_Serial Numbers | Matt Palastro, Dave Duda | PTM | 3188 | 61.94 62.19 302.38 302.63 240.44  | 3186 | 3186 61.9375 Simulate Load |
| 3188 | 1.2.3.2.35.5 | 1.2.3.2.35.5 | 6 | Load | 2026-06-15 | 2026-06-15 | 2026-04-17 | 2026-04-20 | 0 | 0.25 | As Soon As Possible | Future Task | -173.77h | 0h | Data Migration Team |  | True | True | PTM_CM48_Equipment_Master_Serial Numbers |  | Data | 3189 | 62.19 62.44 302.63 302.88 240.44  | 3187 | 3187 62.1875 Error and Defect Mitigation |
| 3189 | 1.2.3.2.35.6 | 1.2.3.2.35.6 | 6 | Post Load Validation | 2026-06-15 | 2026-06-16 | 2026-04-20 | 2026-04-20 | 0 | 0.375 | As Soon As Possible | Future Task | -173.77h | 0h | Brad Meseck |  | True | True | PTM_CM48_Equipment_Master_Serial Numbers | Matt Palastro, Dave Duda | PTM | 3191 | 62.44 62.81 302.88 303.25 240.44  | 3188 | 3188 62.4375 Load |
| 3190 | 1.2.3.2.36 | 1.2.3.2.36 | 5 | PTM_CM48_Equipment_Master_Service | 2026-06-08 | 2026-06-17 | 2026-04-20 | 2026-04-21 | 0 | 6.78 | As Soon As Possible | Future Task | -21.72d | 0d | Brad Meseck; Chip Holder; David Duda; Matt Palastro; Sunil Srinivasa; Aniruddha Sathe; Susan Graham; Eric Heisler; Sam Penrod; Furkan Alko | True | True | True | Master Data Loads | Brad Meseck | PTM |  |  |  |  |
| 3191 | 1.2.3.2.36.1 | 1.2.3.2.36.1 | 6 | Load File Staged and Posted "Ready" | 2026-06-16 | 2026-06-16 | 2026-04-20 | 2026-04-20 | 0 | 0.0625 | As Soon As Possible | Future Task | -10426m | 0m | Brad Meseck |  | True | True | PTM_CM48_Equipment_Master_Service |  | PTM | 3192 | 62.81 62.88 303.25 303.31 240.44  | 3189 | 3189 62.8125 Post Load Validation |
| 3192 | 1.2.3.2.36.2 | 1.2.3.2.36.2 | 6 | Pre Load Validation | 2026-06-16 | 2026-06-16 | 2026-04-20 | 2026-04-20 | 0 | 0.0625 | As Soon As Possible | Future Task | -10426m | 0m | Brad Meseck |  | True | True | PTM_CM48_Equipment_Master_Service | Matt Palastro, Dave Duda | PTM | 3193 | 62.88 62.94 303.31 303.38 240.44  | 3191 | 3191 62.875 Load File Staged and Posted "Ready" |
| 3193 | 1.2.3.2.36.3 | 1.2.3.2.36.3 | 6 | Simulate Load | 2026-06-16 | 2026-06-16 | 2026-04-20 | 2026-04-20 | 0 | 0.125 | As Soon As Possible | Future Task | -173.77h | 0h | Data Migration Team |  | True | True | PTM_CM48_Equipment_Master_Service |  | Data | 3194 | 62.94 63.06 303.38 303.5 240.44  | 3192 | 3192 62.9375 Pre Load Validation |
| 3194 | 1.2.3.2.36.4 | 1.2.3.2.36.4 | 6 | Error and Defect Mitigation | 2026-06-16 | 2026-06-16 | 2026-04-20 | 2026-04-21 | 0 | 0.25 | As Soon As Possible | Future Task | -173.77h | 0h | Brad Meseck |  | True | True | PTM_CM48_Equipment_Master_Service | Matt Palastro, Dave Duda | PTM | 3195 | 63.06 63.31 303.5 303.75 240.44  | 3193 | 3193 63.0625 Simulate Load |
| 3195 | 1.2.3.2.36.5 | 1.2.3.2.36.5 | 6 | Load | 2026-06-16 | 2026-06-17 | 2026-04-21 | 2026-04-21 | 0 | 0.25 | As Soon As Possible | Future Task | -173.77h | 0h | Data Migration Team |  | True | True | PTM_CM48_Equipment_Master_Service |  | Data |  | 63.31 63.56 303.75 304 240.44  | 3194 | 3194 63.3125 Error and Defect Mitigation |
| 3196 | 1.2.3.2.36.6 | 1.2.3.2.36.6 | 6 | Post Load Validation | 2026-06-08 | 2026-06-08 | 2026-04-21 | 2026-04-21 | 0 | 0.375 | As Soon As Possible | Future Task | -122.52h | 0h | Brad Meseck |  | True | True | PTM_CM48_Equipment_Master_Service | Matt Palastro, Dave Duda | PTM |  | 0 0.38 303.63 304 303.63  |  |  |
| 3197 | 1.2.3.2.37 | 1.2.3.2.37 | 5 | VC_Object Dependencies | 2026-06-08 | 2026-06-08 | 2026-04-06 | 2026-04-06 | 0 | 0.63 | As Soon As Possible | Future Task | -17.44d | 0d | COULD NOT BE DETERMINED | True | True | True | Master Data Loads | Chip Holder |  |  |  |  |  |
| 3198 | 1.2.3.2.37.1 | 1.2.3.2.37.1 | 6 | Run ALE Transaction to QS5 from DS4 130 | 2026-06-08 | 2026-06-08 | 2026-04-06 | 2026-04-06 | 0 | 0.25 | As Soon As Possible | Future Task | -139.52h | 0h | Eric Heisler |  | True | True | VC_Object Dependencies |  | PTM | 3199 | 0 0.25 302.13 302.38 302.13  |  |  |
| 3199 | 1.2.3.2.37.2 | 1.2.3.2.37.2 | 6 | Post Load Validation | 2026-06-08 | 2026-06-08 | 2026-04-06 | 2026-04-06 | 0 | 0.375 | As Soon As Possible | Future Task | -139.52h | 0h | Eric Heisler |  | True | True | VC_Object Dependencies | Matt Palastro, Dave Duda | PTM | 3201 | 0.25 0.63 302.38 302.75 302.13  | 3198 | 3198 0.25 Run ALE Transaction to QS5 from DS4 130 |
| 3200 | 1.2.3.2.38 | 1.2.3.2.38 | 5 | VC_Characteristics | 2026-06-08 | 2026-06-09 | 2026-04-06 | 2026-04-07 | 0 | 0.63 | As Soon As Possible | Future Task | -17.44d | 0d | COULD NOT BE DETERMINED | True | True | True | Master Data Loads | Chip Holder |  |  |  |  |  |
| 3201 | 1.2.3.2.38.1 | 1.2.3.2.38.1 | 6 | Run ALE Transaction to QS5 from DS4 130 | 2026-06-08 | 2026-06-09 | 2026-04-06 | 2026-04-06 | 0 | 0.25 | As Soon As Possible | Future Task | -139.52h | 0h | Eric Heisler |  | True | True | VC_Characteristics |  | PTM | 3202 | 0.63 0.88 302.75 303 302.13  | 3199 | 3199 0.625 Post Load Validation |
| 3202 | 1.2.3.2.38.2 | 1.2.3.2.38.2 | 6 | Post Load Validation | 2026-06-09 | 2026-06-09 | 2026-04-06 | 2026-04-07 | 0 | 0.375 | As Soon As Possible | Future Task | -139.52h | 0h | Eric Heisler |  | True | True | VC_Characteristics | Matt Palastro, Dave Duda | PTM | 3204 | 0.88 1.25 303 303.38 302.13  | 3201 | 3201 0.875 Run ALE Transaction to QS5 from DS4 130 |
| 3203 | 1.2.3.2.39 | 1.2.3.2.39 | 5 | VC_Classes | 2026-06-09 | 2026-06-10 | 2026-04-07 | 2026-04-07 | 0 | 0.63 | As Soon As Possible | Future Task | -17.44d | 0d | COULD NOT BE DETERMINED | True | True | True | Master Data Loads | Chip Holder |  |  |  |  |  |
| 3204 | 1.2.3.2.39.1 | 1.2.3.2.39.1 | 6 | Run ALE Transaction to QS5 from DS4 130 | 2026-06-09 | 2026-06-09 | 2026-04-07 | 2026-04-07 | 0 | 0.25 | As Soon As Possible | Future Task | -139.52h | 0h | Eric Heisler |  | True | True | VC_Classes |  | PTM | 3205 | 1.25 1.5 303.38 303.63 302.13  | 3202 | 3202 1.25 Post Load Validation |
| 3205 | 1.2.3.2.39.2 | 1.2.3.2.39.2 | 6 | Post Load Validation | 2026-06-09 | 2026-06-10 | 2026-04-07 | 2026-04-07 | 0 | 0.375 | As Soon As Possible | Future Task | -139.52h | 0h | Eric Heisler |  | True | True | VC_Classes | Matt Palastro, Dave Duda | PTM | 3210 | 1.5 1.88 303.63 304 302.13  | 3204 | 3204 1.5 Run ALE Transaction to QS5 from DS4 130 |
| 2977 | 1.2.3.2.4 | 1.2.3.2.4 | 5 | RTR_CM05_Profit_Center | 2026-06-09 | 2026-06-10 | 2026-04-06 | 2026-04-07 | 0 | 1.13 | As Soon As Possible | Future Task | -22.94d | 0d | COULD NOT BE DETERMINED | True | True | True | Master Data Loads |  |  |  |  |  |  |
| 2978 | 1.2.3.2.4.1 | 1.2.3.2.4.1 | 6 | Load File Staged and Posted "Ready" | 2026-06-09 | 2026-06-09 | 2026-04-06 | 2026-04-06 | 0 | 0.125 | As Soon As Possible | Future Task | -183.52h | 0h | Kasey Hughes |  | True | True | RTR_CM05_Profit_Center |  | Finance | 2979 | 0.75 0.88 301.75 301.88 301  | 2963 | 2963 0.75 Post Load Validation |
| 2979 | 1.2.3.2.4.2 | 1.2.3.2.4.2 | 6 | Pre Load Validation | 2026-06-09 | 2026-06-09 | 2026-04-06 | 2026-04-07 | 0 | 0.25 | As Soon As Possible | Future Task | -183.52h | 0h | Kasey Hughes |  | True | True | RTR_CM05_Profit_Center | Brian Wagner | Finance | 2980 | 0.88 1.13 301.88 302.13 301  | 2978 | 2978 0.875 Load File Staged and Posted "Ready" |
| 2980 | 1.2.3.2.4.3 | 1.2.3.2.4.3 | 6 | Simulate Load | 2026-06-09 | 2026-06-09 | 2026-04-07 | 2026-04-07 | 0 | 0.125 | As Soon As Possible | Future Task | -183.52h | 0h | Data Migration Team |  | True | True | RTR_CM05_Profit_Center |  | Data | 2981 | 1.13 1.25 302.13 302.25 301  | 2979 | 2979 1.125 Pre Load Validation |
| 2981 | 1.2.3.2.4.4 | 1.2.3.2.4.4 | 6 | Error and Defect Mitigation | 2026-06-09 | 2026-06-09 | 2026-04-07 | 2026-04-07 | 0 | 0.25 | As Soon As Possible | Future Task | -183.52h | 0h | Kasey Hughes |  | True | True | RTR_CM05_Profit_Center | Brian Wagner | Finance | 2982 | 1.25 1.5 302.25 302.5 301  | 2980 | 2980 1.25 Simulate Load |
| 2982 | 1.2.3.2.4.5 | 1.2.3.2.4.5 | 6 | Load | 2026-06-09 | 2026-06-09 | 2026-04-07 | 2026-04-07 | 0 | 0.125 | As Soon As Possible | Future Task | -183.52h | 0h | Data Migration Team |  | True | True | RTR_CM05_Profit_Center |  | Data | 2983 | 1.5 1.63 302.5 302.63 301  | 2981 | 2981 1.5 Error and Defect Mitigation |
| 2983 | 1.2.3.2.4.6 | 1.2.3.2.4.6 | 6 | Post Load Validation | 2026-06-09 | 2026-06-10 | 2026-04-07 | 2026-04-07 | 0 | 0.25 | As Soon As Possible | Future Task | -183.52h | 0h | Kasey Hughes |  | True | True | RTR_CM05_Profit_Center | Brian Wagner | Finance | 298, 531, 143, 121 | 1.63 1.88 302.63 302.88 301  | 2982 | 2982 1.625 Load |
| 3206 | 1.2.3.2.40 | 1.2.3.2.40 | 5 | VC_Classification (Class Type 200) | 2026-06-11 | 2026-06-12 | 2026-04-15 | 2026-04-16 | 0 | 0.63 | As Soon As Possible | Future Task | -18.78d | 0d | COULD NOT BE DETERMINED | True | True | True | Master Data Loads | Chip Holder |  |  |  |  |  |
| 3207 | 1.2.3.2.40.1 | 1.2.3.2.40.1 | 6 | Run ALE Transaction to QS5 from DS4 130 | 2026-06-11 | 2026-06-11 | 2026-04-15 | 2026-04-16 | 0 | 0.25 | As Soon As Possible | Future Task | -150.27h | 0h | Eric Heisler |  | True | True | VC_Classification (Class Type 200) |  | PTM | 3208 | 2.69 2.94 303.38 303.63 300.69  | 3126 | 3126 2.6875 Post Load Validation |
| 3208 | 1.2.3.2.40.2 | 1.2.3.2.40.2 | 6 | Post Load Validation | 2026-06-11 | 2026-06-12 | 2026-04-16 | 2026-04-16 | 0 | 0.375 | As Soon As Possible | Future Task | -150.27h | 0h | Eric Heisler |  | True | True | VC_Classification (Class Type 200) | Matt Palastro, Dave Duda | PTM |  | 2.94 3.31 303.63 304 300.69  | 3207 | 3207 2.9375 Run ALE Transaction to QS5 from DS4 130 |
| 3209 | 1.2.3.2.41 | 1.2.3.2.41 | 5 | VC_Dependency Nets | 2026-06-11 | 2026-06-12 | 2026-04-15 | 2026-04-16 | 0 | 0.63 | As Soon As Possible | Future Task | -18.78d | 0d | COULD NOT BE DETERMINED | True | True | True | Master Data Loads | Chip Holder |  |  |  |  |  |
| 3210 | 1.2.3.2.41.1 | 1.2.3.2.41.1 | 6 | Run ALE Transaction to QS5 from DS4 130 | 2026-06-11 | 2026-06-11 | 2026-04-15 | 2026-04-16 | 0 | 0.25 | As Soon As Possible | Future Task | -150.27h | 0h | Eric Heisler |  | True | True | VC_Dependency Nets |  | PTM | 3211 | 60 60.25 303.38 303.63 243.38  | 31, 203, 205 | 31 60 In Draft |
| 3211 | 1.2.3.2.41.2 | 1.2.3.2.41.2 | 6 | Post Load Validation | 2026-06-11 | 2026-06-12 | 2026-04-16 | 2026-04-16 | 0 | 0.375 | As Soon As Possible | Future Task | -150.27h | 0h | Eric Heisler |  | True | True | VC_Dependency Nets | Matt Palastro, Dave Duda | PTM |  | 60.25 60.63 303.63 304 243.38  | 3210 | 3210 60.25 Run ALE Transaction to QS5 from DS4 130 |
| 3212 | 1.2.3.2.42 | 1.2.3.2.42 | 5 | VC_Configuration Profiles | 2026-06-11 | 2026-06-12 | 2026-04-15 | 2026-04-16 | 0 | 0.63 | As Soon As Possible | Future Task | -20.75d | 0d | COULD NOT BE DETERMINED | True | True | True | Master Data Loads | Chip Holder |  |  |  |  |  |
| 3213 | 1.2.3.2.42.1 | 1.2.3.2.42.1 | 6 | Run ALE Transaction to QS5 from DS4 130 | 2026-06-11 | 2026-06-11 | 2026-04-15 | 2026-04-16 | 0 | 0.25 | As Soon As Possible | Future Task | -166.02h | 0h | Eric Heisler |  | True | True | VC_Configuration Profiles |  | PTM | 3214 | 0 0.25 301.41 301.66 301.41  | 3120 |  |
| 3214 | 1.2.3.2.42.2 | 1.2.3.2.42.2 | 6 | Post Load Validation | 2026-06-11 | 2026-06-12 | 2026-04-16 | 2026-04-16 | 0 | 0.375 | As Soon As Possible | Future Task | -166.02h | 0h | Eric Heisler |  | True | True | VC_Configuration Profiles | Matt Palastro, Dave Duda | PTM | 32, 223, 216 | 0.25 0.63 301.66 302.03 301.41  | 3213 | 3213 0.25 Run ALE Transaction to QS5 from DS4 130 |
| 3215 | 1.2.3.2.43 | 1.2.3.2.43 | 5 | VC_Variant Tables | 2026-06-12 | 2026-06-12 | 2026-04-16 | 2026-04-17 | 0 | 0.63 | As Soon As Possible | Future Task | -20.03d | 0d | COULD NOT BE DETERMINED | True | True | True | Master Data Loads | Chip Holder |  |  |  |  |  |
| 3216 | 1.2.3.2.43.1 | 1.2.3.2.43.1 | 6 | Run ALE Transaction to QS5 from DS4 130 | 2026-06-12 | 2026-06-12 | 2026-04-16 | 2026-04-16 | 0 | 0.25 | As Soon As Possible | Future Task | -160.27h | 0h | Eric Heisler |  | True | True | VC_Variant Tables |  | PTM | 3217 | 0.63 0.88 302.75 303 302.13  | 3214 | 3214 0.625 Post Load Validation |
| 3217 | 1.2.3.2.43.2 | 1.2.3.2.43.2 | 6 | Post Load Validation | 2026-06-12 | 2026-06-12 | 2026-04-16 | 2026-04-17 | 0 | 0.375 | As Soon As Possible | Future Task | -160.27h | 0h | Eric Heisler |  | True | True | VC_Variant Tables | Matt Palastro, Dave Duda | PTM | 3219 | 0.88 1.25 303 303.38 302.13  | 3216 | 3216 0.875 Run ALE Transaction to QS5 from DS4 130 |
| 3218 | 1.2.3.2.44 | 1.2.3.2.44 | 5 | VC_Variant Tables Content | 2026-06-12 | 2026-06-15 | 2026-04-17 | 2026-04-17 | 0 | 0.63 | As Soon As Possible | Future Task | -20.03d | 0d | COULD NOT BE DETERMINED | True | True | True | Master Data Loads | Chip Holder |  |  |  |  |  |
| 3219 | 1.2.3.2.44.1 | 1.2.3.2.44.1 | 6 | Run ALE Transaction to QS5 from DS4 130 | 2026-06-12 | 2026-06-12 | 2026-04-17 | 2026-04-17 | 0 | 0.25 | As Soon As Possible | Future Task | -160.27h | 0h | Eric Heisler |  | True | True | VC_Variant Tables Content |  | PTM | 3220 | 1.25 1.5 303.38 303.63 302.13  | 3217 | 3217 1.25 Post Load Validation |
| 3220 | 1.2.3.2.44.2 | 1.2.3.2.44.2 | 6 | Post Load Validation | 2026-06-12 | 2026-06-15 | 2026-04-17 | 2026-04-17 | 0 | 0.375 | As Soon As Possible | Future Task | -160.27h | 0h | Eric Heisler |  | True | True | VC_Variant Tables Content | Matt Palastro, Dave Duda | PTM |  | 1.5 1.88 303.63 304 302.13  | 3219 | 3219 1.5 Run ALE Transaction to QS5 from DS4 130 |
| 3221 | 1.2.3.2.45 | 1.2.3.2.45 | 5 | VC_Characteristic Groups | 2026-06-12 | 2026-06-16 | 2026-04-16 | 2026-04-17 | 0 | 1.97 | As Soon As Possible | Future Task | -20.75d | 0d | COULD NOT BE DETERMINED | True | True | True | Master Data Loads | Chip Holder |  |  |  |  |  |
| 3222 | 1.2.3.2.45.1 | 1.2.3.2.45.1 | 6 | Run ALE Transaction to QS5 from DS4 130 | 2026-06-12 | 2026-06-15 | 2026-04-16 | 2026-04-16 | 0 | 1.59375 | As Soon As Possible | Future Task | -166.02h | 0h | Eric Heisler |  | True | True | VC_Characteristic Groups |  | PTM | 3223 | 0.63 2.22 302.03 303.63 301.41  | 3214 | 3214 0.625 Post Load Validation |
| 3223 | 1.2.3.2.45.2 | 1.2.3.2.45.2 | 6 | Post Load Validation | 2026-06-15 | 2026-06-16 | 2026-04-16 | 2026-04-17 | 0 | 0.375 | As Soon As Possible | Future Task | -166.02h | 0h | Eric Heisler |  | True | True | VC_Characteristic Groups | Matt Palastro, Dave Duda | PTM |  | 2.22 2.59 303.63 304 301.41  | 3222 | 3222 2.21875 Run ALE Transaction to QS5 from DS4 130 |
| 3224 | 1.2.3.2.46 | 1.2.3.2.46 | 5 | PTM_CM52_Super_BOM | 2026-06-11 | 2026-06-15 | 2026-04-15 | 2026-04-16 | 0 | 2 | As Soon As Possible | Future Task | -23.41d | 0d | Brad Meseck; Chip Holder; David Duda; Matt Palastro; Sunil Srinivasa; Aniruddha Sathe; Susan Graham; Eric Heisler; Sam Penrod; Furkan Alko | True | True | True | Master Data Loads | Brad Meseck | PTM |  |  |  |  |
| 3225 | 1.2.3.2.46.1 | 1.2.3.2.46.1 | 6 | Load File Staged and Posted "Ready" | 2026-06-11 | 2026-06-11 | 2026-04-15 | 2026-04-15 | 0 | 0.0625 | As Soon As Possible | Future Task | -11236m | 0m | Eric Heisler |  | True | True | PTM_CM52_Super_BOM |  | PTM | 3226 | 2.69 2.75 299.88 299.94 297.19  | 3126 | 3126 2.6875 Post Load Validation |
| 3226 | 1.2.3.2.46.2 | 1.2.3.2.46.2 | 6 | Pre Load Validation | 2026-06-11 | 2026-06-11 | 2026-04-15 | 2026-04-15 | 0 | 0.0625 | As Soon As Possible | Future Task | -11236m | 0m | Eric Heisler |  | True | True | PTM_CM52_Super_BOM | Matt Palastro, Dave Duda | PTM | 3227 | 2.75 2.81 299.94 300 297.19  | 3225 | 3225 2.75 Load File Staged and Posted "Ready" |
| 3227 | 1.2.3.2.46.3 | 1.2.3.2.46.3 | 6 | Simulate Load | 2026-06-11 | 2026-06-12 | 2026-04-15 | 2026-04-16 | 0 | 1 | As Soon As Possible | Future Task | -187.27h | 0h | Data Migration Team |  | True | True | PTM_CM52_Super_BOM | Matt Palastro, Dave Duda | Data | 3228 | 2.81 3.81 300 301 297.19  | 3226 | 3226 2.8125 Pre Load Validation |
| 3228 | 1.2.3.2.46.4 | 1.2.3.2.46.4 | 6 | Error and Defect Mitigation | 2026-06-12 | 2026-06-12 | 2026-04-16 | 2026-04-16 | 0 | 0.25 | As Soon As Possible | Future Task | -187.27h | 0h | Eric Heisler |  | True | True | PTM_CM52_Super_BOM | Matt Palastro, Dave Duda | PTM | 3229 | 3.81 4.06 301 301.25 297.19  | 3227 | 3227 3.8125 Simulate Load |
| 3229 | 1.2.3.2.46.5 | 1.2.3.2.46.5 | 6 | Load | 2026-06-12 | 2026-06-15 | 2026-04-16 | 2026-04-16 | 0 | 0.25 | As Soon As Possible | Future Task | -187.27h | 0h | Data Migration Team |  | True | True | PTM_CM52_Super_BOM |  | Data | 3230 | 4.06 4.31 301.25 301.5 297.19  | 3228 | 3228 4.0625 Error and Defect Mitigation |
| 3230 | 1.2.3.2.46.6 | 1.2.3.2.46.6 | 6 | Post Load Validation | 2026-06-15 | 2026-06-15 | 2026-04-16 | 2026-04-16 | 0 | 0.375 | As Soon As Possible | Future Task | -187.27h | 0h | Eric Heisler |  | True | True | PTM_CM52_Super_BOM | Matt Palastro, Dave Duda | PTM | 3232 | 4.31 4.69 301.5 301.88 297.19  | 3229 | 3229 4.3125 Load |
| 3231 | 1.2.3.2.47 | 1.2.3.2.47 | 5 | PTM_CM53_Super_Routing | 2026-06-15 | 2026-06-17 | 2026-04-16 | 2026-04-20 | 0 | 2.13 | As Soon As Possible | Future Task | -23.41d | 0d | Brad Meseck; Chip Holder; David Duda; Matt Palastro; Sunil Srinivasa; Aniruddha Sathe; Susan Graham; Eric Heisler; Sam Penrod; Furkan Alko | True | True | True | Master Data Loads | Brad Meseck | PTM |  |  |  |  |
| 3232 | 1.2.3.2.47.1 | 1.2.3.2.47.1 | 6 | Load File Staged and Posted "Ready" | 2026-06-15 | 2026-06-15 | 2026-04-16 | 2026-04-16 | 0 | 0.0625 | As Soon As Possible | Future Task | -11236m | 0m | Eric Heisler |  | True | True | PTM_CM53_Super_Routing |  | PTM | 3233 | 4.69 4.75 301.88 301.94 297.19  | 3230 | 3230 4.6875 Post Load Validation |
| 3233 | 1.2.3.2.47.2 | 1.2.3.2.47.2 | 6 | Pre Load Validation | 2026-06-15 | 2026-06-15 | 2026-04-16 | 2026-04-17 | 0 | 0.0625 | As Soon As Possible | Future Task | -11236m | 0m | Eric Heisler |  | True | True | PTM_CM53_Super_Routing | Matt Palastro, Dave Duda | PTM | 3234 | 4.75 4.81 301.94 302 297.19  | 3232 | 3232 4.75 Load File Staged and Posted "Ready" |
| 3234 | 1.2.3.2.47.3 | 1.2.3.2.47.3 | 6 | Simulate Load | 2026-06-15 | 2026-06-16 | 2026-04-17 | 2026-04-17 | 0 | 0.125 | As Soon As Possible | Future Task | -187.27h | 0h | Data Migration Team |  | True | True | PTM_CM53_Super_Routing |  | Data | 3235 | 4.81 4.94 302 302.13 297.19  | 3233 | 3233 4.8125 Pre Load Validation |
| 3235 | 1.2.3.2.47.4 | 1.2.3.2.47.4 | 6 | Error and Defect Mitigation | 2026-06-16 | 2026-06-16 | 2026-04-17 | 2026-04-17 | 0 | 0.25 | As Soon As Possible | Future Task | -187.27h | 0h | Eric Heisler |  | True | True | PTM_CM53_Super_Routing | Matt Palastro, Dave Duda | PTM | 3236 | 4.94 5.19 302.13 302.38 297.19  | 3234 | 3234 4.9375 Simulate Load |
| 3236 | 1.2.3.2.47.5 | 1.2.3.2.47.5 | 6 | Load | 2026-06-16 | 2026-06-17 | 2026-04-17 | 2026-04-17 | 0 | 0.25 | As Soon As Possible | Future Task | -187.27h | 0h | Data Migration Team |  | True | True | PTM_CM53_Super_Routing |  | Data | 32, 373, 239 | 5.19 5.44 302.38 302.63 297.19  | 3235 | 3235 5.1875 Error and Defect Mitigation |
| 3237 | 1.2.3.2.47.6 | 1.2.3.2.47.6 | 6 | Post Load Validation | 2026-06-17 | 2026-06-17 | 2026-04-17 | 2026-04-20 | 0 | 0.375 | As Soon As Possible | Future Task | -178.27h | 0h | Eric Heisler |  | True | True | PTM_CM53_Super_Routing | Matt Palastro, Dave Duda | PTM |  | 5.44 5.81 303.63 304 298.19  | 3236 | 3236 5.4375 Load |
| 3238 | 1.2.3.2.48 | 1.2.3.2.48 | 5 | VC_VK30 Pricing Variant | 2026-06-17 | 2026-06-17 | 2026-04-17 | 2026-04-20 | 0 | 0.69 | As Soon As Possible | Future Task | -23.41d | 0d | COULD NOT BE DETERMINED | True | True | True | Master Data Loads | Chip Holder |  |  |  |  |  |
| 3239 | 1.2.3.2.48.1 | 1.2.3.2.48.1 | 6 | Manual File Staged and Posted "Ready" | 2026-06-17 | 2026-06-17 | 2026-04-17 | 2026-04-17 | 0 | 0.0625 | As Soon As Possible | Future Task | -11236m | 0m | Eric Heisler |  | True | True | VC_VK30 Pricing Variant | Matt Palastro, Dave Duda | PTM | 3240 | 5.44 5.5 302.63 302.69 297.19  | 3236 | 3236 5.4375 Load |
| 3240 | 1.2.3.2.48.2 | 1.2.3.2.48.2 | 6 | Load | 2026-06-17 | 2026-06-17 | 2026-04-17 | 2026-04-17 | 0 | 0.25 | As Soon As Possible | Future Task | -187.27h | 0h | Eric Heisler |  | True | True | VC_VK30 Pricing Variant |  | PTM | 3241 | 5.5 5.75 302.69 302.94 297.19  | 3239 | 3239 5.5 Manual File Staged and Posted "Ready" |
| 3241 | 1.2.3.2.48.3 | 1.2.3.2.48.3 | 6 | Post Load Validation | 2026-06-17 | 2026-06-17 | 2026-04-17 | 2026-04-20 | 0 | 0.375 | As Soon As Possible | Future Task | -187.27h | 0h | Eric Heisler |  | True | True | VC_VK30 Pricing Variant | Matt Palastro, Dave Duda | PTM | 3243 | 5.75 6.13 302.94 303.31 297.19  | 3240 | 3240 5.75 Load |

| uid | wbs | outlineNumber | outlineLevel | name | start | finish | baselineStart | baselineFinish | percentComplete | durationDays | constraintType | status | totalSlackRaw | freeSlackRaw | resourceNames | summary | criticalFlag | active | summaryName | businessValidationOwner | workstream | successors | cpm | predecessors | drivers | milestone |
| --- | --- | --- | --- | --- | --- | --- | --- | --- | --- | --- | --- | --- | --- | --- | --- | --- | --- | --- | --- | --- | --- | --- | --- | --- | --- | --- |
| 3242 | 1.2.3.2.49 | 1.2.3.2.49 | 5 | OTC_CM22_Pricing_Condition | 2026-06-17 | 2026-06-18 | 2026-04-20 | 2026-04-21 | 0 | 0.69 | As Soon As Possible | Future Task | -23.41d | 0d | Anitha Jothi; Kim Kolesar; Michele Colombo; Michiko Tomihari; Ric Haraida; Rod Santos; Shibu Mathew; Narendra Kallam; Keith Riley; James Manohar | True | True | True | Master Data Loads | Kim Kolesar | OTC |  |  |  |  |  |
| 3243 | 1.2.3.2.49.1 | 1.2.3.2.49.1 | 6 | Manual File Staged and Posted "Ready" | 2026-06-17 | 2026-06-17 | 2026-04-20 | 2026-04-20 | 0 | 0.0625 | As Soon As Possible | Future Task | -11236m | 0m | Ric Haraida |  | True | True | OTC_CM22_Pricing_Condition | Matt Palastro, Dave Duda | OTC | 3244 | 6.13 6.19 303.31 303.38 297.19  | 3241 | 3241 6.125 Post Load Validation |  |
| 3244 | 1.2.3.2.49.2 | 1.2.3.2.49.2 | 6 | Load | 2026-06-17 | 2026-06-18 | 2026-04-20 | 2026-04-20 | 0 | 0.25 | As Soon As Possible | Future Task | -187.27h | 0h | Ric Haraida |  | True | True | OTC_CM22_Pricing_Condition |  | OTC | 32, 453, 247 | 6.19 6.44 303.38 303.63 297.19  | 3243 | 3243 6.1875 Manual File Staged and Posted "Ready" |  |
| 3245 | 1.2.3.2.49.3 | 1.2.3.2.49.3 | 6 | Post Load Validation | 2026-06-18 | 2026-06-18 | 2026-04-20 | 2026-04-21 | 0 | 0.375 | As Soon As Possible | Future Task | -186.27h | 0h | Ric Haraida,Kim Kolesar |  | True | True | OTC_CM22_Pricing_Condition | Matt Palastro, Dave Duda,kim | OTC |  | 6.44 6.81 303.63 304 297.19  | 3244 | 3244 6.4375 Load |  |
| 2984 | 1.2.3.2.5 | 1.2.3.2.5 | 5 | RTR_CM04_Cost_Center | 2026-06-10 | 2026-06-11 | 2026-04-07 | 2026-04-09 | 0 | 1.13 | As Soon As Possible | Future Task | -22.94d | 0d | COULD NOT BE DETERMINED | True | True | True | Master Data Loads |  |  | 2991 |  |  |  |  |
| 2985 | 1.2.3.2.5.1 | 1.2.3.2.5.1 | 6 | Load File Staged and Posted "Ready" | 2026-06-10 | 2026-06-10 | 2026-04-07 | 2026-04-08 | 0 | 0.125 | As Soon As Possible | Future Task | -183.52h | 0h | Kasey Hughes |  | True | True | RTR_CM04_Cost_Center |  | Finance | 2986 | 1.88 2 302.88 303 301  | 2983 | 2983 1.875 Post Load Validation |  |
| 2986 | 1.2.3.2.5.2 | 1.2.3.2.5.2 | 6 | Pre Load Validation | 2026-06-10 | 2026-06-10 | 2026-04-08 | 2026-04-08 | 0 | 0.25 | As Soon As Possible | Future Task | -183.52h | 0h | Kasey Hughes |  | True | True | RTR_CM04_Cost_Center | Brian Wagner | Finance | 2987 | 2 2.25 303 303.25 301  | 2985 | 2985 2 Load File Staged and Posted "Ready" |  |
| 2987 | 1.2.3.2.5.3 | 1.2.3.2.5.3 | 6 | Simulate Load | 2026-06-10 | 2026-06-10 | 2026-04-08 | 2026-04-08 | 0 | 0.125 | As Soon As Possible | Future Task | -183.52h | 0h | Data Migration Team |  | True | True | RTR_CM04_Cost_Center |  | Data | 2988 | 2.25 2.38 303.25 303.38 301  | 2986 | 2986 2.25 Pre Load Validation |  |
| 2988 | 1.2.3.2.5.4 | 1.2.3.2.5.4 | 6 | Error and Defect Mitigation | 2026-06-10 | 2026-06-10 | 2026-04-08 | 2026-04-08 | 0 | 0.25 | As Soon As Possible | Future Task | -183.52h | 0h | Kasey Hughes |  | True | True | RTR_CM04_Cost_Center | Brian Wagner | Finance | 2989 | 2.38 2.63 303.38 303.63 301  | 2987 | 2987 2.375 Simulate Load |  |
| 2989 | 1.2.3.2.5.5 | 1.2.3.2.5.5 | 6 | Load | 2026-06-10 | 2026-06-10 | 2026-04-08 | 2026-04-08 | 0 | 0.125 | As Soon As Possible | Future Task | -183.52h | 0h | Data Migration Team |  | True | True | RTR_CM04_Cost_Center |  | Data | 2990 | 2.63 2.75 303.63 303.75 301  | 2988 | 2988 2.625 Error and Defect Mitigation |  |
| 2990 | 1.2.3.2.5.6 | 1.2.3.2.5.6 | 6 | Post Load Validation | 2026-06-11 | 2026-06-11 | 2026-04-08 | 2026-04-09 | 0 | 0.25 | As Soon As Possible | Future Task | -183.52h | 0h | Kasey Hughes |  | True | True | RTR_CM04_Cost_Center | Brian Wagner | Finance |  | 2.75 3 303.75 304 301  | 2989 | 2989 2.75 Load |  |
| 3246 | 1.2.3.2.50 | 1.2.3.2.50 | 5 | OTC_CM21_CMIR | 2026-06-18 | 2026-06-18 | 2026-04-20 | 2026-04-21 | 0 | 0.5 | As Soon As Possible | Future Task | -23.41d | 0d | Anitha Jothi; Kim Kolesar; Michele Colombo; Michiko Tomihari; Ric Haraida; Rod Santos; Shibu Mathew; Narendra Kallam; Keith Riley; James Manohar | True | True | True | Master Data Loads | Kim Kolesar | OTC |  |  |  |  |  |
| 3247 | 1.2.3.2.50.1 | 1.2.3.2.50.1 | 6 | Load File Staged and Posted "Ready" | 2026-06-18 | 2026-06-18 | 2026-04-20 | 2026-04-20 | 0 | 0.0625 | As Soon As Possible | Future Task | -11236m | 0m | Ric Haraida |  | True | True | OTC_CM21_CMIR |  | OTC | 3248 | 80 80.06 303.5 303.56 223.5  | 32, 443, 255 | 32 80 Complete - Ready for Security Review |  |
| 3248 | 1.2.3.2.50.2 | 1.2.3.2.50.2 | 6 | Pre Load Validation | 2026-06-18 | 2026-06-18 | 2026-04-20 | 2026-04-20 | 0 | 0.0625 | As Soon As Possible | Future Task | -11236m | 0m | Ric Haraida |  | True | True | OTC_CM21_CMIR | Kim | OTC | 3249 | 80.06 80.13 303.56 303.63 223.5  | 3247 | 3247 80.0625 Load File Staged and Posted "Ready" |  |
| 3249 | 1.2.3.2.50.3 | 1.2.3.2.50.3 | 6 | Simulate Load | 2026-06-18 | 2026-06-18 | 2026-04-20 | 2026-04-20 | 0 | 0 | As Soon As Possible | Future Task | -187.27h | 0h | Data Migration Team |  | True | True | OTC_CM21_CMIR |  | Data | 3250 | 80.13 80.13 303.63 303.63 223.5  | 3248 | 3248 80.125 Pre Load Validation | True |
| 3250 | 1.2.3.2.50.4 | 1.2.3.2.50.4 | 6 | Error and Defect Mitigation | 2026-06-18 | 2026-06-18 | 2026-04-20 | 2026-04-21 | 0 | 0 | As Soon As Possible | Future Task | -187.27h | 0h | Ric Haraida |  | True | True | OTC_CM21_CMIR | Kim | OTC | 3251 | 80.13 80.13 303.63 303.63 223.5  | 3249 | 3249 80.125 Simulate Load | True |
| 3251 | 1.2.3.2.50.5 | 1.2.3.2.50.5 | 6 | Load | 2026-06-18 | 2026-06-18 | 2026-04-21 | 2026-04-21 | 0 | 0 | As Soon As Possible | Future Task | -187.27h | 0h | Data Migration Team |  | True | True | OTC_CM21_CMIR |  | Data | 3252 | 80.13 80.13 303.63 303.63 223.5  | 3250 | 3250 80.125 Error and Defect Mitigation | True |
| 3252 | 1.2.3.2.50.6 | 1.2.3.2.50.6 | 6 | Post Load Validation | 2026-06-18 | 2026-06-18 | 2026-04-21 | 2026-04-21 | 0 | 0.375 | As Soon As Possible | Future Task | -187.27h | 0h | Ric Haraida |  | True | True | OTC_CM21_CMIR | Kim | OTC |  | 80.13 80.5 303.63 304 223.5  | 3251 | 3251 80.125 Load |  |
| 3253 | 1.2.3.2.51 | 1.2.3.2.51 | 5 | PTP_CM29_Source_List | 2026-06-09 | 2026-06-17 | 2026-04-13 | 2026-04-14 | 0 | 6.16 | As Soon As Possible | Future Task | -22.22d | 0d | Muniraju Surappachari; Nevin Varkey; Samuel Houff; Sarasija Ghosh; Surendra Krishna Acharya; Swetha SethumadhavaRao; James Farmer | True | True | True | Master Data Loads | Muniraju Surappachari | PTP |  |  |  |  |  |
| 3254 | 1.2.3.2.51.1 | 1.2.3.2.51.1 | 6 | Manual File Staged and Posted "Ready" | 2026-06-09 | 2026-06-09 | 2026-04-14 | 2026-04-14 | 0 | 0.0625 | As Soon As Possible | Future Task | -7741m | 0m | Nevin Varkey |  | True | True | PTP_CM29_Source_List | Sam | PTP |  | 133.25 133.31 303.94 304 170.69  | 30, 973, 104 | 973 133.25 Pre Load Validation |  |
| 3255 | 1.2.3.2.51.2 | 1.2.3.2.51.2 | 6 | Load | 2026-06-16 | 2026-06-17 | 2026-04-13 | 2026-04-13 | 0 | 0.25 | As Soon As Possible | Future Task | -178.77h | 0h | Nevin Varkey |  | True | True | PTP_CM29_Source_List |  | PTP | 32, 473, 256 | 98 98.25 303.38 303.63 205.38  | 3073 | 3073 98 Post Load Validation |  |
| 3256 | 1.2.3.2.51.3 | 1.2.3.2.51.3 | 6 | Post Load Validation | 2026-06-17 | 2026-06-17 | 2026-04-13 | 2026-04-13 | 0 | 0.375 | As Soon As Possible | Future Task | -177.77h | 0h | Nevin Varkey |  | True | True | PTP_CM29_Source_List | Sam | PTP |  | 98.25 98.63 303.63 304 205.38  | 3255 | 3255 98.25 Load |  |
| 3257 | 1.2.3.2.52 | 1.2.3.2.52 | 5 | RTR_CM11_Asset_Master | 2026-06-08 | 2026-06-11 | 2026-04-10 | 2026-04-13 | 0 | 3.75 | As Soon As Possible | Future Task | -18.69d | 0d | COULD NOT BE DETERMINED | True | True | True | Master Data Loads |  |  |  |  |  |  |  |
| 3258 | 1.2.3.2.52.1 | 1.2.3.2.52.1 | 6 | Load File Staged and Posted "Ready" | 2026-06-08 | 2026-06-08 | 2026-04-10 | 2026-04-10 | 0 | 0.0625 | As Soon As Possible | Future Task | -8971m | 0m | Kasey Hughes |  | True | True | RTR_CM11_Asset_Master |  | Finance | 32, 593, 313 | 0 0.06 300.25 300.31 300.25  |  |  |  |
| 3259 | 1.2.3.2.52.2 | 1.2.3.2.52.2 | 6 | Pre Load Validation | 2026-06-08 | 2026-06-08 | 2026-04-10 | 2026-04-10 | 0 | 0.0625 | As Soon As Possible | Future Task | -8971m | 0m | Kasey Hughes,Femi Oguntala |  | True | True | RTR_CM11_Asset_Master | Brian Wagner | Finance | 3260 | 0.06 0.13 300.31 300.38 300.25  | 3258 | 3258 0.0625 Load File Staged and Posted "Ready" |  |
| 3260 | 1.2.3.2.52.3 | 1.2.3.2.52.3 | 6 | Simulate Load | 2026-06-08 | 2026-06-09 | 2026-04-10 | 2026-04-10 | 0 | 1 | As Soon As Possible | Future Task | -149.52h | 0h | Data Migration Team |  | True | True | RTR_CM11_Asset_Master |  | Data | 3261 | 0.13 1.13 300.38 301.38 300.25  | 3259 | 3259 0.125 Pre Load Validation |  |
| 3261 | 1.2.3.2.52.4 | 1.2.3.2.52.4 | 6 | Error and Defect Mitigation | 2026-06-09 | 2026-06-11 | 2026-04-10 | 2026-04-10 | 0 | 2 | As Soon As Possible | Future Task | -149.52h | 0h | Kasey Hughes |  | True | True | RTR_CM11_Asset_Master | Brian Wagner | Finance | 3262 | 1.13 3.13 301.38 303.38 300.25  | 3260 | 3260 1.125 Simulate Load |  |
| 3262 | 1.2.3.2.52.5 | 1.2.3.2.52.5 | 6 | Load | 2026-06-11 | 2026-06-11 | 2026-04-10 | 2026-04-10 | 0 | 0.25 | As Soon As Possible | Future Task | -149.52h | 0h | Data Migration Team |  | True | True | RTR_CM11_Asset_Master |  | Data | 3263 | 3.13 3.38 303.38 303.63 300.25  | 3261 | 3261 3.125 Error and Defect Mitigation |  |
| 3263 | 1.2.3.2.52.6 | 1.2.3.2.52.6 | 6 | Post Load Validation | 2026-06-11 | 2026-06-11 | 2026-04-10 | 2026-04-13 | 0 | 0.375 | As Soon As Possible | Future Task | -149.52h | 0h | Kasey Hughes |  | True | True | RTR_CM11_Asset_Master | Brian Wagner | Finance |  | 3.38 3.75 303.63 304 300.25  | 3262 | 3262 3.375 Load |  |
| 3264 | 1.2.3.2.53 | 1.2.3.2.53 | 5 | PTM_CM50_Material Class | 2026-06-12 | 2026-06-16 | 2026-04-16 | 2026-04-16 | 0 | 2.13 | As Soon As Possible | Future Task | -20.85d | 0d | Brad Meseck; Chip Holder; David Duda; Matt Palastro; Sunil Srinivasa; Aniruddha Sathe; Susan Graham; Eric Heisler; Sam Penrod; Furkan Alko | True | True | True | Master Data Loads | Brad Meseck | PTM |  |  |  |  |  |
| 3265 | 1.2.3.2.53.1 | 1.2.3.2.53.1 | 6 | Manual File Staged and Posted "Ready" | 2026-06-12 | 2026-06-12 | 2026-04-16 | 2026-04-16 | 0 | 0.0625 | As Soon As Possible | Future Task | -10006m | 0m | Sam |  | True | True | PTM_CM50_Material Class |  | PTM | 32, 663, 269 | 60.56 60.63 301.88 301.94 241.31  | 3170 | 3170 60.5625 Load File Staged and Posted "Ready" |  |
| 3266 | 1.2.3.2.53.2 | 1.2.3.2.53.2 | 6 | Load | 2026-06-12 | 2026-06-12 | 2026-04-16 | 2026-04-16 | 0 | 0.0625 | As Soon As Possible | Future Task | -10006m | 0m | Brad Meseck |  | True | True | PTM_CM50_Material Class | Matt Palastro, Dave Duda | PTM | 3267 | 60.63 60.69 301.94 302 241.31  | 3265 | 3265 60.625 Manual File Staged and Posted "Ready" |  |
| 3267 | 1.2.3.2.53.3 | 1.2.3.2.53.3 | 6 | Post Load Validation | 2026-06-12 | 2026-06-16 | 2026-04-16 | 2026-04-16 | 0 | 2 | As Soon As Possible | Future Task | -166.77h | 0h | Brad |  | True | True | PTM_CM50_Material Class | brad | PTM |  | 60.69 62.69 302 304 241.31  | 3266 | 3266 60.6875 Load |  |
| 3268 | 1.2.3.2.54 | 1.2.3.2.54 | 5 | PTM_CM55_Class assignment to materials | 2026-06-12 | 2026-06-15 | 2026-04-16 | 2026-04-17 | 0 | 1.13 | As Soon As Possible | Future Task | -19.91d | 0d | Brad Meseck; Chip Holder; David Duda; Matt Palastro; Sunil Srinivasa; Aniruddha Sathe; Susan Graham; Eric Heisler; Sam Penrod; Furkan Alko | True | True | True | Master Data Loads | Brad Meseck | PTM |  |  |  |  |  |
| 3269 | 1.2.3.2.54.1 | 1.2.3.2.54.1 | 6 | Load File Staged and Posted "Ready" | 2026-06-12 | 2026-06-12 | 2026-04-16 | 2026-04-16 | 0 | 0.0625 | As Soon As Possible | Future Task | -9556m | 0m | Sam |  | True | True | PTM_CM55_Class assignment to materials |  | PTM | 3270 | 60.63 60.69 302.88 302.94 242.25  | 3265 | 3265 60.625 Manual File Staged and Posted "Ready" |  |
| 3270 | 1.2.3.2.54.2 | 1.2.3.2.54.2 | 6 | Pre Load Validation | 2026-06-12 | 2026-06-12 | 2026-04-16 | 2026-04-16 | 0 | 0.0625 | As Soon As Possible | Future Task | -9556m | 0m | Brad Meseck |  | True | True | PTM_CM55_Class assignment to materials | Matt Palastro, Dave Duda | PTM | 3271 | 60.69 60.75 302.94 303 242.25  | 3269 | 3269 60.6875 Load File Staged and Posted "Ready" |  |
| 3271 | 1.2.3.2.54.3 | 1.2.3.2.54.3 | 6 | Simulate Load | 2026-06-12 | 2026-06-12 | 2026-04-16 | 2026-04-16 | 0 | 0.125 | As Soon As Possible | Future Task | -159.27h | 0h | Data Migration Team |  | True | True | PTM_CM55_Class assignment to materials |  | Data | 3272 | 60.75 60.88 303 303.13 242.25  | 3270 | 3270 60.75 Pre Load Validation |  |
| 3272 | 1.2.3.2.54.4 | 1.2.3.2.54.4 | 6 | Error and Defect Mitigation | 2026-06-12 | 2026-06-12 | 2026-04-16 | 2026-04-16 | 0 | 0.25 | As Soon As Possible | Future Task | -159.27h | 0h | Brad Meseck |  | True | True | PTM_CM55_Class assignment to materials | Matt Palastro, Dave Duda | PTM | 3273 | 60.88 61.13 303.13 303.38 242.25  | 3271 | 3271 60.875 Simulate Load |  |
| 3273 | 1.2.3.2.54.5 | 1.2.3.2.54.5 | 6 | Load | 2026-06-12 | 2026-06-12 | 2026-04-16 | 2026-04-17 | 0 | 0.25 | As Soon As Possible | Future Task | -159.27h | 0h | Data Migration Team |  | True | True | PTM_CM55_Class assignment to materials |  | Data | 3274 | 61.13 61.38 303.38 303.63 242.25  | 3272 | 3272 61.125 Error and Defect Mitigation |  |
| 3274 | 1.2.3.2.54.6 | 1.2.3.2.54.6 | 6 | Post Load Validation | 2026-06-12 | 2026-06-15 | 2026-04-17 | 2026-04-17 | 0 | 0.375 | As Soon As Possible | Future Task | -159.27h | 0h | Brad Meseck |  | True | True | PTM_CM55_Class assignment to materials | Matt Palastro, Dave Duda | PTM |  | 61.38 61.75 303.63 304 242.25  | 3273 | 3273 61.375 Load |  |
| 3275 | 1.2.3.2.55 | 1.2.3.2.55 | 5 | GTS - Material initial load from S4 (Run Interface) | 2026-06-11 | 2026-06-15 | 2026-04-16 | 2026-04-16 | 0 | 2.09 | As Soon As Possible | Future Task | -23.78d | 0d | COULD NOT BE DETERMINED | True | True | True | Master Data Loads |  |  |  |  |  |  |  |
| 3276 | 1.2.3.2.55.1 | 1.2.3.2.55.1 | 6 | Run material interface to GTS | 2026-06-11 | 2026-06-15 | 2026-04-16 | 2026-04-16 | 0 | 1.96875 | As Soon As Possible | Future Task | -190.27h | 0h | James Van Riper |  | True | True | GTS - Material initial load from S4 (Run Interface) |  | OTC | 3277 | 60.25 62.22 298.63 300.59 238.38  | 3144 | 3144 60.25 Simulate Load |  |
| 3277 | 1.2.3.2.55.2 | 1.2.3.2.55.2 | 6 | Post Load Validation | 2026-06-15 | 2026-06-15 | 2026-04-16 | 2026-04-16 | 0 | 0.125 | As Soon As Possible | Future Task | -190.27h | 0h | James Van Riper |  | True | True | GTS - Material initial load from S4 (Run Interface) | Kim Kolesar | OTC | 3288 | 62.22 62.34 300.59 300.72 238.38  | 3276 | 3276 62.21875 Run material interface to GTS |  |
| 3278 | 1.2.3.2.56 | 1.2.3.2.56 | 5 | GTS - Customers initial load from S4 (Run Interface) | 2026-06-08 | 2026-06-08 | 2026-04-10 | 2026-04-10 | 0 | 0.25 | As Soon As Possible | Future Task | -15.19d | 0d | COULD NOT BE DETERMINED | True | True | True | Master Data Loads |  |  |  |  |  |  |  |
| 3279 | 1.2.3.2.56.1 | 1.2.3.2.56.1 | 6 | Run material interface to GTS | 2026-06-08 | 2026-06-08 | 2026-04-10 | 2026-04-10 | 0 | 0.125 | As Soon As Possible | Future Task | -121.52h | 0h | James Van Riper |  | True | True | GTS - Customers initial load from S4 (Run Interface) |  | OTC | 3280 | 0 0.13 303.75 303.88 303.75  |  |  |  |
| 3280 | 1.2.3.2.56.2 | 1.2.3.2.56.2 | 6 | Post Load Validation | 2026-06-08 | 2026-06-08 | 2026-04-10 | 2026-04-10 | 0 | 0.125 | As Soon As Possible | Future Task | -121.52h | 0h | James Van Riper |  | True | True | GTS - Customers initial load from S4 (Run Interface) | Kim Kolesar | OTC |  | 0.13 0.25 303.88 304 303.75  | 3279 | 3279 0.125 Run material interface to GTS |  |
| 3281 | 1.2.3.2.57 | 1.2.3.2.57 | 5 | GTS - Vendors initial load from S4 (Run Interface) | 2026-06-09 | 2026-06-09 | 2026-04-15 | 2026-04-15 | 0 | 0.25 | As Soon As Possible | Future Task | -16.44d | 0d | COULD NOT BE DETERMINED | True | True | True | Master Data Loads |  |  |  |  |  |  |  |
| 3282 | 1.2.3.2.57.1 | 1.2.3.2.57.1 | 6 | Run material interface to GTS | 2026-06-09 | 2026-06-09 | 2026-04-15 | 2026-04-15 | 0 | 0.125 | As Soon As Possible | Future Task | -131.52h | 0h | James Van Riper |  | True | True | GTS - Vendors initial load from S4 (Run Interface) |  | OTC | 32, 833, 286 | 0.88 1 303.38 303.5 302.5  | 3087 | 3087 0.875 Post Load Validation |  |
| 3283 | 1.2.3.2.57.2 | 1.2.3.2.57.2 | 6 | Post Load Validation | 2026-06-09 | 2026-06-09 | 2026-04-15 | 2026-04-15 | 0 | 0.125 | As Soon As Possible | Future Task | -128.52h | 0h | James Van Riper |  | True | True | GTS - Vendors initial load from S4 (Run Interface) | Kim Kolesar | OTC |  | 1 1.13 303.88 304 302.88  | 3282 | 3282 1 Run material interface to GTS |  |
| 3284 | 1.2.3.2.58 | 1.2.3.2.58 | 5 | GTS - ECCN - Create | 2026-06-08 | 2026-06-09 | 2026-04-06 | 2026-04-13 | 0 | 1.13 | As Soon As Possible | Future Task | -16.06d | 0d | COULD NOT BE DETERMINED | True | True | True | Master Data Loads |  |  |  |  |  |  |  |
| 3285 | 1.2.3.2.58.1 | 1.2.3.2.58.1 | 6 | Load Descartes XML File | 2026-06-08 | 2026-06-08 | 2026-04-06 | 2026-04-06 | 0 | 0.125 | As Soon As Possible | Future Task | -120.52h | 0h | James Van Riper |  | True | True | GTS - ECCN - Create | Brian Wagner | OTC |  | 0 0.13 303.88 304 303.88  |  |  |  |
| 3286 | 1.2.3.2.58.2 | 1.2.3.2.58.2 | 6 | Post Load Validation | 2026-06-09 | 2026-06-09 | 2026-04-13 | 2026-04-13 | 0 | 0.125 | As Soon As Possible | Future Task | -131.52h | 0h | James Van Riper |  | True | True | GTS - ECCN - Create | Kim Kolesar | OTC | 3306 | 1 1.13 303.5 303.63 302.5  | 3282 | 3282 1 Run material interface to GTS |  |
| 3287 | 1.2.3.2.59 | 1.2.3.2.59 | 5 | GTS - ECCN - Assign | 2026-06-15 | 2026-06-16 | 2026-04-16 | 2026-04-16 | 0 | 0.25 | As Soon As Possible | Future Task | -23.78d | 0d | COULD NOT BE DETERMINED | True | True | True | Master Data Loads |  |  |  |  |  |  |  |
| 3288 | 1.2.3.2.59.1 | 1.2.3.2.59.1 | 6 | Load Descartes XML File | 2026-06-15 | 2026-06-15 | 2026-04-16 | 2026-04-16 | 0 | 0.125 | As Soon As Possible | Future Task | -190.27h | 0h | James Van Riper |  | True | True | GTS - ECCN - Assign | Brian Wagner | OTC | 3289 | 62.34 62.47 300.72 300.84 238.38  | 3277 | 3277 62.34375 Post Load Validation |  |
| 3289 | 1.2.3.2.59.2 | 1.2.3.2.59.2 | 6 | Post Load Validation | 2026-06-15 | 2026-06-16 | 2026-04-16 | 2026-04-16 | 0 | 0.125 | As Soon As Possible | Future Task | -190.27h | 0h | James Van Riper |  | True | True | GTS - ECCN - Assign | Kim Kolesar | OTC | 3294 | 62.47 62.59 300.84 300.97 238.38  | 3288 | 3288 62.46875 Load Descartes XML File |  |
| 2991 | 1.2.3.2.6 | 1.2.3.2.6 | 5 | Manual Configuration Activities in QS5 | 2026-06-11 | 2026-06-19 | 2026-04-06 | 2026-04-15 | 0 | 5.94 | As Soon As Possible | Future Task | -23.88d | 0d | COULD NOT BE DETERMINED | True | True | True | Master Data Loads |  |  |  |  | 2984 |  |  |
| 2992 | 1.2.3.2.6.1 | 1.2.3.2.6.1 | 6 | Open Client | 2026-06-11 | 2026-06-11 | 2026-04-06 | 2026-04-06 | 0 | 0.0625 | As Soon As Possible | Future Task | -8641m | 0m | Basis |  | True | True | Manual Configuration Activities in QS5 |  | Basis |  | 0 0.06 303.94 304 303.94  |  |  |  |
| 2993 | 1.2.3.2.6.2 | 1.2.3.2.6.2 | 6 | Service Enterprise Setup | 2026-06-12 | 2026-06-19 | 2026-04-08 | 2026-04-15 | 0 | 5 | As Soon As Possible | Future Task | -23.88d | 0d | Keith Riley |  | True | True | Manual Configuration Activities in QS5 |  | OTC |  | 21 26 299 304 278  | 296, 29, 642, 968 | 296 21 Final risk analysis |  |
| 2994 | 1.2.3.2.6.3 | 1.2.3.2.6.3 | 6 | Close Client | 2026-06-11 | 2026-06-11 | 2026-04-06 | 2026-04-06 | 0 | 0.0625 | As Soon As Possible | Future Task | -8641m | 0m | Basis |  | True | True | Manual Configuration Activities in QS5 |  | Basis |  | 0 0.06 303.94 304 303.94  |  |  |  |
| 2995 | 1.2.3.2.6.4 | 1.2.3.2.6.4 | 6 | Intercompany Business Partner Setup | 2026-06-12 | 2026-06-12 | 2026-04-08 | 2026-04-09 | 0 | 0.25 | As Soon As Possible | Future Task | -153.02h | 0h | Functional Leads |  | True | True | Manual Configuration Activities in QS5 | Brian Wagner | Development |  | 135.03 135.28 303.75 304 168.72  | 296, 29, 642, 976 | 976 135.03125 Load |  |
| 3290 | 1.2.3.2.60 | 1.2.3.2.60 | 5 | GTS - HTS - Create | 2026-06-08 | 2026-06-08 | 2026-04-06 | 2026-04-06 | 0 | 0.25 | As Soon As Possible | Future Task | -15.19d | 0d | COULD NOT BE DETERMINED | True | True | True | Master Data Loads |  |  |  |  |  |  |  |
| 3291 | 1.2.3.2.60.1 | 1.2.3.2.60.1 | 6 | Load Descartes XML File | 2026-06-08 | 2026-06-08 | 2026-04-06 | 2026-04-06 | 0 | 0.125 | As Soon As Possible | Future Task | -121.52h | 0h | James Van Riper |  | True | True | GTS - HTS - Create | Brian Wagner | OTC | 3292 | 0 0.13 303.75 303.88 303.75  |  |  |  |
| 3292 | 1.2.3.2.60.2 | 1.2.3.2.60.2 | 6 | Post Load Validation | 2026-06-08 | 2026-06-08 | 2026-04-06 | 2026-04-06 | 0 | 0.125 | As Soon As Possible | Future Task | -121.52h | 0h | James Van Riper |  | True | True | GTS - HTS - Create | Kim Kolesar | OTC |  | 0.13 0.25 303.88 304 303.75  | 3291 | 3291 0.125 Load Descartes XML File |  |
| 3293 | 1.2.3.2.61 | 1.2.3.2.61 | 5 | GTS - HTS - Assign | 2026-06-16 | 2026-06-16 | 2026-04-16 | 2026-04-16 | 0 | 0.25 | As Soon As Possible | Future Task | -23.78d | 0d | COULD NOT BE DETERMINED | True | True | True | Master Data Loads |  |  |  |  |  |  |  |
| 3294 | 1.2.3.2.61.1 | 1.2.3.2.61.1 | 6 | Load Descartes XML File | 2026-06-16 | 2026-06-16 | 2026-04-16 | 2026-04-16 | 0 | 0.125 | As Soon As Possible | Future Task | -190.27h | 0h | James Van Riper |  | True | True | GTS - HTS - Assign | Brian Wagner | OTC | 329, 532, 973, 303 | 62.59 62.72 300.97 301.09 238.38  | 3289 | 3289 62.59375 Post Load Validation |  |
| 3295 | 1.2.3.2.61.2 | 1.2.3.2.61.2 | 6 | Post Load Validation | 2026-06-16 | 2026-06-16 | 2026-04-16 | 2026-04-16 | 0 | 0.125 | As Soon As Possible | Future Task | -190.27h | 0h | James Van Riper |  | True | True | GTS - HTS - Assign | Kim Kolesar | OTC | 33, 103, 300 | 62.72 62.84 301.09 301.22 238.38  | 3294 | 3294 62.71875 Load Descartes XML File |  |
| 3296 | 1.2.3.2.62 | 1.2.3.2.62 | 5 | GTS - License - Create | 2026-06-16 | 2026-06-16 | 2026-04-16 | 2026-04-16 | 0 | 0.25 | As Soon As Possible | Future Task | -21.38d | 0d | COULD NOT BE DETERMINED | True | True | True | Master Data Loads |  |  |  |  |  |  |  |
| 3297 | 1.2.3.2.62.1 | 1.2.3.2.62.1 | 6 | Load Descartes XML File | 2026-06-16 | 2026-06-16 | 2026-04-16 | 2026-04-16 | 0 | 0.125 | As Soon As Possible | Future Task | -171.02h | 0h | James Van Riper |  | True | True | GTS - License - Create | Brian Wagner | OTC | 3298 | 80 80.13 303.75 303.88 223.75  | 32, 943, 310 | 32 80 Complete - Ready for Security Review |  |
| 3298 | 1.2.3.2.62.2 | 1.2.3.2.62.2 | 6 | Post Load Validation | 2026-06-16 | 2026-06-16 | 2026-04-16 | 2026-04-16 | 0 | 0.125 | As Soon As Possible | Future Task | -171.02h | 0h | James Van Riper |  | True | True | GTS - License - Create | Kim Kolesar | OTC |  | 80.13 80.25 303.88 304 223.75  | 3297 | 3297 80.125 Load Descartes XML File |  |
| 3299 | 1.2.3.2.63 | 1.2.3.2.63 | 5 | Commodity Code/Tarif | 2026-06-16 | 2026-06-19 | 2026-04-16 | 2026-04-16 | 0 | 2.78 | As Soon As Possible | Future Task | -23.78d | 0d | COULD NOT BE DETERMINED | True | True | True | Master Data Loads | Brian Wagner |  |  |  |  |  |  |

| uid | wbs | outlineNumber | outlineLevel | name | start | finish | baselineStart | baselineFinish | percentComplete | durationDays | constraintType | status | totalSlackRaw | freeSlackRaw | resourceNames | summary | criticalFlag | active | flag20 | summaryName | businessValidationOwner | workstream | successors | cpm | predecessors | drivers | milestone |
| --- | --- | --- | --- | --- | --- | --- | --- | --- | --- | --- | --- | --- | --- | --- | --- | --- | --- | --- | --- | --- | --- | --- | --- | --- | --- | --- | --- |
| 3300 | 1.2.3.2.63.1 | 1.2.3.2.63.1 | 6 | Load | 2026-06-16 | 2026-06-18 | 2026-04-16 | 2026-04-16 | 0 | 2.65625 | As Soon As Possible | Future Task | -190.27h | 0h | James Van Riper |  | True | True |  | Commodity Code/Tarif |  | OTC | 3301 | 62.84 65.5 301.22 303.88 238.38  | 3295 | 3295 62.84375 Post Load Validation |  |
| 3301 | 1.2.3.2.63.2 | 1.2.3.2.63.2 | 6 | Post Load Validation | 2026-06-18 | 2026-06-19 | 2026-04-16 | 2026-04-16 | 0 | 0.125 | As Soon As Possible | Future Task | -190.27h | 0h | James Van Riper |  | True | True |  | Commodity Code/Tarif | Kim Kolesar | OTC |  | 65.5 65.63 303.88 304 238.38  | 3300 | 3300 65.5 Load |  |
| 3302 | 1.2.3.2.64 | 1.2.3.2.64 | 5 | SPL Master File | 2026-06-16 | 2026-06-16 | 2025-03-13 | 2025-03-13 | 0 | 0.25 | As Soon As Possible | Future Task | -21.13d | 0d | COULD NOT BE DETERMINED | True | True | True |  | Master Data Loads |  |  |  |  |  |  |  |
| 3303 | 1.2.3.2.64.1 | 1.2.3.2.64.1 | 6 | Load | 2026-06-16 | 2026-06-16 | 2025-03-13 | 2025-03-13 | 0 | 0.125 | As Soon As Possible | Future Task | -169.02h | 0h | James Van Riper |  | True | True |  | SPL Master File |  | OTC | 3304 | 62.72 62.84 303.75 303.88 241.03  | 3294 | 3294 62.71875 Load Descartes XML File |  |
| 3304 | 1.2.3.2.64.2 | 1.2.3.2.64.2 | 6 | Post Load Validation | 2026-06-16 | 2026-06-16 | 2025-03-13 | 2025-03-13 | 0 | 0.125 | As Soon As Possible | Future Task | -169.02h | 0h | James Van Riper |  | True | True |  | SPL Master File | Kim Kolesar | OTC |  | 62.84 62.97 303.88 304 241.03  | 3303 | 3303 62.84375 Load |  |
| 3305 | 1.2.3.2.65 | 1.2.3.2.65 | 5 | Initialize Embargo situation | 2026-06-09 | 2026-06-09 | 2026-04-13 | 2026-04-14 | 0 | 0.38 | As Soon As Possible | Future Task | -16.44d | 0d | COULD NOT BE DETERMINED | True | True | True |  | Master Data Loads | Kishore Kakarla |  |  |  |  |  |  |
| 3306 | 1.2.3.2.65.1 | 1.2.3.2.65.1 | 6 | Run report /SAPSLL/EMB_CNTRY_INIT | 2026-06-09 | 2026-06-09 | 2026-04-13 | 2026-04-13 | 0 | 0.125 | As Soon As Possible | Future Task | -131.52h | 0h | James Van Riper |  | True | True |  | Initialize Embargo situation | Brian Wagner | OTC | 3307 | 1.13 1.25 303.63 303.75 302.5  | 3286 | 3286 1.125 Post Load Validation |  |
| 3307 | 1.2.3.2.65.2 | 1.2.3.2.65.2 | 6 | Set Embargo situations | 2026-06-09 | 2026-06-09 | 2026-04-13 | 2026-04-13 | 0 | 0.125 | As Soon As Possible | Future Task | -131.52h | 0h | James Van Riper |  | True | True |  | Initialize Embargo situation | Kishore Kakarla | OTC | 3308 | 1.25 1.38 303.75 303.88 302.5  | 3306 | 3306 1.25 Run report /SAPSLL/EMB_CNTRY_INIT |  |
| 3308 | 1.2.3.2.65.3 | 1.2.3.2.65.3 | 6 | Post Load Validation | 2026-06-09 | 2026-06-09 | 2026-04-13 | 2026-04-14 | 0 | 0.125 | As Soon As Possible | Future Task | -131.52h | 0h | James Van Riper |  | True | True |  | Initialize Embargo situation | Kim Kolesar | OTC |  | 1.38 1.5 303.88 304 302.5  | 3307 | 3307 1.375 Set Embargo situations |  |
| 3309 | 1.2.3.2.66 | 1.2.3.2.66 | 5 | GTS - SPL (Sanctioned party list) | 2026-06-16 | 2026-06-16 | 2026-04-16 | 2026-04-16 | 0 | 0.25 | As Soon As Possible | Future Task | -21.38d | 0d | COULD NOT BE DETERMINED | True | True | True |  | Master Data Loads | Brian Wagner |  |  |  |  |  |  |
| 3310 | 1.2.3.2.66.1 | 1.2.3.2.66.1 | 6 | Load Descartes XML File | 2026-06-16 | 2026-06-16 | 2026-04-16 | 2026-04-16 | 0 | 0.125 | As Soon As Possible | Future Task | -171.02h | 0h | James Van Riper |  | True | True |  | GTS - SPL (Sanctioned party list) | Brian Wagner | OTC | 32, 973, 311 | 62.84 62.97 303.75 303.88 240.91  | 3295 | 3295 62.84375 Post Load Validation |  |
| 3311 | 1.2.3.2.66.2 | 1.2.3.2.66.2 | 6 | Post Load Validation | 2026-06-16 | 2026-06-16 | 2026-04-16 | 2026-04-16 | 0 | 0.125 | As Soon As Possible | Future Task | -170.02h | 0h | James Van Riper |  | True | True |  | GTS - SPL (Sanctioned party list) | Kim Kolesar | OTC |  | 62.97 63.09 303.88 304 240.91  | 3310 | 3310 62.96875 Load Descartes XML File |  |
| 3312 | 1.2.3.2.67 | 1.2.3.2.67 | 5 | RTR_CM17_Project Definition / Builder | 2026-06-08 | 2026-06-09 | 2026-04-10 | 2026-04-17 | 0 | 1.13 | As Soon As Possible | Future Task | -16.19d | 0d | COULD NOT BE DETERMINED | True | True | True |  | Master Data Loads |  |  |  |  |  |  |  |
| 3313 | 1.2.3.2.67.1 | 1.2.3.2.67.1 | 6 | Load File Staged and Posted "Ready" | 2026-06-08 | 2026-06-08 | 2026-04-10 | 2026-04-10 | 0 | 0.0625 | As Soon As Possible | Future Task | -7771m | 0m | Kasey Hughes |  | True | True |  | RTR_CM17_Project Definition / Builder |  | Finance | 33, 143, 320 | 0.06 0.13 302.81 302.88 302.75  | 3258 | 3258 0.0625 Load File Staged and Posted "Ready" |  |
| 3314 | 1.2.3.2.67.2 | 1.2.3.2.67.2 | 6 | Pre Load Validation | 2026-06-08 | 2026-06-08 | 2026-04-10 | 2026-04-10 | 0 | 0.0625 | As Soon As Possible | Future Task | -7741m | 0m | Kasey Hughes |  | True | True |  | RTR_CM17_Project Definition / Builder | Brian Wagner | Finance | 3315 | 0.13 0.19 302.94 303 302.81  | 3313 | 3313 0.125 Load File Staged and Posted "Ready" |  |
| 3315 | 1.2.3.2.67.3 | 1.2.3.2.67.3 | 6 | Simulate Load | 2026-06-08 | 2026-06-08 | 2026-04-16 | 2026-04-16 | 0 | 0.125 | As Soon As Possible | Future Task | -129.02h | 0h | Data Migration Team |  | True | True |  | RTR_CM17_Project Definition / Builder |  | Data | 3316 | 0.19 0.31 303 303.13 302.81  | 3314 | 3314 0.1875 Pre Load Validation |  |
| 3316 | 1.2.3.2.67.4 | 1.2.3.2.67.4 | 6 | Error and Defect Mitigation | 2026-06-08 | 2026-06-08 | 2026-04-16 | 2026-04-17 | 0 | 0.25 | As Soon As Possible | Future Task | -129.02h | 0h | Kasey Hughes |  | True | True |  | RTR_CM17_Project Definition / Builder | Brian Wagner | Finance | 3317 | 0.31 0.56 303.13 303.38 302.81  | 3315 | 3315 0.3125 Simulate Load |  |
| 3317 | 1.2.3.2.67.5 | 1.2.3.2.67.5 | 6 | Load | 2026-06-08 | 2026-06-09 | 2026-04-17 | 2026-04-17 | 0 | 0.25 | As Soon As Possible | Future Task | -129.02h | 0h | Data Migration Team |  | True | True |  | RTR_CM17_Project Definition / Builder |  | Data | 3318 | 0.56 0.81 303.38 303.63 302.81  | 3316 | 3316 0.5625 Error and Defect Mitigation |  |
| 3318 | 1.2.3.2.67.6 | 1.2.3.2.67.6 | 6 | Post Load Validation | 2026-06-09 | 2026-06-09 | 2026-04-17 | 2026-04-17 | 0 | 0.375 | As Soon As Possible | Future Task | -129.02h | 0h | Kasey Hughes |  | True | True |  | RTR_CM17_Project Definition / Builder | Brian Wagner | Finance |  | 0.81 1.19 303.63 304 302.81  | 3317 | 3317 0.8125 Load |  |
| 3319 | 1.2.3.2.68 | 1.2.3.2.68 | 5 | RTR_CM18_WBS Element | 2026-06-08 | 2026-06-09 | 2026-04-10 | 2026-04-17 | 0 | 1.13 | As Soon As Possible | Future Task | -16.19d | 0d | COULD NOT BE DETERMINED | True | True | True |  | Master Data Loads |  |  |  |  |  |  |  |
| 3320 | 1.2.3.2.68.1 | 1.2.3.2.68.1 | 6 | Load File Staged and Posted "Ready" | 2026-06-08 | 2026-06-08 | 2026-04-10 | 2026-04-10 | 0 | 0.0625 | As Soon As Possible | Future Task | -7771m | 0m | Kasey Hughes |  | True | True |  | RTR_CM18_WBS Element |  | Finance | 3321 | 0.13 0.19 302.88 302.94 302.75  | 3313 | 3313 0.125 Load File Staged and Posted "Ready" |  |
| 3321 | 1.2.3.2.68.2 | 1.2.3.2.68.2 | 6 | Pre Load Validation | 2026-06-08 | 2026-06-08 | 2026-04-10 | 2026-04-10 | 0 | 0.0625 | As Soon As Possible | Future Task | -7771m | 0m | Kasey Hughes |  | True | True |  | RTR_CM18_WBS Element | Brian Wagner | Finance | 3322 | 0.19 0.25 302.94 303 302.75  | 3320 | 3320 0.1875 Load File Staged and Posted "Ready" |  |
| 3322 | 1.2.3.2.68.3 | 1.2.3.2.68.3 | 6 | Simulate Load | 2026-06-08 | 2026-06-08 | 2026-04-16 | 2026-04-16 | 0 | 0.125 | As Soon As Possible | Future Task | -129.52h | 0h | Data Migration Team |  | True | True |  | RTR_CM18_WBS Element |  | Data | 3323 | 0.25 0.38 303 303.13 302.75  | 3321 | 3321 0.25 Pre Load Validation |  |
| 3323 | 1.2.3.2.68.4 | 1.2.3.2.68.4 | 6 | Error and Defect Mitigation | 2026-06-08 | 2026-06-08 | 2026-04-16 | 2026-04-17 | 0 | 0.25 | As Soon As Possible | Future Task | -129.52h | 0h | Kasey Hughes |  | True | True |  | RTR_CM18_WBS Element | Brian Wagner | Finance | 3324 | 0.38 0.63 303.13 303.38 302.75  | 3322 | 3322 0.375 Simulate Load |  |
| 3324 | 1.2.3.2.68.5 | 1.2.3.2.68.5 | 6 | Load | 2026-06-08 | 2026-06-09 | 2026-04-17 | 2026-04-17 | 0 | 0.25 | As Soon As Possible | Future Task | -129.52h | 0h | Data Migration Team |  | True | True |  | RTR_CM18_WBS Element |  | Data | 3325 | 0.63 0.88 303.38 303.63 302.75  | 3323 | 3323 0.625 Error and Defect Mitigation |  |
| 3325 | 1.2.3.2.68.6 | 1.2.3.2.68.6 | 6 | Post Load Validation | 2026-06-09 | 2026-06-09 | 2026-04-17 | 2026-04-17 | 0 | 0.375 | As Soon As Possible | Future Task | -129.52h | 0h | Kasey Hughes |  | True | True |  | RTR_CM18_WBS Element | Brian Wagner | Finance |  | 0.88 1.25 303.63 304 302.75  | 3324 | 3324 0.875 Load |  |
| 2996 | 1.2.3.2.7 | 1.2.3.2.7 | 5 | RTR_CM09_Activity_Type | 2026-06-11 | 2026-06-15 | 2026-04-08 | 2026-04-09 | 0 | 1.38 | As Soon As Possible | Future Task | -19.75d | 0d | COULD NOT BE DETERMINED | True | True | True |  | Master Data Loads |  |  |  |  |  |  |  |
| 2997 | 1.2.3.2.7.1 | 1.2.3.2.7.1 | 6 | Load File Staged and Posted "Ready" | 2026-06-11 | 2026-06-11 | 2026-04-08 | 2026-04-08 | 0 | 0.125 | As Soon As Possible | Future Task | -158.02h | 0h | Kasey Hughes |  | True | True |  | RTR_CM09_Activity_Type |  | Finance | 2998 | 3.25 3.38 302.88 303 299.63  | 2974 | 2974 3.25 Post Load Validation |  |
| 2998 | 1.2.3.2.7.2 | 1.2.3.2.7.2 | 6 | Pre Load Validation | 2026-06-11 | 2026-06-12 | 2026-04-08 | 2026-04-09 | 0 | 0.25 | As Soon As Possible | Future Task | -158.02h | 0h | Kasey Hughes |  | True | True |  | RTR_CM09_Activity_Type | Brian Wagner | Finance | 2999 | 3.38 3.63 303 303.25 299.63  | 2997 | 2997 3.375 Load File Staged and Posted "Ready" |  |
| 2999 | 1.2.3.2.7.3 | 1.2.3.2.7.3 | 6 | Simulate Load | 2026-06-12 | 2026-06-12 | 2026-04-09 | 2026-04-09 | 0 | 0.125 | As Soon As Possible | Future Task | -158.02h | 0h | Data Migration Team |  | True | True |  | RTR_CM09_Activity_Type |  | Data | 3000 | 3.63 3.75 303.25 303.38 299.63  | 2998 | 2998 3.625 Pre Load Validation |  |
| 3000 | 1.2.3.2.7.4 | 1.2.3.2.7.4 | 6 | Error and Defect Mitigation | 2026-06-12 | 2026-06-12 | 2026-04-09 | 2026-04-09 | 0 | 0.25 | As Soon As Possible | Future Task | -158.02h | 0h | Kasey Hughes |  | True | True |  | RTR_CM09_Activity_Type | Brian Wagner | Finance | 3001 | 3.75 4 303.38 303.63 299.63  | 2999 | 2999 3.75 Simulate Load |  |
| 3001 | 1.2.3.2.7.5 | 1.2.3.2.7.5 | 6 | Load | 2026-06-12 | 2026-06-12 | 2026-04-09 | 2026-04-09 | 0 | 0.125 | As Soon As Possible | Future Task | -158.02h | 0h | Data Migration Team |  | True | True |  | RTR_CM09_Activity_Type |  | Data | 3002 | 4 4.13 303.63 303.75 299.63  | 3000 | 3000 4 Error and Defect Mitigation |  |
| 3002 | 1.2.3.2.7.6 | 1.2.3.2.7.6 | 6 | Post Load Validation | 2026-06-12 | 2026-06-15 | 2026-04-09 | 2026-04-09 | 0 | 0.25 | As Soon As Possible | Future Task | -158.02h | 0h | Kasey Hughes |  | True | True |  | RTR_CM09_Activity_Type | Brian Wagner | Finance |  | 4.13 4.38 303.75 304 299.63  | 3001 | 3001 4.125 Load |  |
| 3003 | 1.2.3.2.8 | 1.2.3.2.8 | 5 | RTR_CM12_Activity Rates | 2026-06-09 | 2026-06-10 | 2026-04-07 | 2026-04-08 | 0 | 1.13 | As Soon As Possible | Future Task | -17.56d | 0d | COULD NOT BE DETERMINED | True | True | True |  | Master Data Loads |  |  |  |  |  |  |  |
| 3004 | 1.2.3.2.8.1 | 1.2.3.2.8.1 | 6 | Load File Staged and Posted "Ready" | 2026-06-09 | 2026-06-09 | 2026-04-07 | 2026-04-07 | 0 | 0.125 | As Soon As Possible | Future Task | -140.52h | 0h | Kasey Hughes |  | True | True |  | RTR_CM12_Activity Rates |  | Finance | 3005 | 1.5 1.63 302.88 303 301.38  | 2967 | 2967 1.5 Post Load Validation |  |
| 3005 | 1.2.3.2.8.2 | 1.2.3.2.8.2 | 6 | Pre Load Validation | 2026-06-09 | 2026-06-10 | 2026-04-07 | 2026-04-07 | 0 | 0.25 | As Soon As Possible | Future Task | -140.52h | 0h | Kasey Hughes |  | True | True |  | RTR_CM12_Activity Rates | Brian Wagner | Finance | 3006 | 1.63 1.88 303 303.25 301.38  | 3004 | 3004 1.625 Load File Staged and Posted "Ready" |  |
| 3006 | 1.2.3.2.8.3 | 1.2.3.2.8.3 | 6 | Simulate Load | 2026-06-10 | 2026-06-10 | 2026-04-07 | 2026-04-08 | 0 | 0.125 | As Soon As Possible | Future Task | -140.52h | 0h | Data Migration Team |  | True | True |  | RTR_CM12_Activity Rates |  | Data | 3007 | 1.88 2 303.25 303.38 301.38  | 3005 | 3005 1.875 Pre Load Validation |  |
| 3007 | 1.2.3.2.8.4 | 1.2.3.2.8.4 | 6 | Error and Defect Mitigation | 2026-06-10 | 2026-06-10 | 2026-04-08 | 2026-04-08 | 0 | 0.25 | As Soon As Possible | Future Task | -140.52h | 0h | Kasey Hughes |  | True | True |  | RTR_CM12_Activity Rates | Brian Wagner | Finance | 3008 | 2 2.25 303.38 303.63 301.38  | 3006 | 3006 2 Simulate Load |  |
| 3008 | 1.2.3.2.8.5 | 1.2.3.2.8.5 | 6 | Load | 2026-06-10 | 2026-06-10 | 2026-04-08 | 2026-04-08 | 0 | 0.125 | As Soon As Possible | Future Task | -140.52h | 0h | Data Migration Team |  | True | True |  | RTR_CM12_Activity Rates |  | Data | 3009 | 2.25 2.38 303.63 303.75 301.38  | 3007 | 3007 2.25 Error and Defect Mitigation |  |
| 3009 | 1.2.3.2.8.6 | 1.2.3.2.8.6 | 6 | Post Load Validation | 2026-06-10 | 2026-06-10 | 2026-04-08 | 2026-04-08 | 0 | 0.25 | As Soon As Possible | Future Task | -140.52h | 0h | Kasey Hughes |  | True | True |  | RTR_CM12_Activity Rates | Brian Wagner | Finance |  | 2.38 2.63 303.75 304 301.38  | 3008 | 3008 2.375 Load |  |
| 3010 | 1.2.3.2.9 | 1.2.3.2.9 | 5 | RTR_CM06_Bank_master | 2026-06-08 | 2026-06-12 | 2026-04-08 | 2026-04-09 | 0 | 3.81 | As Soon As Possible | Future Task | -21.06d | 0d | COULD NOT BE DETERMINED | True | True | True |  | Master Data Loads |  |  |  |  |  |  |  |
| 3011 | 1.2.3.2.9.1 | 1.2.3.2.9.1 | 6 | Load File Staged and Posted "Ready" | 2026-06-11 | 2026-06-11 | 2026-04-08 | 2026-04-08 | 0 | 0.125 | As Soon As Possible | Future Task | -150.02h | 0h | Data Migration Team |  | True | True |  | RTR_CM06_Bank_master |  | Data | 3012 | 3.25 3.38 303.63 303.75 300.38  | 2974 | 2974 3.25 Post Load Validation |  |
| 3012 | 1.2.3.2.9.2 | 1.2.3.2.9.2 | 6 | Pre Load Validation | 2026-06-11 | 2026-06-12 | 2026-04-08 | 2026-04-09 | 0 | 0.25 | As Soon As Possible | Future Task | -150.02h | 0h | Kasey Hughes |  | True | True |  | RTR_CM06_Bank_master | Brian Wagner | Finance |  | 3.38 3.63 303.75 304 300.38  | 3011 | 3011 3.375 Load File Staged and Posted "Ready" |  |
| 3013 | 1.2.3.2.9.3 | 1.2.3.2.9.3 | 6 | Simulate Load | 2026-06-08 | 2026-06-08 | 2026-04-09 | 2026-04-09 | 0 | 0.125 | As Soon As Possible | Future Task | -168.52h | 0h | Data Migration Team |  | True | True |  | RTR_CM06_Bank_master |  | Data | 3014 | 0 0.13 301.88 302 301.88  |  |  |  |
| 3014 | 1.2.3.2.9.4 | 1.2.3.2.9.4 | 6 | Error and Defect Mitigation | 2026-06-08 | 2026-06-08 | 2026-04-09 | 2026-04-09 | 0 | 0.25 | As Soon As Possible | Future Task | -168.52h | 0h | Kasey Hughes |  | True | True |  | RTR_CM06_Bank_master | Brian Wagner | Finance | 3015 | 0.13 0.38 302 302.25 301.88  | 3013 | 3013 0.125 Simulate Load |  |
| 3015 | 1.2.3.2.9.5 | 1.2.3.2.9.5 | 6 | Load | 2026-06-08 | 2026-06-09 | 2026-04-09 | 2026-04-09 | 0 | 0.625 | As Soon As Possible | Future Task | -168.52h | 0h | Data Migration Team |  | True | True |  | RTR_CM06_Bank_master |  | Data | 30, 163, 18 | 0.38 1 302.25 302.88 301.88  | 3014 | 3014 0.375 Error and Defect Mitigation |  |
| 3016 | 1.2.3.2.9.6 | 1.2.3.2.9.6 | 6 | Post Load Validation | 2026-06-09 | 2026-06-09 | 2026-04-09 | 2026-04-09 | 0 | 0.25 | As Soon As Possible | Future Task | -168.52h | 0h | Kasey Hughes |  | True | True |  | RTR_CM06_Bank_master | Brian Wagner | Finance | 30, 523, 63 | 1 1.25 303.75 304 302.75  | 3015 | 3015 1 Load |  |
| 2958 | 1.2.3.3 | 1.2.3.3 | 4 | ITC3 Master Data Loads Complete | 2026-06-19 | 2026-06-19 | 2026-06-19 | 2026-06-19 | 0 | 0 | As Soon As Possible | Future Task | -11791m | 0m | Jyoti Nain; Manoj Patel; Michelle Connnors; Roy John; Shiva Janga; Vishal Pujari; (Curtis) Todd Breithaupt; Jerry Ramos |  | True | True |  | ITC3 Data Load Tasks QS5 | Manoj Patel | Data | 9, 223, 326 | 0 0 297 297 297  | 2959 |  | True |
| 3326 | 1.2.3.4 | 1.2.3.4 | 4 | Mock Transactional Data | 2026-06-19 | 2026-06-23 | 2026-06-19 | 2026-06-23 | 0 | 2 | As Soon As Possible | Future Task | -24.56d | 0d | Jyoti Nain; Manoj Patel; Michelle Connnors; Roy John; Shiva Janga; Vishal Pujari; (Curtis) Todd Breithaupt; Jerry Ramos | True | True | True |  | ITC3 Data Load Tasks QS5 | Manoj Patel | Data | 2421 |  | 2958 |  |  |
| 3330 | 1.2.3.4.1 | 1.2.3.4.1 | 5 | Inventory | 2026-06-19 | 2026-06-22 | 2026-06-19 | 2026-06-22 | 0 | 0.5 | As Soon As Possible | Future Task | -196.52h | 0h | (Curtis) Todd Breithaupt; Ambrish Patel; Jerry Ramos |  | True | True |  | Mock Transactional Data |  | Data | 33, 313, 334, 333, 533, 300, 0 | 0 0.5 302 302.5 302  | 2947 | 2947 0 ITC2 Master Data Loads Complete |  |
| 3331 | 1.2.3.4.2 | 1.2.3.4.2 | 5 | Open AR | 2026-06-22 | 2026-06-22 | 2026-06-22 | 2026-06-22 | 0 | 0.5 | As Soon As Possible | Future Task | -196.52h | 0h | (Curtis) Todd Breithaupt; Ambrish Patel; Jerry Ramos |  | True | True |  | Mock Transactional Data | Brian Wagner | Data | 3332 | 0.5 1 302.5 303 302  | 3330 | 3330 0.5 Inventory |  |
| 3332 | 1.2.3.4.3 | 1.2.3.4.3 | 5 | Open AP | 2026-06-22 | 2026-06-23 | 2026-06-22 | 2026-06-23 | 0 | 0.5 | As Soon As Possible | Future Task | -196.52h | 0h | (Curtis) Todd Breithaupt; Ambrish Patel; Jerry Ramos |  | True | True |  | Mock Transactional Data | Brian Wagner | Data | 3333 | 1 1.5 303 303.5 302  | 3331 | 3331 1 Open AR |  |
| 3333 | 1.2.3.4.4 | 1.2.3.4.4 | 5 | Bank and Cash | 2026-06-23 | 2026-06-23 | 2026-06-23 | 2026-06-23 | 0 | 0.5 | As Soon As Possible | Future Task | -196.52h | 0h | (Curtis) Todd Breithaupt; Ambrish Patel; Jerry Ramos |  | True | True |  | Mock Transactional Data |  | Data |  | 1.5 2 303.5 304 302  | 3332 | 3332 1.5 Open AP |  |
| 3334 | 1.2.3.4.5 | 1.2.3.4.5 | 5 | Open Purchase Orders(Manual) | 2026-06-22 | 2026-06-23 | 2026-06-22 | 2026-06-23 | 0 | 1 | As Soon As Possible | Future Task | -24.06d | 0d | (Curtis) Todd Breithaupt; Ambrish Patel; Jerry Ramos |  | True | True |  | Mock Transactional Data |  | Data |  | 0.5 1.5 303 304 302.5  | 3330 | 3330 0.5 Inventory |  |
| 3335 | 1.2.3.4.6 | 1.2.3.4.6 | 5 | Open Sales Orders(Manual) | 2026-06-22 | 2026-06-23 | 2026-06-22 | 2026-06-23 | 0 | 1 | As Soon As Possible | Future Task | -24.06d | 0d | (Curtis) Todd Breithaupt; Ambrish Patel; Jerry Ramos |  | True | True |  | Mock Transactional Data | Kim Kolesar | Data |  | 0.5 1.5 303 304 302.5  | 3330 | 3330 0.5 Inventory |  |
| 3336 | 1.2.3.4.7 | 1.2.3.4.7 | 5 | Service Orders(Manual) | 2026-06-22 | 2026-06-22 | 2026-06-22 | 2026-06-22 | 0 | 0.5 | As Soon As Possible | Future Task | -23.56d | 0d | (Curtis) Todd Breithaupt; Ambrish Patel; Jerry Ramos |  | True | True |  | Mock Transactional Data |  | Data |  | 0.5 1 303.5 304 303  | 3330 | 3330 0.5 Inventory |  |
| 3337 | 1.2.3.4.8 | 1.2.3.4.8 | 5 | Open Production Orders(Manual) | 2026-06-22 | 2026-06-23 | 2026-06-22 | 2026-06-23 | 0 | 1 | As Soon As Possible | Future Task | -24.06d | 0d | (Curtis) Todd Breithaupt; Ambrish Patel; Jerry Ramos |  | True | True |  | Mock Transactional Data | Brad Meseck | Data |  | 0.5 1.5 303 304 302.5  | 3330 | 3330 0.5 Inventory |  |
| 2421 | 1.2.3.5 | 1.2.3.5 | 4 | ITC3 Mock Data Loads Complete | 2026-06-23 | 2026-06-23 | 2026-04-21 | 2026-04-21 | 0 | 0 | As Soon As Possible | Future Task | -11791m | 0m | Mark George |  | True | True | True | ITC3 Data Load Tasks QS5 | Manoj Patel | PMO | 931 | 0 0 304 304 304  | 3326 |  | True |
| 2422 | 1.2.4 | 1.2.4 | 3 | UAT Data Load Tasks QS4 | 2026-06-22 | 2026-10-12 | 2025-03-13 | 2026-04-21 | 0 | 80.66 | As Soon As Possible | Future Task | -40.66d | 0d | Jyoti Nain; Manoj Patel; Michelle Connnors; Roy John; Shiva Janga; Vishal Pujari; (Curtis) Todd Breithaupt; Jerry Ramos | True | True | True | True | Data Readiness | Manoj Patel | Data |  |  | 20, 538, 843, 367 |  |  |
| 2423 | 1.2.4.1 | 1.2.4.1 | 4 | PMO Authorization to Start Data Loads | 2026-06-22 | 2026-06-22 | 2026-04-06 | 2026-04-06 | 0 | 0.0020833333333333333 | Start No Later Than | Future Task | -32670m | 0m | Mark George |  | True | True |  | UAT Data Load Tasks QS4 | Manoj Patel | PMO | 24, 252, 662, 274, 927, 500, 0 | 0 0 296.31 296.31 296.31  | 8, 843, 367 |  |  |
| 2898 | 1.2.4.2 | 1.2.4.2 | 4 | Master Data Loads | 2026-09-24 | 2026-10-08 | 2026-09-24 | 2026-10-08 | 0 | 10.56 | As Soon As Possible | Future Task | -90.75d | 0d | Jyoti Nain; Manoj Patel; Michelle Connnors; Roy John; Shiva Janga; Vishal Pujari; (Curtis) Todd Breithaupt; Jerry Ramos | True | True | True |  | UAT Data Load Tasks QS4 | Manoj Patel | Data | 3360 |  | 2423 |  |  |
| 2424 | 1.2.4.2.1 | 1.2.4.2.1 | 5 | RTR_CM02_Profit Center Hierarchy | 2026-09-24 | 2026-09-24 | 2026-04-06 | 2026-04-06 | 0 | 0.75 | As Soon As Possible | Future Task | -89.81d | 0d | COULD NOT BE DETERMINED | True | True | True |  | Master Data Loads | Brian Wagner |  | 24, 572, 459 |  |  |  |  |
| 2425 | 1.2.4.2.1.1 | 1.2.4.2.1.1 | 6 | Manual File Staged and Posted "Ready" | 2026-09-24 | 2026-09-24 | 2026-04-06 | 2026-04-06 | 0 | 0.125 | Start No Earlier Than | Future Task | -718.5h | 0h | Kasey Hughes |  | True | True |  | RTR_CM02_Profit Center Hierarchy |  | Finance | 2426 | 0 0.13 296.31 296.44 296.31  | 2423 | 2423 0.0020833333333333333 PMO Authorization to Start Data Loads |  |
| 2426 | 1.2.4.2.1.2 | 1.2.4.2.1.2 | 6 | Load | 2026-09-24 | 2026-09-24 | 2026-04-06 | 2026-04-06 | 0 | 0.25 | As Soon As Possible | Future Task | -718.5h | 0h | Kasey Hughes |  | True | True |  | RTR_CM02_Profit Center Hierarchy |  | Finance | 2427 | 0.13 0.38 296.44 296.69 296.31  | 2425 | 2425 0.12708333333333333 Manual File Staged and Posted "Ready" |  |
| 2427 | 1.2.4.2.1.3 | 1.2.4.2.1.3 | 6 | Post Load Validation | 2026-09-24 | 2026-09-24 | 2026-04-06 | 2026-04-06 | 0 | 0.375 | As Soon As Possible | Future Task | -718.5h | 0h | Kasey Hughes |  | True | True |  | RTR_CM02_Profit Center Hierarchy | Brian Wagner | Finance | 24, 292, 442 | 0.38 0.75 296.69 297.06 296.31  | 2426 | 2426 0.3770833333333333 Load |  |
| 2481 | 1.2.4.2.10 | 1.2.4.2.10 | 5 | RTR_CM08_Exchange_Rates | 2026-09-25 | 2026-09-28 | 2026-04-09 | 2026-04-10 | 0 | 1.13 | As Soon As Possible | Future Task | -82.31d | 0d | COULD NOT BE DETERMINED | True | True | True |  | Master Data Loads |  |  |  |  |  |  |  |
| 2482 | 1.2.4.2.10.1 | 1.2.4.2.10.1 | 6 | Load File Staged and Posted "Ready" | 2026-09-25 | 2026-09-25 | 2026-04-09 | 2026-04-09 | 0 | 0.125 | As Soon As Possible | Future Task | -658.5h | 0h | Kasey Hughes |  | True | True |  | RTR_CM08_Exchange_Rates |  | Finance | 2483 | 1 1.13 302.88 303 301.88  | 2479 | 2479 1 Load |  |
| 2483 | 1.2.4.2.10.2 | 1.2.4.2.10.2 | 6 | Pre Load Validation | 2026-09-25 | 2026-09-25 | 2026-04-09 | 2026-04-10 | 0 | 0.25 | As Soon As Possible | Future Task | -658.5h | 0h | Kasey Hughes |  | True | True |  | RTR_CM08_Exchange_Rates | Brian Wagner | Finance | 2484 | 1.13 1.38 303 303.25 301.88  | 2482 | 2482 1.125 Load File Staged and Posted "Ready" |  |
| 2484 | 1.2.4.2.10.3 | 1.2.4.2.10.3 | 6 | Simulate Load | 2026-09-25 | 2026-09-25 | 2026-04-10 | 2026-04-10 | 0 | 0.125 | As Soon As Possible | Future Task | -658.5h | 0h | Data Migration Team |  | True | True |  | RTR_CM08_Exchange_Rates |  | Data | 2485 | 1.38 1.5 303.25 303.38 301.88  | 2483 | 2483 1.375 Pre Load Validation |  |
| 2485 | 1.2.4.2.10.4 | 1.2.4.2.10.4 | 6 | Error and Defect Mitigation | 2026-09-25 | 2026-09-25 | 2026-04-10 | 2026-04-10 | 0 | 0.25 | As Soon As Possible | Future Task | -658.5h | 0h | Kasey Hughes |  | True | True |  | RTR_CM08_Exchange_Rates | Brian Wagner | Finance | 2486 | 1.5 1.75 303.38 303.63 301.88  | 2484 | 2484 1.5 Simulate Load |  |

| uid | wbs | outlineNumber | outlineLevel | name | start | finish | baselineStart | baselineFinish | percentComplete | durationDays | constraintType | status | totalSlackRaw | freeSlackRaw | resourceNames | summary | criticalFlag | active | summaryName | businessValidationOwner | workstream | successors | cpm | predecessors | drivers |
| --- | --- | --- | --- | --- | --- | --- | --- | --- | --- | --- | --- | --- | --- | --- | --- | --- | --- | --- | --- | --- | --- | --- | --- | --- | --- |
| 2486 | 1.2.4.2.10.5 | 1.2.4.2.10.5 | 6 | Load | 2026-09-25 | 2026-09-25 | 2026-04-10 | 2026-04-10 | 0 | 0.125 | As Soon As Possible | Future Task | -658.5h | 0h | Data Migration Team |  | True | True | RTR_CM08_Exchange_Rates |  | Data | 2487 | 1.75 1.88 303.63 303.75 301.88  | 2485 | 2485 1.75 Error and Defect Mitigation |
| 2487 | 1.2.4.2.10.6 | 1.2.4.2.10.6 | 6 | Post Load Validation | 2026-09-25 | 2026-09-28 | 2026-04-10 | 2026-04-10 | 0 | 0.25 | As Soon As Possible | Future Task | -658.5h | 0h | Kasey Hughes |  | True | True | RTR_CM08_Exchange_Rates | Brian Wagner | Finance |  | 1.88 2.13 303.75 304 301.88  | 2486 | 2486 1.875 Load |
| 2488 | 1.2.4.2.11 | 1.2.4.2.11 | 5 | RTR_CM14_Cost Element_Group | 2026-09-29 | 2026-10-05 | 2026-04-08 | 2026-04-15 | 0 | 4.44 | As Soon As Possible | Future Task | -88.06d | 0d | Kasey Hughes | True | True | True | Master Data Loads | Brian Wagner | Finance |  |  |  |  |
| 2489 | 1.2.4.2.11.1 | 1.2.4.2.11.1 | 6 | Manual File Staged and Posted "Ready" | 2026-09-29 | 2026-09-29 | 2026-04-08 | 2026-04-14 | 0 | 0.0625 | Finish No Earlier Than | Future Task | -42270m | 0m | Kasey Hughes |  | True | True | RTR_CM14_Cost Element_Group |  | Finance | 2490 | 3.25 3.31 299.56 299.63 296.31  | 2438 | 2438 3.252083333333333 Post Load Validation |
| 2490 | 1.2.4.2.11.2 | 1.2.4.2.11.2 | 6 | Load | 2026-09-29 | 2026-10-05 | 2026-04-15 | 2026-04-15 | 0 | 4 | Finish No Earlier Than | Future Task | -704.5h | 0h | Kasey Hughes |  | True | True | RTR_CM14_Cost Element_Group |  | Finance | 2491 | 3.31 7.31 299.63 303.63 296.31  | 2489 | 2489 3.314583333333333 Manual File Staged and Posted "Ready" |
| 2491 | 1.2.4.2.11.3 | 1.2.4.2.11.3 | 6 | Post Load Validation | 2026-10-05 | 2026-10-05 | 2026-04-15 | 2026-04-15 | 0 | 0.375 | Start No Earlier Than | Future Task | -704.5h | 0h | Kasey Hughes |  | True | True | RTR_CM14_Cost Element_Group | Brian Wagner | Finance |  | 7.31 7.69 303.63 304 296.31  | 2490 | 2490 7.314583333333333 Load |
| 2492 | 1.2.4.2.12 | 1.2.4.2.12 | 5 | OTC_CM19_Customer_Master - Bill-To | 2026-09-24 | 2026-09-24 | 2025-04-16 | 2025-04-16 | 0 | 0.25 | As Soon As Possible | Future Task | -643.5h | 0h | Anitha Jothi; Kim Kolesar; Michele Colombo; Michiko Tomihari; Ric Haraida; Rod Santos; Shibu Mathew; Narendra Kallam; Keith Riley; James Manohar |  | True | True | Master Data Loads | Kim Kolesar | OTC |  | 0 0.25 303.75 304 303.75  |  |  |
| 2493 | 1.2.4.2.13 | 1.2.4.2.13 | 5 | OTC_CM19_Customer_Master - Ship-To | 2026-09-29 | 2026-09-30 | 2026-04-08 | 2026-04-13 | 0 | 1.5 | As Soon As Possible | Future Task | -89.56d | 0d | Anitha Jothi; Kim Kolesar; Michele Colombo; Michiko Tomihari; Ric Haraida; Rod Santos; Shibu Mathew; Narendra Kallam; Keith Riley; James Manohar | True | True | True | Master Data Loads | Kim Kolesar | OTC |  |  |  |  |
| 2494 | 1.2.4.2.13.1 | 1.2.4.2.13.1 | 6 | Load File Staged and Posted "Ready" | 2026-09-29 | 2026-09-29 | 2026-04-08 | 2026-04-08 | 0 | 0.0625 | As Soon As Possible | Future Task | -42990m | 0m | Ric Haraida |  | True | True | OTC_CM19_Customer_Master - Ship-To |  | OTC | 2495 | 3.25 3.31 302.5 302.56 299.25  | 2438 | 2438 3.252083333333333 Post Load Validation |
| 2495 | 1.2.4.2.13.2 | 1.2.4.2.13.2 | 6 | Pre Load Validation | 2026-09-29 | 2026-09-29 | 2026-04-08 | 2026-04-08 | 0 | 0.0625 | As Soon As Possible | Future Task | -42990m | 0m | Ric Haraida |  | True | True | OTC_CM19_Customer_Master - Ship-To | Kim Kolesar | OTC | 249, 925, 42, 496 | 3.31 3.38 302.56 302.63 299.25  | 2494 | 2494 3.314583333333333 Load File Staged and Posted "Ready" |
| 2496 | 1.2.4.2.13.3 | 1.2.4.2.13.3 | 6 | Open client for BP number range update | 2026-09-29 | 2026-09-29 | 2026-04-08 | 2026-04-09 | 0 | 0.0625 | As Soon As Possible | Future Task | -40275m | 0m | Basis |  | True | True | OTC_CM19_Customer_Master - Ship-To |  | Basis | 2497 | 3.38 3.44 303.84 303.91 300.47  | 2495 | 2495 3.377083333333333 Pre Load Validation |
| 2497 | 1.2.4.2.13.4 | 1.2.4.2.13.4 | 6 | Update number range BP02 from Internal to External | 2026-09-29 | 2026-09-29 | 2026-04-09 | 2026-04-10 | 0 | 0.0625 | As Soon As Possible | Future Task | -40275m | 0m | Ric Haraida |  | True | True | OTC_CM19_Customer_Master - Ship-To |  | OTC | 2498 | 3.44 3.5 303.91 303.97 300.47  | 2496 | 2496 3.439583333333333 Open client for BP number range update |
| 2498 | 1.2.4.2.13.5 | 1.2.4.2.13.5 | 6 | Close Client | 2026-09-29 | 2026-09-29 | 2026-04-10 | 2026-04-13 | 0 | 0.03125 | As Soon As Possible | Future Task | -40275m | 0m | Basis |  | True | True | OTC_CM19_Customer_Master - Ship-To |  | Basis |  | 3.5 3.53 303.97 304 300.47  | 2497 | 2497 3.502083333333333 Update number range BP02 from Internal to External |
| 2499 | 1.2.4.2.13.6 | 1.2.4.2.13.6 | 6 | Simulate Load | 2026-09-29 | 2026-09-29 | 2026-04-08 | 2026-04-09 | 0 | 0.125 | As Soon As Possible | Future Task | -716.5h | 0h | Data Migration Team |  | True | True | OTC_CM19_Customer_Master - Ship-To |  | Data | 250, 25, 62, 510 | 3.38 3.5 302.63 302.75 299.25  | 2495 | 2495 3.377083333333333 Pre Load Validation |
| 2500 | 1.2.4.2.13.7 | 1.2.4.2.13.7 | 6 | Error and Defect Mitigation | 2026-09-29 | 2026-09-30 | 2026-04-09 | 2026-04-09 | 0 | 0.5 | As Soon As Possible | Future Task | -681h | 0h | Ric Haraida |  | True | True | OTC_CM19_Customer_Master - Ship-To | Kim Kolesar | OTC | 2501 | 3.5 4 302.75 303.25 299.25  | 2499 | 2499 3.502083333333333 Simulate Load |
| 2501 | 1.2.4.2.13.8 | 1.2.4.2.13.8 | 6 | Load | 2026-09-30 | 2026-09-30 | 2026-04-09 | 2026-04-09 | 0 | 0.375 | As Soon As Possible | Future Task | -681h | 0h | Data Migration Team |  | True | True | OTC_CM19_Customer_Master - Ship-To |  | Data | 2502 | 4 4.38 303.25 303.63 299.25  | 2500 | 2500 4.002083333333333 Error and Defect Mitigation |
| 2502 | 1.2.4.2.13.9 | 1.2.4.2.13.9 | 6 | Post Load Validation | 2026-09-30 | 2026-09-30 | 2026-04-09 | 2026-04-10 | 0 | 0.375 | As Soon As Possible | Future Task | -681h | 0h | Ric Haraida |  | True | True | OTC_CM19_Customer_Master - Ship-To | Kim Kolesar | OTC |  | 4.38 4.75 303.63 304 299.25  | 2501 | 2501 4.377083333333333 Load |
| 2503 | 1.2.4.2.14 | 1.2.4.2.14 | 5 | OTC_CM19_Customer_Master - Sold-To | 2026-09-29 | 2026-10-01 | 2026-04-08 | 2026-04-10 | 0 | 1.63 | As Soon As Possible | Future Task | -89.44d | 0d | Anitha Jothi; Kim Kolesar; Michele Colombo; Michiko Tomihari; Ric Haraida; Rod Santos; Shibu Mathew; Narendra Kallam; Keith Riley; James Manohar | True | True | True | Master Data Loads | Kim Kolesar | OTC |  |  |  |  |
| 2504 | 1.2.4.2.14.1 | 1.2.4.2.14.1 | 6 | Load File Staged and Posted "Ready" | 2026-09-29 | 2026-09-29 | 2026-04-08 | 2026-04-09 | 0 | 0.0625 | As Soon As Possible | Future Task | -40260m | 0m | Ric Haraida |  | True | True | OTC_CM19_Customer_Master - Sold-To |  | OTC | 2505 | 3.38 3.44 303.88 303.94 300.5  | 2495 | 2495 3.377083333333333 Pre Load Validation |
| 2505 | 1.2.4.2.14.2 | 1.2.4.2.14.2 | 6 | Pre Load Validation | 2026-09-29 | 2026-09-29 | 2026-04-09 | 2026-04-09 | 0 | 0.0625 | As Soon As Possible | Future Task | -40260m | 0m | Ric Haraida |  | True | True | OTC_CM19_Customer_Master - Sold-To | Kim Kolesar | OTC |  | 3.44 3.5 303.94 304 300.5  | 2504 | 2504 3.439583333333333 Load File Staged and Posted "Ready" |
| 2506 | 1.2.4.2.14.3 | 1.2.4.2.14.3 | 6 | Simulate Load | 2026-09-30 | 2026-09-30 | 2026-04-09 | 2026-04-09 | 0 | 0.125 | As Soon As Possible | Future Task | -718.5h | 0h | Data Migration Team |  | True | True | OTC_CM19_Customer_Master - Sold-To |  | Data | 2507 | 0 0.13 301.38 301.5 301.38  | 24, 402, 499 |  |
| 2507 | 1.2.4.2.14.4 | 1.2.4.2.14.4 | 6 | Error and Defect Mitigation | 2026-09-30 | 2026-09-30 | 2026-04-09 | 2026-04-09 | 0 | 0.375 | As Soon As Possible | Future Task | -718.5h | 0h | Ric Haraida |  | True | True | OTC_CM19_Customer_Master - Sold-To | Kim Kolesar | OTC | 2508 | 0.13 0.5 301.5 301.88 301.38  | 2506 | 2506 0.125 Simulate Load |
| 2508 | 1.2.4.2.14.5 | 1.2.4.2.14.5 | 6 | Load | 2026-09-30 | 2026-09-30 | 2026-04-09 | 2026-04-10 | 0 | 0.375 | As Soon As Possible | Future Task | -718.5h | 0h | Data Migration Team |  | True | True | OTC_CM19_Customer_Master - Sold-To |  | Data | 25, 92, 514, 252, 125, 200, 0 | 0.5 0.88 301.88 302.25 301.38  | 2507 | 2507 0.5 Error and Defect Mitigation |
| 2509 | 1.2.4.2.14.6 | 1.2.4.2.14.6 | 6 | Post Load Validation | 2026-09-30 | 2026-10-01 | 2026-04-10 | 2026-04-10 | 0 | 0.375 | As Soon As Possible | Future Task | -683h | 0h | Ric Haraida |  | True | True | OTC_CM19_Customer_Master - Sold-To | Kim Kolesar | OTC |  | 0.88 1.25 303.63 304 302.75  | 2508 | 2508 0.875 Load |
| 2510 | 1.2.4.2.14.7 | 1.2.4.2.14.7 | 6 | Open client for BP number range update | 2026-09-29 | 2026-09-29 | 2026-04-09 | 2026-04-09 | 0 | 0.03125 | As Soon As Possible | Future Task | -40305m | 0m | Basis |  | True | True | OTC_CM19_Customer_Master - Sold-To |  | Basis | 2511 | 3.5 3.53 303.91 303.94 300.4  | 2499 | 2499 3.502083333333333 Simulate Load |
| 2511 | 1.2.4.2.14.8 | 1.2.4.2.14.8 | 6 | Update number range BP02 from Internal to External | 2026-09-29 | 2026-09-29 | 2026-04-09 | 2026-04-09 | 0 | 0.03125 | As Soon As Possible | Future Task | -40305m | 0m | Ric Haraida |  | True | True | OTC_CM19_Customer_Master - Sold-To |  | OTC | 2512 | 3.53 3.56 303.94 303.97 300.4  | 2510 | 2510 3.533333333333333 Open client for BP number range update |
| 2512 | 1.2.4.2.14.9 | 1.2.4.2.14.9 | 6 | Close Client | 2026-09-29 | 2026-09-29 | 2026-04-09 | 2026-04-09 | 0 | 0.03125 | As Soon As Possible | Future Task | -40305m | 0m | Basis |  | True | True | OTC_CM19_Customer_Master - Sold-To |  | Basis |  | 3.56 3.6 303.97 304 300.4  | 2511 | 2511 3.564583333333333 Update number range BP02 from Internal to External |
| 2513 | 1.2.4.2.15 | 1.2.4.2.15 | 5 | PTP_CM27_Vendor Master as Customer - FLCU01 | 2026-09-30 | 2026-10-07 | 2026-04-10 | 2026-04-14 | 0 | 4.81 | As Soon As Possible | Future Task | -89.81d | 0d | Muniraju Surappachari; Nevin Varkey; Samuel Houff; Sarasija Ghosh; Surendra Krishna Acharya; Swetha SethumadhavaRao; James Farmer | True | True | True | Master Data Loads | Muniraju Surappachari | PTP |  |  |  |  |
| 2514 | 1.2.4.2.15.1 | 1.2.4.2.15.1 | 6 | Extract File | 2026-09-30 | 2026-09-30 | 2026-04-10 | 2026-04-10 | 0 | 0.125 | As Soon As Possible | Future Task | -718.5h | 0h | Data Migration Team |  | True | True | PTP_CM27_Vendor Master as Customer - FLCU01 |  | Data | 2515 | 0.88 1 303.63 303.75 302.75  | 2508 | 2508 0.875 Load |
| 2515 | 1.2.4.2.15.2 | 1.2.4.2.15.2 | 6 | Pre Load Validation | 2026-10-01 | 2026-10-01 | 2026-04-10 | 2026-04-10 | 0 | 0.25 | As Soon As Possible | Future Task | -718.5h | 0h | Nevin Varkey |  | True | True | PTP_CM27_Vendor Master as Customer - FLCU01 | Sam Houff | PTP | 2516 | 1 1.25 303.75 304 302.75  | 2514 | 2514 1 Extract File |
| 2516 | 1.2.4.2.15.3 | 1.2.4.2.15.3 | 6 | Simulate Load | 2026-10-01 | 2026-10-02 | 2026-04-10 | 2026-04-13 | 0 | 1.40625 | Finish No Earlier Than | Future Task | -718.5h | 0h | Data Migration Team |  | True | True | PTP_CM27_Vendor Master as Customer - FLCU01 |  | Data | 2517 | 0.91 2.31 301.97 303.38 301.06  | 24, 802, 515 | 802 0.90625 Load File Staged and Posted "Ready" |
| 2517 | 1.2.4.2.15.4 | 1.2.4.2.15.4 | 6 | Error and Defect Mitigation | 2026-10-02 | 2026-10-06 | 2026-04-10 | 2026-04-14 | 0 | 0.25 | As Soon As Possible | Future Task | -718.5h | 0h | Nevin Varkey |  | True | True | PTP_CM27_Vendor Master as Customer - FLCU01 | Sam Houff | PTP | 2518 | 2.31 2.56 303.38 303.63 301.06  | 2516 | 2516 2.3125 Simulate Load |
| 2518 | 1.2.4.2.15.5 | 1.2.4.2.15.5 | 6 | Load | 2026-10-06 | 2026-10-07 | 2026-04-10 | 2026-04-14 | 0 | 0.125 | As Soon As Possible | Future Task | -718.5h | 0h | Data Migration Team |  | True | True | PTP_CM27_Vendor Master as Customer - FLCU01 |  | Data | 2519 | 2.56 2.69 303.63 303.75 301.06  | 2517 | 2517 2.5625 Error and Defect Mitigation |
| 2519 | 1.2.4.2.15.6 | 1.2.4.2.15.6 | 6 | Post Load Validation | 2026-10-07 | 2026-10-07 | 2026-04-14 | 2026-04-14 | 0 | 0.25 | As Soon As Possible | Future Task | -718.5h | 0h | Nevin Varkey |  | True | True | PTP_CM27_Vendor Master as Customer - FLCU01 | Sam Houff | PTP |  | 2.69 2.94 303.75 304 301.06  | 2518 | 2518 2.6875 Load |
| 2520 | 1.2.4.2.16 | 1.2.4.2.16 | 5 | OTC_CM23_Customer_Hierarchy | 2026-09-30 | 2026-10-01 | 2026-04-10 | 2026-04-10 | 0 | 0.69 | As Soon As Possible | Future Task | -85.69d | 0d | Anitha Jothi; Kim Kolesar; Michele Colombo; Michiko Tomihari; Ric Haraida; Rod Santos; Shibu Mathew; Narendra Kallam; Keith Riley; James Manohar | True | True | True | Master Data Loads | Kim Kolesar | OTC |  |  |  |  |
| 2521 | 1.2.4.2.16.1 | 1.2.4.2.16.1 | 6 | Manual File Staged and Posted "Ready" | 2026-09-30 | 2026-09-30 | 2026-04-10 | 2026-04-10 | 0 | 0.0625 | Start No Earlier Than | Future Task | -41130m | 0m | Ric Haraida |  | True | True | OTC_CM23_Customer_Hierarchy | Kim Kolesar | OTC | 2522 | 0.88 0.94 303.31 303.38 302.44  | 2508 | 2508 0.875 Load |
| 2522 | 1.2.4.2.16.2 | 1.2.4.2.16.2 | 6 | Load | 2026-09-30 | 2026-10-01 | 2026-04-10 | 2026-04-10 | 0 | 0.25 | Start No Earlier Than | Future Task | -685.5h | 0h | Ric Haraida |  | True | True | OTC_CM23_Customer_Hierarchy |  | OTC | 2523 | 0.94 1.19 303.38 303.63 302.44  | 2521 | 2521 0.9375 Manual File Staged and Posted "Ready" |
| 2523 | 1.2.4.2.16.3 | 1.2.4.2.16.3 | 6 | Post Load Validation | 2026-10-01 | 2026-10-01 | 2026-04-10 | 2026-04-10 | 0 | 0.375 | As Soon As Possible | Future Task | -685.5h | 0h | Ric Haraida |  | True | True | OTC_CM23_Customer_Hierarchy | Kim Kolesar | OTC |  | 1.19 1.56 303.63 304 302.44  | 2522 | 2522 1.1875 Load |
| 2524 | 1.2.4.2.17 | 1.2.4.2.17 | 5 | PTP_CM27_Vendor Master - Z001 - External Sales Rep | 2026-09-30 | 2026-10-06 | 2026-04-10 | 2026-04-13 | 0 | 3.38 | As Soon As Possible | Future Task | -88.38d | 0d | Muniraju Surappachari; Nevin Varkey; Samuel Houff; Sarasija Ghosh; Surendra Krishna Acharya; Swetha SethumadhavaRao; James Farmer | True | True | True | Master Data Loads | Kim Kolesar | PTP |  |  |  |  |
| 2525 | 1.2.4.2.17.1 | 1.2.4.2.17.1 | 6 | Extract File | 2026-09-30 | 2026-09-30 | 2026-04-10 | 2026-04-10 | 0 | 0.125 | As Soon As Possible | Future Task | -707h | 0h | Data Migration Team |  | True | True | PTP_CM27_Vendor Master - Z001 - External Sales Rep |  | Data | 25, 262, 539 | 0.88 1 302.97 303.09 302.09  | 2508 | 2508 0.875 Load |
| 2526 | 1.2.4.2.17.2 | 1.2.4.2.17.2 | 6 | Pre Load Validation | 2026-10-01 | 2026-10-01 | 2026-04-10 | 2026-04-10 | 0 | 0.25 | As Soon As Possible | Future Task | -707h | 0h | Nevin Varkey |  | True | True | PTP_CM27_Vendor Master - Z001 - External Sales Rep | Sam Houff | PTP | 2527 | 1 1.25 303.75 304 302.75  | 2525 | 2525 1 Extract File |
| 2527 | 1.2.4.2.17.3 | 1.2.4.2.17.3 | 6 | Simulate Load | 2026-10-01 | 2026-10-01 | 2026-04-10 | 2026-04-10 | 0 | 0.125 | As Soon As Possible | Future Task | -707h | 0h | Data Migration Team |  | True | True | PTP_CM27_Vendor Master - Z001 - External Sales Rep |  | Data | 2528 | 0.91 1.03 303.25 303.38 302.34  | 24, 802, 526 | 802 0.90625 Load File Staged and Posted "Ready" |
| 2528 | 1.2.4.2.17.4 | 1.2.4.2.17.4 | 6 | Error and Defect Mitigation | 2026-10-01 | 2026-10-01 | 2026-04-10 | 2026-04-10 | 0 | 0.25 | As Soon As Possible | Future Task | -707h | 0h | Nevin Varkey |  | True | True | PTP_CM27_Vendor Master - Z001 - External Sales Rep | Sam Houff | PTP | 2529 | 1.03 1.28 303.38 303.63 302.34  | 2527 | 2527 1.03125 Simulate Load |
| 2529 | 1.2.4.2.17.5 | 1.2.4.2.17.5 | 6 | Load | 2026-10-01 | 2026-10-05 | 2026-04-10 | 2026-04-13 | 0 | 0.125 | As Soon As Possible | Future Task | -707h | 0h | Data Migration Team |  | True | True | PTP_CM27_Vendor Master - Z001 - External Sales Rep |  | Data | 2530 | 1.28 1.41 303.63 303.75 302.34  | 2528 | 2528 1.28125 Error and Defect Mitigation |
| 2530 | 1.2.4.2.17.6 | 1.2.4.2.17.6 | 6 | Post Load Validation | 2026-10-06 | 2026-10-06 | 2026-04-13 | 2026-04-13 | 0 | 0.25 | As Soon As Possible | Future Task | -707h | 0h | Nevin Varkey |  | True | True | PTP_CM27_Vendor Master - Z001 - External Sales Rep | Sam Houff | PTP |  | 1.41 1.66 303.75 304 302.34  | 2529 | 2529 1.40625 Load |
| 2531 | 1.2.4.2.18 | 1.2.4.2.18 | 5 | RTR_CM10_Credit_Management_Role | 2026-09-30 | 2026-10-02 | 2026-04-10 | 2026-04-13 | 0 | 1.84 | As Soon As Possible | Future Task | -87.59d | 0d | COULD NOT BE DETERMINED | True | True | True | Master Data Loads | Manjunatha Umesha |  |  |  |  |  |
| 2532 | 1.2.4.2.18.1 | 1.2.4.2.18.1 | 6 | Load File Staged and Posted "Ready" | 2026-09-30 | 2026-09-30 | 2026-04-10 | 2026-04-10 | 0 | 0.0625 | As Soon As Possible | Future Task | -42045m | 0m | Kasey Hughes |  | True | True | RTR_CM10_Credit_Management_Role |  | Finance | 2533 | 0.88 0.94 302.25 302.31 301.38  | 2508 | 2508 0.875 Load |
| 2533 | 1.2.4.2.18.2 | 1.2.4.2.18.2 | 6 | Pre Load Validation | 2026-09-30 | 2026-09-30 | 2026-04-10 | 2026-04-10 | 0 | 0.0625 | As Soon As Possible | Future Task | -42045m | 0m | Kasey Hughes |  | True | True | RTR_CM10_Credit_Management_Role | Brian Wagner | Finance | 2534 | 0.94 1 302.31 302.38 301.38  | 2532 | 2532 0.9375 Load File Staged and Posted "Ready" |
| 2534 | 1.2.4.2.18.3 | 1.2.4.2.18.3 | 6 | Simulate Load | 2026-10-01 | 2026-10-01 | 2026-04-10 | 2026-04-10 | 0 | 0.125 | As Soon As Possible | Future Task | -700.75h | 0h | Data Migration Team |  | True | True | RTR_CM10_Credit_Management_Role |  | Data | 2535 | 1 1.13 302.38 302.5 301.38  | 2533 | 2533 1 Pre Load Validation |
| 2535 | 1.2.4.2.18.4 | 1.2.4.2.18.4 | 6 | Error and Defect Mitigation | 2026-10-01 | 2026-10-01 | 2026-04-10 | 2026-04-10 | 0 | 0.25 | As Soon As Possible | Future Task | -700.75h | 0h | Kasey Hughes |  | True | True | RTR_CM10_Credit_Management_Role | Brian Wagner | Finance | 25, 362, 553 | 1.13 1.38 302.5 302.75 301.38  | 2534 | 2534 1.125 Simulate Load |
| 2536 | 1.2.4.2.18.5 | 1.2.4.2.18.5 | 6 | Load | 2026-10-01 | 2026-10-01 | 2026-04-10 | 2026-04-10 | 0 | 0.25 | As Soon As Possible | Future Task | -700.75h | 0h | Data Migration Team |  | True | True | RTR_CM10_Credit_Management_Role |  | Data | 2537 | 1.38 1.63 302.75 303 301.38  | 2535 | 2535 1.375 Error and Defect Mitigation |
| 2537 | 1.2.4.2.18.6 | 1.2.4.2.18.6 | 6 | Post Load Validation | 2026-10-01 | 2026-10-02 | 2026-04-10 | 2026-04-13 | 0 | 0.375 | As Soon As Possible | Future Task | -700.75h | 0h | Kasey Hughes |  | True | True | RTR_CM10_Credit_Management_Role | Brian Wagner | Finance | 25, 542, 719 | 1.63 2 303 303.38 301.38  | 2536 | 2536 1.625 Load |
| 2538 | 1.2.4.2.19 | 1.2.4.2.19 | 5 | PTP_CM27_Vendor Master | 2026-09-24 | 2026-10-02 | 2026-04-10 | 2026-04-15 | 0 | 6.28 | As Soon As Possible | Future Task | -90.75d | 0d | Muniraju Surappachari; Nevin Varkey; Samuel Houff; Sarasija Ghosh; Surendra Krishna Acharya; Swetha SethumadhavaRao; James Farmer | True | True | True | Master Data Loads | Muniraju Surappachari | PTP |  |  |  |  |
| 2539 | 1.2.4.2.19.1 | 1.2.4.2.19.1 | 6 | Extract File | 2026-10-01 | 2026-10-01 | 2026-04-10 | 2026-04-10 | 0 | 0.125 | As Soon As Possible | Future Task | -691.75h | 0h | Data Migration Team |  | True | True | PTP_CM27_Vendor Master |  | Data | 2540 | 1 1.13 303.09 303.22 302.09  | 2525 | 2525 1 Extract File |
| 2540 | 1.2.4.2.19.2 | 1.2.4.2.19.2 | 6 | Pre Load Validation | 2026-10-01 | 2026-10-01 | 2026-04-10 | 2026-04-10 | 0 | 0.25 | As Soon As Possible | Future Task | -691.75h | 0h | Nevin Varkey |  | True | True | PTP_CM27_Vendor Master | Sam Houff | PTP | 2541 | 1.13 1.38 303.22 303.47 302.09  | 2539 | 2539 1.125 Extract File |
| 2541 | 1.2.4.2.19.3 | 1.2.4.2.19.3 | 6 | Simulate Load | 2026-10-01 | 2026-10-01 | 2026-04-10 | 2026-04-14 | 0 | 0.28125 | Finish No Earlier Than | Future Task | -691.75h | 0h | Data Migration Team |  | True | True | PTP_CM27_Vendor Master |  | Data | 2542 | 1.38 1.66 303.47 303.75 302.09  | 2540 | 2540 1.375 Pre Load Validation |
| 2542 | 1.2.4.2.19.4 | 1.2.4.2.19.4 | 6 | Error and Defect Mitigation | 2026-10-01 | 2026-10-02 | 2026-04-14 | 2026-04-14 | 0 | 0.25 | As Soon As Possible | Future Task | -691.75h | 0h | Nevin Varkey |  | True | True | PTP_CM27_Vendor Master | Sam Houff | PTP |  | 1.66 1.91 303.75 304 302.09  | 2541 | 2541 1.65625 Simulate Load |
| 2543 | 1.2.4.2.19.5 | 1.2.4.2.19.5 | 6 | Load | 2026-09-24 | 2026-09-24 | 2026-04-14 | 2026-04-14 | 0 | 0.125 | As Soon As Possible | Future Task | -726h | 0h | Data Migration Team |  | True | True | PTP_CM27_Vendor Master |  | Data | 2544 | 0 0.13 295.09 295.22 295.09  |  |  |
| 2544 | 1.2.4.2.19.6 | 1.2.4.2.19.6 | 6 | Post Load Validation | 2026-09-24 | 2026-09-24 | 2026-04-15 | 2026-04-15 | 0 | 0.25 | As Soon As Possible | Future Task | -726h | 0h | Nevin Varkey |  | True | True | PTP_CM27_Vendor Master | Sam Houff | PTP | 255, 725, 722, 596 | 0.13 0.38 295.22 295.47 295.09  | 2543 | 2543 0.125 Load |
| 2428 | 1.2.4.2.2 | 1.2.4.2.2 | 5 | RTR_CM03_Cost Center Hierarchy | 2026-09-24 | 2026-09-25 | 2026-04-06 | 2026-04-07 | 0 | 0.75 | As Soon As Possible | Future Task | -89.81d | 0d | COULD NOT BE DETERMINED | True | True | True | Master Data Loads | Brian Wagner |  | 24, 572, 459 |  |  |  |
| 2429 | 1.2.4.2.2.1 | 1.2.4.2.2.1 | 6 | Manual File Staged and Posted "Ready" | 2026-09-24 | 2026-09-24 | 2026-04-06 | 2026-04-06 | 0 | 0.125 | Start No Earlier Than | Future Task | -718.5h | 0h | Kasey Hughes |  | True | True | RTR_CM03_Cost Center Hierarchy |  | Finance | 2430 | 0.75 0.88 297.06 297.19 296.31  | 2427 | 2427 0.7520833333333333 Post Load Validation |
| 2430 | 1.2.4.2.2.2 | 1.2.4.2.2.2 | 6 | Load | 2026-09-24 | 2026-09-25 | 2026-04-06 | 2026-04-07 | 0 | 0.25 | As Soon As Possible | Future Task | -718.5h | 0h | Kasey Hughes |  | True | True | RTR_CM03_Cost Center Hierarchy |  | Finance | 2431 | 0.88 1.13 297.19 297.44 296.31  | 2429 | 2429 0.8770833333333333 Manual File Staged and Posted "Ready" |
| 2431 | 1.2.4.2.2.3 | 1.2.4.2.2.3 | 6 | Post Load Validation | 2026-09-25 | 2026-09-25 | 2026-04-07 | 2026-04-07 | 0 | 0.375 | As Soon As Possible | Future Task | -718.5h | 0h | Kasey Hughes |  | True | True | RTR_CM03_Cost Center Hierarchy | Brian Wagner | Finance | 24, 332, 468 | 1.13 1.5 297.44 297.81 296.31  | 2430 | 2430 1.1270833333333332 Load |
| 2545 | 1.2.4.2.20 | 1.2.4.2.20 | 5 | PTP_CM27_Vendor Master - Mass Maintenance - LFA1-WERKR | 2026-09-24 | 2026-09-24 | 2026-04-10 | 2026-04-15 | 0 | 0.88 | As Soon As Possible | Future Task | -81.69d | 0d | Muniraju Surappachari; Nevin Varkey; Samuel Houff; Sarasija Ghosh; Surendra Krishna Acharya; Swetha SethumadhavaRao; James Farmer | True | True | True | Master Data Loads | Muniraju Surappachari | PTP |  |  |  |  |
| 2546 | 1.2.4.2.20.1 | 1.2.4.2.20.1 | 6 | Extract File(Will Extract from LFA1) | 2026-09-24 | 2026-09-24 | 2026-04-10 | 2026-04-10 | 0 | 0.125 | Start No Earlier Than | Future Task | -653.5h | 0h | Nevin Varkey |  | True | True | PTP_CM27_Vendor Master - Mass Maintenance - LFA1-WERKR |  | PTP | 25, 472, 571 | 0 0.13 302.5 302.63 302.5  |  |  |
| 2547 | 1.2.4.2.20.2 | 1.2.4.2.20.2 | 6 | Pre Load Validation | 2026-09-24 | 2026-09-24 | 2026-04-10 | 2026-04-10 | 0 | 0.25 | As Soon As Possible | Future Task | -653.5h | 0h | Nevin Varkey |  | True | True | PTP_CM27_Vendor Master - Mass Maintenance - LFA1-WERKR | Sam Houff | PTP | 2548 | 0.13 0.38 302.63 302.88 302.5  | 2546 | 2546 0.125 Extract File(Will Extract from LFA1) |
| 2548 | 1.2.4.2.20.3 | 1.2.4.2.20.3 | 6 | Simulate Load/ Not Needed | 2026-09-24 | 2026-09-24 | 2026-04-10 | 2026-04-10 | 0 | 0.125 | As Soon As Possible | Future Task | -653.5h | 0h | Nevin Varkey |  | True | True | PTP_CM27_Vendor Master - Mass Maintenance - LFA1-WERKR |  | PTP | 25, 492, 550 | 0.38 0.5 302.88 303 302.5  | 2547 | 2547 0.375 Pre Load Validation |
| 2549 | 1.2.4.2.20.4 | 1.2.4.2.20.4 | 6 | Error and Defect Mitigation | 2026-09-24 | 2026-09-24 | 2026-04-10 | 2026-04-13 | 0 | 0.25 | As Soon As Possible | Future Task | -647.5h | 0h | Nevin Varkey |  | True | True | PTP_CM27_Vendor Master - Mass Maintenance - LFA1-WERKR | Sam Houff | PTP |  | 0.5 0.75 303.75 304 303.25  | 2548 | 2548 0.5 Simulate Load/ Not Needed |
| 2550 | 1.2.4.2.20.5 | 1.2.4.2.20.5 | 6 | Load | 2026-09-24 | 2026-09-24 | 2026-04-15 | 2026-04-15 | 0 | 0.125 | As Soon As Possible | Future Task | -653.5h | 0h | Nevin Varkkey |  | True | True | PTP_CM27_Vendor Master - Mass Maintenance - LFA1-WERKR |  | PTP | 2551 | 0.5 0.63 303 303.13 302.5  | 2548 | 2548 0.5 Simulate Load/ Not Needed |
| 2551 | 1.2.4.2.20.6 | 1.2.4.2.20.6 | 6 | Post Load Validation | 2026-09-24 | 2026-09-24 | 2026-04-15 | 2026-04-15 | 0 | 0.25 | As Soon As Possible | Future Task | -653.5h | 0h | Nevin Varkey |  | True | True | PTP_CM27_Vendor Master - Mass Maintenance - LFA1-WERKR | Sam Houff | PTP | 2746 | 0.63 0.88 303.13 303.38 302.5  | 2550 | 2550 0.625 Load |

| uid | wbs | outlineNumber | outlineLevel | name | start | finish | baselineStart | baselineFinish | percentComplete | durationDays | constraintType | status | totalSlackRaw | freeSlackRaw | resourceNames | summary | criticalFlag | active | summaryName | businessValidationOwner | workstream | successors | cpm | predecessors | drivers |
| --- | --- | --- | --- | --- | --- | --- | --- | --- | --- | --- | --- | --- | --- | --- | --- | --- | --- | --- | --- | --- | --- | --- | --- | --- | --- |
| 2552 | 1.2.4.2.21 | 1.2.4.2.21 | 5 | RTR_****_Credit Hierarchy | 2026-10-01 | 2026-10-05 | 2026-04-10 | 2026-04-13 | 0 | 1.91 | As Soon As Possible | Future Task | -87.47d | 0d | COULD NOT BE DETERMINED | True | True | True | Master Data Loads | Brian Wagner |  |  |  |  |  |
| 2553 | 1.2.4.2.21.1 | 1.2.4.2.21.1 | 6 | Manual File Staged and Posted "Ready" | 2026-10-01 | 2026-10-01 | 2026-04-10 | 2026-04-10 | 0 | 0.0625 | Start No Earlier Than | Future Task | -41100m | 0m | Kasey Hughes |  | True | True | RTR_****_Credit Hierarchy | Brian Wagner | Finance |  | 1.38 1.44 303.94 304 302.56  | 2535 | 2535 1.375 Error and Defect Mitigation |
| 2554 | 1.2.4.2.21.2 | 1.2.4.2.21.2 | 6 | Load | 2026-10-02 | 2026-10-02 | 2026-04-13 | 2026-04-13 | 0 | 0.25 | As Soon As Possible | Future Task | -699.75h | 0h | Kasey Hughes |  | True | True | RTR_****_Credit Hierarchy |  | Finance | 2555 | 2 2.25 303.38 303.63 301.38  | 2537 | 2537 2 Post Load Validation |
| 2555 | 1.2.4.2.21.3 | 1.2.4.2.21.3 | 6 | Post Load Validation | 2026-10-02 | 2026-10-05 | 2026-04-13 | 2026-04-13 | 0 | 0.375 | As Soon As Possible | Future Task | -699.75h | 0h | Kasey Hughes |  | True | True | RTR_****_Credit Hierarchy | Brian Wagner | Finance |  | 2.25 2.63 303.63 304 301.38  | 2554 | 2554 2.25 Load |
| 2556 | 1.2.4.2.22 | 1.2.4.2.22 | 5 | PTP_CM27_BP_Intercompany Supplier | 2026-09-24 | 2026-09-25 | 2026-04-13 | 2026-04-14 | 0 | 1.13 | As Soon As Possible | Future Task | -81.69d | 0d | Muniraju Surappachari; Nevin Varkey; Samuel Houff; Sarasija Ghosh; Surendra Krishna Acharya; Swetha SethumadhavaRao; James Farmer | True | True | True | Master Data Loads | Muniraju Surappachari | PTP |  |  |  |  |
| 2557 | 1.2.4.2.22.1 | 1.2.4.2.22.1 | 6 | Load File Staged and Posted "Ready" | 2026-09-24 | 2026-09-24 | 2026-04-13 | 2026-04-13 | 0 | 0.0625 | As Soon As Possible | Future Task | -39210m | 0m | Nevin Varkey,Ric Haraida |  | True | True | PTP_CM27_BP_Intercompany Supplier |  | PTP | 2558 | 0.38 0.44 302.88 302.94 302.5  | 2544 | 2544 0.375 Post Load Validation |
| 2558 | 1.2.4.2.22.2 | 1.2.4.2.22.2 | 6 | Pre Load Validation | 2026-09-24 | 2026-09-24 | 2026-04-13 | 2026-04-13 | 0 | 0.0625 | As Soon As Possible | Future Task | -39210m | 0m | Nevin Varkey,Ric Haraida |  | True | True | PTP_CM27_BP_Intercompany Supplier | Sam Houff,Kim Kolesar | PTP | 2559 | 0.44 0.5 302.94 303 302.5  | 2557 | 2557 0.4375 Load File Staged and Posted "Ready" |
| 2559 | 1.2.4.2.22.3 | 1.2.4.2.22.3 | 6 | Simulate Load | 2026-09-24 | 2026-09-24 | 2026-04-13 | 2026-04-13 | 0 | 0.125 | As Soon As Possible | Future Task | -653.5h | 0h | Data Migration Team |  | True | True | PTP_CM27_BP_Intercompany Supplier |  | Data | 2560 | 0.5 0.63 303 303.13 302.5  | 2558 | 2558 0.5 Pre Load Validation |
| 2560 | 1.2.4.2.22.4 | 1.2.4.2.22.4 | 6 | Error and Defect Mitigation | 2026-09-24 | 2026-09-24 | 2026-04-13 | 2026-04-13 | 0 | 0.25 | As Soon As Possible | Future Task | -653.5h | 0h | Nevin Varkey,Ric Haraida |  | True | True | PTP_CM27_BP_Intercompany Supplier | Sam Houff,Kim Kolesar | PTP | 2561 | 0.63 0.88 303.13 303.38 302.5  | 2559 | 2559 0.625 Simulate Load |
| 2561 | 1.2.4.2.22.5 | 1.2.4.2.22.5 | 6 | Load | 2026-09-24 | 2026-09-25 | 2026-04-13 | 2026-04-14 | 0 | 0.25 | As Soon As Possible | Future Task | -653.5h | 0h | Data Migration Team |  | True | True | PTP_CM27_BP_Intercompany Supplier |  | Data | 25, 622, 718 | 0.88 1.13 303.38 303.63 302.5  | 2560 | 2560 0.875 Error and Defect Mitigation |
| 2562 | 1.2.4.2.22.6 | 1.2.4.2.22.6 | 6 | Post Load Validation | 2026-09-25 | 2026-09-25 | 2026-04-14 | 2026-04-14 | 0 | 0.375 | As Soon As Possible | Future Task | -653.5h | 0h | Nevin Varkey,Ric Haraida |  | True | True | PTP_CM27_BP_Intercompany Supplier | Sam Houff,Kim Kolesar | PTP |  | 1.13 1.5 303.63 304 302.5  | 2561 | 2561 1.125 Load |
| 2563 | 1.2.4.2.23 | 1.2.4.2.23 | 5 | PTP_CM27_BP_Intercompany Customer | 2026-09-24 | 2026-09-25 | 2026-04-13 | 2026-04-14 | 0 | 1.06 | As Soon As Possible | Future Task | -81.25d | 0d | Muniraju Surappachari; Nevin Varkey; Samuel Houff; Sarasija Ghosh; Surendra Krishna Acharya; Swetha SethumadhavaRao; James Farmer | True | True | True | Master Data Loads | Muniraju Surappachari | PTP |  |  |  |  |
| 2564 | 1.2.4.2.23.1 | 1.2.4.2.23.1 | 6 | Load File Staged and Posted "Ready" | 2026-09-24 | 2026-09-24 | 2026-04-13 | 2026-04-13 | 0 | 0.0625 | As Soon As Possible | Future Task | -38520m | 0m | Nevin Varkey,Ric Haraida |  | True | True | PTP_CM27_BP_Intercompany Customer |  | PTP |  | 0 0.06 303.94 304 303.94  |  |  |
| 2565 | 1.2.4.2.23.2 | 1.2.4.2.23.2 | 6 | Pre Load Validation | 2026-09-24 | 2026-09-24 | 2026-04-13 | 2026-04-13 | 0 | 0.0625 | As Soon As Possible | Future Task | -39000m | 0m | Nevin Varkey,Ric Haraida |  | True | True | PTP_CM27_BP_Intercompany Customer | Sam Houff,Kim Kolesar | PTP | 2566 | 0 0.06 302.94 303 302.94  |  |  |
| 2566 | 1.2.4.2.23.3 | 1.2.4.2.23.3 | 6 | Simulate Load | 2026-09-24 | 2026-09-24 | 2026-04-13 | 2026-04-13 | 0 | 0.125 | As Soon As Possible | Future Task | -650h | 0h | Data Migration Team |  | True | True | PTP_CM27_BP_Intercompany Customer |  | Data | 2567 | 0.06 0.19 303 303.13 302.94  | 2565 | 2565 0.0625 Pre Load Validation |
| 2567 | 1.2.4.2.23.4 | 1.2.4.2.23.4 | 6 | Error and Defect Mitigation | 2026-09-24 | 2026-09-24 | 2026-04-13 | 2026-04-13 | 0 | 0.25 | As Soon As Possible | Future Task | -650h | 0h | Nevin Varkey,Ric Haraida |  | True | True | PTP_CM27_BP_Intercompany Customer | Sam Houff,Kim Kolesar | PTP | 2568 | 0.19 0.44 303.13 303.38 302.94  | 2566 | 2566 0.1875 Simulate Load |
| 2568 | 1.2.4.2.23.5 | 1.2.4.2.23.5 | 6 | Load | 2026-09-24 | 2026-09-24 | 2026-04-13 | 2026-04-14 | 0 | 0.25 | As Soon As Possible | Future Task | -650h | 0h | Data Migration Team |  | True | True | PTP_CM27_BP_Intercompany Customer |  | Data | 25, 692, 718 | 0.44 0.69 303.38 303.63 302.94  | 2567 | 2567 0.4375 Error and Defect Mitigation |
| 2569 | 1.2.4.2.23.6 | 1.2.4.2.23.6 | 6 | Post Load Validation | 2026-09-24 | 2026-09-25 | 2026-04-14 | 2026-04-14 | 0 | 0.375 | As Soon As Possible | Future Task | -650h | 0h | Nevin Varkey,Ric Haraida |  | True | True | PTP_CM27_BP_Intercompany Customer | Sam Houff,Kim Kolesar | PTP |  | 0.69 1.06 303.63 304 302.94  | 2568 | 2568 0.6875 Load |
| 2570 | 1.2.4.2.24 | 1.2.4.2.24 | 5 | PTP_CM26_Material_Master - All Types | 2026-09-24 | 2026-09-28 | 2026-04-10 | 2026-04-15 | 0 | 2.28 | As Soon As Possible | Future Task | -90.5d | 0d | Muniraju Surappachari; Nevin Varkey; Samuel Houff; Sarasija Ghosh; Surendra Krishna Acharya; Swetha SethumadhavaRao; James Farmer | True | True | True | Master Data Loads | Muniraju Surappachari | PTP |  |  |  |  |
| 2571 | 1.2.4.2.24.1 | 1.2.4.2.24.1 | 6 | Extract File | 2026-09-24 | 2026-09-25 | 2026-04-10 | 2026-04-13 | 0 | 0.625 | As Soon As Possible | Future Task | -649.25h | 0h | Data Migration Team |  | True | True | PTP_CM26_Material_Master - All Types |  | Data |  | 0.13 0.75 303.38 304 303.25  | 2546 | 2546 0.125 Extract File(Will Extract from LFA1) |
| 2572 | 1.2.4.2.24.2 | 1.2.4.2.24.2 | 6 | Pre Load Validation | 2026-09-24 | 2026-09-25 | 2026-04-13 | 2026-04-14 | 0 | 0.25 | As Soon As Possible | Future Task | -726h | 0h | Nevin Varkey,Ric Haraida |  | True | True | PTP_CM26_Material_Master - All Types | Sam Houff,Kim Kolesar,Matt | PTP | 2573 | 0.38 0.63 295.47 295.72 295.09  | 2544 | 2544 0.375 Post Load Validation |
| 2573 | 1.2.4.2.24.3 | 1.2.4.2.24.3 | 6 | Simulate Load | 2026-09-25 | 2026-09-25 | 2026-04-14 | 2026-04-14 | 0 | 0.125 | As Soon As Possible | Future Task | -726h | 0h | Data Migration Team |  | True | True | PTP_CM26_Material_Master - All Types |  | Data | 2574 | 0.63 0.75 295.72 295.84 295.09  | 2572 | 2572 0.625 Pre Load Validation |
| 2574 | 1.2.4.2.24.4 | 1.2.4.2.24.4 | 6 | Error and Defect Mitigation | 2026-09-25 | 2026-09-25 | 2026-04-14 | 2026-04-14 | 0 | 0.5 | As Soon As Possible | Future Task | -726h | 0h | Nevin Varkey |  | True | True | PTP_CM26_Material_Master - All Types | Sam Houff,Kim Kolesar,Matt | PTP | 2575 | 0.75 1.25 295.84 296.34 295.09  | 2573 | 2573 0.75 Simulate Load |
| 2575 | 1.2.4.2.24.5 | 1.2.4.2.24.5 | 6 | Load | 2026-09-25 | 2026-09-28 | 2026-04-14 | 2026-04-15 | 0 | 0.375 | As Soon As Possible | Future Task | -726h | 0h | Data Migration Team |  | True | True | PTP_CM26_Material_Master - All Types |  | Data | 257, 625, 792, 586 | 1.25 1.63 296.34 296.72 295.09  | 2574 | 2574 1.25 Error and Defect Mitigation |
| 2576 | 1.2.4.2.24.6 | 1.2.4.2.24.6 | 6 | Post Load Validation | 2026-09-28 | 2026-09-28 | 2026-04-15 | 2026-04-15 | 0 | 0.25 | As Soon As Possible | Future Task | -705.75h | 0h | Nevin Varkey |  | True | True | PTP_CM26_Material_Master - All Types | Sam Houff,Kim Kolesar,Matt | PTP | 259, 225, 992, 606 | 1.63 1.88 303.75 304 302.13  | 2575 | 2575 1.625 Load |
| 2577 | 1.2.4.2.25 | 1.2.4.2.25 | 5 | PTP_CM26_Material_Master - SERV - Service Materials | 2026-09-25 | 2026-09-29 | 2026-04-07 | 2026-04-15 | 0 | 1.34 | As Soon As Possible | Future Task | -83.41d | 0d | Muniraju Surappachari; Nevin Varkey; Samuel Houff; Sarasija Ghosh; Surendra Krishna Acharya; Swetha SethumadhavaRao; James Farmer | True | True | True | Master Data Loads | Muniraju Surappachari | PTP |  |  |  |  |
| 2578 | 1.2.4.2.25.1 | 1.2.4.2.25.1 | 6 | Load File Staged and Posted "Ready" | 2026-09-25 | 2026-09-25 | 2026-04-07 | 2026-04-07 | 0 | 0.0625 | As Soon As Possible | Future Task | -39420m | 0m | Nevin Varkey,Ric Haraida |  | True | True | PTP_CM26_Material_Master - SERV - Service Materials |  | PTP |  | 1.88 1.94 303.94 304 302.06  | 2447 | 2447 1.8770833333333332 Post Load Validation |
| 2579 | 1.2.4.2.25.2 | 1.2.4.2.25.2 | 6 | Pre Load Validation | 2026-09-28 | 2026-09-28 | 2026-04-14 | 2026-04-14 | 0 | 0.0625 | As Soon As Possible | Future Task | -40035m | 0m | Nevin Varkey,Ric Haraida |  | True | True | PTP_CM26_Material_Master - SERV - Service Materials | Sam Houff,Kim Kolesar | PTP | 2580 | 1.63 1.69 302.94 303 301.31  | 2575 | 2575 1.625 Load |
| 2580 | 1.2.4.2.25.3 | 1.2.4.2.25.3 | 6 | Simulate Load | 2026-09-28 | 2026-09-28 | 2026-04-14 | 2026-04-14 | 0 | 0.125 | As Soon As Possible | Future Task | -667.25h | 0h | Data Migration Team |  | True | True | PTP_CM26_Material_Master - SERV - Service Materials |  | Data | 2581 | 1.69 1.81 303 303.13 301.31  | 2579 | 2579 1.6875 Pre Load Validation |
| 2581 | 1.2.4.2.25.4 | 1.2.4.2.25.4 | 6 | Error and Defect Mitigation | 2026-09-28 | 2026-09-28 | 2026-04-14 | 2026-04-15 | 0 | 0.25 | As Soon As Possible | Future Task | -667.25h | 0h | Nevin Varkey,Ric Haraida |  | True | True | PTP_CM26_Material_Master - SERV - Service Materials | Sam Houff,Kim Kolesar | PTP | 2582 | 1.81 2.06 303.13 303.38 301.31  | 2580 | 2580 1.8125 Simulate Load |
| 2582 | 1.2.4.2.25.5 | 1.2.4.2.25.5 | 6 | Load | 2026-09-28 | 2026-09-28 | 2026-04-15 | 2026-04-15 | 0 | 0.25 | As Soon As Possible | Future Task | -667.25h | 0h | Data Migration Team |  | True | True | PTP_CM26_Material_Master - SERV - Service Materials |  | Data | 2583 | 2.06 2.31 303.38 303.63 301.31  | 2581 | 2581 2.0625 Error and Defect Mitigation |
| 2583 | 1.2.4.2.25.6 | 1.2.4.2.25.6 | 6 | Post Load Validation | 2026-09-28 | 2026-09-29 | 2026-04-15 | 2026-04-15 | 0 | 0.375 | As Soon As Possible | Future Task | -667.25h | 0h | Nevin Varkey,Ric Haraida |  | True | True | PTP_CM26_Material_Master - SERV - Service Materials | Sam Houff,Kim Kolesar | PTP |  | 2.31 2.69 303.63 304 301.31  | 2582 | 2582 2.3125 Load |
| 2584 | 1.2.4.2.26 | 1.2.4.2.26 | 5 | PTP_CM26_Material_Master - KMAT - Configurable Materials | 2026-09-25 | 2026-09-29 | 2026-04-07 | 2026-04-15 | 0 | 1.34 | As Soon As Possible | Future Task | -90.47d | 0d | Muniraju Surappachari; Nevin Varkey; Samuel Houff; Sarasija Ghosh; Surendra Krishna Acharya; Swetha SethumadhavaRao; James Farmer | True | True | True | Master Data Loads | Muniraju Surappachari | PTP | 26, 772, 674 |  |  |  |
| 2585 | 1.2.4.2.26.1 | 1.2.4.2.26.1 | 6 | Load File Staged and Posted "Ready" | 2026-09-25 | 2026-09-25 | 2026-04-07 | 2026-04-07 | 0 | 0.0625 | As Soon As Possible | Future Task | -40665m | 0m | Eric Heisler |  | True | True | PTP_CM26_Material_Master - KMAT - Configurable Materials |  | PTM |  | 1.88 1.94 303.94 304 302.06  | 2447 | 2447 1.8770833333333332 Post Load Validation |
| 2586 | 1.2.4.2.26.2 | 1.2.4.2.26.2 | 6 | Pre Load Validation | 2026-09-28 | 2026-09-28 | 2026-04-14 | 2026-04-14 | 0 | 0.0625 | As Soon As Possible | Future Task | -43560m | 0m | Eric Heisler |  | True | True | PTP_CM26_Material_Master - KMAT - Configurable Materials | Sam Houff,Kim Kolesar,Matt | PTM | 2587 | 1.63 1.69 296.72 296.78 295.09  | 2575 | 2575 1.625 Load |
| 2587 | 1.2.4.2.26.3 | 1.2.4.2.26.3 | 6 | Simulate Load | 2026-09-28 | 2026-09-28 | 2026-04-14 | 2026-04-14 | 0 | 0.125 | As Soon As Possible | Future Task | -726h | 0h | Data Migration Team |  | True | True | PTP_CM26_Material_Master - KMAT - Configurable Materials |  | Data | 2588 | 1.69 1.81 296.78 296.91 295.09  | 2586 | 2586 1.6875 Pre Load Validation |
| 2588 | 1.2.4.2.26.4 | 1.2.4.2.26.4 | 6 | Error and Defect Mitigation | 2026-09-28 | 2026-09-28 | 2026-04-14 | 2026-04-15 | 0 | 0.25 | As Soon As Possible | Future Task | -726h | 0h | Eric Heisler |  | True | True | PTP_CM26_Material_Master - KMAT - Configurable Materials | Sam Houff,Kim Kolesar,Matt | PTM | 2589 | 1.81 2.06 296.91 297.16 295.09  | 2587 | 2587 1.8125 Simulate Load |
| 2589 | 1.2.4.2.26.5 | 1.2.4.2.26.5 | 6 | Load | 2026-09-28 | 2026-09-28 | 2026-04-15 | 2026-04-15 | 0 | 0.25 | As Soon As Possible | Future Task | -726h | 0h | Data Migration Team |  | True | True | PTP_CM26_Material_Master - KMAT - Configurable Materials |  | Data | 2590 | 2.06 2.31 297.16 297.41 295.09  | 2588 | 2588 2.0625 Error and Defect Mitigation |
| 2590 | 1.2.4.2.26.6 | 1.2.4.2.26.6 | 6 | Post Load Validation | 2026-09-28 | 2026-09-29 | 2026-04-15 | 2026-04-15 | 0 | 0.375 | As Soon As Possible | Future Task | -726h | 0h | Eric Heisler |  | True | True | PTP_CM26_Material_Master - KMAT - Configurable Materials | Sam Houff,Kim Kolesar,Matt | PTM | 25, 922, 599, 260, 626, 700, 0 | 2.31 2.69 297.41 297.78 295.09  | 2589 | 2589 2.3125 Load |
| 2591 | 1.2.4.2.27 | 1.2.4.2.27 | 5 | PTP_CM28_Purchase_Info_Records | 2026-09-24 | 2026-09-30 | 2026-04-15 | 2026-04-16 | 0 | 3.59 | As Soon As Possible | Future Task | -84.7d | 0d | Muniraju Surappachari; Nevin Varkey; Samuel Houff; Sarasija Ghosh; Surendra Krishna Acharya; Swetha SethumadhavaRao; James Farmer | True | True | True | Master Data Loads | Muniraju Surappachari | PTP |  |  |  |  |
| 2592 | 1.2.4.2.27.1 | 1.2.4.2.27.1 | 6 | Extract File | 2026-09-29 | 2026-09-29 | 2026-04-15 | 2026-04-15 | 0 | 0.125 | As Soon As Possible | Future Task | -700.38h | 0h | Data Migration Team |  | True | True | PTP_CM28_Purchase_Info_Records |  | Data | 25, 932, 613 | 0 0.13 299.53 299.66 299.53  | 25, 762, 590 |  |
| 2593 | 1.2.4.2.27.2 | 1.2.4.2.27.2 | 6 | Pre Load Validation | 2026-09-29 | 2026-09-29 | 2026-04-15 | 2026-04-16 | 0 | 0.25 | As Soon As Possible | Future Task | -673.25h | 0h | Nevin Varkey |  | True | True | PTP_CM28_Purchase_Info_Records | Sam Houff | PTP | 2594 | 0.13 0.38 303.38 303.63 303.25  | 2592 | 2592 0.125 Extract File |
| 2594 | 1.2.4.2.27.3 | 1.2.4.2.27.3 | 6 | Simulate Load | 2026-09-29 | 2026-09-29 | 2026-04-16 | 2026-04-16 | 0 | 0.125 | As Soon As Possible | Future Task | -673.25h | 0h | Data Migration Team |  | True | True | PTP_CM28_Purchase_Info_Records |  | Data | 2595 | 0.38 0.5 303.63 303.75 303.25  | 2593 | 2593 0.375 Pre Load Validation |
| 2595 | 1.2.4.2.27.4 | 1.2.4.2.27.4 | 6 | Error and Defect Mitigation | 2026-09-29 | 2026-09-30 | 2026-04-16 | 2026-04-16 | 0 | 0.25 | Start No Earlier Than | Future Task | -673.25h | 0h | Nevin Varkey |  | True | True | PTP_CM28_Purchase_Info_Records | Sam Houff | PTP |  | 0.5 0.75 303.75 304 303.25  | 2594 | 2594 0.5 Simulate Load |
| 2596 | 1.2.4.2.27.5 | 1.2.4.2.27.5 | 6 | Load | 2026-09-24 | 2026-09-24 | 2026-04-15 | 2026-04-15 | 0 | 0.125 | Start No Earlier Than | Future Task | -647.5h | 0h | Data Migration Team |  | True | True | PTP_CM28_Purchase_Info_Records |  | Data | 2597 | 0.38 0.5 303.63 303.75 303.25  | 2544 | 2544 0.375 Post Load Validation |
| 2597 | 1.2.4.2.27.6 | 1.2.4.2.27.6 | 6 | Post Load Validation | 2026-09-24 | 2026-09-24 | 2026-04-15 | 2026-04-15 | 0 | 0.25 | Start No Earlier Than | Future Task | -647.5h | 0h | Nevin Varkey |  | True | True | PTP_CM28_Purchase_Info_Records | Sam Houff | PTP |  | 0.5 0.75 303.75 304 303.25  | 2596 | 2596 0.5 Load |
| 2598 | 1.2.4.2.28 | 1.2.4.2.28 | 5 | PTP_CM28_Purchase_Info_Record External Processing | 2026-09-29 | 2026-09-30 | 2026-04-15 | 2026-04-16 | 0 | 1.13 | As Soon As Possible | Future Task | -84.53d | 0d | Muniraju Surappachari; Nevin Varkey; Samuel Houff; Sarasija Ghosh; Surendra Krishna Acharya; Swetha SethumadhavaRao; James Farmer | True | True | True | Master Data Loads | Muniraju Surappachari | PTP |  |  |  |  |
| 2599 | 1.2.4.2.28.1 | 1.2.4.2.28.1 | 6 | Load File Staged and Posted "Ready" | 2026-09-29 | 2026-09-29 | 2026-04-15 | 2026-04-15 | 0 | 0.0625 | As Soon As Possible | Future Task | -40575m | 0m | Nevin Varkey |  | True | True | PTP_CM28_Purchase_Info_Record External Processing |  | PTP | 2600 | 0 0.06 302.88 302.94 302.88  | 25, 762, 590 |  |
| 2600 | 1.2.4.2.28.2 | 1.2.4.2.28.2 | 6 | Pre Load Validation | 2026-09-29 | 2026-09-29 | 2026-04-15 | 2026-04-15 | 0 | 0.0625 | As Soon As Possible | Future Task | -40575m | 0m | Nevin Varkey |  | True | True | PTP_CM28_Purchase_Info_Record External Processing | Sam Houff | PTP | 2601 | 0.06 0.13 302.94 303 302.88  | 2599 | 2599 0.0625 Load File Staged and Posted "Ready" |
| 2601 | 1.2.4.2.28.3 | 1.2.4.2.28.3 | 6 | Simulate Load | 2026-09-29 | 2026-09-29 | 2026-04-15 | 2026-04-16 | 0 | 0.125 | As Soon As Possible | Future Task | -676.25h | 0h | Data Migration Team |  | True | True | PTP_CM28_Purchase_Info_Record External Processing |  | Data | 2602 | 0.13 0.25 303 303.13 302.88  | 2600 | 2600 0.125 Pre Load Validation |
| 2602 | 1.2.4.2.28.4 | 1.2.4.2.28.4 | 6 | Error and Defect Mitigation | 2026-09-29 | 2026-09-29 | 2026-04-16 | 2026-04-16 | 0 | 0.25 | As Soon As Possible | Future Task | -676.25h | 0h | Nevin Varkey |  | True | True | PTP_CM28_Purchase_Info_Record External Processing | Sam Houff | PTP | 2603 | 0.25 0.5 303.13 303.38 302.88  | 2601 | 2601 0.25 Simulate Load |
| 2603 | 1.2.4.2.28.5 | 1.2.4.2.28.5 | 6 | Load | 2026-09-29 | 2026-09-30 | 2026-04-16 | 2026-04-16 | 0 | 0.25 | As Soon As Possible | Future Task | -676.25h | 0h | Data Migration Team |  | True | True | PTP_CM28_Purchase_Info_Record External Processing |  | Data | 2604 | 0.5 0.75 303.38 303.63 302.88  | 2602 | 2602 0.5 Error and Defect Mitigation |
| 2604 | 1.2.4.2.28.6 | 1.2.4.2.28.6 | 6 | Post Load Validation | 2026-09-30 | 2026-09-30 | 2026-04-16 | 2026-04-16 | 0 | 0.375 | As Soon As Possible | Future Task | -676.25h | 0h | Nevin Varkey |  | True | True | PTP_CM28_Purchase_Info_Record External Processing | Sam Houff | PTP |  | 0.75 1.13 303.63 304 302.88  | 2603 | 2603 0.75 Load |
| 2605 | 1.2.4.2.29 | 1.2.4.2.29 | 5 | PTP_CM28_Purchase_Info_Record Subcontracting and Consignment | 2026-09-29 | 2026-09-30 | 2026-04-15 | 2026-04-16 | 0 | 1.13 | As Soon As Possible | Future Task | -89.03d | 0d | Muniraju Surappachari; Nevin Varkey; Samuel Houff; Sarasija Ghosh; Surendra Krishna Acharya; Swetha SethumadhavaRao; James Farmer | True | True | True | Master Data Loads | Muniraju Surappachari | PTP |  |  |  |  |
| 2606 | 1.2.4.2.29.1 | 1.2.4.2.29.1 | 6 | Load File Staged and Posted "Ready" | 2026-09-29 | 2026-09-29 | 2026-04-15 | 2026-04-15 | 0 | 0.0625 | As Soon As Possible | Future Task | -42735m | 0m | Nevin Varkey |  | True | True | PTP_CM28_Purchase_Info_Record Subcontracting and Consignment |  | PTP | 2607 | 0 0.06 298.38 298.44 298.38  | 25, 762, 590 |  |
| 2607 | 1.2.4.2.29.2 | 1.2.4.2.29.2 | 6 | Pre Load Validation | 2026-09-29 | 2026-09-29 | 2026-04-15 | 2026-04-15 | 0 | 0.0625 | As Soon As Possible | Future Task | -42735m | 0m | Nevin Varkey |  | True | True | PTP_CM28_Purchase_Info_Record Subcontracting and Consignment | Sam Houff | PTP | 2608 | 0.06 0.13 298.44 298.5 298.38  | 2606 | 2606 0.0625 Load File Staged and Posted "Ready" |
| 2608 | 1.2.4.2.29.3 | 1.2.4.2.29.3 | 6 | Simulate Load | 2026-09-29 | 2026-09-29 | 2026-04-15 | 2026-04-16 | 0 | 0.125 | As Soon As Possible | Future Task | -712.25h | 0h | Data Migration Team |  | True | True | PTP_CM28_Purchase_Info_Record Subcontracting and Consignment |  | Data | 26, 92, 740 | 0.13 0.25 298.5 298.63 298.38  | 2607 | 2607 0.125 Pre Load Validation |
| 2609 | 1.2.4.2.29.4 | 1.2.4.2.29.4 | 6 | Error and Defect Mitigation | 2026-09-29 | 2026-09-29 | 2026-04-16 | 2026-04-16 | 0 | 0.25 | As Soon As Possible | Future Task | -676.25h | 0h | Nevin Varkey |  | True | True | PTP_CM28_Purchase_Info_Record Subcontracting and Consignment | Sam Houff | PTP | 2610 | 0.25 0.5 303.13 303.38 302.88  | 2608 | 2608 0.25 Simulate Load |
| 2610 | 1.2.4.2.29.5 | 1.2.4.2.29.5 | 6 | Load | 2026-09-29 | 2026-09-30 | 2026-04-16 | 2026-04-16 | 0 | 0.25 | As Soon As Possible | Future Task | -676.25h | 0h | Data Migration Team |  | True | True | PTP_CM28_Purchase_Info_Record Subcontracting and Consignment |  | Data | 2611 | 0.5 0.75 303.38 303.63 302.88  | 2609 | 2609 0.5 Error and Defect Mitigation |
| 2611 | 1.2.4.2.29.6 | 1.2.4.2.29.6 | 6 | Post Load Validation | 2026-09-30 | 2026-09-30 | 2026-04-16 | 2026-04-16 | 0 | 0.375 | As Soon As Possible | Future Task | -676.25h | 0h | Nevin Varkey |  | True | True | PTP_CM28_Purchase_Info_Record Subcontracting and Consignment | Sam Houff | PTP |  | 0.75 1.13 303.63 304 302.88  | 2610 | 2610 0.75 Load |
| 2432 | 1.2.4.2.3 | 1.2.4.2.3 | 5 | RTR_CM01_GL_Account_Master to CC 1000 | 2026-09-25 | 2026-09-29 | 2026-04-07 | 2026-04-09 | 0 | 2.44 | As Soon As Possible | Future Task | -89.81d | 0d | COULD NOT BE DETERMINED | True | True | True | Master Data Loads | Brian Wagner |  | 2457 |  |  |  |
| 2433 | 1.2.4.2.3.1 | 1.2.4.2.3.1 | 6 | Load File Staged and Posted "Ready" | 2026-09-25 | 2026-09-25 | 2026-04-07 | 2026-04-07 | 0 | 0.125 | Start No Earlier Than | Future Task | -718.5h | 0h | Kasey Hughes |  | True | True | RTR_CM01_GL_Account_Master to CC 1000 |  | Finance | 2434 | 1.5 1.63 297.81 297.94 296.31  | 2431 | 2431 1.5020833333333332 Post Load Validation |
| 2434 | 1.2.4.2.3.2 | 1.2.4.2.3.2 | 6 | Pre Load Validation | 2026-09-25 | 2026-09-25 | 2026-04-07 | 2026-04-07 | 0 | 0.25 | As Soon As Possible | Future Task | -718.5h | 0h | Kasey Hughes |  | True | True | RTR_CM01_GL_Account_Master to CC 1000 | Brian Wagner | Finance | 2435 | 1.63 1.88 297.94 298.19 296.31  | 2433 | 2433 1.6270833333333332 Load File Staged and Posted "Ready" |
| 2435 | 1.2.4.2.3.3 | 1.2.4.2.3.3 | 6 | Simulate Load | 2026-09-25 | 2026-09-28 | 2026-04-07 | 2026-04-08 | 0 | 0.75 | As Soon As Possible | Future Task | -718.5h | 0h | Data Migration Team |  | True | True | RTR_CM01_GL_Account_Master to CC 1000 |  | Data | 2436 | 1.88 2.63 298.19 298.94 296.31  | 2434 | 2434 1.8770833333333332 Pre Load Validation |
| 2436 | 1.2.4.2.3.4 | 1.2.4.2.3.4 | 6 | Error and Defect Mitigation | 2026-09-28 | 2026-09-29 | 2026-04-08 | 2026-04-08 | 0 | 0.25 | As Soon As Possible | Future Task | -718.5h | 0h | Kasey Hughes |  | True | True | RTR_CM01_GL_Account_Master to CC 1000 | Brian Wagner | Finance | 2437 | 2.63 2.88 298.94 299.19 296.31  | 2435 | 2435 2.627083333333333 Simulate Load |
| 2437 | 1.2.4.2.3.5 | 1.2.4.2.3.5 | 6 | Load | 2026-09-29 | 2026-09-29 | 2026-04-08 | 2026-04-08 | 0 | 0.125 | As Soon As Possible | Future Task | -718.5h | 0h | Data Migration Team |  | True | True | RTR_CM01_GL_Account_Master to CC 1000 |  | Data | 2438 | 2.88 3 299.19 299.31 296.31  | 2436 | 2436 2.877083333333333 Error and Defect Mitigation |
| 2438 | 1.2.4.2.3.6 | 1.2.4.2.3.6 | 6 | Post Load Validation | 2026-09-29 | 2026-09-29 | 2026-04-08 | 2026-04-08 | 0 | 0.25 | As Soon As Possible | Future Task | -718.5h | 0h | Kasey Hughes |  | True | True | RTR_CM01_GL_Account_Master to CC 1000 | Brian Wagner | Finance | 24, 612, 475, 248, 924, 900, 0 | 3 3.25 299.31 299.56 296.31  | 2437 | 2437 3.002083333333333 Load |
| 2439 | 1.2.4.2.3.7 | 1.2.4.2.3.7 | 6 | Extend GL to all Company Codes | 2026-09-29 | 2026-09-29 | 2026-04-08 | 2026-04-09 | 0 | 0.25 | As Soon As Possible | Future Task | -718.5h | 0h | Kasey Hughes |  | True | True | RTR_CM01_GL_Account_Master to CC 1000 | Brian Wagner | Finance | 2440 | 3.25 3.5 303.5 303.75 300.25  | 2438 | 2438 3.252083333333333 Post Load Validation |
| 2440 | 1.2.4.2.3.8 | 1.2.4.2.3.8 | 6 | Post GL Extention Validation | 2026-09-29 | 2026-09-29 | 2026-04-09 | 2026-04-09 | 0 | 0.25 | As Soon As Possible | Future Task | -718.5h | 0h | Chandrababu Boyapati |  | True | True | RTR_CM01_GL_Account_Master to CC 1000 | Brian Wagner | Finance | 25, 62, 459 | 3.5 3.75 303.75 304 300.25  | 2439 | 2439 3.502083333333333 Extend GL to all Company Codes |
| 2612 | 1.2.4.2.30 | 1.2.4.2.30 | 5 | PTM_CM31_BOM Conversion | 2026-09-29 | 2026-10-01 | 2026-04-15 | 2026-04-17 | 0 | 2.48 | As Soon As Possible | Future Task | -87.55d | 0d | Brad Meseck; Chip Holder; David Duda; Matt Palastro; Sunil Srinivasa; Aniruddha Sathe; Susan Graham; Eric Heisler; Sam Penrod; Furkan Alko | True | True | True | Master Data Loads | Manoj Patel | PTM |  |  |  |  |

| uid | wbs | outlineNumber | outlineLevel | name | start | finish | baselineStart | baselineFinish | percentComplete | durationDays | constraintType | status | totalSlackRaw | freeSlackRaw | resourceNames | summary | criticalFlag | active | summaryName | businessValidationOwner | workstream | successors | cpm | predecessors | drivers |
| --- | --- | --- | --- | --- | --- | --- | --- | --- | --- | --- | --- | --- | --- | --- | --- | --- | --- | --- | --- | --- | --- | --- | --- | --- | --- |
| 2613 | 1.2.4.2.30.1 | 1.2.4.2.30.1 | 6 | Extract File | 2026-09-29 | 2026-09-29 | 2026-04-15 | 2026-04-16 | 0 | 0.125 | As Soon As Possible | Future Task | -700.38h | 0h | Data Migration Team |  | True | True | PTM_CM31_BOM Conversion |  | Data | 26, 142, 620 | 0.13 0.25 299.66 299.78 299.53  | 2592 | 2592 0.125 Extract File |
| 2614 | 1.2.4.2.30.2 | 1.2.4.2.30.2 | 6 | Pre Load Validation | 2026-09-29 | 2026-09-29 | 2026-04-16 | 2026-04-16 | 0 | 0.0625 | As Soon As Possible | Future Task | -700.38h | 0h | Brad Meseck |  | True | True | PTM_CM31_BOM Conversion | Matt Palastro, Dave Duda | PTM | 2615 | 0.25 0.31 299.78 299.84 299.53  | 2613 | 2613 0.25 Extract File |
| 2615 | 1.2.4.2.30.3 | 1.2.4.2.30.3 | 6 | Simulate Load | 2026-09-29 | 2026-10-01 | 2026-04-16 | 2026-04-16 | 0 | 1.9375 | Finish No Earlier Than | Future Task | -700.38h | 0h | Data Migration Team |  | True | True | PTM_CM31_BOM Conversion |  | Data | 2616 | 0.31 2.25 299.84 301.78 299.53  | 2614 | 2614 0.3125 Pre Load Validation |
| 2616 | 1.2.4.2.30.4 | 1.2.4.2.30.4 | 6 | Error and Defect Mitigation | 2026-10-01 | 2026-10-01 | 2026-04-16 | 2026-04-16 | 0 | 0.0625 | Finish No Earlier Than | Future Task | -700.38h | 0h | Brad Meseck |  | True | True | PTM_CM31_BOM Conversion | Matt Palastro, Dave Duda | PTM | 2617 | 2.25 2.31 301.78 301.84 299.53  | 2615 | 2615 2.25 Simulate Load |
| 2617 | 1-Apr | 1.2.4.2.30.5 | 6 | Load | 2026-10-01 | 2026-10-01 | 2026-04-16 | 2026-04-16 | 0 | 0.125 | As Soon As Possible | Future Task | -700.38h | 0h | Data Migration Team |  | True | True | PTM_CM31_BOM Conversion |  | Data | 2618 | 2.31 2.44 301.84 301.97 299.53  | 2616 | 2616 2.3125 Error and Defect Mitigation |
| 2618 | 1.2.4.2.30.6 | 1.2.4.2.30.6 | 6 | Post Load Validation | 2026-10-01 | 2026-10-01 | 2026-04-16 | 2026-04-17 | 0 | 0.0625 | Finish No Earlier Than | Future Task | -700.38h | 0h | Brad Meseck |  | True | True | PTM_CM31_BOM Conversion | Matt Palastro, Dave Duda | PTM | 2621 | 2.44 2.5 301.97 302.03 299.53  | 2617 | 2617 2.4375 Load |
| 2619 | 1.2.4.2.31 | 1.2.4.2.31 | 5 | PTM_CM40_Work Center Conversion | 2026-09-29 | 2026-10-02 | 2026-04-16 | 2026-04-20 | 0 | 3.08 | As Soon As Possible | Future Task | -87.55d | 0d | Brad Meseck; Chip Holder; David Duda; Matt Palastro; Sunil Srinivasa; Aniruddha Sathe; Susan Graham; Eric Heisler; Sam Penrod; Furkan Alko | True | True | True | Master Data Loads | Manoj Patel | PTM |  |  |  |  |
| 2620 | 1.2.4.2.31.1 | 1.2.4.2.31.1 | 6 | Extract File | 2026-09-29 | 2026-09-29 | 2026-04-16 | 2026-04-16 | 0 | 0.125 | As Soon As Possible | Future Task | -695.75h | 0h | Data Migration Team |  | True | True | PTM_CM40_Work Center Conversion |  | Data | 2627 | 0.25 0.38 300.69 300.81 300.44  | 2613 | 2613 0.25 Extract File |
| 2621 | 1.2.4.2.31.2 | 1.2.4.2.31.2 | 6 | Pre Load Validation | 2026-10-01 | 2026-10-02 | 2026-04-17 | 2026-04-17 | 0 | 0.25 | As Soon As Possible | Future Task | -700.38h | 0h | Brad Meseck |  | True | True | PTM_CM40_Work Center Conversion | Matt Palastro, Dave Duda | PTM | 2622 | 2.5 2.75 302.03 302.28 299.53  | 2618 | 2618 2.5 Post Load Validation |
| 2622 | 1.2.4.2.31.3 | 1.2.4.2.31.3 | 6 | Simulate Load | 2026-10-02 | 2026-10-02 | 2026-04-17 | 2026-04-17 | 0 | 0.03125 | As Soon As Possible | Future Task | -700.38h | 0h | Data Migration Team |  | True | True | PTM_CM40_Work Center Conversion |  | Data | 2623 | 2.75 2.78 302.28 302.31 299.53  | 2621 | 2621 2.75 Pre Load Validation |
| 2623 | 1.2.4.2.31.4 | 1.2.4.2.31.4 | 6 | Error and Defect Mitigation | 2026-10-02 | 2026-10-02 | 2026-04-17 | 2026-04-17 | 0 | 0.0625 | As Soon As Possible | Future Task | -700.38h | 0h | Brad Meseck |  | True | True | PTM_CM40_Work Center Conversion | Matt Palastro, Dave Duda | PTM | 2624 | 2.78 2.84 302.31 302.38 299.53  | 2622 | 2622 2.78125 Simulate Load |
| 2624 | 1.2.4.2.31.5 | 1.2.4.2.31.5 | 6 | Load | 2026-10-02 | 2026-10-02 | 2026-04-17 | 2026-04-17 | 0 | 0.125 | As Soon As Possible | Future Task | -700.38h | 0h | Data Migration Team |  | True | True | PTM_CM40_Work Center Conversion |  | Data | 2625 | 2.84 2.97 302.38 302.5 299.53  | 2623 | 2623 2.84375 Error and Defect Mitigation |
| 2625 | 1.2.4.2.31.6 | 1.2.4.2.31.6 | 6 | Post Load Validation | 2026-10-02 | 2026-10-02 | 2026-04-17 | 2026-04-20 | 0 | 0.25 | As Soon As Possible | Future Task | -700.38h | 0h | Brad Meseck |  | True | True | PTM_CM40_Work Center Conversion | Matt Palastro, Dave Duda | PTM | 2628 | 2.97 3.22 302.5 302.75 299.53  | 2624 | 2624 2.96875 Load |
| 2626 | 1.2.4.2.32 | 1.2.4.2.32 | 5 | PTM_CM38_Routing Conversion | 2026-09-29 | 2026-10-05 | 2026-04-16 | 2026-04-21 | 0 | 4.27 | As Soon As Possible | Future Task | -88.05d | 0d | Brad Meseck; Chip Holder; David Duda; Matt Palastro; Sunil Srinivasa; Aniruddha Sathe; Susan Graham; Eric Heisler; Sam Penrod; Furkan Alko | True | True | True | Master Data Loads | Manoj Patel | PTM |  |  |  |  |
| 2627 | 1.2.4.2.32.1 | 1.2.4.2.32.1 | 6 | Extract File | 2026-09-29 | 2026-09-29 | 2026-04-16 | 2026-04-16 | 0 | 0.125 | As Soon As Possible | Future Task | -695.75h | 0h | Data Migration Team |  | True | True | PTM_CM38_Routing Conversion |  | Data | 2634 | 0.38 0.5 300.81 300.94 300.44  | 2620 | 2620 0.375 Extract File |
| 2628 | 1.2.4.2.32.2 | 1.2.4.2.32.2 | 6 | Pre Load Validation | 2026-10-02 | 2026-10-05 | 2026-04-20 | 2026-04-20 | 0 | 0.25 | As Soon As Possible | Future Task | -700.38h | 0h | Brad Meseck |  | True | True | PTM_CM38_Routing Conversion | Matt Palastro, Dave Duda | PTM | 2629 | 3.22 3.47 302.75 303 299.53  | 2625 | 2625 3.21875 Post Load Validation |
| 2629 | 1.2.4.2.32.3 | 1.2.4.2.32.3 | 6 | Simulate Load | 2026-10-05 | 2026-10-05 | 2026-04-20 | 2026-04-20 | 0 | 0.25 | Finish No Earlier Than | Future Task | -700.38h | 0h | Data Migration Team |  | True | True | PTM_CM38_Routing Conversion |  | Data | 2630 | 3.47 3.72 303 303.25 299.53  | 2628 | 2628 3.46875 Pre Load Validation |
| 2630 | 1.2.4.2.32.4 | 1.2.4.2.32.4 | 6 | Error and Defect Mitigation | 2026-10-05 | 2026-10-05 | 2026-04-20 | 2026-04-20 | 0 | 0.375 | Start No Earlier Than | Future Task | -704.38h | 0h | Brad Meseck |  | True | True | PTM_CM38_Routing Conversion | Matt Palastro, Dave Duda | PTM | 2631 | 3.72 4.09 303.25 303.63 299.53  | 2629 | 2629 3.71875 Simulate Load |
| 2631 | 1.2.4.2.32.5 | 1.2.4.2.32.5 | 6 | Load | 2026-10-05 | 2026-10-05 | 2026-04-20 | 2026-04-20 | 0 | 0.125 | Start No Earlier Than | Future Task | -704.38h | 0h | Data Migration Team |  | True | True | PTM_CM38_Routing Conversion |  | Data | 2632 | 4.09 4.22 303.63 303.75 299.53  | 2630 | 2630 4.09375 Error and Defect Mitigation |
| 2632 | 1.2.4.2.32.6 | 1.2.4.2.32.6 | 6 | Post Load Validation | 2026-10-05 | 2026-10-05 | 2026-04-20 | 2026-04-21 | 0 | 0.25 | Start No Earlier Than | Future Task | -704.38h | 0h | Brad Meseck |  | True | True | PTM_CM38_Routing Conversion | Matt Palastro, Dave Duda | PTM |  | 4.22 4.47 303.75 304 299.53  | 2631 | 2631 4.21875 Load |
| 2633 | 1.2.4.2.33 | 1.2.4.2.33 | 5 | PTM_CM36_Production Version Conversion | 2026-09-29 | 2026-09-30 | 2026-04-16 | 2026-04-17 | 0 | 1.13 | As Soon As Possible | Future Task | -86.97d | 0d | Brad Meseck; Chip Holder; David Duda; Matt Palastro; Sunil Srinivasa; Aniruddha Sathe; Susan Graham; Eric Heisler; Sam Penrod; Furkan Alko | True | True | True | Master Data Loads | Brad Meseck | PTM |  |  |  |  |
| 2634 | 1.2.4.2.33.1 | 1.2.4.2.33.1 | 6 | Load File Staged and Posted "Ready" | 2026-09-29 | 2026-09-29 | 2026-04-16 | 2026-04-16 | 0 | 0.0625 | Start No Earlier Than | Future Task | -41745m | 0m | Brad Meseck |  | True | True | PTM_CM36_Production Version Conversion |  | PTM | 26, 352, 729 | 0.5 0.56 300.94 301 300.44  | 2627 | 2627 0.5 Extract File |
| 2635 | 1.2.4.2.33.2 | 1.2.4.2.33.2 | 6 | Pre Load Validation | 2026-09-29 | 2026-09-29 | 2026-04-16 | 2026-04-16 | 0 | 0.0625 | As Soon As Possible | Future Task | -41745m | 0m | Brad Meseck |  | True | True | PTM_CM36_Production Version Conversion | Matt Palastro, Dave Duda | PTM | 2636 | 0.56 0.63 301 301.06 300.44  | 2634 | 2634 0.5625 Load File Staged and Posted "Ready" |
| 2636 | 1.2.4.2.33.3 | 1.2.4.2.33.3 | 6 | Simulate Load | 2026-09-29 | 2026-09-30 | 2026-04-16 | 2026-04-16 | 0 | 0.125 | As Soon As Possible | Future Task | -695.75h | 0h | Data Migration Team |  | True | True | PTM_CM36_Production Version Conversion |  | Data | 2637 | 0.63 0.75 301.06 301.19 300.44  | 2635 | 2635 0.625 Pre Load Validation |
| 2637 | 1.2.4.2.33.4 | 1.2.4.2.33.4 | 6 | Error and Defect Mitigation | 2026-09-30 | 2026-09-30 | 2026-04-16 | 2026-04-16 | 0 | 0.25 | As Soon As Possible | Future Task | -695.75h | 0h | Brad Meseck |  | True | True | PTM_CM36_Production Version Conversion | Matt Palastro, Dave Duda | PTM | 2638 | 0.75 1 301.19 301.44 300.44  | 2636 | 2636 0.75 Simulate Load |
| 2638 | 1.2.4.2.33.5 | 1.2.4.2.33.5 | 6 | Load | 2026-09-30 | 2026-09-30 | 2026-04-16 | 2026-04-17 | 0 | 0.25 | As Soon As Possible | Future Task | -695.75h | 0h | Data Migration Team |  | True | True | PTM_CM36_Production Version Conversion |  | Data | 2639 | 1 1.25 301.44 301.69 300.44  | 2637 | 2637 1 Error and Defect Mitigation |
| 2639 | 1.2.4.2.33.6 | 1.2.4.2.33.6 | 6 | Post Load Validation | 2026-09-30 | 2026-09-30 | 2026-04-17 | 2026-04-17 | 0 | 0.375 | Finish No Earlier Than | Future Task | -695.75h | 0h | Brad Meseck |  | True | True | PTM_CM36_Production Version Conversion | Matt Palastro, Dave Duda | PTM | 2641 | 1.25 1.63 301.69 302.06 300.44  | 2638 | 2638 1.25 Load |
| 2640 | 1.2.4.2.34 | 1.2.4.2.34 | 5 | PTM_CM35_Inspection Plan | 2026-09-30 | 2026-10-02 | 2026-04-17 | 2026-04-20 | 0 | 1.13 | As Soon As Possible | Future Task | -86.97d | 0d | Brad Meseck; Chip Holder; David Duda; Matt Palastro; Sunil Srinivasa; Aniruddha Sathe; Susan Graham; Eric Heisler; Sam Penrod; Furkan Alko | True | True | True | Master Data Loads | Brad Meseck | PTM |  |  |  |  |
| 2641 | 1.2.4.2.34.1 | 1.2.4.2.34.1 | 6 | Load File Staged and Posted "Ready" | 2026-09-30 | 2026-09-30 | 2026-04-17 | 2026-04-17 | 0 | 0.0625 | As Soon As Possible | Future Task | -41745m | 0m | Brad Meseck |  | True | True | PTM_CM35_Inspection Plan |  | PTM | 26, 422, 648 | 1.63 1.69 302.06 302.13 300.44  | 2639 | 2639 1.625 Post Load Validation |
| 2642 | 1.2.4.2.34.2 | 1.2.4.2.34.2 | 6 | Pre Load Validation | 2026-09-30 | 2026-10-01 | 2026-04-17 | 2026-04-17 | 0 | 0.0625 | As Soon As Possible | Future Task | -41355m | 0m | Brad Meseck |  | True | True | PTM_CM35_Inspection Plan | Matt Palastro, Dave Duda | PTM | 2643 | 1.69 1.75 302.94 303 301.25  | 2641 | 2641 1.6875 Load File Staged and Posted "Ready" |
| 2643 | 1.2.4.2.34.3 | 1.2.4.2.34.3 | 6 | Simulate Load | 2026-10-01 | 2026-10-01 | 2026-04-17 | 2026-04-17 | 0 | 0.125 | As Soon As Possible | Future Task | -689.25h | 0h | Data Migration Team |  | True | True | PTM_CM35_Inspection Plan |  | Data | 2644 | 1.75 1.88 303 303.13 301.25  | 2642 | 2642 1.75 Pre Load Validation |
| 2644 | 1.2.4.2.34.4 | 1.2.4.2.34.4 | 6 | Error and Defect Mitigation | 2026-10-01 | 2026-10-01 | 2026-04-17 | 2026-04-17 | 0 | 0.25 | As Soon As Possible | Future Task | -689.25h | 0h | Brad Meseck |  | True | True | PTM_CM35_Inspection Plan | Matt Palastro, Dave Duda | PTM | 2645 | 1.88 2.13 303.13 303.38 301.25  | 2643 | 2643 1.875 Simulate Load |
| 2645 | 1.2.4.2.34.5 | 1.2.4.2.34.5 | 6 | Load | 2026-10-01 | 2026-10-01 | 2026-04-17 | 2026-04-20 | 0 | 0.25 | Finish No Earlier Than | Future Task | -689.25h | 0h | Data Migration Team |  | True | True | PTM_CM35_Inspection Plan |  | Data | 2646 | 2.13 2.38 303.38 303.63 301.25  | 2644 | 2644 2.125 Error and Defect Mitigation |
| 2646 | 1.2.4.2.34.6 | 1.2.4.2.34.6 | 6 | Post Load Validation | 2026-10-01 | 2026-10-02 | 2026-04-20 | 2026-04-20 | 0 | 0.375 | As Soon As Possible | Future Task | -689.25h | 0h | Brad Meseck |  | True | True | PTM_CM35_Inspection Plan | Matt Palastro, Dave Duda | PTM |  | 2.38 2.75 303.63 304 301.25  | 2645 | 2645 2.375 Load |
| 2647 | 1.2.4.2.35 | 1.2.4.2.35 | 5 | PTM_CM48_Equipment_Master_Serial Numbers | 2026-09-30 | 2026-10-02 | 2026-04-17 | 2026-04-20 | 0 | 1.13 | As Soon As Possible | Future Task | -86.97d | 0d | Brad Meseck; Chip Holder; David Duda; Matt Palastro; Sunil Srinivasa; Aniruddha Sathe; Susan Graham; Eric Heisler; Sam Penrod; Furkan Alko | True | True | True | Master Data Loads | Brad Meseck | PTM |  |  |  |  |
| 2648 | 1.2.4.2.35.1 | 1.2.4.2.35.1 | 6 | Load File Staged and Posted "Ready" | 2026-09-30 | 2026-10-01 | 2026-04-17 | 2026-04-17 | 0 | 0.0625 | As Soon As Possible | Future Task | -41745m | 0m | Brad Meseck |  | True | True | PTM_CM48_Equipment_Master_Serial Numbers |  | PTM | 2649 | 1.69 1.75 302.13 302.19 300.44  | 2641 | 2641 1.6875 Load File Staged and Posted "Ready" |
| 2649 | 1.2.4.2.35.2 | 1.2.4.2.35.2 | 6 | Pre Load Validation | 2026-10-01 | 2026-10-01 | 2026-04-17 | 2026-04-17 | 0 | 0.0625 | As Soon As Possible | Future Task | -41745m | 0m | Brad Meseck |  | True | True | PTM_CM48_Equipment_Master_Serial Numbers | Matt Palastro, Dave Duda | PTM | 2650 | 1.75 1.81 302.19 302.25 300.44  | 2648 | 2648 1.75 Load File Staged and Posted "Ready" |
| 2650 | 1.2.4.2.35.3 | 1.2.4.2.35.3 | 6 | Simulate Load | 2026-10-01 | 2026-10-01 | 2026-04-17 | 2026-04-17 | 0 | 0.125 | As Soon As Possible | Future Task | -695.75h | 0h | Data Migration Team |  | True | True | PTM_CM48_Equipment_Master_Serial Numbers |  | Data | 2651 | 1.81 1.94 302.25 302.38 300.44  | 2649 | 2649 1.8125 Pre Load Validation |
| 2651 | 1.2.4.2.35.4 | 1.2.4.2.35.4 | 6 | Error and Defect Mitigation | 2026-10-01 | 2026-10-01 | 2026-04-17 | 2026-04-17 | 0 | 0.25 | As Soon As Possible | Future Task | -695.75h | 0h | Brad Meseck |  | True | True | PTM_CM48_Equipment_Master_Serial Numbers | Matt Palastro, Dave Duda | PTM | 2652 | 1.94 2.19 302.38 302.63 300.44  | 2650 | 2650 1.9375 Simulate Load |
| 2652 | 1.2.4.2.35.5 | 1.2.4.2.35.5 | 6 | Load | 2026-10-01 | 2026-10-01 | 2026-04-17 | 2026-04-20 | 0 | 0.25 | As Soon As Possible | Future Task | -695.75h | 0h | Data Migration Team |  | True | True | PTM_CM48_Equipment_Master_Serial Numbers |  | Data | 2653 | 2.19 2.44 302.63 302.88 300.44  | 2651 | 2651 2.1875 Error and Defect Mitigation |
| 2653 | 1.2.4.2.35.6 | 1.2.4.2.35.6 | 6 | Post Load Validation | 2026-10-01 | 2026-10-02 | 2026-04-20 | 2026-04-20 | 0 | 0.375 | As Soon As Possible | Future Task | -695.75h | 0h | Brad Meseck |  | True | True | PTM_CM48_Equipment_Master_Serial Numbers | Matt Palastro, Dave Duda | PTM | 2655 | 2.44 2.81 302.88 303.25 300.44  | 2652 | 2652 2.4375 Load |
| 2654 | 1.2.4.2.36 | 1.2.4.2.36 | 5 | PTM_CM48_Equipment_Master_Service | 2026-09-24 | 2026-10-02 | 2026-04-20 | 2026-04-21 | 0 | 6.78 | As Soon As Possible | Future Task | -86.97d | 0d | Brad Meseck; Chip Holder; David Duda; Matt Palastro; Sunil Srinivasa; Aniruddha Sathe; Susan Graham; Eric Heisler; Sam Penrod; Furkan Alko | True | True | True | Master Data Loads | Brad Meseck | PTM |  |  |  |  |
| 2655 | 1.2.4.2.36.1 | 1.2.4.2.36.1 | 6 | Load File Staged and Posted "Ready" | 2026-10-02 | 2026-10-02 | 2026-04-20 | 2026-04-20 | 0 | 0.0625 | As Soon As Possible | Future Task | -41745m | 0m | Brad Meseck |  | True | True | PTM_CM48_Equipment_Master_Service |  | PTM | 2656 | 2.81 2.88 303.25 303.31 300.44  | 2653 | 2653 2.8125 Post Load Validation |
| 2656 | 1.2.4.2.36.2 | 1.2.4.2.36.2 | 6 | Pre Load Validation | 2026-10-02 | 2026-10-02 | 2026-04-20 | 2026-04-20 | 0 | 0.0625 | As Soon As Possible | Future Task | -41745m | 0m | Brad Meseck |  | True | True | PTM_CM48_Equipment_Master_Service | Matt Palastro, Dave Duda | PTM | 2657 | 2.88 2.94 303.31 303.38 300.44  | 2655 | 2655 2.875 Load File Staged and Posted "Ready" |
| 2657 | 1.2.4.2.36.3 | 1.2.4.2.36.3 | 6 | Simulate Load | 2026-10-02 | 2026-10-02 | 2026-04-20 | 2026-04-20 | 0 | 0.125 | As Soon As Possible | Future Task | -695.75h | 0h | Data Migration Team |  | True | True | PTM_CM48_Equipment_Master_Service |  | Data | 2658 | 2.94 3.06 303.38 303.5 300.44  | 2656 | 2656 2.9375 Pre Load Validation |
| 2658 | 1.2.4.2.36.4 | 1.2.4.2.36.4 | 6 | Error and Defect Mitigation | 2026-10-02 | 2026-10-02 | 2026-04-20 | 2026-04-21 | 0 | 0.25 | As Soon As Possible | Future Task | -695.75h | 0h | Brad Meseck |  | True | True | PTM_CM48_Equipment_Master_Service | Matt Palastro, Dave Duda | PTM | 2659 | 3.06 3.31 303.5 303.75 300.44  | 2657 | 2657 3.0625 Simulate Load |
| 2659 | 1.2.4.2.36.5 | 1.2.4.2.36.5 | 6 | Load | 2026-10-02 | 2026-10-02 | 2026-04-21 | 2026-04-21 | 0 | 0.25 | Finish No Earlier Than | Future Task | -695.75h | 0h | Data Migration Team |  | True | True | PTM_CM48_Equipment_Master_Service |  | Data |  | 3.31 3.56 303.75 304 300.44  | 2658 | 2658 3.3125 Error and Defect Mitigation |
| 2660 | 1.2.4.2.36.6 | 1.2.4.2.36.6 | 6 | Post Load Validation | 2026-09-24 | 2026-09-24 | 2026-04-21 | 2026-04-21 | 0 | 0.375 | Start No Earlier Than | Future Task | -644.5h | 0h | Brad Meseck |  | True | True | PTM_CM48_Equipment_Master_Service | Matt Palastro, Dave Duda | PTM |  | 0 0.38 303.63 304 303.63  |  |  |
| 2661 | 1.2.4.2.37 | 1.2.4.2.37 | 5 | VC_Object Dependencies | 2026-09-24 | 2026-09-24 | 2026-04-06 | 2026-04-06 | 0 | 0.63 | As Soon As Possible | Future Task | -82.69d | 0d | COULD NOT BE DETERMINED | True | True | True | Master Data Loads | Chip Holder |  |  |  |  |  |
| 2662 | 1.2.4.2.37.1 | 1.2.4.2.37.1 | 6 | Run ALE Transaction to QS5 from DS4 130 | 2026-09-24 | 2026-09-24 | 2026-04-06 | 2026-04-06 | 0 | 0.25 | As Soon As Possible | Future Task | -661.5h | 0h | Eric Heisler |  | True | True | VC_Object Dependencies |  | PTM | 2663 | 0 0.25 302.13 302.38 302.12  | 2423 | 2423 0.0020833333333333333 PMO Authorization to Start Data Loads |
| 2663 | 1.2.4.2.37.2 | 1.2.4.2.37.2 | 6 | Post Load Validation | 2026-09-24 | 2026-09-24 | 2026-04-06 | 2026-04-06 | 0 | 0.375 | As Soon As Possible | Future Task | -661.5h | 0h | Eric Heisler |  | True | True | VC_Object Dependencies | Matt Palastro, Dave Duda | PTM | 2665 | 0.25 0.63 302.38 302.75 302.12  | 2662 | 2662 0.2520833333333333 Run ALE Transaction to QS5 from DS4 130 |
| 2664 | 1.2.4.2.38 | 1.2.4.2.38 | 5 | VC_Characteristics | 2026-09-24 | 2026-09-25 | 2026-04-06 | 2026-04-07 | 0 | 0.63 | As Soon As Possible | Future Task | -82.69d | 0d | COULD NOT BE DETERMINED | True | True | True | Master Data Loads | Chip Holder |  |  |  |  |  |
| 2665 | 1.2.4.2.38.1 | 1.2.4.2.38.1 | 6 | Run ALE Transaction to QS5 from DS4 130 | 2026-09-24 | 2026-09-24 | 2026-04-06 | 2026-04-06 | 0 | 0.25 | As Soon As Possible | Future Task | -661.5h | 0h | Eric Heisler |  | True | True | VC_Characteristics |  | PTM | 2666 | 0.63 0.88 302.75 303 302.12  | 2663 | 2663 0.6270833333333333 Post Load Validation |
| 2666 | 1.2.4.2.38.2 | 1.2.4.2.38.2 | 6 | Post Load Validation | 2026-09-24 | 2026-09-25 | 2026-04-06 | 2026-04-07 | 0 | 0.375 | As Soon As Possible | Future Task | -661.5h | 0h | Eric Heisler |  | True | True | VC_Characteristics | Matt Palastro, Dave Duda | PTM | 2668 | 0.88 1.25 303 303.38 302.12  | 2665 | 2665 0.8770833333333333 Run ALE Transaction to QS5 from DS4 130 |
| 2667 | 1.2.4.2.39 | 1.2.4.2.39 | 5 | VC_Classes | 2026-09-25 | 2026-09-25 | 2026-04-07 | 2026-04-07 | 0 | 0.63 | As Soon As Possible | Future Task | -82.69d | 0d | COULD NOT BE DETERMINED | True | True | True | Master Data Loads | Chip Holder |  |  |  |  |  |
| 2668 | 1.2.4.2.39.1 | 1.2.4.2.39.1 | 6 | Run ALE Transaction to QS5 from DS4 130 | 2026-09-25 | 2026-09-25 | 2026-04-07 | 2026-04-07 | 0 | 0.25 | As Soon As Possible | Future Task | -661.5h | 0h | Eric Heisler |  | True | True | VC_Classes |  | PTM | 2669 | 1.25 1.5 303.38 303.63 302.12  | 2666 | 2666 1.2520833333333332 Post Load Validation |
| 2669 | 1.2.4.2.39.2 | 1.2.4.2.39.2 | 6 | Post Load Validation | 2026-09-25 | 2026-09-25 | 2026-04-07 | 2026-04-07 | 0 | 0.375 | As Soon As Possible | Future Task | -661.5h | 0h | Eric Heisler |  | True | True | VC_Classes | Matt Palastro, Dave Duda | PTM | 2674 | 1.5 1.88 303.63 304 302.12  | 2668 | 2668 1.5020833333333332 Run ALE Transaction to QS5 from DS4 130 |
| 2441 | 1.2.4.2.4 | 1.2.4.2.4 | 5 | RTR_CM05_Profit_Center | 2026-09-24 | 2026-09-25 | 2026-04-06 | 2026-04-07 | 0 | 1.13 | As Soon As Possible | Future Task | -84.72d | 0d | COULD NOT BE DETERMINED | True | True | True | Master Data Loads |  |  |  |  |  |  |
| 2442 | 1.2.4.2.4.1 | 1.2.4.2.4.1 | 6 | Load File Staged and Posted "Ready" | 2026-09-24 | 2026-09-24 | 2026-04-06 | 2026-04-06 | 0 | 0.125 | As Soon As Possible | Future Task | -677.75h | 0h | Kasey Hughes |  | True | True | RTR_CM05_Profit_Center |  | Finance | 2443 | 0.75 0.88 301.75 301.88 301  | 2427 | 2427 0.7520833333333333 Post Load Validation |
| 2443 | 1.2.4.2.4.2 | 1.2.4.2.4.2 | 6 | Pre Load Validation | 2026-09-24 | 2026-09-25 | 2026-04-06 | 2026-04-07 | 0 | 0.25 | As Soon As Possible | Future Task | -677.75h | 0h | Kasey Hughes |  | True | True | RTR_CM05_Profit_Center | Brian Wagner | Finance | 2444 | 0.88 1.13 301.88 302.13 301  | 2442 | 2442 0.8770833333333333 Load File Staged and Posted "Ready" |
| 2444 | 1.2.4.2.4.3 | 1.2.4.2.4.3 | 6 | Simulate Load | 2026-09-25 | 2026-09-25 | 2026-04-07 | 2026-04-07 | 0 | 0.125 | As Soon As Possible | Future Task | -677.75h | 0h | Data Migration Team |  | True | True | RTR_CM05_Profit_Center |  | Data | 2445 | 1.13 1.25 302.13 302.25 301  | 2443 | 2443 1.1270833333333332 Pre Load Validation |
| 2445 | 1.2.4.2.4.4 | 1.2.4.2.4.4 | 6 | Error and Defect Mitigation | 2026-09-25 | 2026-09-25 | 2026-04-07 | 2026-04-07 | 0 | 0.25 | As Soon As Possible | Future Task | -677.75h | 0h | Kasey Hughes |  | True | True | RTR_CM05_Profit_Center | Brian Wagner | Finance | 2446 | 1.25 1.5 302.25 302.5 301  | 2444 | 2444 1.2520833333333332 Simulate Load |
| 2446 | 1.2.4.2.4.5 | 1.2.4.2.4.5 | 6 | Load | 2026-09-25 | 2026-09-25 | 2026-04-07 | 2026-04-07 | 0 | 0.125 | As Soon As Possible | Future Task | -677.75h | 0h | Data Migration Team |  | True | True | RTR_CM05_Profit_Center |  | Data | 2447 | 1.5 1.63 302.5 302.63 301  | 2445 | 2445 1.5020833333333332 Error and Defect Mitigation |
| 2447 | 1.2.4.2.4.6 | 1.2.4.2.4.6 | 6 | Post Load Validation | 2026-09-25 | 2026-09-25 | 2026-04-07 | 2026-04-07 | 0 | 0.25 | As Soon As Possible | Future Task | -677.75h | 0h | Kasey Hughes |  | True | True | RTR_CM05_Profit_Center | Brian Wagner | Finance | 244, 925, 782, 585 | 1.63 1.88 302.63 302.88 301  | 2446 | 2446 1.6270833333333332 Load |
| 2670 | 1.2.4.2.40 | 1.2.4.2.40 | 5 | VC_Classification (Class Type 200) | 2026-09-29 | 2026-09-29 | 2026-04-15 | 2026-04-16 | 0 | 0.63 | As Soon As Possible | Future Task | -84.03d | 0d | COULD NOT BE DETERMINED | True | True | True | Master Data Loads | Chip Holder |  |  |  |  |  |
| 2671 | 1.2.4.2.40.1 | 1.2.4.2.40.1 | 6 | Run ALE Transaction to QS5 from DS4 130 | 2026-09-29 | 2026-09-29 | 2026-04-15 | 2026-04-16 | 0 | 0.25 | As Soon As Possible | Future Task | -672.25h | 0h | Eric Heisler |  | True | True | VC_Classification (Class Type 200) |  | PTM | 2672 | 2.69 2.94 303.38 303.63 300.69  | 2590 | 2590 2.6875 Post Load Validation |
| 2672 | 1.2.4.2.40.2 | 1.2.4.2.40.2 | 6 | Post Load Validation | 2026-09-29 | 2026-09-29 | 2026-04-16 | 2026-04-16 | 0 | 0.375 | As Soon As Possible | Future Task | -672.25h | 0h | Eric Heisler |  | True | True | VC_Classification (Class Type 200) | Matt Palastro, Dave Duda | PTM |  | 2.94 3.31 303.63 304 300.69  | 2671 | 2671 2.9375 Run ALE Transaction to QS5 from DS4 130 |
| 2673 | 1.2.4.2.41 | 1.2.4.2.41 | 5 | VC_Dependency Nets | 2026-09-29 | 2026-09-29 | 2026-04-15 | 2026-04-16 | 0 | 0.63 | As Soon As Possible | Future Task | -84.03d | 0d | COULD NOT BE DETERMINED | True | True | True | Master Data Loads | Chip Holder |  |  |  |  |  |
| 2674 | 1.2.4.2.41.1 | 1.2.4.2.41.1 | 6 | Run ALE Transaction to QS5 from DS4 130 | 2026-09-29 | 2026-09-29 | 2026-04-15 | 2026-04-16 | 0 | 0.25 | As Soon As Possible | Future Task | -672.25h | 0h | Eric Heisler |  | True | True | VC_Dependency Nets |  | PTM | 2675 | 0 0.25 303.38 303.63 303.38  | 25, 842, 669 | 669 0 Dev Environment Release from SAP |
| 2675 | 1.2.4.2.41.2 | 1.2.4.2.41.2 | 6 | Post Load Validation | 2026-09-29 | 2026-09-29 | 2026-04-16 | 2026-04-16 | 0 | 0.375 | As Soon As Possible | Future Task | -672.25h | 0h | Eric Heisler |  | True | True | VC_Dependency Nets | Matt Palastro, Dave Duda | PTM |  | 0.25 0.63 303.63 304 303.38  | 2674 | 2674 0.25 Run ALE Transaction to QS5 from DS4 130 |

| uid | wbs | outlineNumber | outlineLevel | name | start | finish | baselineStart | baselineFinish | percentComplete | durationDays | constraintType | status | totalSlackRaw | freeSlackRaw | resourceNames | summary | criticalFlag | active | summaryName | businessValidationOwner | workstream | successors | cpm | predecessors | drivers | milestone |
| --- | --- | --- | --- | --- | --- | --- | --- | --- | --- | --- | --- | --- | --- | --- | --- | --- | --- | --- | --- | --- | --- | --- | --- | --- | --- | --- |
| 2676 | 1.2.4.2.42 | 1.2.4.2.42 | 5 | VC_Configuration Profiles | 2026-09-29 | 2026-09-29 | 2026-04-15 | 2026-04-16 | 0 | 0.63 | As Soon As Possible | Future Task | -86d | 0d | COULD NOT BE DETERMINED | True | True | True | Master Data Loads | Chip Holder |  |  |  |  |  |  |
| 2677 | 1.2.4.2.42.1 | 1.2.4.2.42.1 | 6 | Run ALE Transaction to QS5 from DS4 130 | 2026-09-29 | 2026-09-29 | 2026-04-15 | 2026-04-16 | 0 | 0.25 | As Soon As Possible | Future Task | -688h | 0h | Eric Heisler |  | True | True | VC_Configuration Profiles |  | PTM | 2678 | 0 0.25 301.41 301.66 301.41  | 2584 |  |  |
| 2678 | 1.2.4.2.42.2 | 1.2.4.2.42.2 | 6 | Post Load Validation | 2026-09-29 | 2026-09-29 | 2026-04-16 | 2026-04-16 | 0 | 0.375 | As Soon As Possible | Future Task | -688h | 0h | Eric Heisler |  | True | True | VC_Configuration Profiles | Matt Palastro, Dave Duda | PTM | 26, 862, 680 | 0.25 0.63 301.66 302.03 301.41  | 2677 | 2677 0.25 Run ALE Transaction to QS5 from DS4 130 |  |
| 2679 | 1.2.4.2.43 | 1.2.4.2.43 | 5 | VC_Variant Tables | 2026-09-29 | 2026-09-30 | 2026-04-16 | 2026-04-17 | 0 | 0.63 | As Soon As Possible | Future Task | -85.28d | 0d | COULD NOT BE DETERMINED | True | True | True | Master Data Loads | Chip Holder |  |  |  |  |  |  |
| 2680 | 1.2.4.2.43.1 | 1.2.4.2.43.1 | 6 | Run ALE Transaction to QS5 from DS4 130 | 2026-09-29 | 2026-09-30 | 2026-04-16 | 2026-04-16 | 0 | 0.25 | As Soon As Possible | Future Task | -682.25h | 0h | Eric Heisler |  | True | True | VC_Variant Tables |  | PTM | 2681 | 0.63 0.88 302.75 303 302.13  | 2678 | 2678 0.625 Post Load Validation |  |
| 2681 | 1.2.4.2.43.2 | 1.2.4.2.43.2 | 6 | Post Load Validation | 2026-09-30 | 2026-09-30 | 2026-04-16 | 2026-04-17 | 0 | 0.375 | As Soon As Possible | Future Task | -682.25h | 0h | Eric Heisler |  | True | True | VC_Variant Tables | Matt Palastro, Dave Duda | PTM | 2683 | 0.88 1.25 303 303.38 302.13  | 2680 | 2680 0.875 Run ALE Transaction to QS5 from DS4 130 |  |
| 2682 | 1.2.4.2.44 | 1.2.4.2.44 | 5 | VC_Variant Tables Content | 2026-09-30 | 2026-10-01 | 2026-04-17 | 2026-04-17 | 0 | 0.63 | As Soon As Possible | Future Task | -85.28d | 0d | COULD NOT BE DETERMINED | True | True | True | Master Data Loads | Chip Holder |  |  |  |  |  |  |
| 2683 | 1.2.4.2.44.1 | 1.2.4.2.44.1 | 6 | Run ALE Transaction to QS5 from DS4 130 | 2026-09-30 | 2026-09-30 | 2026-04-17 | 2026-04-17 | 0 | 0.25 | As Soon As Possible | Future Task | -682.25h | 0h | Eric Heisler |  | True | True | VC_Variant Tables Content |  | PTM | 2684 | 1.25 1.5 303.38 303.63 302.13  | 2681 | 2681 1.25 Post Load Validation |  |
| 2684 | 1.2.4.2.44.2 | 1.2.4.2.44.2 | 6 | Post Load Validation | 2026-09-30 | 2026-10-01 | 2026-04-17 | 2026-04-17 | 0 | 0.375 | As Soon As Possible | Future Task | -682.25h | 0h | Eric Heisler |  | True | True | VC_Variant Tables Content | Matt Palastro, Dave Duda | PTM |  | 1.5 1.88 303.63 304 302.13  | 2683 | 2683 1.5 Run ALE Transaction to QS5 from DS4 130 |  |
| 2685 | 1.2.4.2.45 | 1.2.4.2.45 | 5 | VC_Characteristic Groups | 2026-09-29 | 2026-10-01 | 2026-04-16 | 2026-04-17 | 0 | 1.97 | As Soon As Possible | Future Task | -86d | 0d | COULD NOT BE DETERMINED | True | True | True | Master Data Loads | Chip Holder |  |  |  |  |  |  |
| 2686 | 1.2.4.2.45.1 | 1.2.4.2.45.1 | 6 | Run ALE Transaction to QS5 from DS4 130 | 2026-09-29 | 2026-10-01 | 2026-04-16 | 2026-04-16 | 0 | 1.59375 | Finish No Earlier Than | Future Task | -688h | 0h | Eric Heisler |  | True | True | VC_Characteristic Groups |  | PTM | 2687 | 0.63 2.22 302.03 303.63 301.41  | 2678 | 2678 0.625 Post Load Validation |  |
| 2687 | 1.2.4.2.45.2 | 1.2.4.2.45.2 | 6 | Post Load Validation | 2026-10-01 | 2026-10-01 | 2026-04-16 | 2026-04-17 | 0 | 0.375 | As Soon As Possible | Future Task | -688h | 0h | Eric Heisler |  | True | True | VC_Characteristic Groups | Matt Palastro, Dave Duda | PTM |  | 2.22 2.59 303.63 304 301.41  | 2686 | 2686 2.21875 Run ALE Transaction to QS5 from DS4 130 |  |
| 2688 | 1.2.4.2.46 | 1.2.4.2.46 | 5 | PTM_CM52_Super_BOM | 2026-09-29 | 2026-10-05 | 2026-04-15 | 2026-04-16 | 0 | 4.09 | As Soon As Possible | Future Task | -90.75d | 0d | Brad Meseck; Chip Holder; David Duda; Matt Palastro; Sunil Srinivasa; Aniruddha Sathe; Susan Graham; Eric Heisler; Sam Penrod; Furkan Alko | True | True | True | Master Data Loads | Brad Meseck | PTM |  |  |  |  |  |
| 2689 | 1.2.4.2.46.1 | 1.2.4.2.46.1 | 6 | Load File Staged and Posted "Ready" | 2026-09-29 | 2026-09-29 | 2026-04-15 | 2026-04-15 | 0 | 0.0625 | As Soon As Possible | Future Task | -43560m | 0m | Eric Heisler |  | True | True | PTM_CM52_Super_BOM |  | PTM | 2690 | 2.69 2.75 297.78 297.84 295.09  | 2590 | 2590 2.6875 Post Load Validation |  |
| 2690 | 1.2.4.2.46.2 | 1.2.4.2.46.2 | 6 | Pre Load Validation | 2026-09-29 | 2026-09-29 | 2026-04-15 | 2026-04-15 | 0 | 0.0625 | As Soon As Possible | Future Task | -43560m | 0m | Eric Heisler |  | True | True | PTM_CM52_Super_BOM | Matt Palastro, Dave Duda | PTM | 2691 | 2.75 2.81 297.84 297.91 295.09  | 2689 | 2689 2.75 Load File Staged and Posted "Ready" |  |
| 2691 | 1.2.4.2.46.3 | 1.2.4.2.46.3 | 6 | Simulate Load | 2026-09-29 | 2026-10-02 | 2026-04-15 | 2026-04-16 | 0 | 3.09375 | Finish No Earlier Than | Future Task | -726h | 0h | Data Migration Team |  | True | True | PTM_CM52_Super_BOM | Matt Palastro, Dave Duda | Data | 2692 | 2.81 5.91 297.91 301 295.09  | 2690 | 2690 2.8125 Pre Load Validation |  |
| 2692 | 1.2.4.2.46.4 | 1.2.4.2.46.4 | 6 | Error and Defect Mitigation | 2026-10-02 | 2026-10-02 | 2026-04-16 | 2026-04-16 | 0 | 0.25 | Finish No Earlier Than | Future Task | -726h | 0h | Eric Heisler |  | True | True | PTM_CM52_Super_BOM | Matt Palastro, Dave Duda | PTM | 2693 | 5.91 6.16 301 301.25 295.09  | 2691 | 2691 5.90625 Simulate Load |  |
| 2693 | 1.2.4.2.46.5 | 1.2.4.2.46.5 | 6 | Load | 2026-10-02 | 2026-10-02 | 2026-04-16 | 2026-04-16 | 0 | 0.25 | Start No Earlier Than | Future Task | -726h | 0h | Data Migration Team |  | True | True | PTM_CM52_Super_BOM |  | Data | 2694 | 6.16 6.41 301.25 301.5 295.09  | 2692 | 2692 6.15625 Error and Defect Mitigation |  |
| 2694 | 1.2.4.2.46.6 | 1.2.4.2.46.6 | 6 | Post Load Validation | 2026-10-05 | 2026-10-05 | 2026-04-16 | 2026-04-16 | 0 | 0.375 | As Soon As Possible | Future Task | -726h | 0h | Eric Heisler |  | True | True | PTM_CM52_Super_BOM | Matt Palastro, Dave Duda | PTM | 2696 | 6.41 6.78 301.5 301.88 295.09  | 2693 | 2693 6.40625 Load |  |
| 2695 | 1.2.4.2.47 | 1.2.4.2.47 | 5 | PTM_CM53_Super_Routing | 2026-10-05 | 2026-10-07 | 2026-04-16 | 2026-04-20 | 0 | 2.13 | As Soon As Possible | Future Task | -90.75d | 0d | Brad Meseck; Chip Holder; David Duda; Matt Palastro; Sunil Srinivasa; Aniruddha Sathe; Susan Graham; Eric Heisler; Sam Penrod; Furkan Alko | True | True | True | Master Data Loads | Brad Meseck | PTM |  |  |  |  |  |
| 2696 | 1.2.4.2.47.1 | 1.2.4.2.47.1 | 6 | Load File Staged and Posted "Ready" | 2026-10-05 | 2026-10-05 | 2026-04-16 | 2026-04-16 | 0 | 0.0625 | As Soon As Possible | Future Task | -43560m | 0m | Eric Heisler |  | True | True | PTM_CM53_Super_Routing |  | PTM | 2697 | 6.78 6.84 301.88 301.94 295.09  | 2694 | 2694 6.78125 Post Load Validation |  |
| 2697 | 1.2.4.2.47.2 | 1.2.4.2.47.2 | 6 | Pre Load Validation | 2026-10-05 | 2026-10-05 | 2026-04-16 | 2026-04-17 | 0 | 0.0625 | As Soon As Possible | Future Task | -43560m | 0m | Eric Heisler |  | True | True | PTM_CM53_Super_Routing | Matt Palastro, Dave Duda | PTM | 2698 | 6.84 6.91 301.94 302 295.09  | 2696 | 2696 6.84375 Load File Staged and Posted "Ready" |  |
| 2698 | 1.2.4.2.47.3 | 1.2.4.2.47.3 | 6 | Simulate Load | 2026-10-05 | 2026-10-06 | 2026-04-17 | 2026-04-17 | 0 | 0.125 | As Soon As Possible | Future Task | -726h | 0h | Data Migration Team |  | True | True | PTM_CM53_Super_Routing |  | Data | 2699 | 6.91 7.03 302 302.13 295.09  | 2697 | 2697 6.90625 Pre Load Validation |  |
| 2699 | 1.2.4.2.47.4 | 1.2.4.2.47.4 | 6 | Error and Defect Mitigation | 2026-10-06 | 2026-10-06 | 2026-04-17 | 2026-04-17 | 0 | 0.25 | As Soon As Possible | Future Task | -726h | 0h | Eric Heisler |  | True | True | PTM_CM53_Super_Routing | Matt Palastro, Dave Duda | PTM | 2700 | 7.03 7.28 302.13 302.38 295.09  | 2698 | 2698 7.03125 Simulate Load |  |
| 2700 | 1.2.4.2.47.5 | 1.2.4.2.47.5 | 6 | Load | 2026-10-06 | 2026-10-07 | 2026-04-17 | 2026-04-17 | 0 | 0.25 | As Soon As Possible | Future Task | -726h | 0h | Data Migration Team |  | True | True | PTM_CM53_Super_Routing |  | Data | 27, 12, 703 | 7.28 7.53 302.38 302.63 295.09  | 2699 | 2699 7.28125 Error and Defect Mitigation |  |
| 2701 | 1.2.4.2.47.6 | 1.2.4.2.47.6 | 6 | Post Load Validation | 2026-10-07 | 2026-10-07 | 2026-04-17 | 2026-04-20 | 0 | 0.375 | As Soon As Possible | Future Task | -717h | 0h | Eric Heisler |  | True | True | PTM_CM53_Super_Routing | Matt Palastro, Dave Duda | PTM |  | 7.53 7.91 303.63 304 296.09  | 2700 | 2700 7.53125 Load |  |
| 2702 | 1.2.4.2.48 | 1.2.4.2.48 | 5 | VC_VK30 Pricing Variant | 2026-10-07 | 2026-10-07 | 2026-04-17 | 2026-04-20 | 0 | 0.69 | As Soon As Possible | Future Task | -90.75d | 0d | COULD NOT BE DETERMINED | True | True | True | Master Data Loads | Chip Holder |  |  |  |  |  |  |
| 2703 | 1.2.4.2.48.1 | 1.2.4.2.48.1 | 6 | Manual File Staged and Posted "Ready" | 2026-10-07 | 2026-10-07 | 2026-04-17 | 2026-04-17 | 0 | 0.0625 | Start No Earlier Than | Future Task | -43560m | 0m | Eric Heisler |  | True | True | VC_VK30 Pricing Variant | Matt Palastro, Dave Duda | PTM | 2704 | 7.53 7.59 302.63 302.69 295.09  | 2700 | 2700 7.53125 Load |  |
| 2704 | 1.2.4.2.48.2 | 1.2.4.2.48.2 | 6 | Load | 2026-10-07 | 2026-10-07 | 2026-04-17 | 2026-04-17 | 0 | 0.25 | As Soon As Possible | Future Task | -726h | 0h | Eric Heisler |  | True | True | VC_VK30 Pricing Variant |  | PTM | 2705 | 7.59 7.84 302.69 302.94 295.09  | 2703 | 2703 7.59375 Manual File Staged and Posted "Ready" |  |
| 2705 | 1.2.4.2.48.3 | 1.2.4.2.48.3 | 6 | Post Load Validation | 2026-10-07 | 2026-10-07 | 2026-04-17 | 2026-04-20 | 0 | 0.375 | As Soon As Possible | Future Task | -726h | 0h | Eric Heisler |  | True | True | VC_VK30 Pricing Variant | Matt Palastro, Dave Duda | PTM | 2707 | 7.84 8.22 302.94 303.31 295.09  | 2704 | 2704 7.84375 Load |  |
| 2706 | 1.2.4.2.49 | 1.2.4.2.49 | 5 | OTC_CM22_Pricing_Condition | 2026-10-07 | 2026-10-08 | 2026-04-20 | 2026-04-21 | 0 | 0.69 | As Soon As Possible | Future Task | -90.75d | 0d | Anitha Jothi; Kim Kolesar; Michele Colombo; Michiko Tomihari; Ric Haraida; Rod Santos; Shibu Mathew; Narendra Kallam; Keith Riley; James Manohar | True | True | True | Master Data Loads | Kim Kolesar | OTC |  |  |  |  |  |
| 2707 | 1.2.4.2.49.1 | 1.2.4.2.49.1 | 6 | Manual File Staged and Posted "Ready" | 2026-10-07 | 2026-10-07 | 2026-04-20 | 2026-04-20 | 0 | 0.0625 | Start No Earlier Than | Future Task | -43560m | 0m | Ric Haraida |  | True | True | OTC_CM22_Pricing_Condition | Matt Palastro, Dave Duda | OTC | 2708 | 8.22 8.28 303.31 303.38 295.09  | 2705 | 2705 8.21875 Post Load Validation |  |
| 2708 | 1.2.4.2.49.2 | 1.2.4.2.49.2 | 6 | Load | 2026-10-07 | 2026-10-08 | 2026-04-20 | 2026-04-20 | 0 | 0.25 | As Soon As Possible | Future Task | -726h | 0h | Ric Haraida |  | True | True | OTC_CM22_Pricing_Condition |  | OTC | 27, 92, 711 | 8.28 8.53 303.38 303.63 295.09  | 2707 | 2707 8.28125 Manual File Staged and Posted "Ready" |  |
| 2709 | 1.2.4.2.49.3 | 1.2.4.2.49.3 | 6 | Post Load Validation | 2026-10-08 | 2026-10-08 | 2026-04-20 | 2026-04-21 | 0 | 0.375 | As Soon As Possible | Future Task | -725h | 0h | Ric Haraida,Kim Kolesar |  | True | True | OTC_CM22_Pricing_Condition | Matt Palastro, Dave Duda,kim | OTC |  | 8.53 8.91 303.63 304 295.09  | 2708 | 2708 8.53125 Load |  |
| 2448 | 1.2.4.2.5 | 1.2.4.2.5 | 5 | RTR_CM04_Cost_Center | 2026-09-25 | 2026-09-29 | 2026-04-07 | 2026-04-09 | 0 | 1.13 | As Soon As Possible | Future Task | -83.19d | 0d | COULD NOT BE DETERMINED | True | True | True | Master Data Loads |  |  |  |  |  |  |  |
| 2449 | 1.2.4.2.5.1 | 1.2.4.2.5.1 | 6 | Load File Staged and Posted "Ready" | 2026-09-25 | 2026-09-28 | 2026-04-07 | 2026-04-08 | 0 | 0.125 | As Soon As Possible | Future Task | -665.5h | 0h | Kasey Hughes |  | True | True | RTR_CM04_Cost_Center |  | Finance | 2450 | 1.88 2 302.88 303 301  | 2447 | 2447 1.8770833333333332 Post Load Validation |  |
| 2450 | 1.2.4.2.5.2 | 1.2.4.2.5.2 | 6 | Pre Load Validation | 2026-09-28 | 2026-09-28 | 2026-04-08 | 2026-04-08 | 0 | 0.25 | As Soon As Possible | Future Task | -665.5h | 0h | Kasey Hughes |  | True | True | RTR_CM04_Cost_Center | Brian Wagner | Finance | 2451 | 2 2.25 303 303.25 301  | 2449 | 2449 2.002083333333333 Load File Staged and Posted "Ready" |  |
| 2451 | 1.2.4.2.5.3 | 1.2.4.2.5.3 | 6 | Simulate Load | 2026-09-28 | 2026-09-28 | 2026-04-08 | 2026-04-08 | 0 | 0.125 | As Soon As Possible | Future Task | -665.5h | 0h | Data Migration Team |  | True | True | RTR_CM04_Cost_Center |  | Data | 2452 | 2.25 2.38 303.25 303.38 301  | 2450 | 2450 2.252083333333333 Pre Load Validation |  |
| 2452 | 1.2.4.2.5.4 | 1.2.4.2.5.4 | 6 | Error and Defect Mitigation | 2026-09-28 | 2026-09-28 | 2026-04-08 | 2026-04-08 | 0 | 0.25 | As Soon As Possible | Future Task | -665.5h | 0h | Kasey Hughes |  | True | True | RTR_CM04_Cost_Center | Brian Wagner | Finance | 2453 | 2.38 2.63 303.38 303.63 301  | 2451 | 2451 2.377083333333333 Simulate Load |  |
| 2453 | 1.2.4.2.5.5 | 1.2.4.2.5.5 | 6 | Load | 2026-09-28 | 2026-09-28 | 2026-04-08 | 2026-04-08 | 0 | 0.125 | As Soon As Possible | Future Task | -665.5h | 0h | Data Migration Team |  | True | True | RTR_CM04_Cost_Center |  | Data | 2454 | 2.63 2.75 303.63 303.75 301  | 2452 | 2452 2.627083333333333 Error and Defect Mitigation |  |
| 2454 | 1.2.4.2.5.6 | 1.2.4.2.5.6 | 6 | Post Load Validation | 2026-09-28 | 2026-09-29 | 2026-04-08 | 2026-04-09 | 0 | 0.25 | As Soon As Possible | Future Task | -665.5h | 0h | Kasey Hughes |  | True | True | RTR_CM04_Cost_Center | Brian Wagner | Finance |  | 2.75 3 303.75 304 301  | 2453 | 2453 2.752083333333333 Load |  |
| 2710 | 1.2.4.2.50 | 1.2.4.2.50 | 5 | OTC_CM21_CMIR | 2026-10-08 | 2026-10-08 | 2026-04-20 | 2026-04-21 | 0 | 0.5 | As Soon As Possible | Future Task | -90.75d | 0d | Anitha Jothi; Kim Kolesar; Michele Colombo; Michiko Tomihari; Ric Haraida; Rod Santos; Shibu Mathew; Narendra Kallam; Keith Riley; James Manohar | True | True | True | Master Data Loads | Kim Kolesar | OTC |  |  |  |  |  |
| 2711 | 1.2.4.2.50.1 | 1.2.4.2.50.1 | 6 | Load File Staged and Posted "Ready" | 2026-10-08 | 2026-10-08 | 2026-04-20 | 2026-04-20 | 0 | 0.0625 | As Soon As Possible | Future Task | -43560m | 0m | Ric Haraida |  | True | True | OTC_CM21_CMIR |  | OTC | 2712 | 1 1.06 303.5 303.56 302.5  | 27, 82, 719 | 82 1 Specs Assigned to Developer |  |
| 2712 | 1.2.4.2.50.2 | 1.2.4.2.50.2 | 6 | Pre Load Validation | 2026-10-08 | 2026-10-08 | 2026-04-20 | 2026-04-20 | 0 | 0.0625 | As Soon As Possible | Future Task | -43560m | 0m | Ric Haraida |  | True | True | OTC_CM21_CMIR | Kim | OTC | 2713 | 1.06 1.13 303.56 303.63 302.5  | 2711 | 2711 1.0625 Load File Staged and Posted "Ready" |  |
| 2713 | 1.2.4.2.50.3 | 1.2.4.2.50.3 | 6 | Simulate Load | 2026-10-08 | 2026-10-08 | 2026-04-20 | 2026-04-20 | 0 | 0 | As Soon As Possible | Future Task | -726h | 0h | Data Migration Team |  | True | True | OTC_CM21_CMIR |  | Data | 2714 | 1.13 1.13 303.63 303.63 302.5  | 2712 | 2712 1.125 Pre Load Validation | True |
| 2714 | 1.2.4.2.50.4 | 1.2.4.2.50.4 | 6 | Error and Defect Mitigation | 2026-10-08 | 2026-10-08 | 2026-04-20 | 2026-04-21 | 0 | 0 | As Soon As Possible | Future Task | -726h | 0h | Ric Haraida |  | True | True | OTC_CM21_CMIR | Kim | OTC | 2715 | 1.13 1.13 303.63 303.63 302.5  | 2713 | 2713 1.125 Simulate Load | True |
| 2715 | 1.2.4.2.50.5 | 1.2.4.2.50.5 | 6 | Load | 2026-10-08 | 2026-10-08 | 2026-04-21 | 2026-04-21 | 0 | 0 | As Soon As Possible | Future Task | -726h | 0h | Data Migration Team |  | True | True | OTC_CM21_CMIR |  | Data | 2716 | 1.13 1.13 303.63 303.63 302.5  | 2714 | 2714 1.125 Error and Defect Mitigation | True |
| 2716 | 1.2.4.2.50.6 | 1.2.4.2.50.6 | 6 | Post Load Validation | 2026-10-08 | 2026-10-08 | 2026-04-21 | 2026-04-21 | 0 | 0.375 | As Soon As Possible | Future Task | -726h | 0h | Ric Haraida |  | True | True | OTC_CM21_CMIR | Kim | OTC |  | 1.13 1.5 303.63 304 302.5  | 2715 | 2715 1.125 Load |  |
| 2717 | 1.2.4.2.51 | 1.2.4.2.51 | 5 | PTP_CM29_Source_List | 2026-09-25 | 2026-10-05 | 2026-04-13 | 2026-04-14 | 0 | 6.16 | As Soon As Possible | Future Task | -87.47d | 0d | Muniraju Surappachari; Nevin Varkey; Samuel Houff; Sarasija Ghosh; Surendra Krishna Acharya; Swetha SethumadhavaRao; James Farmer | True | True | True | Master Data Loads | Muniraju Surappachari | PTP |  |  |  |  |  |
| 2718 | 1.2.4.2.51.1 | 1.2.4.2.51.1 | 6 | Manual File Staged and Posted "Ready" | 2026-09-25 | 2026-09-25 | 2026-04-14 | 2026-04-14 | 0 | 0.0625 | Start No Earlier Than | Future Task | -39060m | 0m | Nevin Varkey |  | True | True | PTP_CM29_Source_List | Sam | PTP |  | 0 0.06 303.94 304 303.94  | 25, 612, 568 |  |  |
| 2719 | 1.2.4.2.51.2 | 1.2.4.2.51.2 | 6 | Load | 2026-10-02 | 2026-10-02 | 2026-04-13 | 2026-04-13 | 0 | 0.25 | Finish No Earlier Than | Future Task | -700.75h | 0h | Nevin Varkey |  | True | True | PTP_CM29_Source_List |  | PTP | 27, 112, 720 | 2 2.25 303.38 303.63 301.38  | 2537 | 2537 2 Post Load Validation |  |
| 2720 | 1.2.4.2.51.3 | 1.2.4.2.51.3 | 6 | Post Load Validation | 2026-10-02 | 2026-10-05 | 2026-04-13 | 2026-04-13 | 0 | 0.375 | As Soon As Possible | Future Task | -699.75h | 0h | Nevin Varkey |  | True | True | PTP_CM29_Source_List | Sam | PTP |  | 2.25 2.63 303.63 304 301.38  | 2719 | 2719 2.25 Load |  |
| 2721 | 1.2.4.2.52 | 1.2.4.2.52 | 5 | RTR_CM11_Asset_Master | 2026-09-24 | 2026-10-02 | 2026-04-10 | 2026-04-13 | 0 | 6.63 | As Soon As Possible | Future Task | -86.81d | 0d | COULD NOT BE DETERMINED | True | True | True | Master Data Loads |  |  |  |  |  |  |  |
| 2722 | 1.2.4.2.52.1 | 1.2.4.2.52.1 | 6 | Load File Staged and Posted "Ready" | 2026-09-24 | 2026-09-24 | 2026-04-10 | 2026-04-10 | 0 | 0.0625 | Start No Earlier Than | Future Task | -41670m | 0m | Kasey Hughes |  | True | True | RTR_CM11_Asset_Master |  | Finance | 27, 232, 777 | 0 0.06 297.38 297.44 297.38  |  |  |  |
| 2723 | 1.2.4.2.52.2 | 1.2.4.2.52.2 | 6 | Pre Load Validation | 2026-09-24 | 2026-09-24 | 2026-04-10 | 2026-04-10 | 0 | 0.0625 | As Soon As Possible | Future Task | -41670m | 0m | Kasey Hughes,Femi Oguntala |  | True | True | RTR_CM11_Asset_Master | Brian Wagner | Finance | 2724 | 0.06 0.13 297.44 297.5 297.38  | 2722 | 2722 0.0625 Load File Staged and Posted "Ready" |  |
| 2724 | 1.2.4.2.52.3 | 1.2.4.2.52.3 | 6 | Simulate Load | 2026-09-24 | 2026-09-30 | 2026-04-10 | 2026-04-10 | 0 | 3.875 | Finish No Earlier Than | Future Task | -694.5h | 0h | Data Migration Team |  | True | True | RTR_CM11_Asset_Master |  | Data | 2725 | 0.13 4 297.5 301.38 297.38  | 2723 | 2723 0.125 Pre Load Validation |  |
| 2725 | 1.2.4.2.52.4 | 1.2.4.2.52.4 | 6 | Error and Defect Mitigation | 2026-09-30 | 2026-10-02 | 2026-04-10 | 2026-04-10 | 0 | 2 | Finish No Earlier Than | Future Task | -694.5h | 0h | Kasey Hughes |  | True | True | RTR_CM11_Asset_Master | Brian Wagner | Finance | 2726 | 4 6 301.38 303.38 297.38  | 2724 | 2724 4 Simulate Load |  |
| 2726 | 1.2.4.2.52.5 | 1.2.4.2.52.5 | 6 | Load | 2026-10-02 | 2026-10-02 | 2026-04-10 | 2026-04-10 | 0 | 0.25 | Start No Earlier Than | Future Task | -694.5h | 0h | Data Migration Team |  | True | True | RTR_CM11_Asset_Master |  | Data | 2727 | 6 6.25 303.38 303.63 297.38  | 2725 | 2725 6 Error and Defect Mitigation |  |
| 2727 | 1.2.4.2.52.6 | 1.2.4.2.52.6 | 6 | Post Load Validation | 2026-10-02 | 2026-10-02 | 2026-04-10 | 2026-04-13 | 0 | 0.375 | As Soon As Possible | Future Task | -694.5h | 0h | Kasey Hughes |  | True | True | RTR_CM11_Asset_Master | Brian Wagner | Finance |  | 6.25 6.63 303.63 304 297.38  | 2726 | 2726 6.25 Load |  |
| 2728 | 1.2.4.2.53 | 1.2.4.2.53 | 5 | PTM_CM50_Material Class | 2026-09-29 | 2026-10-01 | 2026-04-16 | 2026-04-16 | 0 | 2.13 | As Soon As Possible | Future Task | -86.09d | 0d | Brad Meseck; Chip Holder; David Duda; Matt Palastro; Sunil Srinivasa; Aniruddha Sathe; Susan Graham; Eric Heisler; Sam Penrod; Furkan Alko | True | True | True | Master Data Loads | Brad Meseck | PTM |  |  |  |  |  |
| 2729 | 1.2.4.2.53.1 | 1.2.4.2.53.1 | 6 | Manual File Staged and Posted "Ready" | 2026-09-29 | 2026-09-29 | 2026-04-16 | 2026-04-16 | 0 | 0.0625 | As Soon As Possible | Future Task | -41325m | 0m | Sam |  | True | True | PTM_CM50_Material Class |  | PTM | 27, 302, 733 | 0.56 0.63 301.88 301.94 301.31  | 2634 | 2634 0.5625 Load File Staged and Posted "Ready" |  |
| 2730 | 1.2.4.2.53.2 | 1.2.4.2.53.2 | 6 | Load | 2026-09-29 | 2026-09-29 | 2026-04-16 | 2026-04-16 | 0 | 0.0625 | As Soon As Possible | Future Task | -41325m | 0m | Brad Meseck |  | True | True | PTM_CM50_Material Class | Matt Palastro, Dave Duda | PTM | 2731 | 0.63 0.69 301.94 302 301.31  | 2729 | 2729 0.625 Manual File Staged and Posted "Ready" |  |
| 2731 | 1.2.4.2.53.3 | 1.2.4.2.53.3 | 6 | Post Load Validation | 2026-09-29 | 2026-10-01 | 2026-04-16 | 2026-04-16 | 0 | 2 | Finish No Earlier Than | Future Task | -688.75h | 0h | Brad |  | True | True | PTM_CM50_Material Class | brad | PTM |  | 0.69 2.69 302 304 301.31  | 2730 | 2730 0.6875 Load |  |
| 2732 | 1.2.4.2.54 | 1.2.4.2.54 | 5 | PTM_CM55_Class assignment to materials | 2026-09-29 | 2026-10-01 | 2026-04-16 | 2026-04-17 | 0 | 1.13 | As Soon As Possible | Future Task | -85.16d | 0d | Brad Meseck; Chip Holder; David Duda; Matt Palastro; Sunil Srinivasa; Aniruddha Sathe; Susan Graham; Eric Heisler; Sam Penrod; Furkan Alko | True | True | True | Master Data Loads | Brad Meseck | PTM |  |  |  |  |  |
| 2733 | 1.2.4.2.54.1 | 1.2.4.2.54.1 | 6 | Load File Staged and Posted "Ready" | 2026-09-29 | 2026-09-29 | 2026-04-16 | 2026-04-16 | 0 | 0.0625 | As Soon As Possible | Future Task | -40875m | 0m | Sam |  | True | True | PTM_CM55_Class assignment to materials |  | PTM | 2734 | 0.63 0.69 302.88 302.94 302.25  | 2729 | 2729 0.625 Manual File Staged and Posted "Ready" |  |
| 2734 | 1.2.4.2.54.2 | 1.2.4.2.54.2 | 6 | Pre Load Validation | 2026-09-29 | 2026-09-30 | 2026-04-16 | 2026-04-16 | 0 | 0.0625 | As Soon As Possible | Future Task | -40875m | 0m | Brad Meseck |  | True | True | PTM_CM55_Class assignment to materials | Matt Palastro, Dave Duda | PTM | 2735 | 0.69 0.75 302.94 303 302.25  | 2733 | 2733 0.6875 Load File Staged and Posted "Ready" |  |
| 2735 | 1.2.4.2.54.3 | 1.2.4.2.54.3 | 6 | Simulate Load | 2026-09-30 | 2026-09-30 | 2026-04-16 | 2026-04-16 | 0 | 0.125 | As Soon As Possible | Future Task | -681.25h | 0h | Data Migration Team |  | True | True | PTM_CM55_Class assignment to materials |  | Data | 2736 | 0.75 0.88 303 303.13 302.25  | 2734 | 2734 0.75 Pre Load Validation |  |
| 2736 | 1.2.4.2.54.4 | 1.2.4.2.54.4 | 6 | Error and Defect Mitigation | 2026-09-30 | 2026-09-30 | 2026-04-16 | 2026-04-16 | 0 | 0.25 | As Soon As Possible | Future Task | -681.25h | 0h | Brad Meseck |  | True | True | PTM_CM55_Class assignment to materials | Matt Palastro, Dave Duda | PTM | 2737 | 0.88 1.13 303.13 303.38 302.25  | 2735 | 2735 0.875 Simulate Load |  |
| 2737 | 1.2.4.2.54.5 | 1.2.4.2.54.5 | 6 | Load | 2026-09-30 | 2026-09-30 | 2026-04-16 | 2026-04-17 | 0 | 0.25 | As Soon As Possible | Future Task | -681.25h | 0h | Data Migration Team |  | True | True | PTM_CM55_Class assignment to materials |  | Data | 2738 | 1.13 1.38 303.38 303.63 302.25  | 2736 | 2736 1.125 Error and Defect Mitigation |  |
| 2738 | 1.2.4.2.54.6 | 1.2.4.2.54.6 | 6 | Post Load Validation | 2026-09-30 | 2026-10-01 | 2026-04-17 | 2026-04-17 | 0 | 0.375 | As Soon As Possible | Future Task | -681.25h | 0h | Brad Meseck |  | True | True | PTM_CM55_Class assignment to materials | Matt Palastro, Dave Duda | PTM |  | 1.38 1.75 303.63 304 302.25  | 2737 | 2737 1.375 Load |  |

| uid | wbs | outlineNumber | outlineLevel | name | start | finish | baselineStart | baselineFinish | percentComplete | durationDays | constraintType | status | totalSlackRaw | freeSlackRaw | resourceNames | summary | criticalFlag | active | summaryName | businessValidationOwner | workstream | successors | cpm | predecessors | drivers | milestone |
| --- | --- | --- | --- | --- | --- | --- | --- | --- | --- | --- | --- | --- | --- | --- | --- | --- | --- | --- | --- | --- | --- | --- | --- | --- | --- | --- |
| 2739 | 1.2.4.2.55 | 1.2.4.2.55 | 5 | GTS - Material initial load from S4 (Run Interface) | 2026-09-29 | 2026-10-01 | 2026-04-16 | 2026-04-16 | 0 | 2.09 | As Soon As Possible | Future Task | -89.03d | 0d | COULD NOT BE DETERMINED | True | True | True | Master Data Loads |  |  |  |  |  |  |  |
| 2740 | 1.2.4.2.55.1 | 1.2.4.2.55.1 | 6 | Run material interface to GTS | 2026-09-29 | 2026-10-01 | 2026-04-16 | 2026-04-16 | 0 | 1.96875 | Finish No Earlier Than | Future Task | -712.25h | 0h | James Van Riper |  | True | True | GTS - Material initial load from S4 (Run Interface) |  | OTC | 2741 | 0.25 2.22 298.63 300.59 298.38  | 2608 | 2608 0.25 Simulate Load |  |
| 2741 | 1.2.4.2.55.2 | 1.2.4.2.55.2 | 6 | Post Load Validation | 2026-10-01 | 2026-10-01 | 2026-04-16 | 2026-04-16 | 0 | 0.125 | As Soon As Possible | Future Task | -712.25h | 0h | James Van Riper |  | True | True | GTS - Material initial load from S4 (Run Interface) | Kim Kolesar | OTC | 2752 | 2.22 2.34 300.59 300.72 298.38  | 2740 | 2740 2.21875 Run material interface to GTS |  |
| 2742 | 1.2.4.2.56 | 1.2.4.2.56 | 5 | GTS - Customers initial load from S4 (Run Interface) | 2026-09-24 | 2026-09-24 | 2026-04-10 | 2026-04-10 | 0 | 0.25 | As Soon As Possible | Future Task | -80.44d | 0d | COULD NOT BE DETERMINED | True | True | True | Master Data Loads |  |  |  |  |  |  |  |
| 2743 | 1.2.4.2.56.1 | 1.2.4.2.56.1 | 6 | Run material interface to GTS | 2026-09-24 | 2026-09-24 | 2026-04-10 | 2026-04-10 | 0 | 0.125 | Start No Earlier Than | Future Task | -643.5h | 0h | James Van Riper |  | True | True | GTS - Customers initial load from S4 (Run Interface) |  | OTC | 2744 | 0 0.13 303.75 303.88 303.75  |  |  |  |
| 2744 | 1.2.4.2.56.2 | 1.2.4.2.56.2 | 6 | Post Load Validation | 2026-09-24 | 2026-09-24 | 2026-04-10 | 2026-04-10 | 0 | 0.125 | Finish No Earlier Than | Future Task | -643.5h | 0h | James Van Riper |  | True | True | GTS - Customers initial load from S4 (Run Interface) | Kim Kolesar | OTC |  | 0.13 0.25 303.88 304 303.75  | 2743 | 2743 0.125 Run material interface to GTS |  |
| 2745 | 1.2.4.2.57 | 1.2.4.2.57 | 5 | GTS - Vendors initial load from S4 (Run Interface) | 2026-09-24 | 2026-09-25 | 2026-04-15 | 2026-04-15 | 0 | 0.25 | As Soon As Possible | Future Task | -81.69d | 0d | COULD NOT BE DETERMINED | True | True | True | Master Data Loads |  |  |  |  |  |  |  |
| 2746 | 1.2.4.2.57.1 | 1.2.4.2.57.1 | 6 | Run material interface to GTS | 2026-09-24 | 2026-09-25 | 2026-04-15 | 2026-04-15 | 0 | 0.125 | As Soon As Possible | Future Task | -653.5h | 0h | James Van Riper |  | True | True | GTS - Vendors initial load from S4 (Run Interface) |  | OTC | 27, 472, 750 | 0.88 1 303.38 303.5 302.5  | 2551 | 2551 0.875 Post Load Validation |  |
| 2747 | 1.2.4.2.57.2 | 1.2.4.2.57.2 | 6 | Post Load Validation | 2026-09-25 | 2026-09-25 | 2026-04-15 | 2026-04-15 | 0 | 0.125 | As Soon As Possible | Future Task | -650.5h | 0h | James Van Riper |  | True | True | GTS - Vendors initial load from S4 (Run Interface) | Kim Kolesar | OTC |  | 1 1.13 303.88 304 302.88  | 2746 | 2746 1 Run material interface to GTS |  |
| 2748 | 1.2.4.2.58 | 1.2.4.2.58 | 5 | GTS - ECCN - Create | 2026-09-24 | 2026-09-25 | 2026-04-06 | 2026-04-13 | 0 | 1.13 | As Soon As Possible | Future Task | -81.31d | 0d | COULD NOT BE DETERMINED | True | True | True | Master Data Loads |  |  |  |  |  |  |  |
| 2749 | 1.2.4.2.58.1 | 1.2.4.2.58.1 | 6 | Load Descartes XML File | 2026-09-24 | 2026-09-24 | 2026-04-06 | 2026-04-06 | 0 | 0.125 | As Soon As Possible | Future Task | -642.5h | 0h | James Van Riper |  | True | True | GTS - ECCN - Create | Brian Wagner | OTC |  | 0 0.13 303.88 304 303.87  | 2423 | 2423 0.0020833333333333333 PMO Authorization to Start Data Loads |  |
| 2750 | 1.2.4.2.58.2 | 1.2.4.2.58.2 | 6 | Post Load Validation | 2026-09-25 | 2026-09-25 | 2026-04-13 | 2026-04-13 | 0 | 0.125 | As Soon As Possible | Future Task | -653.5h | 0h | James Van Riper |  | True | True | GTS - ECCN - Create | Kim Kolesar | OTC | 2770 | 1 1.13 303.5 303.63 302.5  | 2746 | 2746 1 Run material interface to GTS |  |
| 2751 | 1.2.4.2.59 | 1.2.4.2.59 | 5 | GTS - ECCN - Assign | 2026-10-01 | 2026-10-01 | 2026-04-16 | 2026-04-16 | 0 | 0.25 | As Soon As Possible | Future Task | -89.03d | 0d | COULD NOT BE DETERMINED | True | True | True | Master Data Loads |  |  |  |  |  |  |  |
| 2752 | 1.2.4.2.59.1 | 1.2.4.2.59.1 | 6 | Load Descartes XML File | 2026-10-01 | 2026-10-01 | 2026-04-16 | 2026-04-16 | 0 | 0.125 | Finish No Earlier Than | Future Task | -712.25h | 0h | James Van Riper |  | True | True | GTS - ECCN - Assign | Brian Wagner | OTC | 2753 | 2.34 2.47 300.72 300.84 298.38  | 2741 | 2741 2.34375 Post Load Validation |  |
| 2753 | 1.2.4.2.59.2 | 1.2.4.2.59.2 | 6 | Post Load Validation | 2026-10-01 | 2026-10-01 | 2026-04-16 | 2026-04-16 | 0 | 0.125 | As Soon As Possible | Future Task | -712.25h | 0h | James Van Riper |  | True | True | GTS - ECCN - Assign | Kim Kolesar | OTC | 2758 | 2.47 2.59 300.84 300.97 298.38  | 2752 | 2752 2.46875 Load Descartes XML File |  |
| 2455 | 1.2.4.2.6 | 1.2.4.2.6 | 5 | Manual Configuration Activities in QS5 | 2026-09-24 | 2026-10-06 | 2026-04-06 | 2026-04-15 | 0 | 8.94 | As Soon As Possible | Future Task | -89.13d | 0d | COULD NOT BE DETERMINED | True | True | True | Master Data Loads |  |  |  |  | 652 |  |  |
| 2456 | 1.2.4.2.6.1 | 1.2.4.2.6.1 | 6 | Open Client | 2026-09-24 | 2026-09-24 | 2026-04-06 | 2026-04-06 | 0 | 0.0625 | As Soon As Possible | Future Task | -38520m | 0m | Basis |  | True | True | Manual Configuration Activities in QS5 |  | Basis |  | 0 0.06 303.94 304 303.94  |  |  |  |
| 2457 | 1.2.4.2.6.2 | 1.2.4.2.6.2 | 6 | Service Enterprise Setup | 2026-09-30 | 2026-10-06 | 2026-04-08 | 2026-04-15 | 0 | 5 | As Soon As Possible | Future Task | -89.13d | 0d | Keith Riley |  | True | True | Manual Configuration Activities in QS5 |  | OTC |  | 43 48 299 304 256  | 242, 424, 282, 432 | 282 43 Schedule workshops to collect complete details of ruleset module wise and close the gaps |  |
| 2458 | 1.2.4.2.6.3 | 1.2.4.2.6.3 | 6 | Close Client | 2026-09-24 | 2026-09-24 | 2026-04-06 | 2026-04-06 | 0 | 0.0625 | As Soon As Possible | Future Task | -38520m | 0m | Basis |  | True | True | Manual Configuration Activities in QS5 |  | Basis |  | 0 0.06 303.94 304 303.94  |  |  |  |
| 2459 | 1.2.4.2.6.4 | 1.2.4.2.6.4 | 6 | Intercompany Business Partner Setup | 2026-09-30 | 2026-09-30 | 2026-04-08 | 2026-04-09 | 0 | 0.25 | As Soon As Possible | Future Task | -675h | 0h | Functional Leads |  | True | True | Manual Configuration Activities in QS5 | Brian Wagner | Development |  | 43 43.25 303.75 304 260.75  | 242, 424, 282, 440 | 282 43 Schedule workshops to collect complete details of ruleset module wise and close the gaps |  |
| 2754 | 1.2.4.2.60 | 1.2.4.2.60 | 5 | GTS - HTS - Create | 2026-09-24 | 2026-09-24 | 2026-04-06 | 2026-04-06 | 0 | 0.25 | As Soon As Possible | Future Task | -80.44d | 0d | COULD NOT BE DETERMINED | True | True | True | Master Data Loads |  |  |  |  |  |  |  |
| 2755 | 1.2.4.2.60.1 | 1.2.4.2.60.1 | 6 | Load Descartes XML File | 2026-09-24 | 2026-09-24 | 2026-04-06 | 2026-04-06 | 0 | 0.125 | As Soon As Possible | Future Task | -643.5h | 0h | James Van Riper |  | True | True | GTS - HTS - Create | Brian Wagner | OTC | 2756 | 0 0.13 303.75 303.88 303.75  | 2423 | 2423 0.0020833333333333333 PMO Authorization to Start Data Loads |  |
| 2756 | 1.2.4.2.60.2 | 1.2.4.2.60.2 | 6 | Post Load Validation | 2026-09-24 | 2026-09-24 | 2026-04-06 | 2026-04-06 | 0 | 0.125 | As Soon As Possible | Future Task | -643.5h | 0h | James Van Riper |  | True | True | GTS - HTS - Create | Kim Kolesar | OTC |  | 0.13 0.25 303.88 304 303.75  | 2755 | 2755 0.12708333333333333 Load Descartes XML File |  |
| 2757 | 1.2.4.2.61 | 1.2.4.2.61 | 5 | GTS - HTS - Assign | 2026-10-01 | 2026-10-02 | 2026-04-16 | 2026-04-16 | 0 | 0.25 | As Soon As Possible | Future Task | -89.03d | 0d | COULD NOT BE DETERMINED | True | True | True | Master Data Loads |  |  |  |  |  |  |  |
| 2758 | 1.2.4.2.61.1 | 1.2.4.2.61.1 | 6 | Load Descartes XML File | 2026-10-01 | 2026-10-01 | 2026-04-16 | 2026-04-16 | 0 | 0.125 | As Soon As Possible | Future Task | -712.25h | 0h | James Van Riper |  | True | True | GTS - HTS - Assign | Brian Wagner | OTC | 275, 927, 612, 767 | 2.59 2.72 300.97 301.09 298.38  | 2753 | 2753 2.59375 Post Load Validation |  |
| 2759 | 1.2.4.2.61.2 | 1.2.4.2.61.2 | 6 | Post Load Validation | 2026-10-02 | 2026-10-02 | 2026-04-16 | 2026-04-16 | 0 | 0.125 | As Soon As Possible | Future Task | -712.25h | 0h | James Van Riper |  | True | True | GTS - HTS - Assign | Kim Kolesar | OTC | 27, 742, 764 | 2.72 2.84 301.09 301.22 298.38  | 2758 | 2758 2.71875 Load Descartes XML File |  |
| 2760 | 1.2.4.2.62 | 1.2.4.2.62 | 5 | GTS - License - Create | 2026-10-02 | 2026-10-02 | 2026-04-16 | 2026-04-16 | 0 | 0.25 | As Soon As Possible | Future Task | -86.63d | 0d | COULD NOT BE DETERMINED | True | True | True | Master Data Loads |  |  |  |  |  |  |  |
| 2761 | 1.2.4.2.62.1 | 1.2.4.2.62.1 | 6 | Load Descartes XML File | 2026-10-02 | 2026-10-02 | 2026-04-16 | 2026-04-16 | 0 | 0.125 | As Soon As Possible | Future Task | -693h | 0h | James Van Riper |  | True | True | GTS - License - Create | Brian Wagner | OTC | 2762 | 2.66 2.78 303.75 303.88 301.09  | 27, 582, 774 | 774 2.65625 Simulate Load |  |
| 2762 | 1.2.4.2.62.2 | 1.2.4.2.62.2 | 6 | Post Load Validation | 2026-10-02 | 2026-10-02 | 2026-04-16 | 2026-04-16 | 0 | 0.125 | As Soon As Possible | Future Task | -693h | 0h | James Van Riper |  | True | True | GTS - License - Create | Kim Kolesar | OTC |  | 2.78 2.91 303.88 304 301.09  | 2761 | 2761 2.78125 Load Descartes XML File |  |
| 2763 | 1.2.4.2.63 | 1.2.4.2.63 | 5 | Commodity Code/Tarif | 2026-10-02 | 2026-10-06 | 2026-04-16 | 2026-04-16 | 0 | 2.78 | As Soon As Possible | Future Task | -89.03d | 0d | COULD NOT BE DETERMINED | True | True | True | Master Data Loads | Brian Wagner |  |  |  |  |  |  |
| 2764 | 1.2.4.2.63.1 | 1.2.4.2.63.1 | 6 | Load | 2026-10-02 | 2026-10-06 | 2026-04-16 | 2026-04-16 | 0 | 2.65625 | Finish No Earlier Than | Future Task | -712.25h | 0h | James Van Riper |  | True | True | Commodity Code/Tarif |  | OTC | 2765 | 2.84 5.5 301.22 303.88 298.38  | 2759 | 2759 2.84375 Post Load Validation |  |
| 2765 | 1.2.4.2.63.2 | 1.2.4.2.63.2 | 6 | Post Load Validation | 2026-10-06 | 2026-10-06 | 2026-04-16 | 2026-04-16 | 0 | 0.125 | Start No Earlier Than | Future Task | -712.25h | 0h | James Van Riper |  | True | True | Commodity Code/Tarif | Kim Kolesar | OTC |  | 5.5 5.63 303.88 304 298.38  | 2764 | 2764 5.5 Load |  |
| 2766 | 1.2.4.2.64 | 1.2.4.2.64 | 5 | SPL Master File | 2026-10-02 | 2026-10-02 | 2025-03-13 | 2025-03-13 | 0 | 0.25 | As Soon As Possible | Future Task | -86.38d | 0d | COULD NOT BE DETERMINED | True | True | True | Master Data Loads |  |  |  |  |  |  |  |
| 2767 | 1.2.4.2.64.1 | 1.2.4.2.64.1 | 6 | Load | 2026-10-02 | 2026-10-02 | 2025-03-13 | 2025-03-13 | 0 | 0.125 | As Soon As Possible | Future Task | -691h | 0h | James Van Riper |  | True | True | SPL Master File |  | OTC | 2768 | 2.72 2.84 303.75 303.88 301.03  | 2758 | 2758 2.71875 Load Descartes XML File |  |
| 2768 | 1.2.4.2.64.2 | 1.2.4.2.64.2 | 6 | Post Load Validation | 2026-10-02 | 2026-10-02 | 2025-03-13 | 2025-03-13 | 0 | 0.125 | As Soon As Possible | Future Task | -691h | 0h | James Van Riper |  | True | True | SPL Master File | Kim Kolesar | OTC |  | 2.84 2.97 303.88 304 301.03  | 2767 | 2767 2.84375 Load |  |
| 2769 | 1.2.4.2.65 | 1.2.4.2.65 | 5 | Initialize Embargo situation | 2026-09-25 | 2026-09-25 | 2026-04-13 | 2026-04-14 | 0 | 0.38 | As Soon As Possible | Future Task | -81.69d | 0d | COULD NOT BE DETERMINED | True | True | True | Master Data Loads | Kishore Kakarla |  |  |  |  |  |  |
| 2770 | 1.2.4.2.65.1 | 1.2.4.2.65.1 | 6 | Run report /SAPSLL/EMB_CNTRY_INIT | 2026-09-25 | 2026-09-25 | 2026-04-13 | 2026-04-13 | 0 | 0.125 | As Soon As Possible | Future Task | -653.5h | 0h | James Van Riper |  | True | True | Initialize Embargo situation | Brian Wagner | OTC | 2771 | 1.13 1.25 303.63 303.75 302.5  | 2750 | 2750 1.125 Post Load Validation |  |
| 2771 | 1.2.4.2.65.2 | 1.2.4.2.65.2 | 6 | Set Embargo situations | 2026-09-25 | 2026-09-25 | 2026-04-13 | 2026-04-13 | 0 | 0.125 | As Soon As Possible | Future Task | -653.5h | 0h | James Van Riper |  | True | True | Initialize Embargo situation | Kishore Kakarla | OTC | 2772 | 1.25 1.38 303.75 303.88 302.5  | 2770 | 2770 1.25 Run report /SAPSLL/EMB_CNTRY_INIT |  |
| 2772 | 1.2.4.2.65.3 | 1.2.4.2.65.3 | 6 | Post Load Validation | 2026-09-25 | 2026-09-25 | 2026-04-13 | 2026-04-14 | 0 | 0.125 | As Soon As Possible | Future Task | -653.5h | 0h | James Van Riper |  | True | True | Initialize Embargo situation | Kim Kolesar | OTC |  | 1.38 1.5 303.88 304 302.5  | 2771 | 2771 1.375 Set Embargo situations |  |
| 2773 | 1.2.4.2.66 | 1.2.4.2.66 | 5 | GTS - SPL (Sanctioned party list) | 2026-10-02 | 2026-10-02 | 2026-04-16 | 2026-04-16 | 0 | 0.25 | As Soon As Possible | Future Task | -86.63d | 0d | COULD NOT BE DETERMINED | True | True | True | Master Data Loads | Brian Wagner |  |  |  |  |  |  |
| 2774 | 1.2.4.2.66.1 | 1.2.4.2.66.1 | 6 | Load Descartes XML File | 2026-10-02 | 2026-10-02 | 2026-04-16 | 2026-04-16 | 0 | 0.125 | As Soon As Possible | Future Task | -693h | 0h | James Van Riper |  | True | True | GTS - SPL (Sanctioned party list) | Brian Wagner | OTC | 27, 612, 775 | 2.84 2.97 303.75 303.88 300.91  | 2759 | 2759 2.84375 Post Load Validation |  |
| 2775 | 1.2.4.2.66.2 | 1.2.4.2.66.2 | 6 | Post Load Validation | 2026-10-02 | 2026-10-02 | 2026-04-16 | 2026-04-16 | 0 | 0.125 | As Soon As Possible | Future Task | -692h | 0h | James Van Riper |  | True | True | GTS - SPL (Sanctioned party list) | Kim Kolesar | OTC |  | 2.97 3.09 303.88 304 300.91  | 2774 | 2774 2.96875 Load Descartes XML File |  |
| 2776 | 1.2.4.2.67 | 1.2.4.2.67 | 5 | RTR_CM17_Project Definition / Builder | 2026-09-24 | 2026-09-25 | 2026-04-10 | 2026-04-17 | 0 | 1.13 | As Soon As Possible | Future Task | -81.44d | 0d | COULD NOT BE DETERMINED | True | True | True | Master Data Loads |  |  |  |  |  |  |  |
| 2777 | 1.2.4.2.67.1 | 1.2.4.2.67.1 | 6 | Load File Staged and Posted "Ready" | 2026-09-24 | 2026-09-24 | 2026-04-10 | 2026-04-10 | 0 | 0.0625 | Start No Earlier Than | Future Task | -39090m | 0m | Kasey Hughes |  | True | True | RTR_CM17_Project Definition / Builder |  | Finance | 27, 782, 784 | 0.06 0.13 302.81 302.88 302.75  | 2722 | 2722 0.0625 Load File Staged and Posted "Ready" |  |
| 2778 | 1.2.4.2.67.2 | 1.2.4.2.67.2 | 6 | Pre Load Validation | 2026-09-24 | 2026-09-24 | 2026-04-10 | 2026-04-10 | 0 | 0.0625 | As Soon As Possible | Future Task | -39060m | 0m | Kasey Hughes |  | True | True | RTR_CM17_Project Definition / Builder | Brian Wagner | Finance | 2779 | 0.13 0.19 302.94 303 302.81  | 2777 | 2777 0.125 Load File Staged and Posted "Ready" |  |
| 2779 | 1.2.4.2.67.3 | 1.2.4.2.67.3 | 6 | Simulate Load | 2026-09-24 | 2026-09-24 | 2026-04-16 | 2026-04-16 | 0 | 0.125 | As Soon As Possible | Future Task | -651h | 0h | Data Migration Team |  | True | True | RTR_CM17_Project Definition / Builder |  | Data | 2780 | 0.19 0.31 303 303.13 302.81  | 2778 | 2778 0.1875 Pre Load Validation |  |
| 2780 | 1.2.4.2.67.4 | 1.2.4.2.67.4 | 6 | Error and Defect Mitigation | 2026-09-24 | 2026-09-24 | 2026-04-16 | 2026-04-17 | 0 | 0.25 | As Soon As Possible | Future Task | -651h | 0h | Kasey Hughes |  | True | True | RTR_CM17_Project Definition / Builder | Brian Wagner | Finance | 2781 | 0.31 0.56 303.13 303.38 302.81  | 2779 | 2779 0.3125 Simulate Load |  |
| 2781 | 1.2.4.2.67.5 | 1.2.4.2.67.5 | 6 | Load | 2026-09-24 | 2026-09-24 | 2026-04-17 | 2026-04-17 | 0 | 0.25 | As Soon As Possible | Future Task | -651h | 0h | Data Migration Team |  | True | True | RTR_CM17_Project Definition / Builder |  | Data | 2782 | 0.56 0.81 303.38 303.63 302.81  | 2780 | 2780 0.5625 Error and Defect Mitigation |  |
| 2782 | 1.2.4.2.67.6 | 1.2.4.2.67.6 | 6 | Post Load Validation | 2026-09-24 | 2026-09-25 | 2026-04-17 | 2026-04-17 | 0 | 0.375 | As Soon As Possible | Future Task | -651h | 0h | Kasey Hughes |  | True | True | RTR_CM17_Project Definition / Builder | Brian Wagner | Finance |  | 0.81 1.19 303.63 304 302.81  | 2781 | 2781 0.8125 Load |  |
| 2783 | 1.2.4.2.68 | 1.2.4.2.68 | 5 | RTR_CM18_WBS Element | 2026-09-24 | 2026-09-25 | 2026-04-10 | 2026-04-17 | 0 | 1.25 | As Soon As Possible | Future Task | -81.44d | 0d | COULD NOT BE DETERMINED | True | True | True | Master Data Loads |  |  |  |  |  |  |  |
| 2784 | 1.2.4.2.68.1 | 1.2.4.2.68.1 | 6 | Load File Staged and Posted "Ready" | 2026-09-24 | 2026-09-24 | 2026-04-10 | 2026-04-10 | 0 | 0.0625 | Start No Earlier Than | Future Task | -39090m | 0m | Kasey Hughes |  | True | True | RTR_CM18_WBS Element |  | Finance | 2785 | 0.13 0.19 302.88 302.94 302.75  | 2777 | 2777 0.125 Load File Staged and Posted "Ready" |  |
| 2785 | 1.2.4.2.68.2 | 1.2.4.2.68.2 | 6 | Pre Load Validation | 2026-09-24 | 2026-09-24 | 2026-04-10 | 2026-04-10 | 0 | 0.0625 | As Soon As Possible | Future Task | -39090m | 0m | Kasey Hughes |  | True | True | RTR_CM18_WBS Element | Brian Wagner | Finance | 2786 | 0.19 0.25 302.94 303 302.75  | 2784 | 2784 0.1875 Load File Staged and Posted "Ready" |  |
| 2786 | 1.2.4.2.68.3 | 1.2.4.2.68.3 | 6 | Simulate Load | 2026-09-24 | 2026-09-24 | 2026-04-16 | 2026-04-16 | 0 | 0.125 | As Soon As Possible | Future Task | -651.5h | 0h | Data Migration Team |  | True | True | RTR_CM18_WBS Element |  | Data | 2787 | 0.25 0.38 303 303.13 302.75  | 2785 | 2785 0.25 Pre Load Validation |  |
| 2787 | 1.2.4.2.68.4 | 1.2.4.2.68.4 | 6 | Error and Defect Mitigation | 2026-09-24 | 2026-09-24 | 2026-04-16 | 2026-04-17 | 0 | 0.25 | As Soon As Possible | Future Task | -651.5h | 0h | Kasey Hughes |  | True | True | RTR_CM18_WBS Element | Brian Wagner | Finance | 2788 | 0.38 0.63 303.13 303.38 302.75  | 2786 | 2786 0.375 Simulate Load |  |
| 2788 | 1.2.4.2.68.5 | 1.2.4.2.68.5 | 6 | Load | 2026-09-24 | 2026-09-24 | 2026-04-17 | 2026-04-17 | 0 | 0.25 | As Soon As Possible | Future Task | -651.5h | 0h | Data Migration Team |  | True | True | RTR_CM18_WBS Element |  | Data | 2789 | 0.63 0.88 303.38 303.63 302.75  | 2787 | 2787 0.625 Error and Defect Mitigation |  |
| 2789 | 1.2.4.2.68.6 | 1.2.4.2.68.6 | 6 | Post Load Validation | 2026-09-24 | 2026-09-25 | 2026-04-17 | 2026-04-17 | 0 | 0.375 | As Soon As Possible | Future Task | -651.5h | 0h | Kasey Hughes |  | True | True | RTR_CM18_WBS Element | Brian Wagner | Finance |  | 0.88 1.25 303.63 304 302.75  | 2788 | 2788 0.875 Load |  |
| 2790 | 1.2.4.2.68.7 | 1.2.4.2.68.7 | 6 | UAT Mock Data Loads Complete | 2026-09-24 | 2026-09-24 | 2026-04-21 | 2026-04-21 | 0 | 0.03125 | As Soon As Possible | Future Task | -38505m | 0m | Mark George |  | True | True | RTR_CM18_WBS Element | Manoj Patel | PMO |  | 0 0.03 303.97 304 303.97  |  |  | True |
| 2460 | 1.2.4.2.7 | 1.2.4.2.7 | 5 | RTR_CM09_Activity_Type | 2026-09-29 | 2026-09-30 | 2026-04-08 | 2026-04-09 | 0 | 1.38 | As Soon As Possible | Future Task | -85d | 0d | COULD NOT BE DETERMINED | True | True | True | Master Data Loads |  |  |  |  |  |  |  |
| 2461 | 1.2.4.2.7.1 | 1.2.4.2.7.1 | 6 | Load File Staged and Posted "Ready" | 2026-09-29 | 2026-09-29 | 2026-04-08 | 2026-04-08 | 0 | 0.125 | As Soon As Possible | Future Task | -680h | 0h | Kasey Hughes |  | True | True | RTR_CM09_Activity_Type |  | Finance | 2462 | 3.25 3.38 302.88 303 299.62  | 2438 | 2438 3.252083333333333 Post Load Validation |  |
| 2462 | 1.2.4.2.7.2 | 1.2.4.2.7.2 | 6 | Pre Load Validation | 2026-09-29 | 2026-09-30 | 2026-04-08 | 2026-04-09 | 0 | 0.25 | As Soon As Possible | Future Task | -680h | 0h | Kasey Hughes |  | True | True | RTR_CM09_Activity_Type | Brian Wagner | Finance | 2463 | 3.38 3.63 303 303.25 299.62  | 2461 | 2461 3.377083333333333 Load File Staged and Posted "Ready" |  |
| 2463 | 1.2.4.2.7.3 | 1.2.4.2.7.3 | 6 | Simulate Load | 2026-09-30 | 2026-09-30 | 2026-04-09 | 2026-04-09 | 0 | 0.125 | As Soon As Possible | Future Task | -680h | 0h | Data Migration Team |  | True | True | RTR_CM09_Activity_Type |  | Data | 2464 | 3.63 3.75 303.25 303.38 299.62  | 2462 | 2462 3.627083333333333 Pre Load Validation |  |
| 2464 | 1.2.4.2.7.4 | 1.2.4.2.7.4 | 6 | Error and Defect Mitigation | 2026-09-30 | 2026-09-30 | 2026-04-09 | 2026-04-09 | 0 | 0.25 | As Soon As Possible | Future Task | -680h | 0h | Kasey Hughes |  | True | True | RTR_CM09_Activity_Type | Brian Wagner | Finance | 2465 | 3.75 4 303.38 303.63 299.62  | 2463 | 2463 3.752083333333333 Simulate Load |  |
| 2465 | 1.2.4.2.7.5 | 1.2.4.2.7.5 | 6 | Load | 2026-09-30 | 2026-09-30 | 2026-04-09 | 2026-04-09 | 0 | 0.125 | As Soon As Possible | Future Task | -680h | 0h | Data Migration Team |  | True | True | RTR_CM09_Activity_Type |  | Data | 2466 | 4 4.13 303.63 303.75 299.62  | 2464 | 2464 4.002083333333333 Error and Defect Mitigation |  |
| 2466 | 1.2.4.2.7.6 | 1.2.4.2.7.6 | 6 | Post Load Validation | 2026-09-30 | 2026-09-30 | 2026-04-09 | 2026-04-09 | 0 | 0.25 | As Soon As Possible | Future Task | -680h | 0h | Kasey Hughes |  | True | True | RTR_CM09_Activity_Type | Brian Wagner | Finance |  | 4.13 4.38 303.75 304 299.62  | 2465 | 2465 4.127083333333333 Load |  |
| 2467 | 1.2.4.2.8 | 1.2.4.2.8 | 5 | RTR_CM12_Activity Rates | 2026-09-25 | 2026-09-28 | 2026-04-07 | 2026-04-08 | 0 | 1.13 | As Soon As Possible | Future Task | -82.81d | 0d | COULD NOT BE DETERMINED | True | True | True | Master Data Loads |  |  |  |  |  |  |  |
| 2468 | 1.2.4.2.8.1 | 1.2.4.2.8.1 | 6 | Load File Staged and Posted "Ready" | 2026-09-25 | 2026-09-25 | 2026-04-07 | 2026-04-07 | 0 | 0.125 | As Soon As Possible | Future Task | -662.5h | 0h | Kasey Hughes |  | True | True | RTR_CM12_Activity Rates |  | Finance | 2469 | 1.5 1.63 302.88 303 301.37  | 2431 | 2431 1.5020833333333332 Post Load Validation |  |
| 2469 | 1.2.4.2.8.2 | 1.2.4.2.8.2 | 6 | Pre Load Validation | 2026-09-25 | 2026-09-25 | 2026-04-07 | 2026-04-07 | 0 | 0.25 | As Soon As Possible | Future Task | -662.5h | 0h | Kasey Hughes |  | True | True | RTR_CM12_Activity Rates | Brian Wagner | Finance | 2470 | 1.63 1.88 303 303.25 301.37  | 2468 | 2468 1.6270833333333332 Load File Staged and Posted "Ready" |  |
| 2470 | 1.2.4.2.8.3 | 1.2.4.2.8.3 | 6 | Simulate Load | 2026-09-25 | 2026-09-28 | 2026-04-07 | 2026-04-08 | 0 | 0.125 | As Soon As Possible | Future Task | -662.5h | 0h | Data Migration Team |  | True | True | RTR_CM12_Activity Rates |  | Data | 2471 | 1.88 2 303.25 303.38 301.37  | 2469 | 2469 1.8770833333333332 Pre Load Validation |  |
| 2471 | 1.2.4.2.8.4 | 1.2.4.2.8.4 | 6 | Error and Defect Mitigation | 2026-09-28 | 2026-09-28 | 2026-04-08 | 2026-04-08 | 0 | 0.25 | As Soon As Possible | Future Task | -662.5h | 0h | Kasey Hughes |  | True | True | RTR_CM12_Activity Rates | Brian Wagner | Finance | 2472 | 2 2.25 303.38 303.63 301.37  | 2470 | 2470 2.002083333333333 Simulate Load |  |
| 2472 | 1.2.4.2.8.5 | 1.2.4.2.8.5 | 6 | Load | 2026-09-28 | 2026-09-28 | 2026-04-08 | 2026-04-08 | 0 | 0.125 | As Soon As Possible | Future Task | -662.5h | 0h | Data Migration Team |  | True | True | RTR_CM12_Activity Rates |  | Data | 2473 | 2.25 2.38 303.63 303.75 301.37  | 2471 | 2471 2.252083333333333 Error and Defect Mitigation |  |

| uid | wbs | outlineNumber | outlineLevel | name | start | finish | baselineStart | baselineFinish | percentComplete | durationDays | constraintType | status | totalSlackRaw | freeSlackRaw | resourceNames | summary | criticalFlag | active | flag20 | summaryName | businessValidationOwner | workstream | successors | cpm | predecessors | drivers | milestone |
| --- | --- | --- | --- | --- | --- | --- | --- | --- | --- | --- | --- | --- | --- | --- | --- | --- | --- | --- | --- | --- | --- | --- | --- | --- | --- | --- | --- |
| 2473 | 1.2.4.2.8.6 | 1.2.4.2.8.6 | 6 | Post Load Validation | 2026-09-28 | 2026-09-28 | 2026-04-08 | 2026-04-08 | 0 | 0.25 | As Soon As Possible | Future Task | -662.5h | 0h | Kasey Hughes |  | True | True |  | RTR_CM12_Activity Rates | Brian Wagner | Finance |  | 2.38 2.63 303.75 304 301.37  | 2472 | 2472 2.377083333333333 Load |  |
| 2474 | 1.2.4.2.9 | 1.2.4.2.9 | 5 | RTR_CM06_Bank_master | 2026-09-24 | 2026-09-29 | 2026-04-08 | 2026-04-09 | 0 | 3.81 | As Soon As Possible | Future Task | -86.31d | 0d | COULD NOT BE DETERMINED | True | True | True |  | Master Data Loads |  |  |  |  |  |  |  |
| 2475 | 1.2.4.2.9.1 | 1.2.4.2.9.1 | 6 | Load File Staged and Posted "Ready" | 2026-09-29 | 2026-09-29 | 2026-04-08 | 2026-04-08 | 0 | 0.125 | As Soon As Possible | Future Task | -672h | 0h | Data Migration Team |  | True | True |  | RTR_CM06_Bank_master |  | Data | 2476 | 3.25 3.38 303.63 303.75 300.37  | 2438 | 2438 3.252083333333333 Post Load Validation |  |
| 2476 | 1.2.4.2.9.2 | 1.2.4.2.9.2 | 6 | Pre Load Validation | 2026-09-29 | 2026-09-29 | 2026-04-08 | 2026-04-09 | 0 | 0.25 | As Soon As Possible | Future Task | -672h | 0h | Kasey Hughes |  | True | True |  | RTR_CM06_Bank_master | Brian Wagner | Finance |  | 3.38 3.63 303.75 304 300.37  | 2475 | 2475 3.377083333333333 Load File Staged and Posted "Ready" |  |
| 2477 | 1.2.4.2.9.3 | 1.2.4.2.9.3 | 6 | Simulate Load | 2026-09-24 | 2026-09-24 | 2026-04-09 | 2026-04-09 | 0 | 0.125 | Start No Earlier Than | Future Task | -690.5h | 0h | Data Migration Team |  | True | True |  | RTR_CM06_Bank_master |  | Data | 2478 | 0 0.13 301.88 302 301.88  |  |  |  |
| 2478 | 1.2.4.2.9.4 | 1.2.4.2.9.4 | 6 | Error and Defect Mitigation | 2026-09-24 | 2026-09-24 | 2026-04-09 | 2026-04-09 | 0 | 0.25 | As Soon As Possible | Future Task | -690.5h | 0h | Kasey Hughes |  | True | True |  | RTR_CM06_Bank_master | Brian Wagner | Finance | 2479 | 0.13 0.38 302 302.25 301.88  | 2477 | 2477 0.125 Simulate Load |  |
| 2479 | 1.2.4.2.9.5 | 1.2.4.2.9.5 | 6 | Load | 2026-09-24 | 2026-09-25 | 2026-04-09 | 2026-04-09 | 0 | 0.625 | Finish No Earlier Than | Future Task | -690.5h | 0h | Data Migration Team |  | True | True |  | RTR_CM06_Bank_master |  | Data | 24, 802, 482 | 0.38 1 302.25 302.88 301.88  | 2478 | 2478 0.375 Error and Defect Mitigation |  |
| 2480 | 1.2.4.2.9.6 | 1.2.4.2.9.6 | 6 | Post Load Validation | 2026-09-25 | 2026-09-25 | 2026-04-09 | 2026-04-09 | 0 | 0.25 | Finish No Earlier Than | Future Task | -690.5h | 0h | Kasey Hughes |  | True | True |  | RTR_CM06_Bank_master | Brian Wagner | Finance | 25, 162, 527 | 1 1.25 303.75 304 302.75  | 2479 | 2479 1 Load |  |
| 3360 | 1.2.4.3 | 1.2.4.3 | 4 | UAT Master Data Loads Complete | 2026-10-08 | 2026-10-08 | 2026-10-08 | 2026-10-08 | 0 | 0 | As Soon As Possible | Future Task | -43560m | 0m | Jyoti Nain; Manoj Patel; Michelle Connnors; Roy John; Shiva Janga; Vishal Pujari; (Curtis) Todd Breithaupt; Jerry Ramos |  | True | True |  | UAT Data Load Tasks QS4 | Manoj Patel | Data | 2945, 2801, 3351, 3350, 924 | 0 0 302 302 302  | 2898 |  | True |
| 3350 | 1.2.4.4 | 1.2.4.4 | 4 | Mock Transactional Data | 2026-10-08 | 2026-10-12 | 2026-10-08 | 2026-10-12 | 0 | 2 | As Soon As Possible | Future Task | -40.66d | 0d | Jyoti Nain; Manoj Patel; Michelle Connnors; Roy John; Shiva Janga; Vishal Pujari; (Curtis) Todd Breithaupt; Jerry Ramos | True | True | True |  | UAT Data Load Tasks QS4 | Manoj Patel | Data | 2938 |  | 3360 |  |  |
| 3351 | 1.2.4.4.1 | 1.2.4.4.1 | 5 | Inventory | 2026-10-08 | 2026-10-09 | 2026-10-08 | 2026-10-09 | 0 | 0.5 | As Soon As Possible | Future Task | -325.25h | 0h | (Curtis) Todd Breithaupt; Ambrish Patel; Jerry Ramos |  | True | True |  | Mock Transactional Data |  | Data | 33, 523, 355, 335, 633, 500, 0 | 0 0.5 302 302.5 302  | 2947, 3360 | 2947 0 ITC2 Master Data Loads Complete, 3360 0 UAT Master Data Loads Complete |  |
| 3352 | 1.2.4.4.2 | 1.2.4.4.2 | 5 | Open AR | 2026-10-09 | 2026-10-09 | 2026-10-09 | 2026-10-09 | 0 | 0.5 | As Soon As Possible | Future Task | -325.25h | 0h | (Curtis) Todd Breithaupt; Ambrish Patel; Jerry Ramos |  | True | True |  | Mock Transactional Data | Brian Wagner | Data | 3353 | 0.5 1 302.5 303 302  | 3351 | 3351 0.5 Inventory |  |
| 3353 | 1.2.4.4.3 | 1.2.4.4.3 | 5 | Open AP | 2026-10-09 | 2026-10-12 | 2026-10-09 | 2026-10-12 | 0 | 0.5 | As Soon As Possible | Future Task | -325.25h | 0h | (Curtis) Todd Breithaupt; Ambrish Patel; Jerry Ramos |  | True | True |  | Mock Transactional Data | Brian Wagner | Data | 3354 | 1 1.5 303 303.5 302  | 3352 | 3352 1 Open AR |  |
| 3354 | 1.2.4.4.4 | 1.2.4.4.4 | 5 | Bank and Cash | 2026-10-12 | 2026-10-12 | 2026-10-12 | 2026-10-12 | 0 | 0.5 | As Soon As Possible | Future Task | -325.25h | 0h | (Curtis) Todd Breithaupt; Ambrish Patel; Jerry Ramos |  | True | True |  | Mock Transactional Data |  | Data |  | 1.5 2 303.5 304 302  | 3353 | 3353 1.5 Open AP |  |
| 3355 | 1.2.4.4.5 | 1.2.4.4.5 | 5 | Open Purchase Orders(Manual) | 2026-10-09 | 2026-10-12 | 2026-10-09 | 2026-10-12 | 0 | 1 | As Soon As Possible | Future Task | -40.16d | 0d | (Curtis) Todd Breithaupt; Ambrish Patel; Jerry Ramos |  | True | True |  | Mock Transactional Data |  | Data |  | 0.5 1.5 303 304 302.5  | 3351 | 3351 0.5 Inventory |  |
| 3356 | 1.2.4.4.6 | 1.2.4.4.6 | 5 | Open Sales Orders(Manual) | 2026-10-09 | 2026-10-12 | 2026-10-09 | 2026-10-12 | 0 | 1 | As Soon As Possible | Future Task | -40.16d | 0d | (Curtis) Todd Breithaupt; Ambrish Patel; Jerry Ramos |  | True | True |  | Mock Transactional Data | Kim Kolesar | Data |  | 0.5 1.5 303 304 302.5  | 3351 | 3351 0.5 Inventory |  |
| 3357 | 1.2.4.4.7 | 1.2.4.4.7 | 5 | Service Orders(Manual) | 2026-10-09 | 2026-10-09 | 2026-10-09 | 2026-10-09 | 0 | 0.5 | As Soon As Possible | Future Task | -39.66d | 0d | (Curtis) Todd Breithaupt; Ambrish Patel; Jerry Ramos |  | True | True |  | Mock Transactional Data |  | Data |  | 0.5 1 303.5 304 303  | 3351 | 3351 0.5 Inventory |  |
| 3358 | 1.2.4.4.8 | 1.2.4.4.8 | 5 | Open Production Orders(Manual) | 2026-10-09 | 2026-10-12 | 2026-10-09 | 2026-10-12 | 0 | 1 | As Soon As Possible | Future Task | -40.16d | 0d | (Curtis) Todd Breithaupt; Ambrish Patel; Jerry Ramos |  | True | True |  | Mock Transactional Data | Brad Meseck | Data |  | 0.5 1.5 303 304 302.5  | 3351 | 3351 0.5 Inventory |  |
| 2938 | 1.2.4.5 | 1.2.4.5 | 4 | UAT Mock Data Loads Complete | 2026-10-12 | 2026-10-12 | 2026-04-21 | 2026-04-21 | 0 | 0.03125 | As Soon As Possible | Future Task | -19515m | 0m | Mark George |  | True | True |  | UAT Data Load Tasks QS4 | Manoj Patel | PMO | 690 | 0 0.03 303.97 304 303.97  | 3350 |  | True |
| 4160 | 1.2.5 | 1.2.5 | 3 | PROD Data Load Tasks P? | 2026-09-24 | 2026-10-08 | 2025-03-13 | 2026-04-21 | 0 | 10.56 | As Soon As Possible | Future Task | -90.75d | 0d | Jyoti Nain; Manoj Patel; Michelle Connnors; Roy John; Shiva Janga; Vishal Pujari; (Curtis) Todd Breithaupt; Jerry Ramos | True | True | True | True | Data Readiness | Manoj Patel | Data |  |  | 3367 |  |  |
| 4161 | 1.2.5.1 | 1.2.5.1 | 4 | PMO Authorization to Start Data Loads | 2026-09-24 | 2026-09-24 | 2026-04-06 | 2026-04-06 | 0 | 0.0020833333333333333 | As Soon As Possible | Future Task | -43561m | 0m | Mark George |  | True | True |  | PROD Data Load Tasks P? | Manoj Patel | PMO | 41, 644, 401, 448, 844, 900, 0 | 0 0 296.31 296.31 296.31  | 3367 |  |  |
| 4162 | 1.2.5.2 | 1.2.5.2 | 4 | Master Data Loads | 2026-09-24 | 2026-10-01 | 2026-09-24 | 2026-10-01 | 0 | 5 | As Soon As Possible | Future Task | 0d | 0d | Jyoti Nain; Manoj Patel; Michelle Connnors; Roy John; Shiva Janga; Vishal Pujari; (Curtis) Todd Breithaupt; Jerry Ramos | True | True | True |  | PROD Data Load Tasks P? | Manoj Patel | Data | 4530 |  | 4161 |  |  |
| 4163 | 1.2.5.2.1 | 1.2.5.2.1 | 5 | RTR_CM02_Profit Center Hierarchy | 2026-09-24 | 2026-09-24 | 2026-04-06 | 2026-04-06 | 0 | 0.75 | As Soon As Possible | Future Task | -89.81d | 0d | COULD NOT BE DETERMINED | True | True | True |  | Master Data Loads | Brian Wagner |  | 41, 964, 198 |  |  |  |  |
| 4164 | 1.2.5.2.1.1 | 1.2.5.2.1.1 | 6 | Manual File Staged and Posted "Ready" | 2026-09-24 | 2026-09-24 | 2026-04-06 | 2026-04-06 | 0 | 0.125 | Start No Earlier Than | Future Task | -718.52h | 0h | Kasey Hughes |  | True | True |  | RTR_CM02_Profit Center Hierarchy |  | Finance | 4165 | 0 0.13 296.31 296.44 296.31  | 4161 | 4161 0.0020833333333333333 PMO Authorization to Start Data Loads |  |
| 4165 | 1.2.5.2.1.2 | 1.2.5.2.1.2 | 6 | Load | 2026-09-24 | 2026-09-24 | 2026-04-06 | 2026-04-06 | 0 | 0.25 | As Soon As Possible | Future Task | -718.52h | 0h | Kasey Hughes |  | True | True |  | RTR_CM02_Profit Center Hierarchy |  | Finance | 4166 | 0.13 0.38 296.44 296.69 296.31  | 4164 | 4164 0.12708333333333333 Manual File Staged and Posted "Ready" |  |
| 4166 | 1.2.5.2.1.3 | 1.2.5.2.1.3 | 6 | Post Load Validation | 2026-09-24 | 2026-09-24 | 2026-04-06 | 2026-04-06 | 0 | 0.375 | As Soon As Possible | Future Task | -718.52h | 0h | Kasey Hughes |  | True | True |  | RTR_CM02_Profit Center Hierarchy | Brian Wagner | Finance | 41, 684, 181 | 0.38 0.75 296.69 297.06 296.31  | 4165 | 4165 0.3770833333333333 Load |  |
| 4220 | 1.2.5.2.10 | 1.2.5.2.10 | 5 | RTR_CM08_Exchange_Rates | 2026-09-25 | 2026-09-28 | 2026-04-09 | 2026-04-10 | 0 | 1.13 | As Soon As Possible | Future Task | -82.31d | 0d | COULD NOT BE DETERMINED | True | True | True |  | Master Data Loads |  |  |  |  |  |  |  |
| 4221 | 1.2.5.2.10.1 | 1.2.5.2.10.1 | 6 | Load File Staged and Posted "Ready" | 2026-09-25 | 2026-09-25 | 2026-04-09 | 2026-04-09 | 0 | 0.125 | As Soon As Possible | Future Task | -658.52h | 0h | Kasey Hughes |  | True | True |  | RTR_CM08_Exchange_Rates |  | Finance | 4222 | 1 1.13 302.88 303 301.88  | 4218 | 4218 1 Load |  |
| 4222 | 1.2.5.2.10.2 | 1.2.5.2.10.2 | 6 | Pre Load Validation | 2026-09-25 | 2026-09-25 | 2026-04-09 | 2026-04-10 | 0 | 0.25 | As Soon As Possible | Future Task | -658.52h | 0h | Kasey Hughes |  | True | True |  | RTR_CM08_Exchange_Rates | Brian Wagner | Finance | 4223 | 1.13 1.38 303 303.25 301.88  | 4221 | 4221 1.125 Load File Staged and Posted "Ready" |  |
| 4223 | 1.2.5.2.10.3 | 1.2.5.2.10.3 | 6 | Simulate Load | 2026-09-25 | 2026-09-25 | 2026-04-10 | 2026-04-10 | 0 | 0.125 | As Soon As Possible | Future Task | -658.52h | 0h | Data Migration Team |  | True | True |  | RTR_CM08_Exchange_Rates |  | Data | 4224 | 1.38 1.5 303.25 303.38 301.88  | 4222 | 4222 1.375 Pre Load Validation |  |
| 4224 | 1.2.5.2.10.4 | 1.2.5.2.10.4 | 6 | Error and Defect Mitigation | 2026-09-25 | 2026-09-25 | 2026-04-10 | 2026-04-10 | 0 | 0.25 | As Soon As Possible | Future Task | -658.52h | 0h | Kasey Hughes |  | True | True |  | RTR_CM08_Exchange_Rates | Brian Wagner | Finance | 4225 | 1.5 1.75 303.38 303.63 301.88  | 4223 | 4223 1.5 Simulate Load |  |
| 4225 | 1.2.5.2.10.5 | 1.2.5.2.10.5 | 6 | Load | 2026-09-25 | 2026-09-25 | 2026-04-10 | 2026-04-10 | 0 | 0.125 | As Soon As Possible | Future Task | -658.52h | 0h | Data Migration Team |  | True | True |  | RTR_CM08_Exchange_Rates |  | Data | 4226 | 1.75 1.88 303.63 303.75 301.88  | 4224 | 4224 1.75 Error and Defect Mitigation |  |
| 4226 | 1.2.5.2.10.6 | 1.2.5.2.10.6 | 6 | Post Load Validation | 2026-09-25 | 2026-09-28 | 2026-04-10 | 2026-04-10 | 0 | 0.25 | As Soon As Possible | Future Task | -658.52h | 0h | Kasey Hughes |  | True | True |  | RTR_CM08_Exchange_Rates | Brian Wagner | Finance |  | 1.88 2.13 303.75 304 301.88  | 4225 | 4225 1.875 Load |  |
| 4227 | 1.2.5.2.11 | 1.2.5.2.11 | 5 | RTR_CM14_Cost Element_Group | 2026-09-29 | 2026-10-05 | 2026-04-08 | 2026-04-15 | 0 | 4.44 | As Soon As Possible | Future Task | -88.06d | 0d | Kasey Hughes | True | True | True |  | Master Data Loads | Brian Wagner | Finance |  |  |  |  |  |
| 4228 | 1.2.5.2.11.1 | 1.2.5.2.11.1 | 6 | Manual File Staged and Posted "Ready" | 2026-09-29 | 2026-09-29 | 2026-04-08 | 2026-04-14 | 0 | 0.0625 | Finish No Earlier Than | Future Task | -42271m | 0m | Kasey Hughes |  | True | True |  | RTR_CM14_Cost Element_Group |  | Finance | 4229 | 3.25 3.31 299.56 299.63 296.31  | 4177 | 4177 3.252083333333333 Post Load Validation |  |
| 4229 | 1.2.5.2.11.2 | 1.2.5.2.11.2 | 6 | Load | 2026-09-29 | 2026-10-05 | 2026-04-15 | 2026-04-15 | 0 | 4 | Finish No Earlier Than | Future Task | -704.52h | 0h | Kasey Hughes |  | True | True |  | RTR_CM14_Cost Element_Group |  | Finance | 4230 | 3.31 7.31 299.63 303.63 296.31  | 4228 | 4228 3.314583333333333 Manual File Staged and Posted "Ready" |  |
| 4230 | 1.2.5.2.11.3 | 1.2.5.2.11.3 | 6 | Post Load Validation | 2026-10-05 | 2026-10-05 | 2026-04-15 | 2026-04-15 | 0 | 0.375 | Start No Earlier Than | Future Task | -704.52h | 0h | Kasey Hughes |  | True | True |  | RTR_CM14_Cost Element_Group | Brian Wagner | Finance |  | 7.31 7.69 303.63 304 296.31  | 4229 | 4229 7.314583333333333 Load |  |
| 4231 | 1.2.5.2.12 | 1.2.5.2.12 | 5 | OTC_CM19_Customer_Master - Bill-To | 2026-09-24 | 2026-09-24 | 2025-04-16 | 2025-04-16 | 0 | 0.25 | As Soon As Possible | Future Task | -643.52h | 0h | Anitha Jothi; Kim Kolesar; Michele Colombo; Michiko Tomihari; Ric Haraida; Rod Santos; Shibu Mathew; Narendra Kallam; Keith Riley; James Manohar |  | True | True |  | Master Data Loads | Kim Kolesar | OTC |  | 0 0.25 303.75 304 303.75  |  |  |  |
| 4232 | 1.2.5.2.13 | 1.2.5.2.13 | 5 | OTC_CM19_Customer_Master - Ship-To | 2026-09-29 | 2026-10-01 | 2026-04-08 | 2026-04-13 | 0 | 1.5 | As Soon As Possible | Future Task | -89.56d | 0d | Anitha Jothi; Kim Kolesar; Michele Colombo; Michiko Tomihari; Ric Haraida; Rod Santos; Shibu Mathew; Narendra Kallam; Keith Riley; James Manohar | True | True | True |  | Master Data Loads | Kim Kolesar | OTC |  |  |  |  |  |
| 4233 | 1.2.5.2.13.1 | 1.2.5.2.13.1 | 6 | Load File Staged and Posted "Ready" | 2026-09-29 | 2026-09-29 | 2026-04-08 | 2026-04-08 | 0 | 0.0625 | As Soon As Possible | Future Task | -42991m | 0m | Ric Haraida |  | True | True |  | OTC_CM19_Customer_Master - Ship-To |  | OTC | 4234 | 3.25 3.31 302.5 302.56 299.25  | 4177 | 4177 3.252083333333333 Post Load Validation |  |
| 4234 | 1.2.5.2.13.2 | 1.2.5.2.13.2 | 6 | Pre Load Validation | 2026-09-29 | 2026-09-29 | 2026-04-08 | 2026-04-08 | 0 | 0.0625 | As Soon As Possible | Future Task | -42991m | 0m | Ric Haraida |  | True | True |  | OTC_CM19_Customer_Master - Ship-To | Kim Kolesar | OTC | 423, 842, 434, 235 | 3.31 3.38 302.56 302.63 299.25  | 4233 | 4233 3.314583333333333 Load File Staged and Posted "Ready" |  |
| 4235 | 1.2.5.2.13.3 | 1.2.5.2.13.3 | 6 | Open client for BP number range update | 2026-09-29 | 2026-09-29 | 2026-04-08 | 2026-04-09 | 0 | 0.0625 | As Soon As Possible | Future Task | -40276m | 0m | Basis |  | True | True |  | OTC_CM19_Customer_Master - Ship-To |  | Basis | 4236 | 3.38 3.44 303.84 303.91 300.47  | 4234 | 4234 3.377083333333333 Pre Load Validation |  |
| 4236 | 1.2.5.2.13.4 | 1.2.5.2.13.4 | 6 | Update number range BP02 from Internal to External | 2026-09-29 | 2026-09-29 | 2026-04-09 | 2026-04-10 | 0 | 0.0625 | As Soon As Possible | Future Task | -40276m | 0m | Ric Haraida |  | True | True |  | OTC_CM19_Customer_Master - Ship-To |  | OTC | 4237 | 3.44 3.5 303.91 303.97 300.47  | 4235 | 4235 3.439583333333333 Open client for BP number range update |  |
| 4237 | 1.2.5.2.13.5 | 1.2.5.2.13.5 | 6 | Close Client | 2026-09-29 | 2026-09-29 | 2026-04-10 | 2026-04-13 | 0 | 0.03125 | As Soon As Possible | Future Task | -40276m | 0m | Basis |  | True | True |  | OTC_CM19_Customer_Master - Ship-To |  | Basis |  | 3.5 3.53 303.97 304 300.47  | 4236 | 4236 3.502083333333333 Update number range BP02 from Internal to External |  |
| 4238 | 1.2.5.2.13.6 | 1.2.5.2.13.6 | 6 | Simulate Load | 2026-09-29 | 2026-09-29 | 2026-04-08 | 2026-04-09 | 0 | 0.125 | As Soon As Possible | Future Task | -716.52h | 0h | Data Migration Team |  | True | True |  | OTC_CM19_Customer_Master - Ship-To |  | Data | 423, 942, 454, 249 | 3.38 3.5 302.63 302.75 299.25  | 4234 | 4234 3.377083333333333 Pre Load Validation |  |
| 4239 | 1.2.5.2.13.7 | 1.2.5.2.13.7 | 6 | Error and Defect Mitigation | 2026-09-29 | 2026-09-30 | 2026-04-09 | 2026-04-09 | 0 | 0.5 | As Soon As Possible | Future Task | -681.02h | 0h | Ric Haraida |  | True | True |  | OTC_CM19_Customer_Master - Ship-To | Kim Kolesar | OTC | 4240 | 3.5 4 302.75 303.25 299.25  | 4238 | 4238 3.502083333333333 Simulate Load |  |
| 4240 | 1.2.5.2.13.8 | 1.2.5.2.13.8 | 6 | Load | 2026-09-30 | 2026-09-30 | 2026-04-09 | 2026-04-09 | 0 | 0.375 | As Soon As Possible | Future Task | -681.02h | 0h | Data Migration Team |  | True | True |  | OTC_CM19_Customer_Master - Ship-To |  | Data | 4241 | 4 4.38 303.25 303.63 299.25  | 4239 | 4239 4.002083333333333 Error and Defect Mitigation |  |
| 4241 | 1.2.5.2.13.9 | 1.2.5.2.13.9 | 6 | Post Load Validation | 2026-09-30 | 2026-10-01 | 2026-04-09 | 2026-04-10 | 0 | 0.375 | As Soon As Possible | Future Task | -681.02h | 0h | Ric Haraida |  | True | True |  | OTC_CM19_Customer_Master - Ship-To | Kim Kolesar | OTC |  | 4.38 4.75 303.63 304 299.25  | 4240 | 4240 4.377083333333333 Load |  |
| 4242 | 1.2.5.2.14 | 1.2.5.2.14 | 5 | OTC_CM19_Customer_Master - Sold-To | 2026-09-29 | 2026-10-01 | 2026-04-08 | 2026-04-10 | 0 | 1.63 | As Soon As Possible | Future Task | -89.44d | 0d | Anitha Jothi; Kim Kolesar; Michele Colombo; Michiko Tomihari; Ric Haraida; Rod Santos; Shibu Mathew; Narendra Kallam; Keith Riley; James Manohar | True | True | True |  | Master Data Loads | Kim Kolesar | OTC |  |  |  |  |  |
| 4243 | 1.2.5.2.14.1 | 1.2.5.2.14.1 | 6 | Load File Staged and Posted "Ready" | 2026-09-29 | 2026-09-29 | 2026-04-08 | 2026-04-09 | 0 | 0.0625 | As Soon As Possible | Future Task | -40261m | 0m | Ric Haraida |  | True | True |  | OTC_CM19_Customer_Master - Sold-To |  | OTC | 4244 | 3.38 3.44 303.88 303.94 300.5  | 4234 | 4234 3.377083333333333 Pre Load Validation |  |
| 4244 | 1.2.5.2.14.2 | 1.2.5.2.14.2 | 6 | Pre Load Validation | 2026-09-29 | 2026-09-29 | 2026-04-09 | 2026-04-09 | 0 | 0.0625 | As Soon As Possible | Future Task | -40261m | 0m | Ric Haraida |  | True | True |  | OTC_CM19_Customer_Master - Sold-To | Kim Kolesar | OTC |  | 3.44 3.5 303.94 304 300.5  | 4243 | 4243 3.439583333333333 Load File Staged and Posted "Ready" |  |
| 4245 | 1.2.5.2.14.3 | 1.2.5.2.14.3 | 6 | Simulate Load | 2026-09-30 | 2026-09-30 | 2026-04-09 | 2026-04-09 | 0 | 0.125 | As Soon As Possible | Future Task | -718.52h | 0h | Data Migration Team |  | True | True |  | OTC_CM19_Customer_Master - Sold-To |  | Data | 4246 | 1.25 1.38 301.38 301.5 300.13  | 41, 794, 238 | 794 1.25 Post Load Validation |  |
| 4246 | 1.2.5.2.14.4 | 1.2.5.2.14.4 | 6 | Error and Defect Mitigation | 2026-09-30 | 2026-09-30 | 2026-04-09 | 2026-04-09 | 0 | 0.375 | As Soon As Possible | Future Task | -718.52h | 0h | Ric Haraida |  | True | True |  | OTC_CM19_Customer_Master - Sold-To | Kim Kolesar | OTC | 4247 | 1.38 1.75 301.5 301.88 300.13  | 4245 | 4245 1.375 Simulate Load |  |
| 4247 | 1.2.5.2.14.5 | 1.2.5.2.14.5 | 6 | Load | 2026-09-30 | 2026-09-30 | 2026-04-09 | 2026-04-10 | 0 | 0.375 | As Soon As Possible | Future Task | -718.52h | 0h | Data Migration Team |  | True | True |  | OTC_CM19_Customer_Master - Sold-To |  | Data | 42, 484, 253, 426, 600, 0 | 1.75 2.13 301.88 302.25 300.13  | 4246 | 4246 1.75 Error and Defect Mitigation |  |
| 4248 | 1.2.5.2.14.6 | 1.2.5.2.14.6 | 6 | Post Load Validation | 2026-09-30 | 2026-10-01 | 2026-04-10 | 2026-04-10 | 0 | 0.375 | As Soon As Possible | Future Task | -683.02h | 0h | Ric Haraida |  | True | True |  | OTC_CM19_Customer_Master - Sold-To | Kim Kolesar | OTC |  | 2.13 2.5 303.63 304 301.5  | 4247 | 4247 2.125 Load |  |
| 4249 | 1.2.5.2.14.7 | 1.2.5.2.14.7 | 6 | Open client for BP number range update | 2026-09-29 | 2026-09-29 | 2026-04-09 | 2026-04-09 | 0 | 0.03125 | As Soon As Possible | Future Task | -40306m | 0m | Basis |  | True | True |  | OTC_CM19_Customer_Master - Sold-To |  | Basis | 4250 | 3.5 3.53 303.91 303.94 300.4  | 4238 | 4238 3.502083333333333 Simulate Load |  |
| 4250 | 1.2.5.2.14.8 | 1.2.5.2.14.8 | 6 | Update number range BP02 from Internal to External | 2026-09-29 | 2026-09-29 | 2026-04-09 | 2026-04-09 | 0 | 0.03125 | As Soon As Possible | Future Task | -40306m | 0m | Ric Haraida |  | True | True |  | OTC_CM19_Customer_Master - Sold-To |  | OTC | 4251 | 3.53 3.56 303.94 303.97 300.4  | 4249 | 4249 3.533333333333333 Open client for BP number range update |  |
| 4251 | 1.2.5.2.14.9 | 1.2.5.2.14.9 | 6 | Close Client | 2026-09-29 | 2026-09-29 | 2026-04-09 | 2026-04-09 | 0 | 0.03125 | As Soon As Possible | Future Task | -40306m | 0m | Basis |  | True | True |  | OTC_CM19_Customer_Master - Sold-To |  | Basis |  | 3.56 3.6 303.97 304 300.4  | 4250 | 4250 3.564583333333333 Update number range BP02 from Internal to External |  |
| 4252 | 1.2.5.2.15 | 1.2.5.2.15 | 5 | PTP_CM27_Vendor Master as Customer - FLCU01 | 2026-09-30 | 2026-10-07 | 2026-04-10 | 2026-04-14 | 0 | 4.81 | As Soon As Possible | Future Task | -89.81d | 0d | Muniraju Surappachari; Nevin Varkey; Samuel Houff; Sarasija Ghosh; Surendra Krishna Acharya; Swetha SethumadhavaRao; James Farmer | True | True | True |  | Master Data Loads | Muniraju Surappachari | PTP |  |  |  |  |  |
| 4253 | 1.2.5.2.15.1 | 1.2.5.2.15.1 | 6 | Extract File | 2026-09-30 | 2026-10-01 | 2026-04-10 | 2026-04-10 | 0 | 0.125 | As Soon As Possible | Future Task | -718.52h | 0h | Data Migration Team |  | True | True |  | PTP_CM27_Vendor Master as Customer - FLCU01 |  | Data | 4254 | 2.13 2.25 303.63 303.75 301.5  | 4247 | 4247 2.125 Load |  |
| 4254 | 1.2.5.2.15.2 | 1.2.5.2.15.2 | 6 | Pre Load Validation | 2026-10-01 | 2026-10-01 | 2026-04-10 | 2026-04-10 | 0 | 0.25 | As Soon As Possible | Future Task | -718.52h | 0h | Nevin Varkey |  | True | True |  | PTP_CM27_Vendor Master as Customer - FLCU01 | Sam Houff | PTP | 4255 | 2.25 2.5 303.75 304 301.5  | 4253 | 4253 2.25 Extract File |  |
| 4255 | 1.2.5.2.15.3 | 1.2.5.2.15.3 | 6 | Simulate Load | 2026-10-01 | 2026-10-02 | 2026-04-10 | 2026-04-13 | 0 | 1.40625 | Finish No Earlier Than | Future Task | -718.52h | 0h | Data Migration Team |  | True | True |  | PTP_CM27_Vendor Master as Customer - FLCU01 |  | Data | 4256 | 5 6.41 301.97 303.38 296.97  | 42, 194, 254 | 254 5 Install GRC AC components |  |
| 4256 | 1.2.5.2.15.4 | 1.2.5.2.15.4 | 6 | Error and Defect Mitigation | 2026-10-02 | 2026-10-06 | 2026-04-10 | 2026-04-14 | 0 | 0.25 | As Soon As Possible | Future Task | -718.52h | 0h | Nevin Varkey |  | True | True |  | PTP_CM27_Vendor Master as Customer - FLCU01 | Sam Houff | PTP | 4257 | 6.41 6.66 303.38 303.63 296.97  | 4255 | 4255 6.40625 Simulate Load |  |
| 4257 | 1.2.5.2.15.5 | 1.2.5.2.15.5 | 6 | Load | 2026-10-06 | 2026-10-07 | 2026-04-10 | 2026-04-14 | 0 | 0.125 | As Soon As Possible | Future Task | -718.52h | 0h | Data Migration Team |  | True | True |  | PTP_CM27_Vendor Master as Customer - FLCU01 |  | Data | 4258 | 6.66 6.78 303.63 303.75 296.97  | 4256 | 4256 6.65625 Error and Defect Mitigation |  |
| 4258 | 1.2.5.2.15.6 | 1.2.5.2.15.6 | 6 | Post Load Validation | 2026-10-07 | 2026-10-07 | 2026-04-14 | 2026-04-14 | 0 | 0.25 | As Soon As Possible | Future Task | -718.52h | 0h | Nevin Varkey |  | True | True |  | PTP_CM27_Vendor Master as Customer - FLCU01 | Sam Houff | PTP |  | 6.78 7.03 303.75 304 296.97  | 4257 | 4257 6.78125 Load |  |
| 4259 | 1.2.5.2.16 | 1.2.5.2.16 | 5 | OTC_CM23_Customer_Hierarchy | 2026-09-30 | 2026-10-01 | 2026-04-10 | 2026-04-10 | 0 | 0.69 | As Soon As Possible | Future Task | -85.69d | 0d | Anitha Jothi; Kim Kolesar; Michele Colombo; Michiko Tomihari; Ric Haraida; Rod Santos; Shibu Mathew; Narendra Kallam; Keith Riley; James Manohar | True | True | True |  | Master Data Loads | Kim Kolesar | OTC |  |  |  |  |  |
| 4260 | 1.2.5.2.16.1 | 1.2.5.2.16.1 | 6 | Manual File Staged and Posted "Ready" | 2026-09-30 | 2026-09-30 | 2026-04-10 | 2026-04-10 | 0 | 0.0625 | Start No Earlier Than | Future Task | -41131m | 0m | Ric Haraida |  | True | True |  | OTC_CM23_Customer_Hierarchy | Kim Kolesar | OTC | 4261 | 2.13 2.19 303.31 303.38 301.19  | 4247 | 4247 2.125 Load |  |
| 4261 | 1.2.5.2.16.2 | 1.2.5.2.16.2 | 6 | Load | 2026-09-30 | 2026-10-01 | 2026-04-10 | 2026-04-10 | 0 | 0.25 | Start No Earlier Than | Future Task | -685.52h | 0h | Ric Haraida |  | True | True |  | OTC_CM23_Customer_Hierarchy |  | OTC | 4262 | 2.19 2.44 303.38 303.63 301.19  | 4260 | 4260 2.1875 Manual File Staged and Posted "Ready" |  |
| 4262 | 1.2.5.2.16.3 | 1.2.5.2.16.3 | 6 | Post Load Validation | 2026-10-01 | 2026-10-01 | 2026-04-10 | 2026-04-10 | 0 | 0.375 | As Soon As Possible | Future Task | -685.52h | 0h | Ric Haraida |  | True | True |  | OTC_CM23_Customer_Hierarchy | Kim Kolesar | OTC |  | 2.44 2.81 303.63 304 301.19  | 4261 | 4261 2.4375 Load |  |
| 4263 | 1.2.5.2.17 | 1.2.5.2.17 | 5 | PTP_CM27_Vendor Master - Z001 - External Sales Rep | 2026-09-30 | 2026-10-06 | 2026-04-10 | 2026-04-13 | 0 | 3.38 | As Soon As Possible | Future Task | -88.38d | 0d | Muniraju Surappachari; Nevin Varkey; Samuel Houff; Sarasija Ghosh; Surendra Krishna Acharya; Swetha SethumadhavaRao; James Farmer | True | True | True |  | Master Data Loads | Kim Kolesar | PTP |  |  |  |  |  |

| uid | wbs | outlineNumber | outlineLevel | name | start | finish | baselineStart | baselineFinish | percentComplete | durationDays | constraintType | status | totalSlackRaw | freeSlackRaw | resourceNames | summary | criticalFlag | active | summaryName | businessValidationOwner | workstream | successors | cpm | predecessors | drivers |
| --- | --- | --- | --- | --- | --- | --- | --- | --- | --- | --- | --- | --- | --- | --- | --- | --- | --- | --- | --- | --- | --- | --- | --- | --- | --- |
| 4264 | 1.2.5.2.17.1 | 1.2.5.2.17.1 | 6 | Extract File | 2026-09-30 | 2026-10-01 | 2026-04-10 | 2026-04-10 | 0 | 0.125 | As Soon As Possible | Future Task | -707.02h | 0h | Data Migration Team |  | True | True | PTP_CM27_Vendor Master - Z001 - External Sales Rep |  | Data | 42, 654, 278 | 2.13 2.25 302.97 303.09 300.84  | 4247 | 4247 2.125 Load |
| 4265 | 1.2.5.2.17.2 | 1.2.5.2.17.2 | 6 | Pre Load Validation | 2026-10-01 | 2026-10-01 | 2026-04-10 | 2026-04-10 | 0 | 0.25 | As Soon As Possible | Future Task | -707.02h | 0h | Nevin Varkey |  | True | True | PTP_CM27_Vendor Master - Z001 - External Sales Rep | Sam Houff | PTP | 4266 | 2.25 2.5 303.75 304 301.5  | 4264 | 4264 2.25 Extract File |
| 4266 | 1.2.5.2.17.3 | 1.2.5.2.17.3 | 6 | Simulate Load | 2026-10-01 | 2026-10-01 | 2026-04-10 | 2026-04-10 | 0 | 0.125 | As Soon As Possible | Future Task | -707.02h | 0h | Data Migration Team |  | True | True | PTP_CM27_Vendor Master - Z001 - External Sales Rep |  | Data | 4267 | 31 31.13 303.25 303.38 272.25  | 42, 194, 265 | 265 31 MSMP workflow configuration |
| 4267 | 1.2.5.2.17.4 | 1.2.5.2.17.4 | 6 | Error and Defect Mitigation | 2026-10-01 | 2026-10-01 | 2026-04-10 | 2026-04-10 | 0 | 0.25 | As Soon As Possible | Future Task | -707.02h | 0h | Nevin Varkey |  | True | True | PTP_CM27_Vendor Master - Z001 - External Sales Rep | Sam Houff | PTP | 4268 | 31.13 31.38 303.38 303.63 272.25  | 4266 | 4266 31.125 Simulate Load |
| 4268 | 1.2.5.2.17.5 | 1.2.5.2.17.5 | 6 | Load | 2026-10-01 | 2026-10-06 | 2026-04-10 | 2026-04-13 | 0 | 0.125 | As Soon As Possible | Future Task | -707.02h | 0h | Data Migration Team |  | True | True | PTP_CM27_Vendor Master - Z001 - External Sales Rep |  | Data | 4269 | 31.38 31.5 303.63 303.75 272.25  | 4267 | 4267 31.375 Error and Defect Mitigation |
| 4269 | 1.2.5.2.17.6 | 1.2.5.2.17.6 | 6 | Post Load Validation | 2026-10-06 | 2026-10-06 | 2026-04-13 | 2026-04-13 | 0 | 0.25 | As Soon As Possible | Future Task | -707.02h | 0h | Nevin Varkey |  | True | True | PTP_CM27_Vendor Master - Z001 - External Sales Rep | Sam Houff | PTP |  | 31.5 31.75 303.75 304 272.25  | 4268 | 4268 31.5 Load |
| 4270 | 1.2.5.2.18 | 1.2.5.2.18 | 5 | RTR_CM10_Credit_Management_Role | 2026-09-30 | 2026-10-02 | 2026-04-10 | 2026-04-13 | 0 | 1.84 | As Soon As Possible | Future Task | -87.6d | 0d | COULD NOT BE DETERMINED | True | True | True | Master Data Loads | Manjunatha Umesha |  |  |  |  |  |
| 4271 | 1.2.5.2.18.1 | 1.2.5.2.18.1 | 6 | Load File Staged and Posted "Ready" | 2026-09-30 | 2026-09-30 | 2026-04-10 | 2026-04-10 | 0 | 0.0625 | As Soon As Possible | Future Task | -42046m | 0m | Kasey Hughes |  | True | True | RTR_CM10_Credit_Management_Role |  | Finance | 4272 | 2.13 2.19 302.25 302.31 300.13  | 4247 | 4247 2.125 Load |
| 4272 | 1.2.5.2.18.2 | 1.2.5.2.18.2 | 6 | Pre Load Validation | 2026-09-30 | 2026-10-01 | 2026-04-10 | 2026-04-10 | 0 | 0.0625 | As Soon As Possible | Future Task | -42046m | 0m | Kasey Hughes |  | True | True | RTR_CM10_Credit_Management_Role | Brian Wagner | Finance | 4273 | 2.19 2.25 302.31 302.38 300.13  | 4271 | 4271 2.1875 Load File Staged and Posted "Ready" |
| 4273 | 1.2.5.2.18.3 | 1.2.5.2.18.3 | 6 | Simulate Load | 2026-10-01 | 2026-10-01 | 2026-04-10 | 2026-04-10 | 0 | 0.125 | As Soon As Possible | Future Task | -700.77h | 0h | Data Migration Team |  | True | True | RTR_CM10_Credit_Management_Role |  | Data | 4274 | 2.25 2.38 302.38 302.5 300.13  | 4272 | 4272 2.25 Pre Load Validation |
| 4274 | 1.2.5.2.18.4 | 1.2.5.2.18.4 | 6 | Error and Defect Mitigation | 2026-10-01 | 2026-10-01 | 2026-04-10 | 2026-04-10 | 0 | 0.25 | As Soon As Possible | Future Task | -700.77h | 0h | Kasey Hughes |  | True | True | RTR_CM10_Credit_Management_Role | Brian Wagner | Finance | 42, 754, 292 | 2.38 2.63 302.5 302.75 300.13  | 4273 | 4273 2.375 Simulate Load |
| 4275 | 1.2.5.2.18.5 | 1.2.5.2.18.5 | 6 | Load | 2026-10-01 | 2026-10-01 | 2026-04-10 | 2026-04-10 | 0 | 0.25 | As Soon As Possible | Future Task | -700.77h | 0h | Data Migration Team |  | True | True | RTR_CM10_Credit_Management_Role |  | Data | 4276 | 2.63 2.88 302.75 303 300.13  | 4274 | 4274 2.625 Error and Defect Mitigation |
| 4276 | 1.2.5.2.18.6 | 1.2.5.2.18.6 | 6 | Post Load Validation | 2026-10-01 | 2026-10-02 | 2026-04-10 | 2026-04-13 | 0 | 0.375 | As Soon As Possible | Future Task | -700.77h | 0h | Kasey Hughes |  | True | True | RTR_CM10_Credit_Management_Role | Brian Wagner | Finance | 42, 934, 458 | 2.88 3.25 303 303.38 300.13  | 4275 | 4275 2.875 Load |
| 4277 | 1.2.5.2.19 | 1.2.5.2.19 | 5 | PTP_CM27_Vendor Master | 2026-09-24 | 2026-10-02 | 2026-04-10 | 2026-04-15 | 0 | 6.28 | As Soon As Possible | Future Task | -90.75d | 0d | Muniraju Surappachari; Nevin Varkey; Samuel Houff; Sarasija Ghosh; Surendra Krishna Acharya; Swetha SethumadhavaRao; James Farmer | True | True | True | Master Data Loads | Muniraju Surappachari | PTP |  |  |  |  |
| 4278 | 1.2.5.2.19.1 | 1.2.5.2.19.1 | 6 | Extract File | 2026-10-01 | 2026-10-01 | 2026-04-10 | 2026-04-10 | 0 | 0.125 | As Soon As Possible | Future Task | -691.77h | 0h | Data Migration Team |  | True | True | PTP_CM27_Vendor Master |  | Data | 4279 | 2.25 2.38 303.09 303.22 300.84  | 4264 | 4264 2.25 Extract File |
| 4279 | 1.2.5.2.19.2 | 1.2.5.2.19.2 | 6 | Pre Load Validation | 2026-10-01 | 2026-10-01 | 2026-04-10 | 2026-04-10 | 0 | 0.25 | As Soon As Possible | Future Task | -691.77h | 0h | Nevin Varkey |  | True | True | PTP_CM27_Vendor Master | Sam Houff | PTP | 4280 | 2.38 2.63 303.22 303.47 300.84  | 4278 | 4278 2.375 Extract File |
| 4280 | 1.2.5.2.19.3 | 1.2.5.2.19.3 | 6 | Simulate Load | 2026-10-01 | 2026-10-01 | 2026-04-10 | 2026-04-14 | 0 | 0.28125 | Finish No Earlier Than | Future Task | -691.77h | 0h | Data Migration Team |  | True | True | PTP_CM27_Vendor Master |  | Data | 4281 | 2.63 2.91 303.47 303.75 300.84  | 4279 | 4279 2.625 Pre Load Validation |
| 4281 | 1.2.5.2.19.4 | 1.2.5.2.19.4 | 6 | Error and Defect Mitigation | 2026-10-01 | 2026-10-02 | 2026-04-14 | 2026-04-14 | 0 | 0.25 | As Soon As Possible | Future Task | -691.77h | 0h | Nevin Varkey |  | True | True | PTP_CM27_Vendor Master | Sam Houff | PTP |  | 2.91 3.16 303.75 304 300.84  | 4280 | 4280 2.90625 Simulate Load |
| 4282 | 1.2.5.2.19.5 | 1.2.5.2.19.5 | 6 | Load | 2026-09-24 | 2026-09-24 | 2026-04-14 | 2026-04-14 | 0 | 0.125 | As Soon As Possible | Future Task | -726.02h | 0h | Data Migration Team |  | True | True | PTP_CM27_Vendor Master |  | Data | 4283 | 0 0.13 295.09 295.22 295.09  |  |  |
| 4283 | 1.2.5.2.19.6 | 1.2.5.2.19.6 | 6 | Post Load Validation | 2026-09-24 | 2026-09-24 | 2026-04-15 | 2026-04-15 | 0 | 0.25 | As Soon As Possible | Future Task | -726.02h | 0h | Nevin Varkey |  | True | True | PTP_CM27_Vendor Master | Sam Houff | PTP | 429, 643, 114, 335 | 0.13 0.38 295.22 295.47 295.09  | 4282 | 4282 0.125 Load |
| 4167 | 1.2.5.2.2 | 1.2.5.2.2 | 5 | RTR_CM03_Cost Center Hierarchy | 2026-09-24 | 2026-09-25 | 2026-04-06 | 2026-04-07 | 0 | 0.75 | As Soon As Possible | Future Task | -89.81d | 0d | COULD NOT BE DETERMINED | True | True | True | Master Data Loads | Brian Wagner |  | 41, 964, 198 |  |  |  |
| 4168 | 1.2.5.2.2.1 | 1.2.5.2.2.1 | 6 | Manual File Staged and Posted "Ready" | 2026-09-24 | 2026-09-24 | 2026-04-06 | 2026-04-06 | 0 | 0.125 | Start No Earlier Than | Future Task | -718.52h | 0h | Kasey Hughes |  | True | True | RTR_CM03_Cost Center Hierarchy |  | Finance | 4169 | 0.75 0.88 297.06 297.19 296.31  | 4166 | 4166 0.7520833333333333 Post Load Validation |
| 4169 | 1.2.5.2.2.2 | 1.2.5.2.2.2 | 6 | Load | 2026-09-24 | 2026-09-25 | 2026-04-06 | 2026-04-07 | 0 | 0.25 | As Soon As Possible | Future Task | -718.52h | 0h | Kasey Hughes |  | True | True | RTR_CM03_Cost Center Hierarchy |  | Finance | 4170 | 0.88 1.13 297.19 297.44 296.31  | 4168 | 4168 0.8770833333333333 Manual File Staged and Posted "Ready" |
| 4170 | 1.2.5.2.2.3 | 1.2.5.2.2.3 | 6 | Post Load Validation | 2026-09-25 | 2026-09-25 | 2026-04-07 | 2026-04-07 | 0 | 0.375 | As Soon As Possible | Future Task | -718.52h | 0h | Kasey Hughes |  | True | True | RTR_CM03_Cost Center Hierarchy | Brian Wagner | Finance | 41, 724, 207 | 1.13 1.5 297.44 297.81 296.31  | 4169 | 4169 1.1270833333333332 Load |
| 4284 | 1.2.5.2.20 | 1.2.5.2.20 | 5 | PTP_CM27_Vendor Master - Mass Maintenance - LFA1-WERKR | 2026-09-24 | 2026-09-24 | 2026-04-10 | 2026-04-15 | 0 | 0.88 | As Soon As Possible | Future Task | -81.69d | 0d | Muniraju Surappachari; Nevin Varkey; Samuel Houff; Sarasija Ghosh; Surendra Krishna Acharya; Swetha SethumadhavaRao; James Farmer | True | True | True | Master Data Loads | Muniraju Surappachari | PTP |  |  |  |  |
| 4285 | 1.2.5.2.20.1 | 1.2.5.2.20.1 | 6 | Extract File(Will Extract from LFA1) | 2026-09-24 | 2026-09-24 | 2026-04-10 | 2026-04-10 | 0 | 0.125 | Start No Earlier Than | Future Task | -653.52h | 0h | Nevin Varkey |  | True | True | PTP_CM27_Vendor Master - Mass Maintenance - LFA1-WERKR |  | PTP | 42, 864, 310 | 0 0.13 302.5 302.63 302.5  |  |  |
| 4286 | 1.2.5.2.20.2 | 1.2.5.2.20.2 | 6 | Pre Load Validation | 2026-09-24 | 2026-09-24 | 2026-04-10 | 2026-04-10 | 0 | 0.25 | As Soon As Possible | Future Task | -653.52h | 0h | Nevin Varkey |  | True | True | PTP_CM27_Vendor Master - Mass Maintenance - LFA1-WERKR | Sam Houff | PTP | 4287 | 0.13 0.38 302.63 302.88 302.5  | 4285 | 4285 0.125 Extract File(Will Extract from LFA1) |
| 4287 | 1.2.5.2.20.3 | 1.2.5.2.20.3 | 6 | Simulate Load/ Not Needed | 2026-09-24 | 2026-09-24 | 2026-04-10 | 2026-04-10 | 0 | 0.125 | As Soon As Possible | Future Task | -653.52h | 0h | Nevin Varkey |  | True | True | PTP_CM27_Vendor Master - Mass Maintenance - LFA1-WERKR |  | PTP | 42, 884, 289 | 0.38 0.5 302.88 303 302.5  | 4286 | 4286 0.375 Pre Load Validation |
| 4288 | 1.2.5.2.20.4 | 1.2.5.2.20.4 | 6 | Error and Defect Mitigation | 2026-09-24 | 2026-09-24 | 2026-04-10 | 2026-04-13 | 0 | 0.25 | As Soon As Possible | Future Task | -647.52h | 0h | Nevin Varkey |  | True | True | PTP_CM27_Vendor Master - Mass Maintenance - LFA1-WERKR | Sam Houff | PTP |  | 0.5 0.75 303.75 304 303.25  | 4287 | 4287 0.5 Simulate Load/ Not Needed |
| 4289 | 1.2.5.2.20.5 | 1.2.5.2.20.5 | 6 | Load | 2026-09-24 | 2026-09-24 | 2026-04-15 | 2026-04-15 | 0 | 0.125 | As Soon As Possible | Future Task | -653.52h | 0h | Nevin Varkkey |  | True | True | PTP_CM27_Vendor Master - Mass Maintenance - LFA1-WERKR |  | PTP | 4290 | 0.5 0.63 303 303.13 302.5  | 4287 | 4287 0.5 Simulate Load/ Not Needed |
| 4290 | 1.2.5.2.20.6 | 1.2.5.2.20.6 | 6 | Post Load Validation | 2026-09-24 | 2026-09-24 | 2026-04-15 | 2026-04-15 | 0 | 0.25 | As Soon As Possible | Future Task | -653.52h | 0h | Nevin Varkey |  | True | True | PTP_CM27_Vendor Master - Mass Maintenance - LFA1-WERKR | Sam Houff | PTP | 4485 | 0.63 0.88 303.13 303.38 302.5  | 4289 | 4289 0.625 Load |
| 4291 | 1.2.5.2.21 | 1.2.5.2.21 | 5 | RTR_****_Credit Hierarchy | 2026-10-01 | 2026-10-05 | 2026-04-10 | 2026-04-13 | 0 | 1.91 | As Soon As Possible | Future Task | -87.47d | 0d | COULD NOT BE DETERMINED | True | True | True | Master Data Loads | Brian Wagner |  |  |  |  |  |
| 4292 | 1.2.5.2.21.1 | 1.2.5.2.21.1 | 6 | Manual File Staged and Posted "Ready" | 2026-10-01 | 2026-10-01 | 2026-04-10 | 2026-04-10 | 0 | 0.0625 | Start No Earlier Than | Future Task | -41101m | 0m | Kasey Hughes |  | True | True | RTR_****_Credit Hierarchy | Brian Wagner | Finance |  | 2.63 2.69 303.94 304 301.31  | 4274 | 4274 2.625 Error and Defect Mitigation |
| 4293 | 1.2.5.2.21.2 | 1.2.5.2.21.2 | 6 | Load | 2026-10-02 | 2026-10-02 | 2026-04-13 | 2026-04-13 | 0 | 0.25 | As Soon As Possible | Future Task | -699.77h | 0h | Kasey Hughes |  | True | True | RTR_****_Credit Hierarchy |  | Finance | 4294 | 3.25 3.5 303.38 303.63 300.13  | 4276 | 4276 3.25 Post Load Validation |
| 4294 | 1.2.5.2.21.3 | 1.2.5.2.21.3 | 6 | Post Load Validation | 2026-10-02 | 2026-10-05 | 2026-04-13 | 2026-04-13 | 0 | 0.375 | As Soon As Possible | Future Task | -699.77h | 0h | Kasey Hughes |  | True | True | RTR_****_Credit Hierarchy | Brian Wagner | Finance |  | 3.5 3.88 303.63 304 300.13  | 4293 | 4293 3.5 Load |
| 4295 | 1.2.5.2.22 | 1.2.5.2.22 | 5 | PTP_CM27_BP_Intercompany Supplier | 2026-09-24 | 2026-09-25 | 2026-04-13 | 2026-04-14 | 0 | 1.13 | As Soon As Possible | Future Task | -81.69d | 0d | Muniraju Surappachari; Nevin Varkey; Samuel Houff; Sarasija Ghosh; Surendra Krishna Acharya; Swetha SethumadhavaRao; James Farmer | True | True | True | Master Data Loads | Muniraju Surappachari | PTP |  |  |  |  |
| 4296 | 1.2.5.2.22.1 | 1.2.5.2.22.1 | 6 | Load File Staged and Posted "Ready" | 2026-09-24 | 2026-09-24 | 2026-04-13 | 2026-04-13 | 0 | 0.0625 | As Soon As Possible | Future Task | -39211m | 0m | Nevin Varkey,Ric Haraida |  | True | True | PTP_CM27_BP_Intercompany Supplier |  | PTP | 4297 | 0.38 0.44 302.88 302.94 302.5  | 4283 | 4283 0.375 Post Load Validation |
| 4297 | 1.2.5.2.22.2 | 1.2.5.2.22.2 | 6 | Pre Load Validation | 2026-09-24 | 2026-09-24 | 2026-04-13 | 2026-04-13 | 0 | 0.0625 | As Soon As Possible | Future Task | -39211m | 0m | Nevin Varkey,Ric Haraida |  | True | True | PTP_CM27_BP_Intercompany Supplier | Sam Houff,Kim Kolesar | PTP | 4298 | 0.44 0.5 302.94 303 302.5  | 4296 | 4296 0.4375 Load File Staged and Posted "Ready" |
| 4298 | 1.2.5.2.22.3 | 1.2.5.2.22.3 | 6 | Simulate Load | 2026-09-24 | 2026-09-24 | 2026-04-13 | 2026-04-13 | 0 | 0.125 | As Soon As Possible | Future Task | -653.52h | 0h | Data Migration Team |  | True | True | PTP_CM27_BP_Intercompany Supplier |  | Data | 4299 | 0.5 0.63 303 303.13 302.5  | 4297 | 4297 0.5 Pre Load Validation |
| 4299 | 1.2.5.2.22.4 | 1.2.5.2.22.4 | 6 | Error and Defect Mitigation | 2026-09-24 | 2026-09-24 | 2026-04-13 | 2026-04-13 | 0 | 0.25 | As Soon As Possible | Future Task | -653.52h | 0h | Nevin Varkey,Ric Haraida |  | True | True | PTP_CM27_BP_Intercompany Supplier | Sam Houff,Kim Kolesar | PTP | 4300 | 0.63 0.88 303.13 303.38 302.5  | 4298 | 4298 0.625 Simulate Load |
| 4300 | 1.2.5.2.22.5 | 1.2.5.2.22.5 | 6 | Load | 2026-09-24 | 2026-09-25 | 2026-04-13 | 2026-04-14 | 0 | 0.25 | As Soon As Possible | Future Task | -653.52h | 0h | Data Migration Team |  | True | True | PTP_CM27_BP_Intercompany Supplier |  | Data | 43, 14, 457 | 0.88 1.13 303.38 303.63 302.5  | 4299 | 4299 0.875 Error and Defect Mitigation |
| 4301 | 1.2.5.2.22.6 | 1.2.5.2.22.6 | 6 | Post Load Validation | 2026-09-25 | 2026-09-25 | 2026-04-14 | 2026-04-14 | 0 | 0.375 | As Soon As Possible | Future Task | -653.52h | 0h | Nevin Varkey,Ric Haraida |  | True | True | PTP_CM27_BP_Intercompany Supplier | Sam Houff,Kim Kolesar | PTP |  | 1.13 1.5 303.63 304 302.5  | 4300 | 4300 1.125 Load |
| 4302 | 1.2.5.2.23 | 1.2.5.2.23 | 5 | PTP_CM27_BP_Intercompany Customer | 2026-09-24 | 2026-09-25 | 2026-04-13 | 2026-04-14 | 0 | 1.06 | As Soon As Possible | Future Task | -81.25d | 0d | Muniraju Surappachari; Nevin Varkey; Samuel Houff; Sarasija Ghosh; Surendra Krishna Acharya; Swetha SethumadhavaRao; James Farmer | True | True | True | Master Data Loads | Muniraju Surappachari | PTP |  |  |  |  |
| 4303 | 1.2.5.2.23.1 | 1.2.5.2.23.1 | 6 | Load File Staged and Posted "Ready" | 2026-09-24 | 2026-09-24 | 2026-04-13 | 2026-04-13 | 0 | 0.0625 | As Soon As Possible | Future Task | -38521m | 0m | Nevin Varkey,Ric Haraida |  | True | True | PTP_CM27_BP_Intercompany Customer |  | PTP |  | 0 0.06 303.94 304 303.94  |  |  |
| 4304 | 1.2.5.2.23.2 | 1.2.5.2.23.2 | 6 | Pre Load Validation | 2026-09-24 | 2026-09-24 | 2026-04-13 | 2026-04-13 | 0 | 0.0625 | As Soon As Possible | Future Task | -39001m | 0m | Nevin Varkey,Ric Haraida |  | True | True | PTP_CM27_BP_Intercompany Customer | Sam Houff,Kim Kolesar | PTP | 4305 | 0 0.06 302.94 303 302.94  |  |  |
| 4305 | 1.2.5.2.23.3 | 1.2.5.2.23.3 | 6 | Simulate Load | 2026-09-24 | 2026-09-24 | 2026-04-13 | 2026-04-13 | 0 | 0.125 | As Soon As Possible | Future Task | -650.02h | 0h | Data Migration Team |  | True | True | PTP_CM27_BP_Intercompany Customer |  | Data | 4306 | 0.06 0.19 303 303.13 302.94  | 4304 | 4304 0.0625 Pre Load Validation |
| 4306 | 1.2.5.2.23.4 | 1.2.5.2.23.4 | 6 | Error and Defect Mitigation | 2026-09-24 | 2026-09-24 | 2026-04-13 | 2026-04-13 | 0 | 0.25 | As Soon As Possible | Future Task | -650.02h | 0h | Nevin Varkey,Ric Haraida |  | True | True | PTP_CM27_BP_Intercompany Customer | Sam Houff,Kim Kolesar | PTP | 4307 | 0.19 0.44 303.13 303.38 302.94  | 4305 | 4305 0.1875 Simulate Load |
| 4307 | 1.2.5.2.23.5 | 1.2.5.2.23.5 | 6 | Load | 2026-09-24 | 2026-09-24 | 2026-04-13 | 2026-04-14 | 0 | 0.25 | As Soon As Possible | Future Task | -650.02h | 0h | Data Migration Team |  | True | True | PTP_CM27_BP_Intercompany Customer |  | Data | 43, 84, 457 | 0.44 0.69 303.38 303.63 302.94  | 4306 | 4306 0.4375 Error and Defect Mitigation |
| 4308 | 1.2.5.2.23.6 | 1.2.5.2.23.6 | 6 | Post Load Validation | 2026-09-24 | 2026-09-25 | 2026-04-14 | 2026-04-14 | 0 | 0.375 | As Soon As Possible | Future Task | -650.02h | 0h | Nevin Varkey,Ric Haraida |  | True | True | PTP_CM27_BP_Intercompany Customer | Sam Houff,Kim Kolesar | PTP |  | 0.69 1.06 303.63 304 302.94  | 4307 | 4307 0.6875 Load |
| 4309 | 1.2.5.2.24 | 1.2.5.2.24 | 5 | PTP_CM26_Material_Master - All Types | 2026-09-24 | 2026-09-28 | 2026-04-10 | 2026-04-15 | 0 | 2.28 | As Soon As Possible | Future Task | -90.5d | 0d | Muniraju Surappachari; Nevin Varkey; Samuel Houff; Sarasija Ghosh; Surendra Krishna Acharya; Swetha SethumadhavaRao; James Farmer | True | True | True | Master Data Loads | Muniraju Surappachari | PTP |  |  |  |  |
| 4310 | 1.2.5.2.24.1 | 1.2.5.2.24.1 | 6 | Extract File | 2026-09-24 | 2026-09-25 | 2026-04-10 | 2026-04-13 | 0 | 0.625 | As Soon As Possible | Future Task | -649.27h | 0h | Data Migration Team |  | True | True | PTP_CM26_Material_Master - All Types |  | Data |  | 0.13 0.75 303.38 304 303.25  | 4285 | 4285 0.125 Extract File(Will Extract from LFA1) |
| 4311 | 1.2.5.2.24.2 | 1.2.5.2.24.2 | 6 | Pre Load Validation | 2026-09-24 | 2026-09-25 | 2026-04-13 | 2026-04-14 | 0 | 0.25 | As Soon As Possible | Future Task | -726.02h | 0h | Nevin Varkey,Ric Haraida |  | True | True | PTP_CM26_Material_Master - All Types | Sam Houff,Kim Kolesar,Matt | PTP | 4312 | 0.38 0.63 295.47 295.72 295.09  | 4283 | 4283 0.375 Post Load Validation |
| 4312 | 1.2.5.2.24.3 | 1.2.5.2.24.3 | 6 | Simulate Load | 2026-09-25 | 2026-09-25 | 2026-04-14 | 2026-04-14 | 0 | 0.125 | As Soon As Possible | Future Task | -726.02h | 0h | Data Migration Team |  | True | True | PTP_CM26_Material_Master - All Types |  | Data | 4313 | 0.63 0.75 295.72 295.84 295.09  | 4311 | 4311 0.625 Pre Load Validation |
| 4313 | 1.2.5.2.24.4 | 1.2.5.2.24.4 | 6 | Error and Defect Mitigation | 2026-09-25 | 2026-09-25 | 2026-04-14 | 2026-04-14 | 0 | 0.5 | As Soon As Possible | Future Task | -726.02h | 0h | Nevin Varkey |  | True | True | PTP_CM26_Material_Master - All Types | Sam Houff,Kim Kolesar,Matt | PTP | 4314 | 0.75 1.25 295.84 296.34 295.09  | 4312 | 4312 0.75 Simulate Load |
| 4314 | 1.2.5.2.24.5 | 1.2.5.2.24.5 | 6 | Load | 2026-09-25 | 2026-09-28 | 2026-04-14 | 2026-04-15 | 0 | 0.375 | As Soon As Possible | Future Task | -726.02h | 0h | Data Migration Team |  | True | True | PTP_CM26_Material_Master - All Types |  | Data | 431, 543, 184, 325 | 1.25 1.63 296.34 296.72 295.09  | 4313 | 4313 1.25 Error and Defect Mitigation |
| 4315 | 1.2.5.2.24.6 | 1.2.5.2.24.6 | 6 | Post Load Validation | 2026-09-28 | 2026-09-28 | 2026-04-15 | 2026-04-15 | 0 | 0.25 | As Soon As Possible | Future Task | -705.77h | 0h | Nevin Varkey |  | True | True | PTP_CM26_Material_Master - All Types | Sam Houff,Kim Kolesar,Matt | PTP | 433, 143, 384, 345 | 1.63 1.88 303.75 304 302.13  | 4314 | 4314 1.625 Load |
| 4316 | 1.2.5.2.25 | 1.2.5.2.25 | 5 | PTP_CM26_Material_Master - SERV - Service Materials | 2026-09-25 | 2026-09-29 | 2026-04-07 | 2026-04-15 | 0 | 1.34 | As Soon As Possible | Future Task | -83.41d | 0d | Muniraju Surappachari; Nevin Varkey; Samuel Houff; Sarasija Ghosh; Surendra Krishna Acharya; Swetha SethumadhavaRao; James Farmer | True | True | True | Master Data Loads | Muniraju Surappachari | PTP |  |  |  |  |
| 4317 | 1.2.5.2.25.1 | 1.2.5.2.25.1 | 6 | Load File Staged and Posted "Ready" | 2026-09-25 | 2026-09-28 | 2026-04-07 | 2026-04-07 | 0 | 0.0625 | As Soon As Possible | Future Task | -39421m | 0m | Nevin Varkey,Ric Haraida |  | True | True | PTP_CM26_Material_Master - SERV - Service Materials |  | PTP |  | 1.88 1.94 303.94 304 302.06  | 4186 | 4186 1.8770833333333332 Post Load Validation |
| 4318 | 1.2.5.2.25.2 | 1.2.5.2.25.2 | 6 | Pre Load Validation | 2026-09-28 | 2026-09-28 | 2026-04-14 | 2026-04-14 | 0 | 0.0625 | As Soon As Possible | Future Task | -40036m | 0m | Nevin Varkey,Ric Haraida |  | True | True | PTP_CM26_Material_Master - SERV - Service Materials | Sam Houff,Kim Kolesar | PTP | 4319 | 1.63 1.69 302.94 303 301.31  | 4314 | 4314 1.625 Load |
| 4319 | 1.2.5.2.25.3 | 1.2.5.2.25.3 | 6 | Simulate Load | 2026-09-28 | 2026-09-28 | 2026-04-14 | 2026-04-14 | 0 | 0.125 | As Soon As Possible | Future Task | -667.27h | 0h | Data Migration Team |  | True | True | PTP_CM26_Material_Master - SERV - Service Materials |  | Data | 4320 | 1.69 1.81 303 303.13 301.31  | 4318 | 4318 1.6875 Pre Load Validation |
| 4320 | 1.2.5.2.25.4 | 1.2.5.2.25.4 | 6 | Error and Defect Mitigation | 2026-09-28 | 2026-09-28 | 2026-04-14 | 2026-04-15 | 0 | 0.25 | As Soon As Possible | Future Task | -667.27h | 0h | Nevin Varkey,Ric Haraida |  | True | True | PTP_CM26_Material_Master - SERV - Service Materials | Sam Houff,Kim Kolesar | PTP | 4321 | 1.81 2.06 303.13 303.38 301.31  | 4319 | 4319 1.8125 Simulate Load |
| 4321 | 1.2.5.2.25.5 | 1.2.5.2.25.5 | 6 | Load | 2026-09-28 | 2026-09-28 | 2026-04-15 | 2026-04-15 | 0 | 0.25 | As Soon As Possible | Future Task | -667.27h | 0h | Data Migration Team |  | True | True | PTP_CM26_Material_Master - SERV - Service Materials |  | Data | 4322 | 2.06 2.31 303.38 303.63 301.31  | 4320 | 4320 2.0625 Error and Defect Mitigation |
| 4322 | 1.2.5.2.25.6 | 1.2.5.2.25.6 | 6 | Post Load Validation | 2026-09-28 | 2026-09-29 | 2026-04-15 | 2026-04-15 | 0 | 0.375 | As Soon As Possible | Future Task | -667.27h | 0h | Nevin Varkey,Ric Haraida |  | True | True | PTP_CM26_Material_Master - SERV - Service Materials | Sam Houff,Kim Kolesar | PTP |  | 2.31 2.69 303.63 304 301.31  | 4321 | 4321 2.3125 Load |
| 4323 | 1.2.5.2.26 | 1.2.5.2.26 | 5 | PTP_CM26_Material_Master - KMAT - Configurable Materials | 2026-09-25 | 2026-09-29 | 2026-04-07 | 2026-04-15 | 0 | 1.34 | As Soon As Possible | Future Task | -90.47d | 0d | Muniraju Surappachari; Nevin Varkey; Samuel Houff; Sarasija Ghosh; Surendra Krishna Acharya; Swetha SethumadhavaRao; James Farmer | True | True | True | Master Data Loads | Muniraju Surappachari | PTP | 44, 164, 413 |  |  |  |
| 4324 | 1.2.5.2.26.1 | 1.2.5.2.26.1 | 6 | Load File Staged and Posted "Ready" | 2026-09-25 | 2026-09-28 | 2026-04-07 | 2026-04-07 | 0 | 0.0625 | As Soon As Possible | Future Task | -40666m | 0m | Eric Heisler |  | True | True | PTP_CM26_Material_Master - KMAT - Configurable Materials |  | PTM |  | 1.88 1.94 303.94 304 302.06  | 4186 | 4186 1.8770833333333332 Post Load Validation |
| 4325 | 1.2.5.2.26.2 | 1.2.5.2.26.2 | 6 | Pre Load Validation | 2026-09-28 | 2026-09-28 | 2026-04-14 | 2026-04-14 | 0 | 0.0625 | As Soon As Possible | Future Task | -43561m | 0m | Eric Heisler |  | True | True | PTP_CM26_Material_Master - KMAT - Configurable Materials | Sam Houff,Kim Kolesar,Matt | PTM | 4326 | 1.63 1.69 296.72 296.78 295.09  | 4314 | 4314 1.625 Load |
| 4326 | 1.2.5.2.26.3 | 1.2.5.2.26.3 | 6 | Simulate Load | 2026-09-28 | 2026-09-28 | 2026-04-14 | 2026-04-14 | 0 | 0.125 | As Soon As Possible | Future Task | -726.02h | 0h | Data Migration Team |  | True | True | PTP_CM26_Material_Master - KMAT - Configurable Materials |  | Data | 4327 | 1.69 1.81 296.78 296.91 295.09  | 4325 | 4325 1.6875 Pre Load Validation |
| 4327 | 1.2.5.2.26.4 | 1.2.5.2.26.4 | 6 | Error and Defect Mitigation | 2026-09-28 | 2026-09-28 | 2026-04-14 | 2026-04-15 | 0 | 0.25 | As Soon As Possible | Future Task | -726.02h | 0h | Eric Heisler |  | True | True | PTP_CM26_Material_Master - KMAT - Configurable Materials | Sam Houff,Kim Kolesar,Matt | PTM | 4328 | 1.81 2.06 296.91 297.16 295.09  | 4326 | 4326 1.8125 Simulate Load |
| 4328 | 1.2.5.2.26.5 | 1.2.5.2.26.5 | 6 | Load | 2026-09-28 | 2026-09-28 | 2026-04-15 | 2026-04-15 | 0 | 0.25 | As Soon As Possible | Future Task | -726.02h | 0h | Data Migration Team |  | True | True | PTP_CM26_Material_Master - KMAT - Configurable Materials |  | Data | 4329 | 2.06 2.31 297.16 297.41 295.09  | 4327 | 4327 2.0625 Error and Defect Mitigation |
| 4329 | 1.2.5.2.26.6 | 1.2.5.2.26.6 | 6 | Post Load Validation | 2026-09-28 | 2026-09-29 | 2026-04-15 | 2026-04-15 | 0 | 0.375 | As Soon As Possible | Future Task | -726.02h | 0h | Eric Heisler |  | True | True | PTP_CM26_Material_Master - KMAT - Configurable Materials | Sam Houff,Kim Kolesar,Matt | PTM | 43, 314, 338, 434, 544, 100, 0 | 2.31 2.69 297.41 297.78 295.09  | 4328 | 4328 2.3125 Load |

| uid | wbs | outlineNumber | outlineLevel | name | start | finish | baselineStart | baselineFinish | percentComplete | durationDays | constraintType | status | totalSlackRaw | freeSlackRaw | resourceNames | summary | criticalFlag | active | summaryName | businessValidationOwner | workstream | successors | cpm | predecessors | drivers |
| --- | --- | --- | --- | --- | --- | --- | --- | --- | --- | --- | --- | --- | --- | --- | --- | --- | --- | --- | --- | --- | --- | --- | --- | --- | --- |
| 4330 | 1.2.5.2.27 | 1.2.5.2.27 | 5 | PTP_CM28_Purchase_Info_Records | 2026-09-24 | 2026-09-30 | 2026-04-15 | 2026-04-16 | 0 | 3.59 | As Soon As Possible | Future Task | -84.71d | 0d | Muniraju Surappachari; Nevin Varkey; Samuel Houff; Sarasija Ghosh; Surendra Krishna Acharya; Swetha SethumadhavaRao; James Farmer | True | True | True | Master Data Loads | Muniraju Surappachari | PTP |  |  |  |  |
| 4331 | 1.2.5.2.27.1 | 1.2.5.2.27.1 | 6 | Extract File | 2026-09-29 | 2026-09-29 | 2026-04-15 | 2026-04-15 | 0 | 0.125 | As Soon As Possible | Future Task | -700.39h | 0h | Data Migration Team |  | True | True | PTP_CM28_Purchase_Info_Records |  | Data | 43, 324, 352 | 0 0.13 299.53 299.66 299.53  | 43, 154, 329 |  |
| 4332 | 1.2.5.2.27.2 | 1.2.5.2.27.2 | 6 | Pre Load Validation | 2026-09-29 | 2026-09-29 | 2026-04-15 | 2026-04-16 | 0 | 0.25 | As Soon As Possible | Future Task | -673.27h | 0h | Nevin Varkey |  | True | True | PTP_CM28_Purchase_Info_Records | Sam Houff | PTP | 4333 | 0.13 0.38 303.38 303.63 303.25  | 4331 | 4331 0.125 Extract File |
| 4333 | 1.2.5.2.27.3 | 1.2.5.2.27.3 | 6 | Simulate Load | 2026-09-29 | 2026-09-29 | 2026-04-16 | 2026-04-16 | 0 | 0.125 | As Soon As Possible | Future Task | -673.27h | 0h | Data Migration Team |  | True | True | PTP_CM28_Purchase_Info_Records |  | Data | 4334 | 0.38 0.5 303.63 303.75 303.25  | 4332 | 4332 0.375 Pre Load Validation |
| 4334 | 1.2.5.2.27.4 | 1.2.5.2.27.4 | 6 | Error and Defect Mitigation | 2026-09-29 | 2026-09-30 | 2026-04-16 | 2026-04-16 | 0 | 0.25 | Start No Earlier Than | Future Task | -673.27h | 0h | Nevin Varkey |  | True | True | PTP_CM28_Purchase_Info_Records | Sam Houff | PTP |  | 0.5 0.75 303.75 304 303.25  | 4333 | 4333 0.5 Simulate Load |
| 4335 | 1.2.5.2.27.5 | 1.2.5.2.27.5 | 6 | Load | 2026-09-24 | 2026-09-24 | 2026-04-15 | 2026-04-15 | 0 | 0.125 | Start No Earlier Than | Future Task | -647.52h | 0h | Data Migration Team |  | True | True | PTP_CM28_Purchase_Info_Records |  | Data | 4336 | 0.38 0.5 303.63 303.75 303.25  | 4283 | 4283 0.375 Post Load Validation |
| 4336 | 1.2.5.2.27.6 | 1.2.5.2.27.6 | 6 | Post Load Validation | 2026-09-24 | 2026-09-24 | 2026-04-15 | 2026-04-15 | 0 | 0.25 | Start No Earlier Than | Future Task | -647.52h | 0h | Nevin Varkey |  | True | True | PTP_CM28_Purchase_Info_Records | Sam Houff | PTP |  | 0.5 0.75 303.75 304 303.25  | 4335 | 4335 0.5 Load |
| 4337 | 1.2.5.2.28 | 1.2.5.2.28 | 5 | PTP_CM28_Purchase_Info_Record External Processing | 2026-09-29 | 2026-09-30 | 2026-04-15 | 2026-04-16 | 0 | 1.13 | As Soon As Possible | Future Task | -84.53d | 0d | Muniraju Surappachari; Nevin Varkey; Samuel Houff; Sarasija Ghosh; Surendra Krishna Acharya; Swetha SethumadhavaRao; James Farmer | True | True | True | Master Data Loads | Muniraju Surappachari | PTP |  |  |  |  |
| 4338 | 1.2.5.2.28.1 | 1.2.5.2.28.1 | 6 | Load File Staged and Posted "Ready" | 2026-09-29 | 2026-09-29 | 2026-04-15 | 2026-04-15 | 0 | 0.0625 | As Soon As Possible | Future Task | -40576m | 0m | Nevin Varkey |  | True | True | PTP_CM28_Purchase_Info_Record External Processing |  | PTP | 4339 | 0 0.06 302.88 302.94 302.88  | 43, 154, 329 |  |
| 4339 | 1.2.5.2.28.2 | 1.2.5.2.28.2 | 6 | Pre Load Validation | 2026-09-29 | 2026-09-29 | 2026-04-15 | 2026-04-15 | 0 | 0.0625 | As Soon As Possible | Future Task | -40576m | 0m | Nevin Varkey |  | True | True | PTP_CM28_Purchase_Info_Record External Processing | Sam Houff | PTP | 4340 | 0.06 0.13 302.94 303 302.88  | 4338 | 4338 0.0625 Load File Staged and Posted "Ready" |
| 4340 | 1.2.5.2.28.3 | 1.2.5.2.28.3 | 6 | Simulate Load | 2026-09-29 | 2026-09-29 | 2026-04-15 | 2026-04-16 | 0 | 0.125 | As Soon As Possible | Future Task | -676.27h | 0h | Data Migration Team |  | True | True | PTP_CM28_Purchase_Info_Record External Processing |  | Data | 4341 | 0.13 0.25 303 303.13 302.88  | 4339 | 4339 0.125 Pre Load Validation |
| 4341 | 1.2.5.2.28.4 | 1.2.5.2.28.4 | 6 | Error and Defect Mitigation | 2026-09-29 | 2026-09-29 | 2026-04-16 | 2026-04-16 | 0 | 0.25 | As Soon As Possible | Future Task | -676.27h | 0h | Nevin Varkey |  | True | True | PTP_CM28_Purchase_Info_Record External Processing | Sam Houff | PTP | 4342 | 0.25 0.5 303.13 303.38 302.88  | 4340 | 4340 0.25 Simulate Load |
| 4342 | 1.2.5.2.28.5 | 1.2.5.2.28.5 | 6 | Load | 2026-09-29 | 2026-09-30 | 2026-04-16 | 2026-04-16 | 0 | 0.25 | As Soon As Possible | Future Task | -676.27h | 0h | Data Migration Team |  | True | True | PTP_CM28_Purchase_Info_Record External Processing |  | Data | 4343 | 0.5 0.75 303.38 303.63 302.88  | 4341 | 4341 0.5 Error and Defect Mitigation |
| 4343 | 1.2.5.2.28.6 | 1.2.5.2.28.6 | 6 | Post Load Validation | 2026-09-30 | 2026-09-30 | 2026-04-16 | 2026-04-16 | 0 | 0.375 | As Soon As Possible | Future Task | -676.27h | 0h | Nevin Varkey |  | True | True | PTP_CM28_Purchase_Info_Record External Processing | Sam Houff | PTP |  | 0.75 1.13 303.63 304 302.88  | 4342 | 4342 0.75 Load |
| 4344 | 1.2.5.2.29 | 1.2.5.2.29 | 5 | PTP_CM28_Purchase_Info_Record Subcontracting and Consignment | 2026-09-29 | 2026-09-30 | 2026-04-15 | 2026-04-16 | 0 | 1.13 | As Soon As Possible | Future Task | -89.03d | 0d | Muniraju Surappachari; Nevin Varkey; Samuel Houff; Sarasija Ghosh; Surendra Krishna Acharya; Swetha SethumadhavaRao; James Farmer | True | True | True | Master Data Loads | Muniraju Surappachari | PTP |  |  |  |  |
| 4345 | 1.2.5.2.29.1 | 1.2.5.2.29.1 | 6 | Load File Staged and Posted "Ready" | 2026-09-29 | 2026-09-29 | 2026-04-15 | 2026-04-15 | 0 | 0.0625 | As Soon As Possible | Future Task | -42736m | 0m | Nevin Varkey |  | True | True | PTP_CM28_Purchase_Info_Record Subcontracting and Consignment |  | PTP | 4346 | 0 0.06 298.38 298.44 298.38  | 43, 154, 329 |  |
| 4346 | 1.2.5.2.29.2 | 1.2.5.2.29.2 | 6 | Pre Load Validation | 2026-09-29 | 2026-09-29 | 2026-04-15 | 2026-04-15 | 0 | 0.0625 | As Soon As Possible | Future Task | -42736m | 0m | Nevin Varkey |  | True | True | PTP_CM28_Purchase_Info_Record Subcontracting and Consignment | Sam Houff | PTP | 4347 | 0.06 0.13 298.44 298.5 298.38  | 4345 | 4345 0.0625 Load File Staged and Posted "Ready" |
| 4347 | 1.2.5.2.29.3 | 1.2.5.2.29.3 | 6 | Simulate Load | 2026-09-29 | 2026-09-29 | 2026-04-15 | 2026-04-16 | 0 | 0.125 | As Soon As Possible | Future Task | -712.27h | 0h | Data Migration Team |  | True | True | PTP_CM28_Purchase_Info_Record Subcontracting and Consignment |  | Data | 43, 484, 479 | 0.13 0.25 298.5 298.63 298.38  | 4346 | 4346 0.125 Pre Load Validation |
| 4348 | 1.2.5.2.29.4 | 1.2.5.2.29.4 | 6 | Error and Defect Mitigation | 2026-09-29 | 2026-09-29 | 2026-04-16 | 2026-04-16 | 0 | 0.25 | As Soon As Possible | Future Task | -676.27h | 0h | Nevin Varkey |  | True | True | PTP_CM28_Purchase_Info_Record Subcontracting and Consignment | Sam Houff | PTP | 4349 | 0.25 0.5 303.13 303.38 302.88  | 4347 | 4347 0.25 Simulate Load |
| 4349 | 1.2.5.2.29.5 | 1.2.5.2.29.5 | 6 | Load | 2026-09-29 | 2026-09-30 | 2026-04-16 | 2026-04-16 | 0 | 0.25 | As Soon As Possible | Future Task | -676.27h | 0h | Data Migration Team |  | True | True | PTP_CM28_Purchase_Info_Record Subcontracting and Consignment |  | Data | 4350 | 0.5 0.75 303.38 303.63 302.88  | 4348 | 4348 0.5 Error and Defect Mitigation |
| 4350 | 1.2.5.2.29.6 | 1.2.5.2.29.6 | 6 | Post Load Validation | 2026-09-30 | 2026-09-30 | 2026-04-16 | 2026-04-16 | 0 | 0.375 | As Soon As Possible | Future Task | -676.27h | 0h | Nevin Varkey |  | True | True | PTP_CM28_Purchase_Info_Record Subcontracting and Consignment | Sam Houff | PTP |  | 0.75 1.13 303.63 304 302.88  | 4349 | 4349 0.75 Load |
| 4171 | 1.2.5.2.3 | 1.2.5.2.3 | 5 | RTR_CM01_GL_Account_Master to CC 1000 | 2026-09-25 | 2026-09-30 | 2026-04-07 | 2026-04-09 | 0 | 2.44 | As Soon As Possible | Future Task | -89.81d | 0d | COULD NOT BE DETERMINED | True | True | True | Master Data Loads | Brian Wagner |  | 4196 |  |  |  |
| 4172 | 1.2.5.2.3.1 | 1.2.5.2.3.1 | 6 | Load File Staged and Posted "Ready" | 2026-09-25 | 2026-09-25 | 2026-04-07 | 2026-04-07 | 0 | 0.125 | Start No Earlier Than | Future Task | -718.52h | 0h | Kasey Hughes |  | True | True | RTR_CM01_GL_Account_Master to CC 1000 |  | Finance | 4173 | 1.5 1.63 297.81 297.94 296.31  | 4170 | 4170 1.5020833333333332 Post Load Validation |
| 4173 | 1.2.5.2.3.2 | 1.2.5.2.3.2 | 6 | Pre Load Validation | 2026-09-25 | 2026-09-25 | 2026-04-07 | 2026-04-07 | 0 | 0.25 | As Soon As Possible | Future Task | -718.52h | 0h | Kasey Hughes |  | True | True | RTR_CM01_GL_Account_Master to CC 1000 | Brian Wagner | Finance | 4174 | 1.63 1.88 297.94 298.19 296.31  | 4172 | 4172 1.6270833333333332 Load File Staged and Posted "Ready" |
| 4174 | 1.2.5.2.3.3 | 1.2.5.2.3.3 | 6 | Simulate Load | 2026-09-25 | 2026-09-28 | 2026-04-07 | 2026-04-08 | 0 | 0.75 | As Soon As Possible | Future Task | -718.52h | 0h | Data Migration Team |  | True | True | RTR_CM01_GL_Account_Master to CC 1000 |  | Data | 4175 | 1.88 2.63 298.19 298.94 296.31  | 4173 | 4173 1.8770833333333332 Pre Load Validation |
| 4175 | 1.2.5.2.3.4 | 1.2.5.2.3.4 | 6 | Error and Defect Mitigation | 2026-09-28 | 2026-09-29 | 2026-04-08 | 2026-04-08 | 0 | 0.25 | As Soon As Possible | Future Task | -718.52h | 0h | Kasey Hughes |  | True | True | RTR_CM01_GL_Account_Master to CC 1000 | Brian Wagner | Finance | 4176 | 2.63 2.88 298.94 299.19 296.31  | 4174 | 4174 2.627083333333333 Simulate Load |
| 4176 | 1.2.5.2.3.5 | 1.2.5.2.3.5 | 6 | Load | 2026-09-29 | 2026-09-29 | 2026-04-08 | 2026-04-08 | 0 | 0.125 | As Soon As Possible | Future Task | -718.52h | 0h | Data Migration Team |  | True | True | RTR_CM01_GL_Account_Master to CC 1000 |  | Data | 4177 | 2.88 3 299.19 299.31 296.31  | 4175 | 4175 2.877083333333333 Error and Defect Mitigation |
| 4177 | 1.2.5.2.3.6 | 1.2.5.2.3.6 | 6 | Post Load Validation | 2026-09-29 | 2026-09-29 | 2026-04-08 | 2026-04-08 | 0 | 0.25 | As Soon As Possible | Future Task | -718.52h | 0h | Kasey Hughes |  | True | True | RTR_CM01_GL_Account_Master to CC 1000 | Brian Wagner | Finance | 42, 4, 214, 422, 842, 300, 0 | 3 3.25 299.31 299.56 296.31  | 4176 | 4176 3.002083333333333 Load |
| 4178 | 1.2.5.2.3.7 | 1.2.5.2.3.7 | 6 | Extend GL to all Company Codes | 2026-09-29 | 2026-09-29 | 2026-04-08 | 2026-04-09 | 0 | 0.25 | As Soon As Possible | Future Task | -718.52h | 0h | Kasey Hughes |  | True | True | RTR_CM01_GL_Account_Master to CC 1000 | Brian Wagner | Finance | 4179 | 3.25 3.5 303.5 303.75 300.25  | 4177 | 4177 3.252083333333333 Post Load Validation |
| 4179 | 1.2.5.2.3.8 | 1.2.5.2.3.8 | 6 | Post GL Extention Validation | 2026-09-29 | 2026-09-30 | 2026-04-09 | 2026-04-09 | 0 | 0.25 | As Soon As Possible | Future Task | -718.52h | 0h | Chandrababu Boyapati |  | True | True | RTR_CM01_GL_Account_Master to CC 1000 | Brian Wagner | Finance | 42, 454, 198 | 3.5 3.75 303.75 304 300.25  | 4178 | 4178 3.502083333333333 Extend GL to all Company Codes |
| 4351 | 1.2.5.2.30 | 1.2.5.2.30 | 5 | PTM_CM31_BOM Conversion | 2026-09-29 | 2026-10-01 | 2026-04-15 | 2026-04-17 | 0 | 2.48 | As Soon As Possible | Future Task | -87.55d | 0d | Brad Meseck; Chip Holder; David Duda; Matt Palastro; Sunil Srinivasa; Aniruddha Sathe; Susan Graham; Eric Heisler; Sam Penrod; Furkan Alko | True | True | True | Master Data Loads | Manoj Patel | PTM |  |  |  |  |
| 4352 | 1.2.5.2.30.1 | 1.2.5.2.30.1 | 6 | Extract File | 2026-09-29 | 2026-09-29 | 2026-04-15 | 2026-04-16 | 0 | 0.125 | As Soon As Possible | Future Task | -700.39h | 0h | Data Migration Team |  | True | True | PTM_CM31_BOM Conversion |  | Data | 43, 534, 359 | 0.13 0.25 299.66 299.78 299.53  | 4331 | 4331 0.125 Extract File |
| 4353 | 1.2.5.2.30.2 | 1.2.5.2.30.2 | 6 | Pre Load Validation | 2026-09-29 | 2026-09-29 | 2026-04-16 | 2026-04-16 | 0 | 0.0625 | As Soon As Possible | Future Task | -700.39h | 0h | Brad Meseck |  | True | True | PTM_CM31_BOM Conversion | Matt Palastro, Dave Duda | PTM | 4354 | 0.25 0.31 299.78 299.84 299.53  | 4352 | 4352 0.25 Extract File |
| 4354 | 1.2.5.2.30.3 | 1.2.5.2.30.3 | 6 | Simulate Load | 2026-09-29 | 2026-10-01 | 2026-04-16 | 2026-04-16 | 0 | 1.9375 | Finish No Earlier Than | Future Task | -700.39h | 0h | Data Migration Team |  | True | True | PTM_CM31_BOM Conversion |  | Data | 4355 | 0.31 2.25 299.84 301.78 299.53  | 4353 | 4353 0.3125 Pre Load Validation |
| 4355 | 1.2.5.2.30.4 | 1.2.5.2.30.4 | 6 | Error and Defect Mitigation | 2026-10-01 | 2026-10-01 | 2026-04-16 | 2026-04-16 | 0 | 0.0625 | Finish No Earlier Than | Future Task | -700.39h | 0h | Brad Meseck |  | True | True | PTM_CM31_BOM Conversion | Matt Palastro, Dave Duda | PTM | 4356 | 2.25 2.31 301.78 301.84 299.53  | 4354 | 4354 2.25 Simulate Load |
| 4356 | 1-Apr | 1.2.5.2.30.5 | 6 | Load | 2026-10-01 | 2026-10-01 | 2026-04-16 | 2026-04-16 | 0 | 0.125 | As Soon As Possible | Future Task | -700.39h | 0h | Data Migration Team |  | True | True | PTM_CM31_BOM Conversion |  | Data | 4357 | 2.31 2.44 301.84 301.97 299.53  | 4355 | 4355 2.3125 Error and Defect Mitigation |
| 4357 | 1.2.5.2.30.6 | 1.2.5.2.30.6 | 6 | Post Load Validation | 2026-10-01 | 2026-10-01 | 2026-04-16 | 2026-04-17 | 0 | 0.0625 | Finish No Earlier Than | Future Task | -700.39h | 0h | Brad Meseck |  | True | True | PTM_CM31_BOM Conversion | Matt Palastro, Dave Duda | PTM | 4360 | 2.44 2.5 301.97 302.03 299.53  | 4356 | 4356 2.4375 Load |
| 4358 | 1.2.5.2.31 | 1.2.5.2.31 | 5 | PTM_CM40_Work Center Conversion | 2026-09-29 | 2026-10-02 | 2026-04-16 | 2026-04-20 | 0 | 3.08 | As Soon As Possible | Future Task | -87.55d | 0d | Brad Meseck; Chip Holder; David Duda; Matt Palastro; Sunil Srinivasa; Aniruddha Sathe; Susan Graham; Eric Heisler; Sam Penrod; Furkan Alko | True | True | True | Master Data Loads | Manoj Patel | PTM |  |  |  |  |
| 4359 | 1.2.5.2.31.1 | 1.2.5.2.31.1 | 6 | Extract File | 2026-09-29 | 2026-09-29 | 2026-04-16 | 2026-04-16 | 0 | 0.125 | As Soon As Possible | Future Task | -695.77h | 0h | Data Migration Team |  | True | True | PTM_CM40_Work Center Conversion |  | Data | 4366 | 0.25 0.38 300.69 300.81 300.44  | 4352 | 4352 0.25 Extract File |
| 4360 | 1.2.5.2.31.2 | 1.2.5.2.31.2 | 6 | Pre Load Validation | 2026-10-01 | 2026-10-02 | 2026-04-17 | 2026-04-17 | 0 | 0.25 | As Soon As Possible | Future Task | -700.39h | 0h | Brad Meseck |  | True | True | PTM_CM40_Work Center Conversion | Matt Palastro, Dave Duda | PTM | 4361 | 2.5 2.75 302.03 302.28 299.53  | 4357 | 4357 2.5 Post Load Validation |
| 4361 | 1.2.5.2.31.3 | 1.2.5.2.31.3 | 6 | Simulate Load | 2026-10-02 | 2026-10-02 | 2026-04-17 | 2026-04-17 | 0 | 0.03125 | As Soon As Possible | Future Task | -700.39h | 0h | Data Migration Team |  | True | True | PTM_CM40_Work Center Conversion |  | Data | 4362 | 2.75 2.78 302.28 302.31 299.53  | 4360 | 4360 2.75 Pre Load Validation |
| 4362 | 1.2.5.2.31.4 | 1.2.5.2.31.4 | 6 | Error and Defect Mitigation | 2026-10-02 | 2026-10-02 | 2026-04-17 | 2026-04-17 | 0 | 0.0625 | As Soon As Possible | Future Task | -700.39h | 0h | Brad Meseck |  | True | True | PTM_CM40_Work Center Conversion | Matt Palastro, Dave Duda | PTM | 4363 | 2.78 2.84 302.31 302.38 299.53  | 4361 | 4361 2.78125 Simulate Load |
| 4363 | 1.2.5.2.31.5 | 1.2.5.2.31.5 | 6 | Load | 2026-10-02 | 2026-10-02 | 2026-04-17 | 2026-04-17 | 0 | 0.125 | As Soon As Possible | Future Task | -700.39h | 0h | Data Migration Team |  | True | True | PTM_CM40_Work Center Conversion |  | Data | 4364 | 2.84 2.97 302.38 302.5 299.53  | 4362 | 4362 2.84375 Error and Defect Mitigation |
| 4364 | 1.2.5.2.31.6 | 1.2.5.2.31.6 | 6 | Post Load Validation | 2026-10-02 | 2026-10-02 | 2026-04-17 | 2026-04-20 | 0 | 0.25 | As Soon As Possible | Future Task | -700.39h | 0h | Brad Meseck |  | True | True | PTM_CM40_Work Center Conversion | Matt Palastro, Dave Duda | PTM | 4367 | 2.97 3.22 302.5 302.75 299.53  | 4363 | 4363 2.96875 Load |
| 4365 | 1.2.5.2.32 | 1.2.5.2.32 | 5 | PTM_CM38_Routing Conversion | 2026-09-29 | 2026-10-05 | 2026-04-16 | 2026-04-21 | 0 | 4.27 | As Soon As Possible | Future Task | -88.05d | 0d | Brad Meseck; Chip Holder; David Duda; Matt Palastro; Sunil Srinivasa; Aniruddha Sathe; Susan Graham; Eric Heisler; Sam Penrod; Furkan Alko | True | True | True | Master Data Loads | Manoj Patel | PTM |  |  |  |  |
| 4366 | 1.2.5.2.32.1 | 1.2.5.2.32.1 | 6 | Extract File | 2026-09-29 | 2026-09-29 | 2026-04-16 | 2026-04-16 | 0 | 0.125 | As Soon As Possible | Future Task | -695.77h | 0h | Data Migration Team |  | True | True | PTM_CM38_Routing Conversion |  | Data | 4373 | 0.38 0.5 300.81 300.94 300.44  | 4359 | 4359 0.375 Extract File |
| 4367 | 1.2.5.2.32.2 | 1.2.5.2.32.2 | 6 | Pre Load Validation | 2026-10-02 | 2026-10-05 | 2026-04-20 | 2026-04-20 | 0 | 0.25 | As Soon As Possible | Future Task | -700.39h | 0h | Brad Meseck |  | True | True | PTM_CM38_Routing Conversion | Matt Palastro, Dave Duda | PTM | 4368 | 3.22 3.47 302.75 303 299.53  | 4364 | 4364 3.21875 Post Load Validation |
| 4368 | 1.2.5.2.32.3 | 1.2.5.2.32.3 | 6 | Simulate Load | 2026-10-05 | 2026-10-05 | 2026-04-20 | 2026-04-20 | 0 | 0.25 | Finish No Earlier Than | Future Task | -700.39h | 0h | Data Migration Team |  | True | True | PTM_CM38_Routing Conversion |  | Data | 4369 | 3.47 3.72 303 303.25 299.53  | 4367 | 4367 3.46875 Pre Load Validation |
| 4369 | 1.2.5.2.32.4 | 1.2.5.2.32.4 | 6 | Error and Defect Mitigation | 2026-10-05 | 2026-10-05 | 2026-04-20 | 2026-04-20 | 0 | 0.375 | Start No Earlier Than | Future Task | -704.39h | 0h | Brad Meseck |  | True | True | PTM_CM38_Routing Conversion | Matt Palastro, Dave Duda | PTM | 4370 | 3.72 4.09 303.25 303.63 299.53  | 4368 | 4368 3.71875 Simulate Load |
| 4370 | 1.2.5.2.32.5 | 1.2.5.2.32.5 | 6 | Load | 2026-10-05 | 2026-10-05 | 2026-04-20 | 2026-04-20 | 0 | 0.125 | Start No Earlier Than | Future Task | -704.39h | 0h | Data Migration Team |  | True | True | PTM_CM38_Routing Conversion |  | Data | 4371 | 4.09 4.22 303.63 303.75 299.53  | 4369 | 4369 4.09375 Error and Defect Mitigation |
| 4371 | 1.2.5.2.32.6 | 1.2.5.2.32.6 | 6 | Post Load Validation | 2026-10-05 | 2026-10-05 | 2026-04-20 | 2026-04-21 | 0 | 0.25 | Start No Earlier Than | Future Task | -704.39h | 0h | Brad Meseck |  | True | True | PTM_CM38_Routing Conversion | Matt Palastro, Dave Duda | PTM |  | 4.22 4.47 303.75 304 299.53  | 4370 | 4370 4.21875 Load |
| 4372 | 1.2.5.2.33 | 1.2.5.2.33 | 5 | PTM_CM36_Production Version Conversion | 2026-09-29 | 2026-09-30 | 2026-04-16 | 2026-04-17 | 0 | 1.13 | As Soon As Possible | Future Task | -86.97d | 0d | Brad Meseck; Chip Holder; David Duda; Matt Palastro; Sunil Srinivasa; Aniruddha Sathe; Susan Graham; Eric Heisler; Sam Penrod; Furkan Alko | True | True | True | Master Data Loads | Brad Meseck | PTM |  |  |  |  |
| 4373 | 1.2.5.2.33.1 | 1.2.5.2.33.1 | 6 | Load File Staged and Posted "Ready" | 2026-09-29 | 2026-09-29 | 2026-04-16 | 2026-04-16 | 0 | 0.0625 | Start No Earlier Than | Future Task | -41746m | 0m | Brad Meseck |  | True | True | PTM_CM36_Production Version Conversion |  | PTM | 43, 744, 468 | 0.5 0.56 300.94 301 300.44  | 4366 | 4366 0.5 Extract File |
| 4374 | 1.2.5.2.33.2 | 1.2.5.2.33.2 | 6 | Pre Load Validation | 2026-09-29 | 2026-09-29 | 2026-04-16 | 2026-04-16 | 0 | 0.0625 | As Soon As Possible | Future Task | -41746m | 0m | Brad Meseck |  | True | True | PTM_CM36_Production Version Conversion | Matt Palastro, Dave Duda | PTM | 4375 | 0.56 0.63 301 301.06 300.44  | 4373 | 4373 0.5625 Load File Staged and Posted "Ready" |
| 4375 | 1.2.5.2.33.3 | 1.2.5.2.33.3 | 6 | Simulate Load | 2026-09-29 | 2026-09-30 | 2026-04-16 | 2026-04-16 | 0 | 0.125 | As Soon As Possible | Future Task | -695.77h | 0h | Data Migration Team |  | True | True | PTM_CM36_Production Version Conversion |  | Data | 4376 | 0.63 0.75 301.06 301.19 300.44  | 4374 | 4374 0.625 Pre Load Validation |
| 4376 | 1.2.5.2.33.4 | 1.2.5.2.33.4 | 6 | Error and Defect Mitigation | 2026-09-30 | 2026-09-30 | 2026-04-16 | 2026-04-16 | 0 | 0.25 | As Soon As Possible | Future Task | -695.77h | 0h | Brad Meseck |  | True | True | PTM_CM36_Production Version Conversion | Matt Palastro, Dave Duda | PTM | 4377 | 0.75 1 301.19 301.44 300.44  | 4375 | 4375 0.75 Simulate Load |
| 4377 | 1.2.5.2.33.5 | 1.2.5.2.33.5 | 6 | Load | 2026-09-30 | 2026-09-30 | 2026-04-16 | 2026-04-17 | 0 | 0.25 | As Soon As Possible | Future Task | -695.77h | 0h | Data Migration Team |  | True | True | PTM_CM36_Production Version Conversion |  | Data | 4378 | 1 1.25 301.44 301.69 300.44  | 4376 | 4376 1 Error and Defect Mitigation |
| 4378 | 1.2.5.2.33.6 | 1.2.5.2.33.6 | 6 | Post Load Validation | 2026-09-30 | 2026-09-30 | 2026-04-17 | 2026-04-17 | 0 | 0.375 | Finish No Earlier Than | Future Task | -695.77h | 0h | Brad Meseck |  | True | True | PTM_CM36_Production Version Conversion | Matt Palastro, Dave Duda | PTM | 4380 | 1.25 1.63 301.69 302.06 300.44  | 4377 | 4377 1.25 Load |
| 4379 | 1.2.5.2.34 | 1.2.5.2.34 | 5 | PTM_CM35_Inspection Plan | 2026-09-30 | 2026-10-02 | 2026-04-17 | 2026-04-20 | 0 | 1.13 | As Soon As Possible | Future Task | -86.97d | 0d | Brad Meseck; Chip Holder; David Duda; Matt Palastro; Sunil Srinivasa; Aniruddha Sathe; Susan Graham; Eric Heisler; Sam Penrod; Furkan Alko | True | True | True | Master Data Loads | Brad Meseck | PTM |  |  |  |  |
| 4380 | 1.2.5.2.34.1 | 1.2.5.2.34.1 | 6 | Load File Staged and Posted "Ready" | 2026-09-30 | 2026-09-30 | 2026-04-17 | 2026-04-17 | 0 | 0.0625 | As Soon As Possible | Future Task | -41746m | 0m | Brad Meseck |  | True | True | PTM_CM35_Inspection Plan |  | PTM | 43, 814, 387 | 1.63 1.69 302.06 302.13 300.44  | 4378 | 4378 1.625 Post Load Validation |
| 4381 | 1.2.5.2.34.2 | 1.2.5.2.34.2 | 6 | Pre Load Validation | 2026-09-30 | 2026-10-01 | 2026-04-17 | 2026-04-17 | 0 | 0.0625 | As Soon As Possible | Future Task | -41356m | 0m | Brad Meseck |  | True | True | PTM_CM35_Inspection Plan | Matt Palastro, Dave Duda | PTM | 4382 | 1.69 1.75 302.94 303 301.25  | 4380 | 4380 1.6875 Load File Staged and Posted "Ready" |
| 4382 | 1.2.5.2.34.3 | 1.2.5.2.34.3 | 6 | Simulate Load | 2026-10-01 | 2026-10-01 | 2026-04-17 | 2026-04-17 | 0 | 0.125 | As Soon As Possible | Future Task | -689.27h | 0h | Data Migration Team |  | True | True | PTM_CM35_Inspection Plan |  | Data | 4383 | 1.75 1.88 303 303.13 301.25  | 4381 | 4381 1.75 Pre Load Validation |
| 4383 | 1.2.5.2.34.4 | 1.2.5.2.34.4 | 6 | Error and Defect Mitigation | 2026-10-01 | 2026-10-01 | 2026-04-17 | 2026-04-17 | 0 | 0.25 | As Soon As Possible | Future Task | -689.27h | 0h | Brad Meseck |  | True | True | PTM_CM35_Inspection Plan | Matt Palastro, Dave Duda | PTM | 4384 | 1.88 2.13 303.13 303.38 301.25  | 4382 | 4382 1.875 Simulate Load |
| 4384 | 1.2.5.2.34.5 | 1.2.5.2.34.5 | 6 | Load | 2026-10-01 | 2026-10-01 | 2026-04-17 | 2026-04-20 | 0 | 0.25 | Finish No Earlier Than | Future Task | -689.27h | 0h | Data Migration Team |  | True | True | PTM_CM35_Inspection Plan |  | Data | 4385 | 2.13 2.38 303.38 303.63 301.25  | 4383 | 4383 2.125 Error and Defect Mitigation |
| 4385 | 1.2.5.2.34.6 | 1.2.5.2.34.6 | 6 | Post Load Validation | 2026-10-01 | 2026-10-02 | 2026-04-20 | 2026-04-20 | 0 | 0.375 | As Soon As Possible | Future Task | -689.27h | 0h | Brad Meseck |  | True | True | PTM_CM35_Inspection Plan | Matt Palastro, Dave Duda | PTM |  | 2.38 2.75 303.63 304 301.25  | 4384 | 4384 2.375 Load |
| 4386 | 1.2.5.2.35 | 1.2.5.2.35 | 5 | PTM_CM48_Equipment_Master_Serial Numbers | 2026-09-30 | 2026-10-02 | 2026-04-17 | 2026-04-20 | 0 | 1.13 | As Soon As Possible | Future Task | -86.97d | 0d | Brad Meseck; Chip Holder; David Duda; Matt Palastro; Sunil Srinivasa; Aniruddha Sathe; Susan Graham; Eric Heisler; Sam Penrod; Furkan Alko | True | True | True | Master Data Loads | Brad Meseck | PTM |  |  |  |  |
| 4387 | 1.2.5.2.35.1 | 1.2.5.2.35.1 | 6 | Load File Staged and Posted "Ready" | 2026-09-30 | 2026-10-01 | 2026-04-17 | 2026-04-17 | 0 | 0.0625 | As Soon As Possible | Future Task | -41746m | 0m | Brad Meseck |  | True | True | PTM_CM48_Equipment_Master_Serial Numbers |  | PTM | 4388 | 1.69 1.75 302.13 302.19 300.44  | 4380 | 4380 1.6875 Load File Staged and Posted "Ready" |
| 4388 | 1.2.5.2.35.2 | 1.2.5.2.35.2 | 6 | Pre Load Validation | 2026-10-01 | 2026-10-01 | 2026-04-17 | 2026-04-17 | 0 | 0.0625 | As Soon As Possible | Future Task | -41746m | 0m | Brad Meseck |  | True | True | PTM_CM48_Equipment_Master_Serial Numbers | Matt Palastro, Dave Duda | PTM | 4389 | 1.75 1.81 302.19 302.25 300.44  | 4387 | 4387 1.75 Load File Staged and Posted "Ready" |
| 4389 | 1.2.5.2.35.3 | 1.2.5.2.35.3 | 6 | Simulate Load | 2026-10-01 | 2026-10-01 | 2026-04-17 | 2026-04-17 | 0 | 0.125 | As Soon As Possible | Future Task | -695.77h | 0h | Data Migration Team |  | True | True | PTM_CM48_Equipment_Master_Serial Numbers |  | Data | 4390 | 1.81 1.94 302.25 302.38 300.44  | 4388 | 4388 1.8125 Pre Load Validation |
| 4390 | 1.2.5.2.35.4 | 1.2.5.2.35.4 | 6 | Error and Defect Mitigation | 2026-10-01 | 2026-10-01 | 2026-04-17 | 2026-04-17 | 0 | 0.25 | As Soon As Possible | Future Task | -695.77h | 0h | Brad Meseck |  | True | True | PTM_CM48_Equipment_Master_Serial Numbers | Matt Palastro, Dave Duda | PTM | 4391 | 1.94 2.19 302.38 302.63 300.44  | 4389 | 4389 1.9375 Simulate Load |

| uid | wbs | outlineNumber | outlineLevel | name | start | finish | baselineStart | baselineFinish | percentComplete | durationDays | constraintType | status | totalSlackRaw | freeSlackRaw | resourceNames | summary | criticalFlag | active | summaryName | businessValidationOwner | workstream | successors | cpm | predecessors | drivers |
| --- | --- | --- | --- | --- | --- | --- | --- | --- | --- | --- | --- | --- | --- | --- | --- | --- | --- | --- | --- | --- | --- | --- | --- | --- | --- |
| 4391 | 1.2.5.2.35.5 | 1.2.5.2.35.5 | 6 | Load | 2026-10-01 | 2026-10-01 | 2026-04-17 | 2026-04-20 | 0 | 0.25 | As Soon As Possible | Future Task | -695.77h | 0h | Data Migration Team |  | True | True | PTM_CM48_Equipment_Master_Serial Numbers |  | Data | 4392 | 2.19 2.44 302.63 302.88 300.44  | 4390 | 4390 2.1875 Error and Defect Mitigation |
| 4392 | 1.2.5.2.35.6 | 1.2.5.2.35.6 | 6 | Post Load Validation | 2026-10-01 | 2026-10-02 | 2026-04-20 | 2026-04-20 | 0 | 0.375 | As Soon As Possible | Future Task | -695.77h | 0h | Brad Meseck |  | True | True | PTM_CM48_Equipment_Master_Serial Numbers | Matt Palastro, Dave Duda | PTM | 4394 | 2.44 2.81 302.88 303.25 300.44  | 4391 | 4391 2.4375 Load |
| 4393 | 1.2.5.2.36 | 1.2.5.2.36 | 5 | PTM_CM48_Equipment_Master_Service | 2026-09-24 | 2026-10-02 | 2026-04-20 | 2026-04-21 | 0 | 6.78 | As Soon As Possible | Future Task | -86.97d | 0d | Brad Meseck; Chip Holder; David Duda; Matt Palastro; Sunil Srinivasa; Aniruddha Sathe; Susan Graham; Eric Heisler; Sam Penrod; Furkan Alko | True | True | True | Master Data Loads | Brad Meseck | PTM |  |  |  |  |
| 4394 | 1.2.5.2.36.1 | 1.2.5.2.36.1 | 6 | Load File Staged and Posted "Ready" | 2026-10-02 | 2026-10-02 | 2026-04-20 | 2026-04-20 | 0 | 0.0625 | As Soon As Possible | Future Task | -41746m | 0m | Brad Meseck |  | True | True | PTM_CM48_Equipment_Master_Service |  | PTM | 4395 | 2.81 2.88 303.25 303.31 300.44  | 4392 | 4392 2.8125 Post Load Validation |
| 4395 | 1.2.5.2.36.2 | 1.2.5.2.36.2 | 6 | Pre Load Validation | 2026-10-02 | 2026-10-02 | 2026-04-20 | 2026-04-20 | 0 | 0.0625 | As Soon As Possible | Future Task | -41746m | 0m | Brad Meseck |  | True | True | PTM_CM48_Equipment_Master_Service | Matt Palastro, Dave Duda | PTM | 4396 | 2.88 2.94 303.31 303.38 300.44  | 4394 | 4394 2.875 Load File Staged and Posted "Ready" |
| 4396 | 1.2.5.2.36.3 | 1.2.5.2.36.3 | 6 | Simulate Load | 2026-10-02 | 2026-10-02 | 2026-04-20 | 2026-04-20 | 0 | 0.125 | As Soon As Possible | Future Task | -695.77h | 0h | Data Migration Team |  | True | True | PTM_CM48_Equipment_Master_Service |  | Data | 4397 | 2.94 3.06 303.38 303.5 300.44  | 4395 | 4395 2.9375 Pre Load Validation |
| 4397 | 1.2.5.2.36.4 | 1.2.5.2.36.4 | 6 | Error and Defect Mitigation | 2026-10-02 | 2026-10-02 | 2026-04-20 | 2026-04-21 | 0 | 0.25 | As Soon As Possible | Future Task | -695.77h | 0h | Brad Meseck |  | True | True | PTM_CM48_Equipment_Master_Service | Matt Palastro, Dave Duda | PTM | 4398 | 3.06 3.31 303.5 303.75 300.44  | 4396 | 4396 3.0625 Simulate Load |
| 4398 | 1.2.5.2.36.5 | 1.2.5.2.36.5 | 6 | Load | 2026-10-02 | 2026-10-02 | 2026-04-21 | 2026-04-21 | 0 | 0.25 | Finish No Earlier Than | Future Task | -695.77h | 0h | Data Migration Team |  | True | True | PTM_CM48_Equipment_Master_Service |  | Data |  | 3.31 3.56 303.75 304 300.44  | 4397 | 4397 3.3125 Error and Defect Mitigation |
| 4399 | 1.2.5.2.36.6 | 1.2.5.2.36.6 | 6 | Post Load Validation | 2026-09-24 | 2026-09-24 | 2026-04-21 | 2026-04-21 | 0 | 0.375 | Start No Earlier Than | Future Task | -644.52h | 0h | Brad Meseck |  | True | True | PTM_CM48_Equipment_Master_Service | Matt Palastro, Dave Duda | PTM |  | 0 0.38 303.63 304 303.63  |  |  |
| 4400 | 1.2.5.2.37 | 1.2.5.2.37 | 5 | VC_Object Dependencies | 2026-09-24 | 2026-09-24 | 2026-04-06 | 2026-04-06 | 0 | 0.63 | As Soon As Possible | Future Task | -82.69d | 0d | COULD NOT BE DETERMINED | True | True | True | Master Data Loads | Chip Holder |  |  |  |  |  |
| 4401 | 1.2.5.2.37.1 | 1.2.5.2.37.1 | 6 | Run ALE Transaction to QS5 from DS4 130 | 2026-09-24 | 2026-09-24 | 2026-04-06 | 2026-04-06 | 0 | 0.25 | As Soon As Possible | Future Task | -661.52h | 0h | Eric Heisler |  | True | True | VC_Object Dependencies |  | PTM | 4402 | 0 0.25 302.13 302.38 302.12  | 4161 | 4161 0.0020833333333333333 PMO Authorization to Start Data Loads |
| 4402 | 1.2.5.2.37.2 | 1.2.5.2.37.2 | 6 | Post Load Validation | 2026-09-24 | 2026-09-24 | 2026-04-06 | 2026-04-06 | 0 | 0.375 | As Soon As Possible | Future Task | -661.52h | 0h | Eric Heisler |  | True | True | VC_Object Dependencies | Matt Palastro, Dave Duda | PTM | 4404 | 0.25 0.63 302.38 302.75 302.12  | 4401 | 4401 0.2520833333333333 Run ALE Transaction to QS5 from DS4 130 |
| 4403 | 1.2.5.2.38 | 1.2.5.2.38 | 5 | VC_Characteristics | 2026-09-24 | 2026-09-25 | 2026-04-06 | 2026-04-07 | 0 | 0.63 | As Soon As Possible | Future Task | -82.69d | 0d | COULD NOT BE DETERMINED | True | True | True | Master Data Loads | Chip Holder |  |  |  |  |  |
| 4404 | 1.2.5.2.38.1 | 1.2.5.2.38.1 | 6 | Run ALE Transaction to QS5 from DS4 130 | 2026-09-24 | 2026-09-24 | 2026-04-06 | 2026-04-06 | 0 | 0.25 | As Soon As Possible | Future Task | -661.52h | 0h | Eric Heisler |  | True | True | VC_Characteristics |  | PTM | 4405 | 0.63 0.88 302.75 303 302.12  | 4402 | 4402 0.6270833333333333 Post Load Validation |
| 4405 | 1.2.5.2.38.2 | 1.2.5.2.38.2 | 6 | Post Load Validation | 2026-09-24 | 2026-09-25 | 2026-04-06 | 2026-04-07 | 0 | 0.375 | As Soon As Possible | Future Task | -661.52h | 0h | Eric Heisler |  | True | True | VC_Characteristics | Matt Palastro, Dave Duda | PTM | 4407 | 0.88 1.25 303 303.38 302.12  | 4404 | 4404 0.8770833333333333 Run ALE Transaction to QS5 from DS4 130 |
| 4406 | 1.2.5.2.39 | 1.2.5.2.39 | 5 | VC_Classes | 2026-09-25 | 2026-09-25 | 2026-04-07 | 2026-04-07 | 0 | 0.63 | As Soon As Possible | Future Task | -82.69d | 0d | COULD NOT BE DETERMINED | True | True | True | Master Data Loads | Chip Holder |  |  |  |  |  |
| 4407 | 1.2.5.2.39.1 | 1.2.5.2.39.1 | 6 | Run ALE Transaction to QS5 from DS4 130 | 2026-09-25 | 2026-09-25 | 2026-04-07 | 2026-04-07 | 0 | 0.25 | As Soon As Possible | Future Task | -661.52h | 0h | Eric Heisler |  | True | True | VC_Classes |  | PTM | 4408 | 1.25 1.5 303.38 303.63 302.12  | 4405 | 4405 1.2520833333333332 Post Load Validation |
| 4408 | 1.2.5.2.39.2 | 1.2.5.2.39.2 | 6 | Post Load Validation | 2026-09-25 | 2026-09-25 | 2026-04-07 | 2026-04-07 | 0 | 0.375 | As Soon As Possible | Future Task | -661.52h | 0h | Eric Heisler |  | True | True | VC_Classes | Matt Palastro, Dave Duda | PTM | 4413 | 1.5 1.88 303.63 304 302.12  | 4407 | 4407 1.5020833333333332 Run ALE Transaction to QS5 from DS4 130 |
| 4180 | 1.2.5.2.4 | 1.2.5.2.4 | 5 | RTR_CM05_Profit_Center | 2026-09-24 | 2026-09-25 | 2026-04-06 | 2026-04-07 | 0 | 1.13 | As Soon As Possible | Future Task | -84.72d | 0d | COULD NOT BE DETERMINED | True | True | True | Master Data Loads |  |  |  |  |  |  |
| 4181 | 1.2.5.2.4.1 | 1.2.5.2.4.1 | 6 | Load File Staged and Posted "Ready" | 2026-09-24 | 2026-09-24 | 2026-04-06 | 2026-04-06 | 0 | 0.125 | As Soon As Possible | Future Task | -677.77h | 0h | Kasey Hughes |  | True | True | RTR_CM05_Profit_Center |  | Finance | 4182 | 0.75 0.88 301.75 301.88 301  | 4166 | 4166 0.7520833333333333 Post Load Validation |
| 4182 | 1.2.5.2.4.2 | 1.2.5.2.4.2 | 6 | Pre Load Validation | 2026-09-24 | 2026-09-25 | 2026-04-06 | 2026-04-07 | 0 | 0.25 | As Soon As Possible | Future Task | -677.77h | 0h | Kasey Hughes |  | True | True | RTR_CM05_Profit_Center | Brian Wagner | Finance | 4183 | 0.88 1.13 301.88 302.13 301  | 4181 | 4181 0.8770833333333333 Load File Staged and Posted "Ready" |
| 4183 | 1.2.5.2.4.3 | 1.2.5.2.4.3 | 6 | Simulate Load | 2026-09-25 | 2026-09-25 | 2026-04-07 | 2026-04-07 | 0 | 0.125 | As Soon As Possible | Future Task | -677.77h | 0h | Data Migration Team |  | True | True | RTR_CM05_Profit_Center |  | Data | 4184 | 1.13 1.25 302.13 302.25 301  | 4182 | 4182 1.1270833333333332 Pre Load Validation |
| 4184 | 1.2.5.2.4.4 | 1.2.5.2.4.4 | 6 | Error and Defect Mitigation | 2026-09-25 | 2026-09-25 | 2026-04-07 | 2026-04-07 | 0 | 0.25 | As Soon As Possible | Future Task | -677.77h | 0h | Kasey Hughes |  | True | True | RTR_CM05_Profit_Center | Brian Wagner | Finance | 4185 | 1.25 1.5 302.25 302.5 301  | 4183 | 4183 1.2520833333333332 Simulate Load |
| 4185 | 1.2.5.2.4.5 | 1.2.5.2.4.5 | 6 | Load | 2026-09-25 | 2026-09-25 | 2026-04-07 | 2026-04-07 | 0 | 0.125 | As Soon As Possible | Future Task | -677.77h | 0h | Data Migration Team |  | True | True | RTR_CM05_Profit_Center |  | Data | 4186 | 1.5 1.63 302.5 302.63 301  | 4184 | 4184 1.5020833333333332 Error and Defect Mitigation |
| 4186 | 1.2.5.2.4.6 | 1.2.5.2.4.6 | 6 | Post Load Validation | 2026-09-25 | 2026-09-25 | 2026-04-07 | 2026-04-07 | 0 | 0.25 | As Soon As Possible | Future Task | -677.77h | 0h | Kasey Hughes |  | True | True | RTR_CM05_Profit_Center | Brian Wagner | Finance | 418, 843, 174, 324 | 1.63 1.88 302.63 302.88 301  | 4185 | 4185 1.6270833333333332 Load |
| 4409 | 1.2.5.2.40 | 1.2.5.2.40 | 5 | VC_Classification (Class Type 200) | 2026-09-29 | 2026-09-29 | 2026-04-15 | 2026-04-16 | 0 | 0.63 | As Soon As Possible | Future Task | -84.03d | 0d | COULD NOT BE DETERMINED | True | True | True | Master Data Loads | Chip Holder |  |  |  |  |  |
| 4410 | 1.2.5.2.40.1 | 1.2.5.2.40.1 | 6 | Run ALE Transaction to QS5 from DS4 130 | 2026-09-29 | 2026-09-29 | 2026-04-15 | 2026-04-16 | 0 | 0.25 | As Soon As Possible | Future Task | -672.27h | 0h | Eric Heisler |  | True | True | VC_Classification (Class Type 200) |  | PTM | 4411 | 2.69 2.94 303.38 303.63 300.69  | 4329 | 4329 2.6875 Post Load Validation |
| 4411 | 1.2.5.2.40.2 | 1.2.5.2.40.2 | 6 | Post Load Validation | 2026-09-29 | 2026-09-29 | 2026-04-16 | 2026-04-16 | 0 | 0.375 | As Soon As Possible | Future Task | -672.27h | 0h | Eric Heisler |  | True | True | VC_Classification (Class Type 200) | Matt Palastro, Dave Duda | PTM |  | 2.94 3.31 303.63 304 300.69  | 4410 | 4410 2.9375 Run ALE Transaction to QS5 from DS4 130 |
| 4412 | 1.2.5.2.41 | 1.2.5.2.41 | 5 | VC_Dependency Nets | 2026-09-29 | 2026-09-29 | 2026-04-15 | 2026-04-16 | 0 | 0.63 | As Soon As Possible | Future Task | -84.03d | 0d | COULD NOT BE DETERMINED | True | True | True | Master Data Loads | Chip Holder |  |  |  |  |  |
| 4413 | 1.2.5.2.41.1 | 1.2.5.2.41.1 | 6 | Run ALE Transaction to QS5 from DS4 130 | 2026-09-29 | 2026-09-29 | 2026-04-15 | 2026-04-16 | 0 | 0.25 | As Soon As Possible | Future Task | -672.27h | 0h | Eric Heisler |  | True | True | VC_Dependency Nets |  | PTM | 4414 | 0 0.25 303.38 303.63 303.38  | 43, 234, 408 |  |
| 4414 | 1.2.5.2.41.2 | 1.2.5.2.41.2 | 6 | Post Load Validation | 2026-09-29 | 2026-09-29 | 2026-04-16 | 2026-04-16 | 0 | 0.375 | As Soon As Possible | Future Task | -672.27h | 0h | Eric Heisler |  | True | True | VC_Dependency Nets | Matt Palastro, Dave Duda | PTM |  | 0.25 0.63 303.63 304 303.38  | 4413 | 4413 0.25 Run ALE Transaction to QS5 from DS4 130 |
| 4415 | 1.2.5.2.42 | 1.2.5.2.42 | 5 | VC_Configuration Profiles | 2026-09-29 | 2026-09-29 | 2026-04-15 | 2026-04-16 | 0 | 0.63 | As Soon As Possible | Future Task | -86d | 0d | COULD NOT BE DETERMINED | True | True | True | Master Data Loads | Chip Holder |  |  |  |  |  |
| 4416 | 1.2.5.2.42.1 | 1.2.5.2.42.1 | 6 | Run ALE Transaction to QS5 from DS4 130 | 2026-09-29 | 2026-09-29 | 2026-04-15 | 2026-04-16 | 0 | 0.25 | As Soon As Possible | Future Task | -688.02h | 0h | Eric Heisler |  | True | True | VC_Configuration Profiles |  | PTM | 4417 | 0 0.25 301.41 301.66 301.41  | 4323 |  |
| 4417 | 1.2.5.2.42.2 | 1.2.5.2.42.2 | 6 | Post Load Validation | 2026-09-29 | 2026-09-29 | 2026-04-16 | 2026-04-16 | 0 | 0.375 | As Soon As Possible | Future Task | -688.02h | 0h | Eric Heisler |  | True | True | VC_Configuration Profiles | Matt Palastro, Dave Duda | PTM | 44, 254, 419 | 0.25 0.63 301.66 302.03 301.41  | 4416 | 4416 0.25 Run ALE Transaction to QS5 from DS4 130 |
| 4418 | 1.2.5.2.43 | 1.2.5.2.43 | 5 | VC_Variant Tables | 2026-09-29 | 2026-09-30 | 2026-04-16 | 2026-04-17 | 0 | 0.63 | As Soon As Possible | Future Task | -85.28d | 0d | COULD NOT BE DETERMINED | True | True | True | Master Data Loads | Chip Holder |  |  |  |  |  |
| 4419 | 1.2.5.2.43.1 | 1.2.5.2.43.1 | 6 | Run ALE Transaction to QS5 from DS4 130 | 2026-09-29 | 2026-09-30 | 2026-04-16 | 2026-04-16 | 0 | 0.25 | As Soon As Possible | Future Task | -682.27h | 0h | Eric Heisler |  | True | True | VC_Variant Tables |  | PTM | 4420 | 0.63 0.88 302.75 303 302.13  | 4417 | 4417 0.625 Post Load Validation |
| 4420 | 1.2.5.2.43.2 | 1.2.5.2.43.2 | 6 | Post Load Validation | 2026-09-30 | 2026-09-30 | 2026-04-16 | 2026-04-17 | 0 | 0.375 | As Soon As Possible | Future Task | -682.27h | 0h | Eric Heisler |  | True | True | VC_Variant Tables | Matt Palastro, Dave Duda | PTM | 4422 | 0.88 1.25 303 303.38 302.13  | 4419 | 4419 0.875 Run ALE Transaction to QS5 from DS4 130 |
| 4421 | 1.2.5.2.44 | 1.2.5.2.44 | 5 | VC_Variant Tables Content | 2026-09-30 | 2026-10-01 | 2026-04-17 | 2026-04-17 | 0 | 0.63 | As Soon As Possible | Future Task | -85.28d | 0d | COULD NOT BE DETERMINED | True | True | True | Master Data Loads | Chip Holder |  |  |  |  |  |
| 4422 | 1.2.5.2.44.1 | 1.2.5.2.44.1 | 6 | Run ALE Transaction to QS5 from DS4 130 | 2026-09-30 | 2026-09-30 | 2026-04-17 | 2026-04-17 | 0 | 0.25 | As Soon As Possible | Future Task | -682.27h | 0h | Eric Heisler |  | True | True | VC_Variant Tables Content |  | PTM | 4423 | 1.25 1.5 303.38 303.63 302.13  | 4420 | 4420 1.25 Post Load Validation |
| 4423 | 1.2.5.2.44.2 | 1.2.5.2.44.2 | 6 | Post Load Validation | 2026-09-30 | 2026-10-01 | 2026-04-17 | 2026-04-17 | 0 | 0.375 | As Soon As Possible | Future Task | -682.27h | 0h | Eric Heisler |  | True | True | VC_Variant Tables Content | Matt Palastro, Dave Duda | PTM |  | 1.5 1.88 303.63 304 302.13  | 4422 | 4422 1.5 Run ALE Transaction to QS5 from DS4 130 |
| 4424 | 1.2.5.2.45 | 1.2.5.2.45 | 5 | VC_Characteristic Groups | 2026-09-29 | 2026-10-01 | 2026-04-16 | 2026-04-17 | 0 | 1.97 | As Soon As Possible | Future Task | -86d | 0d | COULD NOT BE DETERMINED | True | True | True | Master Data Loads | Chip Holder |  |  |  |  |  |
| 4425 | 1.2.5.2.45.1 | 1.2.5.2.45.1 | 6 | Run ALE Transaction to QS5 from DS4 130 | 2026-09-29 | 2026-10-01 | 2026-04-16 | 2026-04-16 | 0 | 1.59375 | Finish No Earlier Than | Future Task | -688.02h | 0h | Eric Heisler |  | True | True | VC_Characteristic Groups |  | PTM | 4426 | 0.63 2.22 302.03 303.63 301.41  | 4417 | 4417 0.625 Post Load Validation |
| 4426 | 1.2.5.2.45.2 | 1.2.5.2.45.2 | 6 | Post Load Validation | 2026-10-01 | 2026-10-01 | 2026-04-16 | 2026-04-17 | 0 | 0.375 | As Soon As Possible | Future Task | -688.02h | 0h | Eric Heisler |  | True | True | VC_Characteristic Groups | Matt Palastro, Dave Duda | PTM |  | 2.22 2.59 303.63 304 301.41  | 4425 | 4425 2.21875 Run ALE Transaction to QS5 from DS4 130 |
| 4427 | 1.2.5.2.46 | 1.2.5.2.46 | 5 | PTM_CM52_Super_BOM | 2026-09-29 | 2026-10-05 | 2026-04-15 | 2026-04-16 | 0 | 4.09 | As Soon As Possible | Future Task | -90.75d | 0d | Brad Meseck; Chip Holder; David Duda; Matt Palastro; Sunil Srinivasa; Aniruddha Sathe; Susan Graham; Eric Heisler; Sam Penrod; Furkan Alko | True | True | True | Master Data Loads | Brad Meseck | PTM |  |  |  |  |
| 4428 | 1.2.5.2.46.1 | 1.2.5.2.46.1 | 6 | Load File Staged and Posted "Ready" | 2026-09-29 | 2026-09-29 | 2026-04-15 | 2026-04-15 | 0 | 0.0625 | As Soon As Possible | Future Task | -43561m | 0m | Eric Heisler |  | True | True | PTM_CM52_Super_BOM |  | PTM | 4429 | 2.69 2.75 297.78 297.84 295.09  | 4329 | 4329 2.6875 Post Load Validation |
| 4429 | 1.2.5.2.46.2 | 1.2.5.2.46.2 | 6 | Pre Load Validation | 2026-09-29 | 2026-09-29 | 2026-04-15 | 2026-04-15 | 0 | 0.0625 | As Soon As Possible | Future Task | -43561m | 0m | Eric Heisler |  | True | True | PTM_CM52_Super_BOM | Matt Palastro, Dave Duda | PTM | 4430 | 2.75 2.81 297.84 297.91 295.09  | 4428 | 4428 2.75 Load File Staged and Posted "Ready" |
| 4430 | 1.2.5.2.46.3 | 1.2.5.2.46.3 | 6 | Simulate Load | 2026-09-29 | 2026-10-02 | 2026-04-15 | 2026-04-16 | 0 | 3.09375 | Finish No Earlier Than | Future Task | -726.02h | 0h | Data Migration Team |  | True | True | PTM_CM52_Super_BOM | Matt Palastro, Dave Duda | Data | 4431 | 2.81 5.91 297.91 301 295.09  | 4429 | 4429 2.8125 Pre Load Validation |
| 4431 | 1.2.5.2.46.4 | 1.2.5.2.46.4 | 6 | Error and Defect Mitigation | 2026-10-02 | 2026-10-02 | 2026-04-16 | 2026-04-16 | 0 | 0.25 | Finish No Earlier Than | Future Task | -726.02h | 0h | Eric Heisler |  | True | True | PTM_CM52_Super_BOM | Matt Palastro, Dave Duda | PTM | 4432 | 5.91 6.16 301 301.25 295.09  | 4430 | 4430 5.90625 Simulate Load |
| 4432 | 1.2.5.2.46.5 | 1.2.5.2.46.5 | 6 | Load | 2026-10-02 | 2026-10-05 | 2026-04-16 | 2026-04-16 | 0 | 0.25 | Start No Earlier Than | Future Task | -726.02h | 0h | Data Migration Team |  | True | True | PTM_CM52_Super_BOM |  | Data | 4433 | 6.16 6.41 301.25 301.5 295.09  | 4431 | 4431 6.15625 Error and Defect Mitigation |
| 4433 | 1.2.5.2.46.6 | 1.2.5.2.46.6 | 6 | Post Load Validation | 2026-10-05 | 2026-10-05 | 2026-04-16 | 2026-04-16 | 0 | 0.375 | As Soon As Possible | Future Task | -726.02h | 0h | Eric Heisler |  | True | True | PTM_CM52_Super_BOM | Matt Palastro, Dave Duda | PTM | 4435 | 6.41 6.78 301.5 301.88 295.09  | 4432 | 4432 6.40625 Load |
| 4434 | 1.2.5.2.47 | 1.2.5.2.47 | 5 | PTM_CM53_Super_Routing | 2026-10-05 | 2026-10-07 | 2026-04-16 | 2026-04-20 | 0 | 2.13 | As Soon As Possible | Future Task | -90.75d | 0d | Brad Meseck; Chip Holder; David Duda; Matt Palastro; Sunil Srinivasa; Aniruddha Sathe; Susan Graham; Eric Heisler; Sam Penrod; Furkan Alko | True | True | True | Master Data Loads | Brad Meseck | PTM |  |  |  |  |
| 4435 | 1.2.5.2.47.1 | 1.2.5.2.47.1 | 6 | Load File Staged and Posted "Ready" | 2026-10-05 | 2026-10-05 | 2026-04-16 | 2026-04-16 | 0 | 0.0625 | As Soon As Possible | Future Task | -43561m | 0m | Eric Heisler |  | True | True | PTM_CM53_Super_Routing |  | PTM | 4436 | 6.78 6.84 301.88 301.94 295.09  | 4433 | 4433 6.78125 Post Load Validation |
| 4436 | 1.2.5.2.47.2 | 1.2.5.2.47.2 | 6 | Pre Load Validation | 2026-10-05 | 2026-10-05 | 2026-04-16 | 2026-04-17 | 0 | 0.0625 | As Soon As Possible | Future Task | -43561m | 0m | Eric Heisler |  | True | True | PTM_CM53_Super_Routing | Matt Palastro, Dave Duda | PTM | 4437 | 6.84 6.91 301.94 302 295.09  | 4435 | 4435 6.84375 Load File Staged and Posted "Ready" |
| 4437 | 1.2.5.2.47.3 | 1.2.5.2.47.3 | 6 | Simulate Load | 2026-10-05 | 2026-10-06 | 2026-04-17 | 2026-04-17 | 0 | 0.125 | As Soon As Possible | Future Task | -726.02h | 0h | Data Migration Team |  | True | True | PTM_CM53_Super_Routing |  | Data | 4438 | 6.91 7.03 302 302.13 295.09  | 4436 | 4436 6.90625 Pre Load Validation |
| 4438 | 1.2.5.2.47.4 | 1.2.5.2.47.4 | 6 | Error and Defect Mitigation | 2026-10-06 | 2026-10-06 | 2026-04-17 | 2026-04-17 | 0 | 0.25 | As Soon As Possible | Future Task | -726.02h | 0h | Eric Heisler |  | True | True | PTM_CM53_Super_Routing | Matt Palastro, Dave Duda | PTM | 4439 | 7.03 7.28 302.13 302.38 295.09  | 4437 | 4437 7.03125 Simulate Load |
| 4439 | 1.2.5.2.47.5 | 1.2.5.2.47.5 | 6 | Load | 2026-10-06 | 2026-10-07 | 2026-04-17 | 2026-04-17 | 0 | 0.25 | As Soon As Possible | Future Task | -726.02h | 0h | Data Migration Team |  | True | True | PTM_CM53_Super_Routing |  | Data | 44, 404, 442 | 7.28 7.53 302.38 302.63 295.09  | 4438 | 4438 7.28125 Error and Defect Mitigation |
| 4440 | 1.2.5.2.47.6 | 1.2.5.2.47.6 | 6 | Post Load Validation | 2026-10-07 | 2026-10-07 | 2026-04-17 | 2026-04-20 | 0 | 0.375 | As Soon As Possible | Future Task | -717.02h | 0h | Eric Heisler |  | True | True | PTM_CM53_Super_Routing | Matt Palastro, Dave Duda | PTM |  | 7.53 7.91 303.63 304 296.09  | 4439 | 4439 7.53125 Load |
| 4441 | 1.2.5.2.48 | 1.2.5.2.48 | 5 | VC_VK30 Pricing Variant | 2026-10-07 | 2026-10-07 | 2026-04-17 | 2026-04-20 | 0 | 0.69 | As Soon As Possible | Future Task | -90.75d | 0d | COULD NOT BE DETERMINED | True | True | True | Master Data Loads | Chip Holder |  |  |  |  |  |
| 4442 | 1.2.5.2.48.1 | 1.2.5.2.48.1 | 6 | Manual File Staged and Posted "Ready" | 2026-10-07 | 2026-10-07 | 2026-04-17 | 2026-04-17 | 0 | 0.0625 | Start No Earlier Than | Future Task | -43561m | 0m | Eric Heisler |  | True | True | VC_VK30 Pricing Variant | Matt Palastro, Dave Duda | PTM | 4443 | 7.53 7.59 302.63 302.69 295.09  | 4439 | 4439 7.53125 Load |
| 4443 | 1.2.5.2.48.2 | 1.2.5.2.48.2 | 6 | Load | 2026-10-07 | 2026-10-07 | 2026-04-17 | 2026-04-17 | 0 | 0.25 | As Soon As Possible | Future Task | -726.02h | 0h | Eric Heisler |  | True | True | VC_VK30 Pricing Variant |  | PTM | 4444 | 7.59 7.84 302.69 302.94 295.09  | 4442 | 4442 7.59375 Manual File Staged and Posted "Ready" |
| 4444 | 1.2.5.2.48.3 | 1.2.5.2.48.3 | 6 | Post Load Validation | 2026-10-07 | 2026-10-07 | 2026-04-17 | 2026-04-20 | 0 | 0.375 | As Soon As Possible | Future Task | -726.02h | 0h | Eric Heisler |  | True | True | VC_VK30 Pricing Variant | Matt Palastro, Dave Duda | PTM | 4446 | 7.84 8.22 302.94 303.31 295.09  | 4443 | 4443 7.84375 Load |
| 4445 | 1.2.5.2.49 | 1.2.5.2.49 | 5 | OTC_CM22_Pricing_Condition | 2026-10-07 | 2026-10-08 | 2026-04-20 | 2026-04-21 | 0 | 0.69 | As Soon As Possible | Future Task | -90.75d | 0d | Anitha Jothi; Kim Kolesar; Michele Colombo; Michiko Tomihari; Ric Haraida; Rod Santos; Shibu Mathew; Narendra Kallam; Keith Riley; James Manohar | True | True | True | Master Data Loads | Kim Kolesar | OTC |  |  |  |  |
| 4446 | 1.2.5.2.49.1 | 1.2.5.2.49.1 | 6 | Manual File Staged and Posted "Ready" | 2026-10-07 | 2026-10-07 | 2026-04-20 | 2026-04-20 | 0 | 0.0625 | Start No Earlier Than | Future Task | -43561m | 0m | Ric Haraida |  | True | True | OTC_CM22_Pricing_Condition | Matt Palastro, Dave Duda | OTC | 4447 | 8.22 8.28 303.31 303.38 295.09  | 4444 | 4444 8.21875 Post Load Validation |
| 4447 | 1.2.5.2.49.2 | 1.2.5.2.49.2 | 6 | Load | 2026-10-07 | 2026-10-08 | 2026-04-20 | 2026-04-20 | 0 | 0.25 | As Soon As Possible | Future Task | -726.02h | 0h | Ric Haraida |  | True | True | OTC_CM22_Pricing_Condition |  | OTC | 44, 484, 450 | 8.28 8.53 303.38 303.63 295.09  | 4446 | 4446 8.28125 Manual File Staged and Posted "Ready" |
| 4448 | 1.2.5.2.49.3 | 1.2.5.2.49.3 | 6 | Post Load Validation | 2026-10-08 | 2026-10-08 | 2026-04-20 | 2026-04-21 | 0 | 0.375 | As Soon As Possible | Future Task | -725.02h | 0h | Ric Haraida,Kim Kolesar |  | True | True | OTC_CM22_Pricing_Condition | Matt Palastro, Dave Duda,kim | OTC |  | 8.53 8.91 303.63 304 295.09  | 4447 | 4447 8.53125 Load |
| 4187 | 1.2.5.2.5 | 1.2.5.2.5 | 5 | RTR_CM04_Cost_Center | 2026-09-25 | 2026-09-29 | 2026-04-07 | 2026-04-09 | 0 | 1.13 | As Soon As Possible | Future Task | -83.19d | 0d | COULD NOT BE DETERMINED | True | True | True | Master Data Loads |  |  |  |  |  |  |
| 4188 | 1.2.5.2.5.1 | 1.2.5.2.5.1 | 6 | Load File Staged and Posted "Ready" | 2026-09-25 | 2026-09-28 | 2026-04-07 | 2026-04-08 | 0 | 0.125 | As Soon As Possible | Future Task | -665.52h | 0h | Kasey Hughes |  | True | True | RTR_CM04_Cost_Center |  | Finance | 4189 | 1.88 2 302.88 303 301  | 4186 | 4186 1.8770833333333332 Post Load Validation |
| 4189 | 1.2.5.2.5.2 | 1.2.5.2.5.2 | 6 | Pre Load Validation | 2026-09-28 | 2026-09-28 | 2026-04-08 | 2026-04-08 | 0 | 0.25 | As Soon As Possible | Future Task | -665.52h | 0h | Kasey Hughes |  | True | True | RTR_CM04_Cost_Center | Brian Wagner | Finance | 4190 | 2 2.25 303 303.25 301  | 4188 | 4188 2.002083333333333 Load File Staged and Posted "Ready" |
| 4190 | 1.2.5.2.5.3 | 1.2.5.2.5.3 | 6 | Simulate Load | 2026-09-28 | 2026-09-28 | 2026-04-08 | 2026-04-08 | 0 | 0.125 | As Soon As Possible | Future Task | -665.52h | 0h | Data Migration Team |  | True | True | RTR_CM04_Cost_Center |  | Data | 4191 | 2.25 2.38 303.25 303.38 301  | 4189 | 4189 2.252083333333333 Pre Load Validation |
| 4191 | 1.2.5.2.5.4 | 1.2.5.2.5.4 | 6 | Error and Defect Mitigation | 2026-09-28 | 2026-09-28 | 2026-04-08 | 2026-04-08 | 0 | 0.25 | As Soon As Possible | Future Task | -665.52h | 0h | Kasey Hughes |  | True | True | RTR_CM04_Cost_Center | Brian Wagner | Finance | 4192 | 2.38 2.63 303.38 303.63 301  | 4190 | 4190 2.377083333333333 Simulate Load |

| uid | wbs | outlineNumber | outlineLevel | name | start | finish | baselineStart | baselineFinish | percentComplete | durationDays | constraintType | status | totalSlackRaw | freeSlackRaw | resourceNames | summary | criticalFlag | active | summaryName | businessValidationOwner | workstream | successors | cpm | predecessors | drivers | milestone |
| --- | --- | --- | --- | --- | --- | --- | --- | --- | --- | --- | --- | --- | --- | --- | --- | --- | --- | --- | --- | --- | --- | --- | --- | --- | --- | --- |
| 4192 | 1.2.5.2.5.5 | 1.2.5.2.5.5 | 6 | Load | 2026-09-28 | 2026-09-28 | 2026-04-08 | 2026-04-08 | 0 | 0.125 | As Soon As Possible | Future Task | -665.52h | 0h | Data Migration Team |  | True | True | RTR_CM04_Cost_Center |  | Data | 4193 | 2.63 2.75 303.63 303.75 301  | 4191 | 4191 2.627083333333333 Error and Defect Mitigation |  |
| 4193 | 1.2.5.2.5.6 | 1.2.5.2.5.6 | 6 | Post Load Validation | 2026-09-28 | 2026-09-29 | 2026-04-08 | 2026-04-09 | 0 | 0.25 | As Soon As Possible | Future Task | -665.52h | 0h | Kasey Hughes |  | True | True | RTR_CM04_Cost_Center | Brian Wagner | Finance |  | 2.75 3 303.75 304 301  | 4192 | 4192 2.752083333333333 Load |  |
| 4449 | 1.2.5.2.50 | 1.2.5.2.50 | 5 | OTC_CM21_CMIR | 2026-10-08 | 2026-10-08 | 2026-04-20 | 2026-04-21 | 0 | 0.5 | As Soon As Possible | Future Task | -90.75d | 0d | Anitha Jothi; Kim Kolesar; Michele Colombo; Michiko Tomihari; Ric Haraida; Rod Santos; Shibu Mathew; Narendra Kallam; Keith Riley; James Manohar | True | True | True | Master Data Loads | Kim Kolesar | OTC |  |  |  |  |  |
| 4450 | 1.2.5.2.50.1 | 1.2.5.2.50.1 | 6 | Load File Staged and Posted "Ready" | 2026-10-08 | 2026-10-08 | 2026-04-20 | 2026-04-20 | 0 | 0.0625 | As Soon As Possible | Future Task | -43561m | 0m | Ric Haraida |  | True | True | OTC_CM21_CMIR |  | OTC | 4451 | 0 0.06 303.5 303.56 303.5  | 44, 474, 458 |  |  |
| 4451 | 1.2.5.2.50.2 | 1.2.5.2.50.2 | 6 | Pre Load Validation | 2026-10-08 | 2026-10-08 | 2026-04-20 | 2026-04-20 | 0 | 0.0625 | As Soon As Possible | Future Task | -43561m | 0m | Ric Haraida |  | True | True | OTC_CM21_CMIR | Kim | OTC | 4452 | 0.06 0.13 303.56 303.63 303.5  | 4450 | 4450 0.0625 Load File Staged and Posted "Ready" |  |
| 4452 | 1.2.5.2.50.3 | 1.2.5.2.50.3 | 6 | Simulate Load | 2026-10-08 | 2026-10-08 | 2026-04-20 | 2026-04-20 | 0 | 0 | As Soon As Possible | Future Task | -726.02h | 0h | Data Migration Team |  | True | True | OTC_CM21_CMIR |  | Data | 4453 | 0.13 0.13 303.63 303.63 303.5  | 4451 | 4451 0.125 Pre Load Validation | True |
| 4453 | 1.2.5.2.50.4 | 1.2.5.2.50.4 | 6 | Error and Defect Mitigation | 2026-10-08 | 2026-10-08 | 2026-04-20 | 2026-04-21 | 0 | 0 | As Soon As Possible | Future Task | -726.02h | 0h | Ric Haraida |  | True | True | OTC_CM21_CMIR | Kim | OTC | 4454 | 0.13 0.13 303.63 303.63 303.5  | 4452 | 4452 0.125 Simulate Load | True |
| 4454 | 1.2.5.2.50.5 | 1.2.5.2.50.5 | 6 | Load | 2026-10-08 | 2026-10-08 | 2026-04-21 | 2026-04-21 | 0 | 0 | As Soon As Possible | Future Task | -726.02h | 0h | Data Migration Team |  | True | True | OTC_CM21_CMIR |  | Data | 4455 | 0.13 0.13 303.63 303.63 303.5  | 4453 | 4453 0.125 Error and Defect Mitigation | True |
| 4455 | 1.2.5.2.50.6 | 1.2.5.2.50.6 | 6 | Post Load Validation | 2026-10-08 | 2026-10-08 | 2026-04-21 | 2026-04-21 | 0 | 0.375 | As Soon As Possible | Future Task | -726.02h | 0h | Ric Haraida |  | True | True | OTC_CM21_CMIR | Kim | OTC |  | 0.13 0.5 303.63 304 303.5  | 4454 | 4454 0.125 Load |  |
| 4456 | 1.2.5.2.51 | 1.2.5.2.51 | 5 | PTP_CM29_Source_List | 2026-09-25 | 2026-10-05 | 2026-04-13 | 2026-04-14 | 0 | 6.16 | As Soon As Possible | Future Task | -87.47d | 0d | Muniraju Surappachari; Nevin Varkey; Samuel Houff; Sarasija Ghosh; Surendra Krishna Acharya; Swetha SethumadhavaRao; James Farmer | True | True | True | Master Data Loads | Muniraju Surappachari | PTP |  |  |  |  |  |
| 4457 | 1.2.5.2.51.1 | 1.2.5.2.51.1 | 6 | Manual File Staged and Posted "Ready" | 2026-09-25 | 2026-09-25 | 2026-04-14 | 2026-04-14 | 0 | 0.0625 | Start No Earlier Than | Future Task | -39061m | 0m | Nevin Varkey |  | True | True | PTP_CM29_Source_List | Sam | PTP |  | 0 0.06 303.94 304 303.94  | 43, 4, 307 |  |  |
| 4458 | 1.2.5.2.51.2 | 1.2.5.2.51.2 | 6 | Load | 2026-10-02 | 2026-10-02 | 2026-04-13 | 2026-04-13 | 0 | 0.25 | Finish No Earlier Than | Future Task | -700.77h | 0h | Nevin Varkey |  | True | True | PTP_CM29_Source_List |  | PTP | 44, 504, 459 | 3.25 3.5 303.38 303.63 300.13  | 4276 | 4276 3.25 Post Load Validation |  |
| 4459 | 1.2.5.2.51.3 | 1.2.5.2.51.3 | 6 | Post Load Validation | 2026-10-02 | 2026-10-05 | 2026-04-13 | 2026-04-13 | 0 | 0.375 | As Soon As Possible | Future Task | -699.77h | 0h | Nevin Varkey |  | True | True | PTP_CM29_Source_List | Sam | PTP |  | 3.5 3.88 303.63 304 300.13  | 4458 | 4458 3.5 Load |  |
| 4460 | 1.2.5.2.52 | 1.2.5.2.52 | 5 | RTR_CM11_Asset_Master | 2026-09-24 | 2026-10-02 | 2026-04-10 | 2026-04-13 | 0 | 6.63 | As Soon As Possible | Future Task | -86.81d | 0d | COULD NOT BE DETERMINED | True | True | True | Master Data Loads |  |  |  |  |  |  |  |
| 4461 | 1.2.5.2.52.1 | 1.2.5.2.52.1 | 6 | Load File Staged and Posted "Ready" | 2026-09-24 | 2026-09-24 | 2026-04-10 | 2026-04-10 | 0 | 0.0625 | Start No Earlier Than | Future Task | -41671m | 0m | Kasey Hughes |  | True | True | RTR_CM11_Asset_Master |  | Finance | 44, 624, 516 | 0 0.06 297.38 297.44 297.38  |  |  |  |
| 4462 | 1.2.5.2.52.2 | 1.2.5.2.52.2 | 6 | Pre Load Validation | 2026-09-24 | 2026-09-24 | 2026-04-10 | 2026-04-10 | 0 | 0.0625 | As Soon As Possible | Future Task | -41671m | 0m | Kasey Hughes,Femi Oguntala |  | True | True | RTR_CM11_Asset_Master | Brian Wagner | Finance | 4463 | 0.06 0.13 297.44 297.5 297.38  | 4461 | 4461 0.0625 Load File Staged and Posted "Ready" |  |
| 4463 | 1.2.5.2.52.3 | 1.2.5.2.52.3 | 6 | Simulate Load | 2026-09-24 | 2026-09-30 | 2026-04-10 | 2026-04-10 | 0 | 3.875 | Finish No Earlier Than | Future Task | -694.52h | 0h | Data Migration Team |  | True | True | RTR_CM11_Asset_Master |  | Data | 4464 | 0.13 4 297.5 301.38 297.38  | 4462 | 4462 0.125 Pre Load Validation |  |
| 4464 | 1.2.5.2.52.4 | 1.2.5.2.52.4 | 6 | Error and Defect Mitigation | 2026-09-30 | 2026-10-02 | 2026-04-10 | 2026-04-10 | 0 | 2 | Finish No Earlier Than | Future Task | -694.52h | 0h | Kasey Hughes |  | True | True | RTR_CM11_Asset_Master | Brian Wagner | Finance | 4465 | 4 6 301.38 303.38 297.38  | 4463 | 4463 4 Simulate Load |  |
| 4465 | 1.2.5.2.52.5 | 1.2.5.2.52.5 | 6 | Load | 2026-10-02 | 2026-10-02 | 2026-04-10 | 2026-04-10 | 0 | 0.25 | Start No Earlier Than | Future Task | -694.52h | 0h | Data Migration Team |  | True | True | RTR_CM11_Asset_Master |  | Data | 4466 | 6 6.25 303.38 303.63 297.38  | 4464 | 4464 6 Error and Defect Mitigation |  |
| 4466 | 1.2.5.2.52.6 | 1.2.5.2.52.6 | 6 | Post Load Validation | 2026-10-02 | 2026-10-02 | 2026-04-10 | 2026-04-13 | 0 | 0.375 | As Soon As Possible | Future Task | -694.52h | 0h | Kasey Hughes |  | True | True | RTR_CM11_Asset_Master | Brian Wagner | Finance |  | 6.25 6.63 303.63 304 297.38  | 4465 | 4465 6.25 Load |  |
| 4467 | 1.2.5.2.53 | 1.2.5.2.53 | 5 | PTM_CM50_Material Class | 2026-09-29 | 2026-10-01 | 2026-04-16 | 2026-04-16 | 0 | 2.13 | As Soon As Possible | Future Task | -86.1d | 0d | Brad Meseck; Chip Holder; David Duda; Matt Palastro; Sunil Srinivasa; Aniruddha Sathe; Susan Graham; Eric Heisler; Sam Penrod; Furkan Alko | True | True | True | Master Data Loads | Brad Meseck | PTM |  |  |  |  |  |
| 4468 | 1.2.5.2.53.1 | 1.2.5.2.53.1 | 6 | Manual File Staged and Posted "Ready" | 2026-09-29 | 2026-09-29 | 2026-04-16 | 2026-04-16 | 0 | 0.0625 | As Soon As Possible | Future Task | -41326m | 0m | Sam |  | True | True | PTM_CM50_Material Class |  | PTM | 44, 694, 472 | 0.56 0.63 301.88 301.94 301.31  | 4373 | 4373 0.5625 Load File Staged and Posted "Ready" |  |
| 4469 | 1.2.5.2.53.2 | 1.2.5.2.53.2 | 6 | Load | 2026-09-29 | 2026-09-29 | 2026-04-16 | 2026-04-16 | 0 | 0.0625 | As Soon As Possible | Future Task | -41326m | 0m | Brad Meseck |  | True | True | PTM_CM50_Material Class | Matt Palastro, Dave Duda | PTM | 4470 | 0.63 0.69 301.94 302 301.31  | 4468 | 4468 0.625 Manual File Staged and Posted "Ready" |  |
| 4470 | 1.2.5.2.53.3 | 1.2.5.2.53.3 | 6 | Post Load Validation | 2026-09-29 | 2026-10-01 | 2026-04-16 | 2026-04-16 | 0 | 2 | Finish No Earlier Than | Future Task | -688.77h | 0h | Brad |  | True | True | PTM_CM50_Material Class | brad | PTM |  | 0.69 2.69 302 304 301.31  | 4469 | 4469 0.6875 Load |  |
| 4471 | 1.2.5.2.54 | 1.2.5.2.54 | 5 | PTM_CM55_Class assignment to materials | 2026-09-29 | 2026-10-01 | 2026-04-16 | 2026-04-17 | 0 | 1.13 | As Soon As Possible | Future Task | -85.16d | 0d | Brad Meseck; Chip Holder; David Duda; Matt Palastro; Sunil Srinivasa; Aniruddha Sathe; Susan Graham; Eric Heisler; Sam Penrod; Furkan Alko | True | True | True | Master Data Loads | Brad Meseck | PTM |  |  |  |  |  |
| 4472 | 1.2.5.2.54.1 | 1.2.5.2.54.1 | 6 | Load File Staged and Posted "Ready" | 2026-09-29 | 2026-09-29 | 2026-04-16 | 2026-04-16 | 0 | 0.0625 | As Soon As Possible | Future Task | -40876m | 0m | Sam |  | True | True | PTM_CM55_Class assignment to materials |  | PTM | 4473 | 0.63 0.69 302.88 302.94 302.25  | 4468 | 4468 0.625 Manual File Staged and Posted "Ready" |  |
| 4473 | 1.2.5.2.54.2 | 1.2.5.2.54.2 | 6 | Pre Load Validation | 2026-09-29 | 2026-09-30 | 2026-04-16 | 2026-04-16 | 0 | 0.0625 | As Soon As Possible | Future Task | -40876m | 0m | Brad Meseck |  | True | True | PTM_CM55_Class assignment to materials | Matt Palastro, Dave Duda | PTM | 4474 | 0.69 0.75 302.94 303 302.25  | 4472 | 4472 0.6875 Load File Staged and Posted "Ready" |  |
| 4474 | 1.2.5.2.54.3 | 1.2.5.2.54.3 | 6 | Simulate Load | 2026-09-30 | 2026-09-30 | 2026-04-16 | 2026-04-16 | 0 | 0.125 | As Soon As Possible | Future Task | -681.27h | 0h | Data Migration Team |  | True | True | PTM_CM55_Class assignment to materials |  | Data | 4475 | 0.75 0.88 303 303.13 302.25  | 4473 | 4473 0.75 Pre Load Validation |  |
| 4475 | 1.2.5.2.54.4 | 1.2.5.2.54.4 | 6 | Error and Defect Mitigation | 2026-09-30 | 2026-09-30 | 2026-04-16 | 2026-04-16 | 0 | 0.25 | As Soon As Possible | Future Task | -681.27h | 0h | Brad Meseck |  | True | True | PTM_CM55_Class assignment to materials | Matt Palastro, Dave Duda | PTM | 4476 | 0.88 1.13 303.13 303.38 302.25  | 4474 | 4474 0.875 Simulate Load |  |
| 4476 | 1.2.5.2.54.5 | 1.2.5.2.54.5 | 6 | Load | 2026-09-30 | 2026-09-30 | 2026-04-16 | 2026-04-17 | 0 | 0.25 | As Soon As Possible | Future Task | -681.27h | 0h | Data Migration Team |  | True | True | PTM_CM55_Class assignment to materials |  | Data | 4477 | 1.13 1.38 303.38 303.63 302.25  | 4475 | 4475 1.125 Error and Defect Mitigation |  |
| 4477 | 1.2.5.2.54.6 | 1.2.5.2.54.6 | 6 | Post Load Validation | 2026-09-30 | 2026-10-01 | 2026-04-17 | 2026-04-17 | 0 | 0.375 | As Soon As Possible | Future Task | -681.27h | 0h | Brad Meseck |  | True | True | PTM_CM55_Class assignment to materials | Matt Palastro, Dave Duda | PTM |  | 1.38 1.75 303.63 304 302.25  | 4476 | 4476 1.375 Load |  |
| 4478 | 1.2.5.2.55 | 1.2.5.2.55 | 5 | GTS - Material initial load from S4 (Run Interface) | 2026-09-29 | 2026-10-01 | 2026-04-16 | 2026-04-16 | 0 | 2.09 | As Soon As Possible | Future Task | -89.03d | 0d | COULD NOT BE DETERMINED | True | True | True | Master Data Loads |  |  |  |  |  |  |  |
| 4479 | 1.2.5.2.55.1 | 1.2.5.2.55.1 | 6 | Run material interface to GTS | 2026-09-29 | 2026-10-01 | 2026-04-16 | 2026-04-16 | 0 | 1.96875 | Finish No Earlier Than | Future Task | -712.27h | 0h | James Van Riper |  | True | True | GTS - Material initial load from S4 (Run Interface) |  | OTC | 4480 | 0.25 2.22 298.63 300.59 298.38  | 4347 | 4347 0.25 Simulate Load |  |
| 4480 | 1.2.5.2.55.2 | 1.2.5.2.55.2 | 6 | Post Load Validation | 2026-10-01 | 2026-10-01 | 2026-04-16 | 2026-04-16 | 0 | 0.125 | As Soon As Possible | Future Task | -712.27h | 0h | James Van Riper |  | True | True | GTS - Material initial load from S4 (Run Interface) | Kim Kolesar | OTC | 4491 | 2.22 2.34 300.59 300.72 298.38  | 4479 | 4479 2.21875 Run material interface to GTS |  |
| 4481 | 1.2.5.2.56 | 1.2.5.2.56 | 5 | GTS - Customers initial load from S4 (Run Interface) | 2026-09-24 | 2026-09-24 | 2026-04-10 | 2026-04-10 | 0 | 0.25 | As Soon As Possible | Future Task | -80.44d | 0d | COULD NOT BE DETERMINED | True | True | True | Master Data Loads |  |  |  |  |  |  |  |
| 4482 | 1.2.5.2.56.1 | 1.2.5.2.56.1 | 6 | Run material interface to GTS | 2026-09-24 | 2026-09-24 | 2026-04-10 | 2026-04-10 | 0 | 0.125 | Start No Earlier Than | Future Task | -643.52h | 0h | James Van Riper |  | True | True | GTS - Customers initial load from S4 (Run Interface) |  | OTC | 4483 | 0 0.13 303.75 303.88 303.75  |  |  |  |
| 4483 | 1.2.5.2.56.2 | 1.2.5.2.56.2 | 6 | Post Load Validation | 2026-09-24 | 2026-09-24 | 2026-04-10 | 2026-04-10 | 0 | 0.125 | Finish No Earlier Than | Future Task | -643.52h | 0h | James Van Riper |  | True | True | GTS - Customers initial load from S4 (Run Interface) | Kim Kolesar | OTC |  | 0.13 0.25 303.88 304 303.75  | 4482 | 4482 0.125 Run material interface to GTS |  |
| 4484 | 1.2.5.2.57 | 1.2.5.2.57 | 5 | GTS - Vendors initial load from S4 (Run Interface) | 2026-09-24 | 2026-09-25 | 2026-04-15 | 2026-04-15 | 0 | 0.25 | As Soon As Possible | Future Task | -81.69d | 0d | COULD NOT BE DETERMINED | True | True | True | Master Data Loads |  |  |  |  |  |  |  |
| 4485 | 1.2.5.2.57.1 | 1.2.5.2.57.1 | 6 | Run material interface to GTS | 2026-09-24 | 2026-09-25 | 2026-04-15 | 2026-04-15 | 0 | 0.125 | As Soon As Possible | Future Task | -653.52h | 0h | James Van Riper |  | True | True | GTS - Vendors initial load from S4 (Run Interface) |  | OTC | 44, 864, 489 | 0.88 1 303.38 303.5 302.5  | 4290 | 4290 0.875 Post Load Validation |  |
| 4486 | 1.2.5.2.57.2 | 1.2.5.2.57.2 | 6 | Post Load Validation | 2026-09-25 | 2026-09-25 | 2026-04-15 | 2026-04-15 | 0 | 0.125 | As Soon As Possible | Future Task | -650.52h | 0h | James Van Riper |  | True | True | GTS - Vendors initial load from S4 (Run Interface) | Kim Kolesar | OTC |  | 1 1.13 303.88 304 302.88  | 4485 | 4485 1 Run material interface to GTS |  |
| 4487 | 1.2.5.2.58 | 1.2.5.2.58 | 5 | GTS - ECCN - Create | 2026-09-24 | 2026-09-25 | 2026-04-06 | 2026-04-13 | 0 | 1.13 | As Soon As Possible | Future Task | -81.31d | 0d | COULD NOT BE DETERMINED | True | True | True | Master Data Loads |  |  |  |  |  |  |  |
| 4488 | 1.2.5.2.58.1 | 1.2.5.2.58.1 | 6 | Load Descartes XML File | 2026-09-24 | 2026-09-24 | 2026-04-06 | 2026-04-06 | 0 | 0.125 | As Soon As Possible | Future Task | -642.52h | 0h | James Van Riper |  | True | True | GTS - ECCN - Create | Brian Wagner | OTC |  | 0 0.13 303.88 304 303.87  | 4161 | 4161 0.0020833333333333333 PMO Authorization to Start Data Loads |  |
| 4489 | 1.2.5.2.58.2 | 1.2.5.2.58.2 | 6 | Post Load Validation | 2026-09-25 | 2026-09-25 | 2026-04-13 | 2026-04-13 | 0 | 0.125 | As Soon As Possible | Future Task | -653.52h | 0h | James Van Riper |  | True | True | GTS - ECCN - Create | Kim Kolesar | OTC | 4509 | 1 1.13 303.5 303.63 302.5  | 4485 | 4485 1 Run material interface to GTS |  |
| 4490 | 1.2.5.2.59 | 1.2.5.2.59 | 5 | GTS - ECCN - Assign | 2026-10-01 | 2026-10-01 | 2026-04-16 | 2026-04-16 | 0 | 0.25 | As Soon As Possible | Future Task | -89.03d | 0d | COULD NOT BE DETERMINED | True | True | True | Master Data Loads |  |  |  |  |  |  |  |
| 4491 | 1.2.5.2.59.1 | 1.2.5.2.59.1 | 6 | Load Descartes XML File | 2026-10-01 | 2026-10-01 | 2026-04-16 | 2026-04-16 | 0 | 0.125 | Finish No Earlier Than | Future Task | -712.27h | 0h | James Van Riper |  | True | True | GTS - ECCN - Assign | Brian Wagner | OTC | 4492 | 2.34 2.47 300.72 300.84 298.38  | 4480 | 4480 2.34375 Post Load Validation |  |
| 4492 | 1.2.5.2.59.2 | 1.2.5.2.59.2 | 6 | Post Load Validation | 2026-10-01 | 2026-10-01 | 2026-04-16 | 2026-04-16 | 0 | 0.125 | As Soon As Possible | Future Task | -712.27h | 0h | James Van Riper |  | True | True | GTS - ECCN - Assign | Kim Kolesar | OTC | 4497 | 2.47 2.59 300.84 300.97 298.38  | 4491 | 4491 2.46875 Load Descartes XML File |  |
| 4194 | 1.2.5.2.6 | 1.2.5.2.6 | 5 | Manual Configuration Activities in QS5 | 2026-09-24 | 2026-10-07 | 2026-04-06 | 2026-04-15 | 0 | 8.94 | As Soon As Possible | Future Task | -89.13d | 0d | COULD NOT BE DETERMINED | True | True | True | Master Data Loads |  |  |  |  | 652 |  |  |
| 4195 | 1.2.5.2.6.1 | 1.2.5.2.6.1 | 6 | Open Client | 2026-09-24 | 2026-09-24 | 2026-04-06 | 2026-04-06 | 0 | 0.0625 | As Soon As Possible | Future Task | -38521m | 0m | Basis |  | True | True | Manual Configuration Activities in QS5 |  | Basis |  | 0 0.06 303.94 304 303.94  |  |  |  |
| 4196 | 1.2.5.2.6.2 | 1.2.5.2.6.2 | 6 | Service Enterprise Setup | 2026-09-30 | 2026-10-07 | 2026-04-08 | 2026-04-15 | 0 | 5 | As Soon As Possible | Future Task | -89.13d | 0d | Keith Riley |  | True | True | Manual Configuration Activities in QS5 |  | OTC |  | 2 7 299 304 297  | 416, 341, 674, 171 | 674 2 Validate Syniti Connections to QS5 |  |
| 4197 | 1.2.5.2.6.3 | 1.2.5.2.6.3 | 6 | Close Client | 2026-09-24 | 2026-09-24 | 2026-04-06 | 2026-04-06 | 0 | 0.0625 | As Soon As Possible | Future Task | -38521m | 0m | Basis |  | True | True | Manual Configuration Activities in QS5 |  | Basis |  | 0 0.06 303.94 304 303.94  |  |  |  |
| 4198 | 1.2.5.2.6.4 | 1.2.5.2.6.4 | 6 | Intercompany Business Partner Setup | 2026-09-30 | 2026-09-30 | 2026-04-08 | 2026-04-09 | 0 | 0.25 | As Soon As Possible | Future Task | -675.02h | 0h | Functional Leads |  | True | True | Manual Configuration Activities in QS5 | Brian Wagner | Development |  | 2 2.25 303.75 304 301.75  | 416, 341, 674, 179 | 674 2 Validate Syniti Connections to QS5 |  |
| 4493 | 1.2.5.2.60 | 1.2.5.2.60 | 5 | GTS - HTS - Create | 2026-09-24 | 2026-09-24 | 2026-04-06 | 2026-04-06 | 0 | 0.25 | As Soon As Possible | Future Task | -80.44d | 0d | COULD NOT BE DETERMINED | True | True | True | Master Data Loads |  |  |  |  |  |  |  |
| 4494 | 1.2.5.2.60.1 | 1.2.5.2.60.1 | 6 | Load Descartes XML File | 2026-09-24 | 2026-09-24 | 2026-04-06 | 2026-04-06 | 0 | 0.125 | As Soon As Possible | Future Task | -643.52h | 0h | James Van Riper |  | True | True | GTS - HTS - Create | Brian Wagner | OTC | 4495 | 0 0.13 303.75 303.88 303.75  | 4161 | 4161 0.0020833333333333333 PMO Authorization to Start Data Loads |  |
| 4495 | 1.2.5.2.60.2 | 1.2.5.2.60.2 | 6 | Post Load Validation | 2026-09-24 | 2026-09-24 | 2026-04-06 | 2026-04-06 | 0 | 0.125 | As Soon As Possible | Future Task | -643.52h | 0h | James Van Riper |  | True | True | GTS - HTS - Create | Kim Kolesar | OTC |  | 0.13 0.25 303.88 304 303.75  | 4494 | 4494 0.12708333333333333 Load Descartes XML File |  |
| 4496 | 1.2.5.2.61 | 1.2.5.2.61 | 5 | GTS - HTS - Assign | 2026-10-01 | 2026-10-02 | 2026-04-16 | 2026-04-16 | 0 | 0.25 | As Soon As Possible | Future Task | -89.03d | 0d | COULD NOT BE DETERMINED | True | True | True | Master Data Loads |  |  |  |  |  |  |  |
| 4497 | 1.2.5.2.61.1 | 1.2.5.2.61.1 | 6 | Load Descartes XML File | 2026-10-01 | 2026-10-02 | 2026-04-16 | 2026-04-16 | 0 | 0.125 | As Soon As Possible | Future Task | -712.27h | 0h | James Van Riper |  | True | True | GTS - HTS - Assign | Brian Wagner | OTC | 449, 845, 4, 506 | 2.59 2.72 300.97 301.09 298.38  | 4492 | 4492 2.59375 Post Load Validation |  |
| 4498 | 1.2.5.2.61.2 | 1.2.5.2.61.2 | 6 | Post Load Validation | 2026-10-02 | 2026-10-02 | 2026-04-16 | 2026-04-16 | 0 | 0.125 | As Soon As Possible | Future Task | -712.27h | 0h | James Van Riper |  | True | True | GTS - HTS - Assign | Kim Kolesar | OTC | 45, 134, 503 | 2.72 2.84 301.09 301.22 298.38  | 4497 | 4497 2.71875 Load Descartes XML File |  |
| 4499 | 1.2.5.2.62 | 1.2.5.2.62 | 5 | GTS - License - Create | 2026-10-02 | 2026-10-02 | 2026-04-16 | 2026-04-16 | 0 | 0.25 | As Soon As Possible | Future Task | -86.63d | 0d | COULD NOT BE DETERMINED | True | True | True | Master Data Loads |  |  |  |  |  |  |  |
| 4500 | 1.2.5.2.62.1 | 1.2.5.2.62.1 | 6 | Load Descartes XML File | 2026-10-02 | 2026-10-02 | 2026-04-16 | 2026-04-16 | 0 | 0.125 | As Soon As Possible | Future Task | -693.02h | 0h | James Van Riper |  | True | True | GTS - License - Create | Brian Wagner | OTC | 4501 | 134.66 134.78 303.75 303.88 169.09  | 44, 974, 513 | 974 134.65625 Simulate Load |  |
| 4501 | 1.2.5.2.62.2 | 1.2.5.2.62.2 | 6 | Post Load Validation | 2026-10-02 | 2026-10-02 | 2026-04-16 | 2026-04-16 | 0 | 0.125 | As Soon As Possible | Future Task | -693.02h | 0h | James Van Riper |  | True | True | GTS - License - Create | Kim Kolesar | OTC |  | 134.78 134.91 303.88 304 169.09  | 4500 | 4500 134.78125 Load Descartes XML File |  |
| 4502 | 1.2.5.2.63 | 1.2.5.2.63 | 5 | Commodity Code/Tarif | 2026-10-02 | 2026-10-06 | 2026-04-16 | 2026-04-16 | 0 | 2.78 | As Soon As Possible | Future Task | -89.03d | 0d | COULD NOT BE DETERMINED | True | True | True | Master Data Loads | Brian Wagner |  |  |  |  |  |  |
| 4503 | 1.2.5.2.63.1 | 1.2.5.2.63.1 | 6 | Load | 2026-10-02 | 2026-10-06 | 2026-04-16 | 2026-04-16 | 0 | 2.65625 | Finish No Earlier Than | Future Task | -712.27h | 0h | James Van Riper |  | True | True | Commodity Code/Tarif |  | OTC | 4504 | 2.84 5.5 301.22 303.88 298.38  | 4498 | 4498 2.84375 Post Load Validation |  |
| 4504 | 1.2.5.2.63.2 | 1.2.5.2.63.2 | 6 | Post Load Validation | 2026-10-06 | 2026-10-06 | 2026-04-16 | 2026-04-16 | 0 | 0.125 | Start No Earlier Than | Future Task | -712.27h | 0h | James Van Riper |  | True | True | Commodity Code/Tarif | Kim Kolesar | OTC |  | 5.5 5.63 303.88 304 298.38  | 4503 | 4503 5.5 Load |  |
| 4505 | 1.2.5.2.64 | 1.2.5.2.64 | 5 | SPL Master File | 2026-10-02 | 2026-10-02 | 2025-03-13 | 2025-03-13 | 0 | 0.25 | As Soon As Possible | Future Task | -86.38d | 0d | COULD NOT BE DETERMINED | True | True | True | Master Data Loads |  |  |  |  |  |  |  |
| 4506 | 1.2.5.2.64.1 | 1.2.5.2.64.1 | 6 | Load | 2026-10-02 | 2026-10-02 | 2025-03-13 | 2025-03-13 | 0 | 0.125 | As Soon As Possible | Future Task | -691.02h | 0h | James Van Riper |  | True | True | SPL Master File |  | OTC | 4507 | 2.72 2.84 303.75 303.88 301.03  | 4497 | 4497 2.71875 Load Descartes XML File |  |
| 4507 | 1.2.5.2.64.2 | 1.2.5.2.64.2 | 6 | Post Load Validation | 2026-10-02 | 2026-10-02 | 2025-03-13 | 2025-03-13 | 0 | 0.125 | As Soon As Possible | Future Task | -691.02h | 0h | James Van Riper |  | True | True | SPL Master File | Kim Kolesar | OTC |  | 2.84 2.97 303.88 304 301.03  | 4506 | 4506 2.84375 Load |  |
| 4508 | 1.2.5.2.65 | 1.2.5.2.65 | 5 | Initialize Embargo situation | 2026-09-25 | 2026-09-25 | 2026-04-13 | 2026-04-14 | 0 | 0.38 | As Soon As Possible | Future Task | -81.69d | 0d | COULD NOT BE DETERMINED | True | True | True | Master Data Loads | Kishore Kakarla |  |  |  |  |  |  |
| 4509 | 1.2.5.2.65.1 | 1.2.5.2.65.1 | 6 | Run report /SAPSLL/EMB_CNTRY_INIT | 2026-09-25 | 2026-09-25 | 2026-04-13 | 2026-04-13 | 0 | 0.125 | As Soon As Possible | Future Task | -653.52h | 0h | James Van Riper |  | True | True | Initialize Embargo situation | Brian Wagner | OTC | 4510 | 1.13 1.25 303.63 303.75 302.5  | 4489 | 4489 1.125 Post Load Validation |  |
| 4510 | 1.2.5.2.65.2 | 1.2.5.2.65.2 | 6 | Set Embargo situations | 2026-09-25 | 2026-09-25 | 2026-04-13 | 2026-04-13 | 0 | 0.125 | As Soon As Possible | Future Task | -653.52h | 0h | James Van Riper |  | True | True | Initialize Embargo situation | Kishore Kakarla | OTC | 4511 | 1.25 1.38 303.75 303.88 302.5  | 4509 | 4509 1.25 Run report /SAPSLL/EMB_CNTRY_INIT |  |
| 4511 | 1.2.5.2.65.3 | 1.2.5.2.65.3 | 6 | Post Load Validation | 2026-09-25 | 2026-09-25 | 2026-04-13 | 2026-04-14 | 0 | 0.125 | As Soon As Possible | Future Task | -653.52h | 0h | James Van Riper |  | True | True | Initialize Embargo situation | Kim Kolesar | OTC |  | 1.38 1.5 303.88 304 302.5  | 4510 | 4510 1.375 Set Embargo situations |  |

| uid | wbs | outlineNumber | outlineLevel | name | start | finish | baselineStart | baselineFinish | percentComplete | durationDays | constraintType | status | totalSlackRaw | freeSlackRaw | resourceNames | summary | criticalFlag | active | flag20 | summaryName | businessValidationOwner | workstream | successors | cpm | predecessors | drivers | milestone |
| --- | --- | --- | --- | --- | --- | --- | --- | --- | --- | --- | --- | --- | --- | --- | --- | --- | --- | --- | --- | --- | --- | --- | --- | --- | --- | --- | --- |
| 4512 | 1.2.5.2.66 | 1.2.5.2.66 | 5 | GTS - SPL (Sanctioned party list) | 2026-10-02 | 2026-10-02 | 2026-04-16 | 2026-04-16 | 0 | 0.25 | As Soon As Possible | Future Task | -86.63d | 0d | COULD NOT BE DETERMINED | True | True | True |  | Master Data Loads | Brian Wagner |  |  |  |  |  |  |
| 4513 | 1.2.5.2.66.1 | 1.2.5.2.66.1 | 6 | Load Descartes XML File | 2026-10-02 | 2026-10-02 | 2026-04-16 | 2026-04-16 | 0 | 0.125 | As Soon As Possible | Future Task | -693.02h | 0h | James Van Riper |  | True | True |  | GTS - SPL (Sanctioned party list) | Brian Wagner | OTC | 45, 4, 514 | 2.84 2.97 303.75 303.88 300.91  | 4498 | 4498 2.84375 Post Load Validation |  |
| 4514 | 1.2.5.2.66.2 | 1.2.5.2.66.2 | 6 | Post Load Validation | 2026-10-02 | 2026-10-02 | 2026-04-16 | 2026-04-16 | 0 | 0.125 | As Soon As Possible | Future Task | -692.02h | 0h | James Van Riper |  | True | True |  | GTS - SPL (Sanctioned party list) | Kim Kolesar | OTC |  | 2.97 3.09 303.88 304 300.91  | 4513 | 4513 2.96875 Load Descartes XML File |  |
| 4515 | 1.2.5.2.67 | 1.2.5.2.67 | 5 | RTR_CM17_Project Definition / Builder | 2026-09-24 | 2026-09-25 | 2026-04-10 | 2026-04-17 | 0 | 1.13 | As Soon As Possible | Future Task | -81.44d | 0d | COULD NOT BE DETERMINED | True | True | True |  | Master Data Loads |  |  |  |  |  |  |  |
| 4516 | 1.2.5.2.67.1 | 1.2.5.2.67.1 | 6 | Load File Staged and Posted "Ready" | 2026-09-24 | 2026-09-24 | 2026-04-10 | 2026-04-10 | 0 | 0.0625 | Start No Earlier Than | Future Task | -39091m | 0m | Kasey Hughes |  | True | True |  | RTR_CM17_Project Definition / Builder |  | Finance | 45, 174, 523 | 0.06 0.13 302.81 302.88 302.75  | 4461 | 4461 0.0625 Load File Staged and Posted "Ready" |  |
| 4517 | 1.2.5.2.67.2 | 1.2.5.2.67.2 | 6 | Pre Load Validation | 2026-09-24 | 2026-09-24 | 2026-04-10 | 2026-04-10 | 0 | 0.0625 | As Soon As Possible | Future Task | -39061m | 0m | Kasey Hughes |  | True | True |  | RTR_CM17_Project Definition / Builder | Brian Wagner | Finance | 4518 | 0.13 0.19 302.94 303 302.81  | 4516 | 4516 0.125 Load File Staged and Posted "Ready" |  |
| 4518 | 1.2.5.2.67.3 | 1.2.5.2.67.3 | 6 | Simulate Load | 2026-09-24 | 2026-09-24 | 2026-04-16 | 2026-04-16 | 0 | 0.125 | As Soon As Possible | Future Task | -651.02h | 0h | Data Migration Team |  | True | True |  | RTR_CM17_Project Definition / Builder |  | Data | 4519 | 0.19 0.31 303 303.13 302.81  | 4517 | 4517 0.1875 Pre Load Validation |  |
| 4519 | 1.2.5.2.67.4 | 1.2.5.2.67.4 | 6 | Error and Defect Mitigation | 2026-09-24 | 2026-09-24 | 2026-04-16 | 2026-04-17 | 0 | 0.25 | As Soon As Possible | Future Task | -651.02h | 0h | Kasey Hughes |  | True | True |  | RTR_CM17_Project Definition / Builder | Brian Wagner | Finance | 4520 | 0.31 0.56 303.13 303.38 302.81  | 4518 | 4518 0.3125 Simulate Load |  |
| 4520 | 1.2.5.2.67.5 | 1.2.5.2.67.5 | 6 | Load | 2026-09-24 | 2026-09-24 | 2026-04-17 | 2026-04-17 | 0 | 0.25 | As Soon As Possible | Future Task | -651.02h | 0h | Data Migration Team |  | True | True |  | RTR_CM17_Project Definition / Builder |  | Data | 4521 | 0.56 0.81 303.38 303.63 302.81  | 4519 | 4519 0.5625 Error and Defect Mitigation |  |
| 4521 | 1.2.5.2.67.6 | 1.2.5.2.67.6 | 6 | Post Load Validation | 2026-09-24 | 2026-09-25 | 2026-04-17 | 2026-04-17 | 0 | 0.375 | As Soon As Possible | Future Task | -651.02h | 0h | Kasey Hughes |  | True | True |  | RTR_CM17_Project Definition / Builder | Brian Wagner | Finance |  | 0.81 1.19 303.63 304 302.81  | 4520 | 4520 0.8125 Load |  |
| 4522 | 1.2.5.2.68 | 1.2.5.2.68 | 5 | RTR_CM18_WBS Element | 2026-09-24 | 2026-09-25 | 2026-04-10 | 2026-04-17 | 0 | 1.25 | As Soon As Possible | Future Task | -81.44d | 0d | COULD NOT BE DETERMINED | True | True | True |  | Master Data Loads |  |  |  |  |  |  |  |
| 4523 | 1.2.5.2.68.1 | 1.2.5.2.68.1 | 6 | Load File Staged and Posted "Ready" | 2026-09-24 | 2026-09-24 | 2026-04-10 | 2026-04-10 | 0 | 0.0625 | Start No Earlier Than | Future Task | -39091m | 0m | Kasey Hughes |  | True | True |  | RTR_CM18_WBS Element |  | Finance | 4524 | 0.13 0.19 302.88 302.94 302.75  | 4516 | 4516 0.125 Load File Staged and Posted "Ready" |  |
| 4524 | 1.2.5.2.68.2 | 1.2.5.2.68.2 | 6 | Pre Load Validation | 2026-09-24 | 2026-09-24 | 2026-04-10 | 2026-04-10 | 0 | 0.0625 | As Soon As Possible | Future Task | -39091m | 0m | Kasey Hughes |  | True | True |  | RTR_CM18_WBS Element | Brian Wagner | Finance | 4525 | 0.19 0.25 302.94 303 302.75  | 4523 | 4523 0.1875 Load File Staged and Posted "Ready" |  |
| 4525 | 1.2.5.2.68.3 | 1.2.5.2.68.3 | 6 | Simulate Load | 2026-09-24 | 2026-09-24 | 2026-04-16 | 2026-04-16 | 0 | 0.125 | As Soon As Possible | Future Task | -651.52h | 0h | Data Migration Team |  | True | True |  | RTR_CM18_WBS Element |  | Data | 4526 | 0.25 0.38 303 303.13 302.75  | 4524 | 4524 0.25 Pre Load Validation |  |
| 4526 | 1.2.5.2.68.4 | 1.2.5.2.68.4 | 6 | Error and Defect Mitigation | 2026-09-24 | 2026-09-24 | 2026-04-16 | 2026-04-17 | 0 | 0.25 | As Soon As Possible | Future Task | -651.52h | 0h | Kasey Hughes |  | True | True |  | RTR_CM18_WBS Element | Brian Wagner | Finance | 4527 | 0.38 0.63 303.13 303.38 302.75  | 4525 | 4525 0.375 Simulate Load |  |
| 4527 | 1.2.5.2.68.5 | 1.2.5.2.68.5 | 6 | Load | 2026-09-24 | 2026-09-24 | 2026-04-17 | 2026-04-17 | 0 | 0.25 | As Soon As Possible | Future Task | -651.52h | 0h | Data Migration Team |  | True | True |  | RTR_CM18_WBS Element |  | Data | 4528 | 0.63 0.88 303.38 303.63 302.75  | 4526 | 4526 0.625 Error and Defect Mitigation |  |
| 4528 | 1.2.5.2.68.6 | 1.2.5.2.68.6 | 6 | Post Load Validation | 2026-09-24 | 2026-09-25 | 2026-04-17 | 2026-04-17 | 0 | 0.375 | As Soon As Possible | Future Task | -651.52h | 0h | Kasey Hughes |  | True | True |  | RTR_CM18_WBS Element | Brian Wagner | Finance |  | 0.88 1.25 303.63 304 302.75  | 4527 | 4527 0.875 Load |  |
| 4529 | 1.2.5.2.68.7 | 1.2.5.2.68.7 | 6 | UAT Mock Data Loads Complete | 2026-09-24 | 2026-09-24 | 2026-04-21 | 2026-04-21 | 0 | 0.03125 | As Soon As Possible | Future Task | -38506m | 0m | Mark George |  | True | True |  | RTR_CM18_WBS Element | Manoj Patel | PMO |  | 0 0.03 303.97 304 303.97  |  |  | True |
| 4199 | 1.2.5.2.7 | 1.2.5.2.7 | 5 | RTR_CM09_Activity_Type | 2026-09-29 | 2026-09-30 | 2026-04-08 | 2026-04-09 | 0 | 1.38 | As Soon As Possible | Future Task | -85d | 0d | COULD NOT BE DETERMINED | True | True | True |  | Master Data Loads |  |  |  |  |  |  |  |
| 4200 | 1.2.5.2.7.1 | 1.2.5.2.7.1 | 6 | Load File Staged and Posted "Ready" | 2026-09-29 | 2026-09-29 | 2026-04-08 | 2026-04-08 | 0 | 0.125 | As Soon As Possible | Future Task | -680.02h | 0h | Kasey Hughes |  | True | True |  | RTR_CM09_Activity_Type |  | Finance | 4201 | 3.25 3.38 302.88 303 299.62  | 4177 | 4177 3.252083333333333 Post Load Validation |  |
| 4201 | 1.2.5.2.7.2 | 1.2.5.2.7.2 | 6 | Pre Load Validation | 2026-09-29 | 2026-09-30 | 2026-04-08 | 2026-04-09 | 0 | 0.25 | As Soon As Possible | Future Task | -680.02h | 0h | Kasey Hughes |  | True | True |  | RTR_CM09_Activity_Type | Brian Wagner | Finance | 4202 | 3.38 3.63 303 303.25 299.62  | 4200 | 4200 3.377083333333333 Load File Staged and Posted "Ready" |  |
| 4202 | 1.2.5.2.7.3 | 1.2.5.2.7.3 | 6 | Simulate Load | 2026-09-30 | 2026-09-30 | 2026-04-09 | 2026-04-09 | 0 | 0.125 | As Soon As Possible | Future Task | -680.02h | 0h | Data Migration Team |  | True | True |  | RTR_CM09_Activity_Type |  | Data | 4203 | 3.63 3.75 303.25 303.38 299.62  | 4201 | 4201 3.627083333333333 Pre Load Validation |  |
| 4203 | 1.2.5.2.7.4 | 1.2.5.2.7.4 | 6 | Error and Defect Mitigation | 2026-09-30 | 2026-09-30 | 2026-04-09 | 2026-04-09 | 0 | 0.25 | As Soon As Possible | Future Task | -680.02h | 0h | Kasey Hughes |  | True | True |  | RTR_CM09_Activity_Type | Brian Wagner | Finance | 4204 | 3.75 4 303.38 303.63 299.62  | 4202 | 4202 3.752083333333333 Simulate Load |  |
| 4204 | 1.2.5.2.7.5 | 1.2.5.2.7.5 | 6 | Load | 2026-09-30 | 2026-09-30 | 2026-04-09 | 2026-04-09 | 0 | 0.125 | As Soon As Possible | Future Task | -680.02h | 0h | Data Migration Team |  | True | True |  | RTR_CM09_Activity_Type |  | Data | 4205 | 4 4.13 303.63 303.75 299.62  | 4203 | 4203 4.002083333333333 Error and Defect Mitigation |  |
| 4205 | 1.2.5.2.7.6 | 1.2.5.2.7.6 | 6 | Post Load Validation | 2026-09-30 | 2026-09-30 | 2026-04-09 | 2026-04-09 | 0 | 0.25 | As Soon As Possible | Future Task | -680.02h | 0h | Kasey Hughes |  | True | True |  | RTR_CM09_Activity_Type | Brian Wagner | Finance |  | 4.13 4.38 303.75 304 299.62  | 4204 | 4204 4.127083333333333 Load |  |
| 4206 | 1.2.5.2.8 | 1.2.5.2.8 | 5 | RTR_CM12_Activity Rates | 2026-09-25 | 2026-09-28 | 2026-04-07 | 2026-04-08 | 0 | 1.13 | As Soon As Possible | Future Task | -82.81d | 0d | COULD NOT BE DETERMINED | True | True | True |  | Master Data Loads |  |  |  |  |  |  |  |
| 4207 | 1.2.5.2.8.1 | 1.2.5.2.8.1 | 6 | Load File Staged and Posted "Ready" | 2026-09-25 | 2026-09-25 | 2026-04-07 | 2026-04-07 | 0 | 0.125 | As Soon As Possible | Future Task | -662.52h | 0h | Kasey Hughes |  | True | True |  | RTR_CM12_Activity Rates |  | Finance | 4208 | 1.5 1.63 302.88 303 301.37  | 4170 | 4170 1.5020833333333332 Post Load Validation |  |
| 4208 | 1.2.5.2.8.2 | 1.2.5.2.8.2 | 6 | Pre Load Validation | 2026-09-25 | 2026-09-25 | 2026-04-07 | 2026-04-07 | 0 | 0.25 | As Soon As Possible | Future Task | -662.52h | 0h | Kasey Hughes |  | True | True |  | RTR_CM12_Activity Rates | Brian Wagner | Finance | 4209 | 1.63 1.88 303 303.25 301.37  | 4207 | 4207 1.6270833333333332 Load File Staged and Posted "Ready" |  |
| 4209 | 1.2.5.2.8.3 | 1.2.5.2.8.3 | 6 | Simulate Load | 2026-09-25 | 2026-09-28 | 2026-04-07 | 2026-04-08 | 0 | 0.125 | As Soon As Possible | Future Task | -662.52h | 0h | Data Migration Team |  | True | True |  | RTR_CM12_Activity Rates |  | Data | 4210 | 1.88 2 303.25 303.38 301.37  | 4208 | 4208 1.8770833333333332 Pre Load Validation |  |
| 4210 | 1.2.5.2.8.4 | 1.2.5.2.8.4 | 6 | Error and Defect Mitigation | 2026-09-28 | 2026-09-28 | 2026-04-08 | 2026-04-08 | 0 | 0.25 | As Soon As Possible | Future Task | -662.52h | 0h | Kasey Hughes |  | True | True |  | RTR_CM12_Activity Rates | Brian Wagner | Finance | 4211 | 2 2.25 303.38 303.63 301.37  | 4209 | 4209 2.002083333333333 Simulate Load |  |
| 4211 | 1.2.5.2.8.5 | 1.2.5.2.8.5 | 6 | Load | 2026-09-28 | 2026-09-28 | 2026-04-08 | 2026-04-08 | 0 | 0.125 | As Soon As Possible | Future Task | -662.52h | 0h | Data Migration Team |  | True | True |  | RTR_CM12_Activity Rates |  | Data | 4212 | 2.25 2.38 303.63 303.75 301.37  | 4210 | 4210 2.252083333333333 Error and Defect Mitigation |  |
| 4212 | 1.2.5.2.8.6 | 1.2.5.2.8.6 | 6 | Post Load Validation | 2026-09-28 | 2026-09-28 | 2026-04-08 | 2026-04-08 | 0 | 0.25 | As Soon As Possible | Future Task | -662.52h | 0h | Kasey Hughes |  | True | True |  | RTR_CM12_Activity Rates | Brian Wagner | Finance |  | 2.38 2.63 303.75 304 301.37  | 4211 | 4211 2.377083333333333 Load |  |
| 4213 | 1.2.5.2.9 | 1.2.5.2.9 | 5 | RTR_CM06_Bank_master | 2026-09-24 | 2026-09-29 | 2026-04-08 | 2026-04-09 | 0 | 3.81 | As Soon As Possible | Future Task | -86.31d | 0d | COULD NOT BE DETERMINED | True | True | True |  | Master Data Loads |  |  |  |  |  |  |  |
| 4214 | 1.2.5.2.9.1 | 1.2.5.2.9.1 | 6 | Load File Staged and Posted "Ready" | 2026-09-29 | 2026-09-29 | 2026-04-08 | 2026-04-08 | 0 | 0.125 | As Soon As Possible | Future Task | -672.02h | 0h | Data Migration Team |  | True | True |  | RTR_CM06_Bank_master |  | Data | 4215 | 3.25 3.38 303.63 303.75 300.37  | 4177 | 4177 3.252083333333333 Post Load Validation |  |
| 4215 | 1.2.5.2.9.2 | 1.2.5.2.9.2 | 6 | Pre Load Validation | 2026-09-29 | 2026-09-29 | 2026-04-08 | 2026-04-09 | 0 | 0.25 | As Soon As Possible | Future Task | -672.02h | 0h | Kasey Hughes |  | True | True |  | RTR_CM06_Bank_master | Brian Wagner | Finance |  | 3.38 3.63 303.75 304 300.37  | 4214 | 4214 3.377083333333333 Load File Staged and Posted "Ready" |  |
| 4216 | 1.2.5.2.9.3 | 1.2.5.2.9.3 | 6 | Simulate Load | 2026-09-24 | 2026-09-24 | 2026-04-09 | 2026-04-09 | 0 | 0.125 | Start No Earlier Than | Future Task | -690.52h | 0h | Data Migration Team |  | True | True |  | RTR_CM06_Bank_master |  | Data | 4217 | 0 0.13 301.88 302 301.88  |  |  |  |
| 4217 | 1.2.5.2.9.4 | 1.2.5.2.9.4 | 6 | Error and Defect Mitigation | 2026-09-24 | 2026-09-24 | 2026-04-09 | 2026-04-09 | 0 | 0.25 | As Soon As Possible | Future Task | -690.52h | 0h | Kasey Hughes |  | True | True |  | RTR_CM06_Bank_master | Brian Wagner | Finance | 4218 | 0.13 0.38 302 302.25 301.88  | 4216 | 4216 0.125 Simulate Load |  |
| 4218 | 1.2.5.2.9.5 | 1.2.5.2.9.5 | 6 | Load | 2026-09-24 | 2026-09-25 | 2026-04-09 | 2026-04-09 | 0 | 0.625 | Finish No Earlier Than | Future Task | -690.52h | 0h | Data Migration Team |  | True | True |  | RTR_CM06_Bank_master |  | Data | 42, 194, 221 | 0.38 1 302.25 302.88 301.88  | 4217 | 4217 0.375 Error and Defect Mitigation |  |
| 4219 | 1.2.5.2.9.6 | 1.2.5.2.9.6 | 6 | Post Load Validation | 2026-09-25 | 2026-09-25 | 2026-04-09 | 2026-04-09 | 0 | 0.25 | Finish No Earlier Than | Future Task | -690.52h | 0h | Kasey Hughes |  | True | True |  | RTR_CM06_Bank_master | Brian Wagner | Finance | 42, 554, 266 | 1 1.25 303.75 304 302.75  | 4218 | 4218 1 Load |  |
| 4530 | 1.2.5.3 | 1.2.5.3 | 4 | PROD Master Data Loads Complete | 2026-10-01 | 2026-10-01 | 2026-10-01 | 2026-10-01 | 0 | 0 | As Soon As Possible | Future Task | -40891m | 0m | Jyoti Nain; Manoj Patel; Michelle Connnors; Roy John; Shiva Janga; Vishal Pujari; (Curtis) Todd Breithaupt; Jerry Ramos |  | True | True |  | PROD Data Load Tasks P? | Manoj Patel | Data | 2945, 2801, 4532, 4531, 924 | 0 0 302 302 302  | 4162 |  | True |
| 4531 | 1.2.5.4 | 1.2.5.4 | 4 | Mock Transactional Data | 2026-10-01 | 2026-10-05 | 2026-10-01 | 2026-10-05 | 0 | 2 | As Soon As Possible | Future Task | -35.1d | 0d | Jyoti Nain; Manoj Patel; Michelle Connnors; Roy John; Shiva Janga; Vishal Pujari; (Curtis) Todd Breithaupt; Jerry Ramos | True | True | True |  | PROD Data Load Tasks P? | Manoj Patel | Data | 4540 |  | 4530 |  |  |
| 4532 | 1.2.5.4.1 | 1.2.5.4.1 | 5 | Inventory | 2026-10-01 | 2026-10-01 | 2026-10-01 | 2026-10-01 | 0 | 0.5 | As Soon As Possible | Future Task | -280.77h | 0h | (Curtis) Todd Breithaupt; Ambrish Patel; Jerry Ramos |  | True | True |  | Mock Transactional Data |  | Data | 45, 334, 536, 453, 745, 300, 0 | 0 0.5 302 302.5 302  | 4530, 2947 | 2947 0 ITC2 Master Data Loads Complete, 4530 0 PROD Master Data Loads Complete |  |
| 4533 | 1.2.5.4.2 | 1.2.5.4.2 | 5 | Open AR | 2026-10-01 | 2026-10-02 | 2026-10-01 | 2026-10-02 | 0 | 0.5 | As Soon As Possible | Future Task | -280.77h | 0h | (Curtis) Todd Breithaupt; Ambrish Patel; Jerry Ramos |  | True | True |  | Mock Transactional Data | Brian Wagner | Data | 4534 | 0.5 1 302.5 303 302  | 4532 | 4532 0.5 Inventory |  |
| 4534 | 1.2.5.4.3 | 1.2.5.4.3 | 5 | Open AP | 2026-10-02 | 2026-10-02 | 2026-10-02 | 2026-10-02 | 0 | 0.5 | As Soon As Possible | Future Task | -280.77h | 0h | (Curtis) Todd Breithaupt; Ambrish Patel; Jerry Ramos |  | True | True |  | Mock Transactional Data | Brian Wagner | Data | 4535 | 1 1.5 303 303.5 302  | 4533 | 4533 1 Open AR |  |
| 4535 | 1.2.5.4.4 | 1.2.5.4.4 | 5 | Bank and Cash | 2026-10-02 | 2026-10-05 | 2026-10-02 | 2026-10-05 | 0 | 0.5 | As Soon As Possible | Future Task | -280.77h | 0h | (Curtis) Todd Breithaupt; Ambrish Patel; Jerry Ramos |  | True | True |  | Mock Transactional Data |  | Data |  | 1.5 2 303.5 304 302  | 4534 | 4534 1.5 Open AP |  |
| 4536 | 1.2.5.4.5 | 1.2.5.4.5 | 5 | Open Purchase Orders(Manual) | 2026-10-01 | 2026-10-02 | 2026-10-01 | 2026-10-02 | 0 | 1 | As Soon As Possible | Future Task | -34.6d | 0d | (Curtis) Todd Breithaupt; Ambrish Patel; Jerry Ramos |  | True | True |  | Mock Transactional Data |  | Data |  | 0.5 1.5 303 304 302.5  | 4532 | 4532 0.5 Inventory |  |
| 4537 | 1.2.5.4.6 | 1.2.5.4.6 | 5 | Open Sales Orders(Manual) | 2026-10-01 | 2026-10-02 | 2026-10-01 | 2026-10-02 | 0 | 1 | As Soon As Possible | Future Task | -34.6d | 0d | (Curtis) Todd Breithaupt; Ambrish Patel; Jerry Ramos |  | True | True |  | Mock Transactional Data | Kim Kolesar | Data |  | 0.5 1.5 303 304 302.5  | 4532 | 4532 0.5 Inventory |  |
| 4538 | 1.2.5.4.7 | 1.2.5.4.7 | 5 | Service Orders(Manual) | 2026-10-01 | 2026-10-02 | 2026-10-01 | 2026-10-02 | 0 | 0.5 | As Soon As Possible | Future Task | -34.1d | 0d | (Curtis) Todd Breithaupt; Ambrish Patel; Jerry Ramos |  | True | True |  | Mock Transactional Data |  | Data |  | 0.5 1 303.5 304 303  | 4532 | 4532 0.5 Inventory |  |
| 4539 | 1.2.5.4.8 | 1.2.5.4.8 | 5 | Open Production Orders(Manual) | 2026-10-01 | 2026-10-02 | 2026-10-01 | 2026-10-02 | 0 | 1 | As Soon As Possible | Future Task | -34.6d | 0d | (Curtis) Todd Breithaupt; Ambrish Patel; Jerry Ramos |  | True | True |  | Mock Transactional Data | Brad Meseck | Data |  | 0.5 1.5 303 304 302.5  | 4532 | 4532 0.5 Inventory |  |
| 4540 | 1.2.5.5 | 1.2.5.5 | 4 | PRO Data Loads Complete | 2026-10-05 | 2026-10-05 | 2026-04-21 | 2026-04-21 | 0 | 0.03125 | As Soon As Possible | Future Task | -16846m | 0m | Mark George |  | True | True | True | PROD Data Load Tasks P? | Manoj Patel | PMO | 690 | 0 0.03 303.97 304 303.97  | 4531 |  | True |
| 681 | 1.3 | 1.3 | 2 | Solution Readniess | 2026-04-16 | 2026-10-16 | 2026-04-16 | 2026-09-03 | 3 | 131.38 | As Soon As Possible | On Schedule | 16.63d | 16.63d | COULD NOT BE DETERMINED | True |  | True | True | AMETEK Release-1, 3-Deployment Plan |  |  |  |  |  |  |  |
| 843 | 1.3.1 | 1.3.1 | 3 | Business Process Design Documentation | 2026-05-04 | 2026-05-29 | 2026-05-22 | 2026-05-22 | 4 | 20 | As Soon As Possible | On Schedule | 116d | 116d | COULD NOT BE DETERMINED | True |  | True | True | Solution Readniess |  |  |  |  |  |  |  |
| 844 | 1.3.1.1 | 1.3.1.1 | 4 | FICO | 2026-05-04 | 2026-05-29 | 2026-05-22 | 2026-05-22 | 3 | 20 | As Soon As Possible | On Schedule | 116d | 116d | COULD NOT BE DETERMINED |  |  | True |  | Business Process Design Documentation |  |  |  | 0 20 284 304 284  |  |  |  |
| 845 | 1.3.1.2 | 1.3.1.2 | 4 | Order to Cash | 2026-05-04 | 2026-05-29 | 2026-05-22 | 2026-05-22 | 4 | 20 | As Soon As Possible | On Schedule | 116d | 116d | SAPOTC@ametek.com |  |  | True |  | Business Process Design Documentation | Kim Kolesar | Functional |  | 0 20 284 304 284  |  |  |  |
| 846 | 1.3.1.3 | 1.3.1.3 | 4 | Procure to Pay | 2026-05-04 | 2026-05-29 | 2026-05-22 | 2026-05-22 | 4 | 20 | As Soon As Possible | On Schedule | 116d | 116d | SAPPTP@ametek.com |  |  | True |  | Business Process Design Documentation | Muniraju Surappachari | Functional |  | 0 20 284 304 284  |  |  |  |
| 847 | 1.3.1.4 | 1.3.1.4 | 4 | Plan to Make | 2026-05-04 | 2026-05-29 | 2026-05-22 | 2026-05-22 | 5 | 20 | As Soon As Possible | On Schedule | 116d | 116d | sapptm@ametek.com |  |  | True |  | Business Process Design Documentation |  | Functional |  | 0 20 284 304 284  |  |  |  |
| 835 | 1.3.2 | 1.3.2 | 3 | Development RICEFW | 2026-05-04 | 2026-08-14 | 2026-05-22 | 2026-05-22 | 0 | 75 | As Soon As Possible | On Schedule | 61d | 61d | Bijoykrishna Das; Manas Prasanna Das; Punith Ravi; Purnachandrarao.V; Sreevalli Vasireddy; Siddharth Singh; Naveen Kanaparthi; Venkateshsai CH; Kumar Gaurav; Praveenkumar K | True |  | True | True | Solution Readniess | Bijoykrishna Das | Development |  |  |  |  |  |
| 836 | 1.3.2.1 | 1.3.2.1 | 4 | Reports | 2026-05-04 | 2026-08-14 | 2026-05-22 | 2026-05-22 | 0 | 75 | Finish No Earlier Than | On Schedule | 61d | 61d | Bijoykrishna Das; Gangadhara Kamini; Kumar Gaurav |  |  | True |  | Development RICEFW |  | Development |  | 0 75 229 304 229  |  |  |  |
| 837 | 1.3.2.2 | 1.3.2.2 | 4 | Interfaces | 2026-05-04 | 2026-08-14 | 2026-05-22 | 2026-05-22 | 0 | 75 | Start No Earlier Than | On Schedule | 61d | 61d | Bijoykrishna Das; Gangadhara Kamini; Kumar Gaurav |  |  | True |  | Development RICEFW |  | Development |  | 0 75 229 304 229  |  |  |  |
| 838 | 1.3.2.3 | 1.3.2.3 | 4 | Enhanchments | 2026-05-04 | 2026-08-14 | 2026-05-22 | 2026-05-22 | 0 | 61 | Finish No Earlier Than | On Schedule | 61d | 61d | Bijoykrishna Das; Gangadhara Kamini; Kumar Gaurav |  |  | True |  | Development RICEFW |  | Development |  | 0 61 243 304 243  |  |  |  |
| 839 | 1.3.2.4 | 1.3.2.4 | 4 | Workflow | 2026-05-04 | 2026-08-14 | 2026-05-22 | 2026-05-22 | 0 | 75 | Start No Earlier Than | On Schedule | 61d | 61d | Bijoykrishna Das; Gangadhara Kamini; Kumar Gaurav |  |  | True |  | Development RICEFW |  | Development |  | 0 75 229 304 229  |  |  |  |
| 840 | 1.3.2.5 | 1.3.2.5 | 4 | Forms | 2026-08-14 | 2026-08-14 | 2026-05-22 | 2026-05-22 | 0 | 0 | Finish No Earlier Than | Future Task | 61d | 61d | COULD NOT BE DETERMINED |  |  | True |  | Development RICEFW |  |  |  | 0 0 304 304 304  |  |  | True |
| 18 | 1.3.3 | 1.3.3 | 3 | Testing Cycles | 2026-04-16 | 2026-10-16 | 2026-04-16 | 2026-09-03 | 13 | 131.38 | As Soon As Possible | On Schedule | 16.63d | 16.63d | Kishore Kakarla | True |  | True | True | Solution Readniess | Kishore Kakarla | Testing |  |  |  |  |  |
| 932 | 1.3.3.1 | 1.3.3.1 | 4 | Test Readiness Review (TRR) - ITC 1 | 2026-04-16 | 2026-05-01 | 2026-04-16 | 2026-04-16 | 25 | 0.125 | Start No Earlier Than | Late | -87.75h | 0h | Kishore Kakarla; SAPTesting@ametek.com |  | True | True | True | Testing Cycles | Kishore Kakarla | Testing | 834, 684, 19 | 0.03 0.16 277.63 277.75 277.59  | 1170 | 1170 0.03125 ITC1 Mock Data Loads Complete |  |
| 2799 | 1.3.3.2 | 1.3.3.2 | 4 | Test Readiness Review (TRR) - ITC 2 | 2026-10-12 | 2026-10-12 | 2026-06-18 | 2026-06-18 | 0 | 0.125 | As Soon As Possible | Future Task | -726h | 0h | Kishore Kakarla; SAPTesting@ametek.com |  | True | True | True | Testing Cycles | Kishore Kakarla | Testing | 2793 | 1.25 1.38 288.63 288.75 287.38  | 20, 522, 794 | 794 1.25 Post Load Validation |  |
| 931 | 1.3.3.3 | 1.3.3.3 | 4 | Test Readiness Review (TRR) - ITC 3 | 2026-06-30 | 2026-06-30 | 2026-06-18 | 2026-06-18 | 0 | 0.125 | As Soon As Possible | Future Task | 68h | 68h | Kishore Kakarla; SAPTesting@ametek.com |  |  | True | True | Testing Cycles | Kishore Kakarla | Testing | 916 | 0 0.13 288.75 288.88 288.75  | 9, 172, 421 |  |  |
| 690 | 1.3.3.4 | 1.3.3.4 | 4 | Test Readiness Review (TRR) - UAT | 2026-10-16 | 2026-10-16 | 2026-08-06 | 2026-08-06 | 0 | 0 | As Soon As Possible | Future Task | -355h | 0h | COULD NOT BE DETERMINED |  | True | True | True | Testing Cycles | Kishore Kakarla |  | 925 | 0 0 293.88 293.88 293.88  | 29, 389, 264, 540 |  | True |
| 19 | 1.3.3.5 | 1.3.3.5 | 4 | ITC-1 | 2026-04-16 | 2026-05-19 | 2026-04-16 | 2026-07-23 | 37 | 23.88 | As Soon As Possible | Complete | 124d | 124d | COULD NOT BE DETERMINED | True |  | True | True | Testing Cycles |  |  |  |  | 932 |  |  |
| 834 | 1.3.3.5.1 | 1.3.3.5.1 | 5 | Testing expectations | 2026-04-16 | 2026-04-16 | 2026-04-16 | 2026-04-16 | 100 | 0.125 | Start No Earlier Than | Complete | 0h | 0h | PMO |  |  | True |  | ITC-1 | Kishore Kakarla | PMO | 685 | 0.16 0.28 298.88 299 298.72  | 932 | 932 0.15625 Test Readiness Review (TRR) - ITC 1 |  |
| 685 | 1.3.3.5.2 | 1.3.3.5.2 | 5 | Functional Smoke Testing | 2026-04-20 | 2026-04-29 | 2026-04-20 | 2026-04-24 | 100 | 5 | Start No Earlier Than | Complete | 0d | 0d | Kishore Kakarla |  |  | True |  | ITC-1 | Kishore Kakarla | Testing |  | 0.28 5.28 299 304 298.72  | 834 | 834 0.28125 Testing expectations |  |

| uid | wbs | outlineNumber | outlineLevel | name | start | finish | baselineStart | baselineFinish | percentComplete | durationDays | constraintType | status | totalSlackRaw | freeSlackRaw | resourceNames | summary | criticalFlag | active | flag20 | summaryName | businessValidationOwner | workstream | successors | cpm | predecessors | drivers | milestone |
| --- | --- | --- | --- | --- | --- | --- | --- | --- | --- | --- | --- | --- | --- | --- | --- | --- | --- | --- | --- | --- | --- | --- | --- | --- | --- | --- | --- |
| 684 | 1.3.3.5.3 | 1.3.3.5.3 | 5 | Assign Tester ID's | 2026-04-16 | 2026-04-23 | 2026-04-16 | 2026-04-16 | 100 | 0.25 | Finish No Earlier Than | Complete | 0h | 0h | COULD NOT BE DETERMINED |  |  | True |  | ITC-1 | Kishore Kakarla |  | 686 | 0.16 0.41 277.75 278 277.59  | 932 | 932 0.15625 Test Readiness Review (TRR) - ITC 1 |  |
| 686 | 1.3.3.5.4 | 1.3.3.5.4 | 5 | ITC-1 Team Testing | 2026-04-27 | 2026-05-18 | 2026-04-27 | 2026-05-15 | 25 | 15 | Start No Earlier Than | Late | 125.66d | 3d | Kishore Kakarla |  |  | True |  | ITC-1 | Kishore Kakarla | Testing | 688, 4 | 0.41 15.41 278 293 277.59  | 684 | 684 0.40625 Assign Tester ID's |  |
| 688 | 1.3.3.5.5 | 1.3.3.5.5 | 5 | ITC-1 Defect Correction / Retesting / Mitigation / Close | 2026-05-06 | 2026-05-19 | 2026-05-18 | 2026-05-29 | 25 | 10 | As Soon As Possible | Future Task | 124d | 0d | Kishore Kakarla |  |  | True |  | ITC-1 | Kishore Kakarla | Testing | 689, 3 | 15.41 25.41 293 303 277.59  | 686, 4 | 686 15.40625 ITC-1 Team Testing |  |
| 689 | 1.3.3.5.6 | 1.3.3.5.6 | 5 | ITC-1 Gate Review | 2026-05-15 | 2026-05-15 | 2026-07-23 | 2026-07-23 | 0 | 1 | As Soon As Possible | Future Task | 1008h | 1008h | COULD NOT BE DETERMINED |  |  | True |  | ITC-1 |  |  |  | 25.41 26.41 303 304 277.59  | 688, 3 | 688 25.40625 ITC-1 Defect Correction / Retesting / Mitigation / Close |  |
| 2791 | 1.3.3.6 | 1.3.3.6 | 4 | ITC-2 | 2026-05-29 | 2026-06-19 | 2026-04-30 | 2026-07-24 | 0 | 15.13 | As Soon As Possible | Future Task | -1.5d | 0d | COULD NOT BE DETERMINED | True | True | True | True | Testing Cycles |  |  |  |  |  |  |  |
| 2792 | 1.3.3.6.1 | 1.3.3.6.1 | 5 | Assign Resources to Depolyment 1 locations | 2026-05-29 | 2026-06-01 | 2026-04-30 | 2026-04-30 | 0 | 0.25 | As Soon As Possible | Future Task | -12h | 0h | Renee |  | True | True |  | ITC-2 |  | PMO | 2795 | 0 0.25 297 297.25 297  | 2947 | 2947 0 ITC2 Master Data Loads Complete |  |
| 2795 | 1.3.3.6.2 | 1.3.3.6.2 | 5 | Assign Tester ID's | 2026-05-29 | 2026-06-01 | 2026-06-18 | 2026-06-18 | 0 | 0.25 | As Soon As Possible | Future Task | -12h | 0h | Security |  | True | True |  | ITC-2 | Kishore Kakarla | Security | 2948 | 0.25 0.5 297.25 297.5 297  | 2792 | 2792 0.25 Assign Resources to Depolyment 1 locations |  |
| 2948 | 1.3.3.6.3 | 1.3.3.6.3 | 5 | Identify Data and Processes for ITC | 2026-05-29 | 2026-06-01 | 2026-05-29 | 2026-06-01 | 0 | 1 | As Soon As Possible | Future Task | -1.5d | 0d | Jyoti Nain; Manoj Patel; Michelle Connnors; Roy John; Shiva Janga; Vishal Pujari; (Curtis) Todd Breithaupt; Jerry Ramos |  | True | True |  | ITC-2 | Manoj Patel | Data | 2949 | 0.5 1.5 297.5 298.5 297  | 2795 | 2795 0.5 Assign Tester ID's |  |
| 2949 | 1.3.3.6.4 | 1.3.3.6.4 | 5 | Run Costing for Data Identified(or ALL) | 2026-06-01 | 2026-06-02 | 2026-06-01 | 2026-06-02 | 0 | 0.5 | As Soon As Possible | Future Task | -12h | 0h | Jyoti Nain; Manoj Patel; Michelle Connnors; Roy John; Shiva Janga; Vishal Pujari; (Curtis) Todd Breithaupt; Jerry Ramos |  | True | True |  | ITC-2 | Manoj Patel | Data | 2794 | 1.5 2 298.5 299 297  | 2948 | 2948 1.5 Identify Data and Processes for ITC |  |
| 2794 | 1.3.3.6.5 | 1.3.3.6.5 | 5 | Functional Smoke Testing | 2026-06-02 | 2026-06-09 | 2026-06-18 | 2026-06-25 | 0 | 5 | As Soon As Possible | Future Task | -1.5d | 0d | Functional Leads |  | True | True |  | ITC-2 | Kishore Kakarla | Development | 2799 | 2 7 299 304 297  | 2949 | 2949 2 Run Costing for Data Identified(or ALL) |  |
| 2793 | 1.3.3.6.6 | 1.3.3.6.6 | 5 | Test Kickoff | 2026-06-08 | 2026-06-08 | 2026-06-18 | 2026-06-18 | 0 | 0.125 | Must Start On | Future Task | -726h | 0h | Renee |  | True | True |  | ITC-2 | Kishore Kakarla | PMO | 2796 | 1.38 1.5 288.75 288.88 287.38  | 2799 | 2799 1.375 Test Readiness Review (TRR) - ITC 2 |  |
| 2796 | 1.3.3.6.7 | 1.3.3.6.7 | 5 | Team Testing | 2026-06-08 | 2026-06-19 | 2026-06-22 | 2026-07-17 | 0 | 10 | As Soon As Possible | Future Task | 101d | 0d | Kishore Kakarla |  |  | True |  | ITC-2 | Kishore Kakarla | Testing | 2797, 3 | 1.5 11.5 288.88 298.88 287.38  | 2793 | 2793 1.5 Test Kickoff |  |
| 2797 | 1.3.3.6.8 | 1.3.3.6.8 | 5 | Defect Correction / Retesting / Mitigation / Close | 2026-06-11 | 2026-06-17 | 2026-07-20 | 2026-07-24 | 0 | 5 | As Soon As Possible | Future Task | 103d | 0d | Kishore Kakarla |  |  | True |  | ITC-2 | Kishore Kakarla | Testing | 2798, 4 | 11.5 16.5 298.88 303.88 287.38  | 2796, 3 | 2796 11.5 Team Testing |  |
| 2798 | 1.3.3.6.9 | 1.3.3.6.9 | 5 | Gate Review | 2026-06-17 | 2026-06-17 | 2026-07-23 | 2026-07-23 | 0 | 0.125 | As Soon As Possible | Future Task | 831h | 831h | COULD NOT BE DETERMINED |  |  | True |  | ITC-2 |  |  |  | 16.5 16.63 303.88 304 287.38  | 2797, 4 | 2797 16.5 Defect Correction / Retesting / Mitigation / Close |  |
| 915 | 1.3.3.7 | 1.3.3.7 | 4 | ITC-3 | 2026-06-19 | 2026-07-24 | 2026-04-30 | 2026-07-24 | 0 | 25.13 | As Soon As Possible | Future Task | 8.5d | 8.5d | COULD NOT BE DETERMINED | True |  | True | True | Testing Cycles |  |  |  |  |  |  |  |
| 922 | 1.3.3.7.1 | 1.3.3.7.1 | 5 | Assign Resources to Depolyment 1 locations | 2026-06-19 | 2026-06-22 | 2026-04-30 | 2026-04-30 | 0 | 0.25 | As Soon As Possible | Future Task | 68h | 0h | Renee |  |  | True |  | ITC-3 |  | PMO | 918 | 0 0.25 297 297.25 297  | 2958 | 2958 0 ITC3 Master Data Loads Complete |  |
| 918 | 1.3.3.7.2 | 1.3.3.7.2 | 5 | Assign Tester ID's | 2026-06-19 | 2026-06-22 | 2026-06-18 | 2026-06-18 | 0 | 0.25 | As Soon As Possible | Future Task | 68h | 0h | Security |  |  | True |  | ITC-3 | Kishore Kakarla | Security | 2950 | 0.25 0.5 297.25 297.5 297  | 922 | 922 0.25 Assign Resources to Depolyment 1 locations |  |
| 2950 | 1.3.3.7.3 | 1.3.3.7.3 | 5 | Identify Data and Processes for ITC | 2026-06-19 | 2026-06-22 | 2026-06-19 | 2026-06-22 | 0 | 1 | As Soon As Possible | Future Task | 8.5d | 0d | Jyoti Nain; Manoj Patel; Michelle Connnors; Roy John; Shiva Janga; Vishal Pujari; (Curtis) Todd Breithaupt; Jerry Ramos |  |  | True |  | ITC-3 | Manoj Patel | Data | 2951 | 0.5 1.5 297.5 298.5 297  | 918 | 918 0.5 Assign Tester ID's |  |
| 2951 | 1.3.3.7.4 | 1.3.3.7.4 | 5 | Run Costing for Data Identified | 2026-06-22 | 2026-06-23 | 2026-06-22 | 2026-06-23 | 0 | 0.5 | As Soon As Possible | Future Task | 68h | 0h | Jyoti Nain; Manoj Patel; Michelle Connnors; Roy John; Shiva Janga; Vishal Pujari; (Curtis) Todd Breithaupt; Jerry Ramos |  |  | True |  | ITC-3 | Manoj Patel | Data | 917 | 1.5 2 298.5 299 297  | 2950 | 2950 1.5 Identify Data and Processes for ITC |  |
| 917 | 1.3.3.7.5 | 1.3.3.7.5 | 5 | Functional Smoke Testing | 2026-06-23 | 2026-06-30 | 2026-06-18 | 2026-06-25 | 0 | 5 | As Soon As Possible | Future Task | 8.5d | 0d | Functional Leads |  |  | True |  | ITC-3 | Kishore Kakarla | Development | 931 | 2 7 299 304 297  | 2951 | 2951 2 Run Costing for Data Identified |  |
| 916 | 1.3.3.7.6 | 1.3.3.7.6 | 5 | Test Kickoff | 2026-07-13 | 2026-07-13 | 2026-06-18 | 2026-06-18 | 0 | 0.125 | Must Start On | Future Task | 0h | 0h | Renee |  | True | True |  | ITC-3 | Kishore Kakarla | PMO | 919 | 0.13 0.25 288.88 289 288.75  | 931 | 931 0.125 Test Readiness Review (TRR) - ITC 3 |  |
| 919 | 1.3.3.7.7 | 1.3.3.7.7 | 5 | Team Testing | 2026-07-13 | 2026-07-24 | 2026-06-22 | 2026-07-17 | 0 | 10 | As Soon As Possible | Future Task | 76d | 0d | Kishore Kakarla |  |  | True |  | ITC-3 | Kishore Kakarla | Testing | 923, 3 | 0.25 10.25 289 299 288.75  | 916 | 916 0.25 Test Kickoff |  |
| 923 | 1.3.3.7.8 | 1.3.3.7.8 | 5 | Defect Correction / Retesting / Mitigation / Close | 2026-07-16 | 2026-07-22 | 2026-07-20 | 2026-07-24 | 0 | 5 | As Soon As Possible | Future Task | 78d | 0d | Kishore Kakarla |  |  | True |  | ITC-3 | Kishore Kakarla | Testing | 921, 4 | 10.25 15.25 299 304 288.75  | 919, 3 | 919 10.25 Team Testing |  |
| 921 | 1.3.3.7.9 | 1.3.3.7.9 | 5 | Gate Review | 2026-07-21 | 2026-07-21 | 2026-07-23 | 2026-07-23 | 0 | 0 | As Soon As Possible | Future Task | 632h | 632h | COULD NOT BE DETERMINED |  |  | True |  | ITC-3 |  |  |  | 15.25 15.25 304 304 288.75  | 923, 4 | 923 15.25 Defect Correction / Retesting / Mitigation / Close | True |
| 22 | 1.3.3.8 | 1.3.3.8 | 4 | UAT (DR) | 2026-08-17 | 2026-10-16 | 2026-04-30 | 2026-09-03 | 0 | 44.38 | As Soon As Possible | Future Task | -5.75d | 0d | COULD NOT BE DETERMINED | True | True | True | True | Testing Cycles | Kishore Kakarla |  |  |  |  |  |  |
| 924 | 1.3.3.8.1 | 1.3.3.8.1 | 5 | Assign Resources to Depolyment 1 locations | 2026-10-08 | 2026-10-08 | 2026-04-30 | 2026-04-30 | 0 | 0.25 | As Soon As Possible | Future Task | -355h | 0h | Renee |  | True | True |  | UAT (DR) |  | PMO | 927 | 75 75.25 298 298.25 223  | 33, 604, 530 | 33 75 In Draft |  |
| 927 | 1.3.3.8.2 | 1.3.3.8.2 | 5 | Assign Tester ID's | 2026-10-08 | 2026-10-09 | 2026-08-06 | 2026-08-06 | 0 | 0.25 | As Soon As Possible | Future Task | -355h | 0h | Security |  | True | True |  | UAT (DR) | Kishore Kakarla | Security | 3361 | 75.25 75.5 298.25 298.5 223  | 924 | 924 75.25 Assign Resources to Depolyment 1 locations |  |
| 3361 | 1.3.3.8.3 | 1.3.3.8.3 | 5 | Run Costing for Data Identified | 2026-10-08 | 2026-10-09 | 2026-10-08 | 2026-10-09 | 0 | 0.5 | As Soon As Possible | Future Task | -355h | 0h | Jyoti Nain; Manoj Patel; Michelle Connnors; Roy John; Shiva Janga; Vishal Pujari; (Curtis) Todd Breithaupt; Jerry Ramos |  | True | True |  | UAT (DR) | Manoj Patel | Data | 926 | 75.5 76 298.5 299 223  | 927 | 927 75.5 Assign Tester ID's |  |
| 926 | 1.3.3.8.4 | 1.3.3.8.4 | 5 | Functional Smoke Testing | 2026-10-09 | 2026-10-16 | 2026-08-03 | 2026-08-07 | 0 | 5 | As Soon As Possible | Future Task | -44.38d | 0d | Functional Leads |  | True | True |  | UAT (DR) | Kishore Kakarla | Development | 690 | 76 81 299 304 223  | 3361 | 3361 76 Run Costing for Data Identified |  |
| 925 | 1.3.3.8.5 | 1.3.3.8.5 | 5 | Test Kickoff | 2026-08-17 | 2026-08-17 | 2026-08-06 | 2026-08-06 | 0 | 0.125 | Must Start On | Future Task | -355h | 0h | Renee |  | True | True |  | UAT (DR) | Kishore Kakarla | PMO | 928 | 0 0.13 293.88 294 293.88  | 690 | 690 0 Test Readiness Review (TRR) - UAT |  |
| 928 | 1.3.3.8.6 | 1.3.3.8.6 | 5 | Team Testing | 2026-08-17 | 2026-08-28 | 2026-08-10 | 2026-08-28 | 0 | 10 | As Soon As Possible | Future Task | 51d | 0d | Kishore Kakarla |  |  | True |  | UAT (DR) | Kishore Kakarla | Testing | 3362, 3 | 0.13 10.13 294 304 293.88  | 925 | 925 0.125 Test Kickoff |  |
| 3362 | 1.3.3.8.7 | 1.3.3.8.7 | 5 | Defect Correction / Retesting / Mitigation / Close | 2026-08-19 | 2026-08-19 | 2026-07-20 | 2026-07-24 | 0 | 0 | As Soon As Possible | Future Task | 54d | 0d | Kishore Kakarla |  |  | True |  | UAT (DR) | Kishore Kakarla | Testing | 930, 4 | 10.13 10.13 304 304 293.88  | 928, 3 | 928 10.125 Team Testing | True |
| 930 | 1.3.3.8.8 | 1.3.3.8.8 | 5 | Gate Review | 2026-08-25 | 2026-08-25 | 2026-09-03 | 2026-09-03 | 0 | 0 | As Soon As Possible | Future Task | 432h | 432h | COULD NOT BE DETERMINED |  |  | True |  | UAT (DR) |  |  |  | 10.13 10.13 304 304 293.88  | 3362, 4 | 3362 10.125 Defect Correction / Retesting / Mitigation / Close | True |
| 683 | 1.4 | 1.4 | 2 | Business Readniess | 2026-02-16 | 2026-11-09 | 2026-02-16 | 2026-10-16 | 38 | 191 | As Soon As Possible | On Schedule | 0d | 0d | COULD NOT BE DETERMINED | True | True | True | True | AMETEK Release-1, 3-Deployment Plan |  |  |  |  |  |  |  |
| 215 | 1.4.1 | 1.4.1 | 3 | Training Readiness | 2026-02-16 | 2026-11-09 | 2026-02-16 | 2026-10-16 | 38 | 191 | As Soon As Possible | On Schedule | 0d | 0d | Karen Zalnis; Mohamed Thanveer Akram (Sira); Sarah George; Paul Ward; Jim Long; Dana Ansky; Dan Taylor | True | True | True | True | Business Readniess | Karen Zalnis | Training |  |  |  |  |  |
| 216 | 1.4.1.1 | 1.4.1.1 | 4 | Content Development | 2026-02-16 | 2026-11-09 | 2026-02-16 | 2026-08-10 | 44 | 191 | As Soon As Possible | On Schedule | 0d | 0d | Bijoykrishna Das; Manas Prasanna Das; Punith Ravi; Purnachandrarao.V; Sreevalli Vasireddy; Siddharth Singh; Naveen Kanaparthi; Venkateshsai CH; Kumar Gaurav; Praveenkumar K | True | True | True | True | Training Readiness | Bijoykrishna Das | Development |  |  |  |  |  |
| 232 | 1.4.1.1.1 | 1.4.1.1.1 | 5 | Verify Role Mapping Complete | 2026-05-01 | 2026-07-31 | 2026-02-16 | 2026-08-03 | 46 | 66 | Finish No Earlier Than | On Schedule | 71d | 0d | Training |  |  | True |  | Content Development |  | Training | 225, 218 | 0 66 0 66 0 True |  |  |  |
| 225 | 1.4.1.1.2 | 1.4.1.1.2 | 5 | Develop Curriculum | 2026-05-01 | 2026-07-31 | 2026-02-16 | 2026-06-05 | 30 | 66 | Finish No Earlier Than | On Schedule | 0d | 0d | Training |  | True | True |  | Content Development |  | Training | 4542, 217 | 66 132 66 132 0 True | 232 | 232 66 Verify Role Mapping Complete |  |
| 4542 | 1.4.1.1.3 | 1.4.1.1.3 | 5 | Develop Course ppts | 2026-05-01 | 2026-08-28 | 2026-02-16 | 2026-08-03 | 35 | 86 | Finish No Earlier Than | On Schedule | 45d | 0d | Training |  |  | True |  | Content Development |  | Development | 233, 220, 221 | 132 218 132 218 0 True | 225 | 225 132 Develop Curriculum |  |
| 233 | 1.4.1.1.4 | 1.4.1.1.4 | 5 | Develop Work Instructions | 2026-05-01 | 2026-08-28 | 2026-04-27 | 2026-08-03 | 21 | 86 | Finish No Earlier Than | On Schedule | 51d | 51d | Training |  |  | True |  | Content Development |  | Training |  | 218 304 218 304 0 True | 4542 | 4542 218 Develop Course ppts |  |
| 217 | 1.4.1.1.5 | 1.4.1.1.5 | 5 | Develop Training Data Sheets (Testing/Training) | 2026-08-03 | 2026-11-09 | 2026-04-27 | 2026-08-03 | 0 | 71 | Start No Earlier Than | Future Task | 0d | 0d | Training |  | True | True |  | Content Development | Karen Zalnis | Training |  | 132 203 233 304 101  | 225 | 225 132 Develop Curriculum |  |
| 218 | 1.4.1.1.6 | 1.4.1.1.6 | 5 | Develop Train the Trainer | 2026-02-16 | 2026-07-31 | 2026-02-16 | 2026-07-31 | 100 | 120 | Finish No Earlier Than | Complete | 0d | 0d | Training |  |  | True |  | Content Development |  | Training | 247 | 66 186 129 249 63  | 232 | 232 66 Verify Role Mapping Complete |  |
| 220 | 1.4.1.1.7 | 1.4.1.1.7 | 5 | Publish Training Materials to SP/LMS | 2026-08-31 | 2026-09-07 | 2026-08-03 | 2026-08-10 | 0 | 6 | Finish No Earlier Than | Future Task | 45d | 45d | Training |  |  | True |  | Content Development | Karen Zalnis | Training |  | 218 224 298 304 80  | 4542 | 4542 218 Develop Course ppts |  |
| 221 | 1.4.1.2 | 1.4.1.2 | 4 | Talent LMS Application Setup | 2026-08-31 | 2026-08-31 | 2026-08-10 | 2026-08-10 | 0 | 1 | Finish No Earlier Than | Future Task | 50d | 50d | Dan Taylor; Dana Ansky; Jim Long |  |  | True |  | Training Readiness | Brian Wagner | Training |  | 218 219 303 304 85  | 4542 | 4542 218 Develop Course ppts |  |
| 241 | 1.4.1.3 | 1.4.1.3 | 4 | Train the Trainer | 2026-08-03 | 2026-08-28 | 2026-08-03 | 2026-08-28 | 0 | 20 | As Soon As Possible | Future Task | 16d | 16d | COULD NOT BE DETERMINED | True |  | True | True | Training Readiness |  |  |  |  |  |  |  |
| 247 | 1.4.1.3.1 | 1.4.1.3.1 | 5 | Deliver Train the Trainer (BPL->SME) | 2026-08-03 | 2026-08-28 | 2026-08-03 | 2026-08-28 | 0 | 20 | Finish No Earlier Than | Future Task | 16d | 0d | Training |  |  | True |  | Train the Trainer |  | Training | 246 | 186 206 249 269 63  | 218 | 218 186 Develop Train the Trainer |  |
| 242 | 1.4.1.4 | 1.4.1.4 | 4 | End User Training Exeuction | 2026-07-10 | 2026-10-16 | 2026-07-10 | 2026-10-16 | 0 | 71 | As Soon As Possible | Future Task | 16d | 16d | Karen Zalnis; Mohamed Thanveer Akram (Sira); Sarah George; Paul Ward; Jim Long; Dana Ansky; Dan Taylor | True |  | True | True | Training Readiness | Karen Zalnis | Training |  |  |  |  |  |
| 913 | 1.4.1.4.1 | 1.4.1.4.1 | 5 | User Training Plan and Schedule | 2026-07-10 | 2026-08-03 | 2026-07-10 | 2026-07-10 | 0 | 17 | Finish No Earlier Than | Future Task | 560h | 560h | Training |  |  | True |  | End User Training Exeuction | Karen Zalnis | Training |  | 0 17 287 304 287  |  |  |  |
| 246 | 1.4.1.4.2 | 1.4.1.4.2 | 5 | Deliver End User Training | 2026-08-31 | 2026-10-16 | 2026-08-31 | 2026-10-16 | 0 | 35 | Start No Earlier Than | Future Task | 16d | 16d | Training |  |  | True | True | End User Training Exeuction | Karen Zalnis | Training |  | 206 241 269 304 63  | 247 | 247 206 Deliver Train the Trainer (BPL->SME) |  |
